# QTS - CDR1 DC7 - Helix Electric Schedule UPD No. 1 10-14-2026

How a schedule from Primavera P6 changed from version to version. A marks actual dates.

## Version 1 (data date 2026-10-14, saved 2026-10-19, file 226021-HE.U01.xer)

Note of the change: DC7: embed audited Suffolk UP-08 and independent HELIX U01 P6 XER source bytes

| ID | WBS | Task | Duration | Start | Finish | Predecessors | Complete | Total float | Constraint |
| --- | --- | --- | --- | --- | --- | --- | --- | --- | --- |
|  | 2 | **Milestones** |  | 2026-11-02 | 2027-05-30 |  |  |  |  |
|  | 1 | **QC 2.2** |  | 2026-11-02 | 2027-03-20 |  |  |  |  |
| M.1100 |  | DH1100 - QC 2.2 Complete (10/06/2026) | 0d | 2026-11-02 | 2026-11-02 | R135-2270 FF, K135-2230 FF, J135-2230 FF, H135-2230 FF, G135-2230 FF, F135-2230 FF, E135-2230 FF, D135-2230 FF, C135-2230 FF, B135-2230 FF, A135-2210 FF |  | -19d | finish on or before 2026-10-06 |
| M.1200 |  | DH1200 - QC 2.2 Complete (10/13/26) | 0d | 2026-11-06 | 2026-11-06 | J125-1590 FF, H125-1590 FF, G125-1590 FF, F125-1590 FF, E125-1590 FF, D125-1590 FF, C125-1590 FF, B125-1590 FF, A125-1590 FF, R125-1590 FF, K125-1590 FF |  | -21d | finish on or before 2026-10-13 |
| M.1300 |  | DH1300 - QC 2.2 Complete (9/28/26) | 0d | 2027-03-03 | 2027-03-03 | K135-1590 FF, J135-1590 FF, H135-1590 FF, G135-1590 FF, F135-1590 FF, E135-1590 FF, D135-1590 FF, C135-1590 FF, B135-1590 FF, A135-1590 FF, R135-1590 FF |  | -127d | finish on or before 2026-09-28 |
| M.1400 |  | DH1400 - QC 2.2 Complete (12/02/26) | 0d | 2027-03-06 | 2027-03-06 | J145-1590 FF, H145-1590 FF, G145-1590 FF, F145-1590 FF, E145-1590 FF, D145-1590 FF, C145-1590 FF, B145-1590 FF, A145-1590 FF, R145-1590 FF, K145-1590 FF |  | -77d | finish on or before 2026-12-02 |
| M.1500 |  | DH1500 - QC 2.2 Complete (10/23/26) | 0d | 2027-03-15 | 2027-03-15 | K155-1590 FF, J155-1590 FF, H155-1590 FF, G155-1590 FF, F155-1590 FF, E155-1590 FF, D155-1590 FF, C155-1590 FF, B155-1590 FF, A155-1590 FF, R155-1590 FF |  | -115d | finish on or before 2026-10-23 |
| M.1600 |  | DH1600 - QC 2.2 Complete (2/17/26) | 0d | 2027-03-20 | 2027-03-20 | J165-1590 FF, H165-1590 FF, G165-1590 FF, F165-1590 FF, E165-1590 FF, D165-1590 FF, C165-1590 FF, B165-1590 FF, A165-1590 FF, R165-1590 FF, K165-1590 FF |  | -27d | finish on or before 2027-02-17 |
|  | 8 | **L3 Cx** |  | 2026-11-05 | 2027-03-27 |  |  |  |  |
|  | 1 | **Clean Walk** |  | 2026-11-05 | 2027-03-24 |  |  |  |  |
| CW.1100 |  | DH1100 - Clean Walk Complete | 0d | 2026-11-05 | 2026-11-05 | 1350-2030 FF |  | 8d |  |
| CW.1200 |  | DH1200 - Clean Walk Complete | 0d | 2026-11-10 | 2026-11-10 | 1250-1000 FF |  | 29d |  |
| CW.1300 |  | DH1300 - Clean Walk Complete | 0d | 2027-03-06 | 2027-03-06 | 1350-1000 FF |  | -45d |  |
| CW.1400 |  | DH1400 - Clean Walk Complete | 0d | 2027-03-10 | 2027-03-10 | 1450-1000 FF |  | -22d |  |
| CW.1500 |  | DH1500 - Clean Walk Complete | 0d | 2027-03-18 | 2027-03-18 | 1550-1000 FF |  | -4d |  |
| CW.1600 |  | DH1600 - Clean Walk Complete | 0d | 2027-03-24 | 2027-03-24 | 1650-1000 FF |  | 18d |  |
|  | 2 | **PEI** |  | 2026-11-09 | 2027-03-27 |  |  |  |  |
| PEI.1100 |  | DH1100 - PEI Complete | 0d | 2026-11-09 | 2026-11-09 | 1350-2040 FF |  | 9d |  |
| PEI.1200 |  | DH1200 - PEI Complete | 0d | 2026-11-13 | 2026-11-13 | 1250-1100 FF |  | 29d |  |
| PEI.1300 |  | DH1300 - PEI Complete | 0d | 2027-03-10 | 2027-03-10 | 1350-1100 FF |  | -45d |  |
| PEI.1400 |  | DH1400 - PEI Complete | 0d | 2027-03-13 | 2027-03-13 | 1450-1100 FF |  | -22d |  |
| PEI.1500 |  | DH1500 - PEI Complete | 0d | 2027-03-22 | 2027-03-22 | 1550-1100 FF |  | -4d |  |
| PEI.160 |  | DH1600 - PEI Complete | 0d | 2027-03-27 | 2027-03-27 | 1650-1100 FF |  | 18d |  |
|  | 2 | **L4 Cx** |  | 2027-01-12 | 2027-05-30 |  |  |  |  |
| IST.1100 |  | DH1100 - IST Complete (1/25/27) (Substantial Completion) | 0d | 2027-01-12 | 2027-01-12 | 1350-2020 FF |  | 9d | finish on or before 2027-01-25 |
| IST.1200 |  | DH1200 - IST Complete (2/23/27) (Substantial Completion) | 0d | 2027-01-16 | 2027-01-16 | 1250-2000 FF |  | 38d | finish on or before 2027-02-23 |
| IST.1300 |  | DH1300 - IST Complete (3/22/27) (Substantial Completion) | 0d | 2027-05-13 | 2027-05-13 | 1350-2000 FF |  | -53d | finish on or before 2027-03-22 |
| IST.1400 |  | DH1400 - IST Complete (4/22/27) (Substantial Completion) | 0d | 2027-05-16 | 2027-05-16 | 1450-2000 FF |  | -25d | finish on or before 2027-04-22 |
| IST.1500 |  | DH1500 - IST Complete (5/21/27) (Substantial Completion) | 0d | 2027-05-25 | 2027-05-25 | 1550-2000 FF |  | -5d | finish on or before 2027-05-21 |
| IST.1600 |  | DH1600 - IST Complete (6/22/27) (Substantial Completion) | 0d | 2027-05-30 | 2027-05-30 | 1650-2000 FF |  | 22d | finish on or before 2027-06-22 |
|  | 8 | **DH 1100** |  | 2026-09-29 | 2027-01-12 |  |  |  |  |
|  | 1 | **Electrical** |  | 2026-09-29 | 2026-11-02 |  |  |  |  |
|  | 1 | **A110** |  | 2026-09-29 | 2026-10-28 |  |  |  |  |
| A135-1660 |  | Set Skid - A110 | 1d | 2026-09-29 A | 2026-09-29 A | A135-1970, A135-1960 | 100% |  | start on or before 2026-09-01 |
| A135-1750 |  | Chiller feed box and conduit complete - A110 | 2d | 2026-09-29 A | 2026-10-15 | A135-1670 SS, A135-1660 SS |  | -13d |  |
| A135-1960 |  | Busduct installed - A110 | 0d | 2026-09-29 A | 2026-09-29 A |  | 100% |  |  |
| A135-1970 |  | Busplugs/Tap Boxes installed - A110 | 1d | 2026-09-29 A | 2026-09-29 A | A135-1960 | 100% |  |  |
| A135-2020 |  | Mount VFD Stand and VFD - A110 | 1d | 2026-09-30 A | 2026-09-30 A | A135-1660 | 100% |  |  |
| A135-2030 |  | Conduit from UPS to VFD - A110 | 1d | 2026-10-01 A | 2026-10-01 A | A135-2020 | 100% |  |  |
| A135-1670 |  | Set MODs - A110 | 2d | 2026-10-14 | 2026-10-15 | A135-1660 SS |  | -16d |  |
| A135-1680 |  | Cable bus Support installed - A110 | 2d | 2026-10-14 | 2026-10-15 | A135-1660 SS |  | -16d |  |
| A135-1690 |  | SWD top covers cut out - A110 | 5d | 2026-10-14 | 2026-10-19 | A135-1660 |  | -19d |  |
| A135-1740 |  | Finish Cable Tray to Skid - A110 | 2d | 2026-10-14 | 2026-10-15 | A135-1660 |  | -15d |  |
| A135-1980 |  | Install conduit from Busplug to ATSs - A110 | 2d | 2026-10-14 | 2026-10-15 | A135-1660 |  | -15d |  |
| A135-2040 |  | Pull Cable from UPS to VFD - A110 | 1d | 2026-10-14 | 2026-10-14 | A135-2030 |  | -11d |  |
| A135-2070 |  | Mount MPZ - A110 | 1d | 2026-10-14 | 2026-10-14 | A135-1660 |  | -12d |  |
| A135-2230 |  | Electrical Room CRAH Set - A110 | 1d | 2026-10-14 | 2026-10-14 | A135-1660 |  | -13d |  |
| A135-1830 |  | Finish Conduit to Elec Room CRAH - A110 | 1d | 2026-10-15 | 2026-10-15 | A135-2230 |  | -13d |  |
| A135-2050 |  | Megger Cable from UPS to VFD - A110 | 1d | 2026-10-15 | 2026-10-15 | A135-2040 |  | -11d |  |
| A135-2080 |  | Penetrate MC Cable into MPZ - A110 | 1d | 2026-10-15 | 2026-10-15 | A135-2070 |  | -12d |  |
| A135-2110 |  | Terminate Cables in VFD - A110 | 1d | 2026-10-15 | 2026-10-15 | A135-2050 SS |  | -10d |  |
| A135-1760 |  | Pull Chiller wire - A110 | 1d | 2026-10-16 | 2026-10-16 | A135-1750, A135-1660 |  | -13d |  |
| A135-1790 |  | Penetrate MC into SWD - A110 | 1d | 2026-10-16 | 2026-10-16 | A135-1740 |  | -15d |  |
| A135-1800 |  | Penetrat MC into UPS - A110 | 1d | 2026-10-16 | 2026-10-16 | A135-1740 |  | -15d |  |
| A135-1810 |  | Penetrate MC into MOD-01 - A110 | 1d | 2026-10-16 | 2026-10-16 | A135-1670 |  | -15d |  |
| A135-1820 |  | Penetrate MC into MOD-02 - A110 | 1d | 2026-10-16 | 2026-10-16 | A135-1670 |  | -15d |  |
| A135-1840 |  | Pull Cable to Elec Room CRAH - A110 | 1d | 2026-10-16 | 2026-10-16 | A135-1830 |  | -13d |  |
| A135-1880 |  | Pull MC from MOD-01 to Mechanical Equipment - A110 | 2d | 2026-10-16 | 2026-10-17 | A135-1670 |  | -16d |  |
| A135-1890 |  | Pull MC from MOD-02 to Mechanical Equipment - A110 | 2d | 2026-10-16 | 2026-10-17 | A135-1670 |  | -16d |  |
| A135-1990 |  | Pull ATS Cable - A110 | 1d | 2026-10-16 | 2026-10-16 | A135-1980 |  | -15d |  |
| A135-2060 |  | Terminate Cables in UPS - A110 | 1d | 2026-10-16 | 2026-10-16 | A135-2050 |  | -11d |  |
| A135-2090 |  | Megger MPZ Cable - A110 | 1d | 2026-10-16 | 2026-10-16 | A135-2080 |  | -12d |  |
| A135-2120 |  | All Skid Grounding - A110 | 2d | 2026-10-16 | 2026-10-17 | A135-1740 |  | -12d |  |
| A135-2190 |  | QC 2.2 checklist VFD - A110 | 1d | 2026-10-16 | 2026-10-16 | A135-2110 |  | -10d |  |
| A135-1770 |  | Megger Chiller Cable - A110 | 1d | 2026-10-17 | 2026-10-17 | A135-1760 |  | -13d |  |
| A135-1850 |  | Megger MC Cable from Skid to Elec Room CRAH - A110 | 1d | 2026-10-17 | 2026-10-17 | A135-1840 |  | -13d |  |
| A135-1870 |  | Megger MC Cable from Skid to MOD - A110 | 1d | 2026-10-17 | 2026-10-17 | A135-1810, A135-1800, A135-1790 |  | -15d |  |
| A135-2100 |  | Terminate MC Feed at MPZ - A110 | 1d | 2026-10-17 | 2026-10-17 | A135-2090 |  | -12d |  |
| A135-2160 |  | QC 2.2 checklist UPS - A110 | 1d | 2026-10-17 | 2026-10-17 | A135-2060 |  | -11d |  |
| A135-2240 |  | Megger Cable at ATS - A110 | 1d | 2026-10-17 | 2026-10-17 | A135-1990 |  | -15d |  |

| ID | WBS | Task | Duration | Start | Finish | Predecessors | Complete | Total float |
| --- | --- | --- | --- | --- | --- | --- | --- | --- |
| A135-2270 |  | Megger MC Cable from UPS to MOD - A110 | 1d | 2026-10-17 | 2026-10-17 | A135-1820 |  | -15d |
| A135-1780 |  | Terminations at Chiller - A110 | 1d | 2026-10-19 | 2026-10-19 | A135-1770 |  | -13d |
| A135-1860 |  | Terminate Elec Room CRAH - A110 | 1d | 2026-10-19 | 2026-10-19 | A135-1850 |  | -13d |
| A135-1900 |  | Megger MC Cable from MOD-01 to Mechanical Equipment - A110 | 1d | 2026-10-19 | 2026-10-19 | A135-1880 |  | -16d |
| A135-1910 |  | Megger MC Cable from MOD-02 to Mechanical Equipment - A110 | 1d | 2026-10-19 | 2026-10-19 | A135-1890 |  | -16d |
| A135-2000 |  | Terminate ATS Cable at Busplugs & ATSs - A110 | 2d | 2026-10-19 | 2026-10-20 | A135-2240 |  | -15d |
| A135-2260 |  | QC 2.2 checklist MPZ - A110 | 1d | 2026-10-19 | 2026-10-19 | A135-2100 |  | -12d |
| A135-1700 |  | Cable bus Install - A110 | 2d | 2026-10-20 | 2026-10-21 | A135-1690, A135-1680 |  | -19d |
| A135-1920 |  | Terminate MOD-01 - A110 | 1d | 2026-10-20 | 2026-10-20 | A135-1870, A135-1900 |  | -16d |
| A135-1930 |  | Terminate MOD-02 - A110 | 1d | 2026-10-20 | 2026-10-20 | A135-2270, A135-1910 |  | -16d |
| A135-1940 |  | Terminate at Mechanical Equipment - A110 | 1d | 2026-10-20 | 2026-10-20 | A135-1930 SS, A135-1920 SS |  | -16d |
| A135-2170 |  | QC 2.2 checklist Elec Room CRAH - A110 | 1d | 2026-10-20 | 2026-10-20 | A135-1860 |  | -13d |
| A135-2220 |  | QC 2.2 checklist Chiller - A110 | 1d | 2026-10-20 | 2026-10-20 | A135-1780 |  | -13d |
| A135-1950 |  | Mechanical Equipment/Tray Grounding - A110 | 2d | 2026-10-21 | 2026-10-22 | A135-1940 |  | -16d |
| A135-2010 |  | ATS Lashing - A110 | 1d | 2026-10-21 | 2026-10-21 | A135-2000 |  | -15d |
| A135-2180 |  | QC 2.2 Mechanical Equipment - A110 | 1d | 2026-10-21 | 2026-10-21 | A135-1940 |  | -14d |
| A135-1710 |  | Cable pulled to A & P Xfmrs - A110 | 1d | 2026-10-22 | 2026-10-22 | A135-1700 |  | -19d |
| A135-2150 |  | QC 2.2 checklist ATSs - A110 | 1d | 2026-10-22 | 2026-10-22 | A135-2010 |  | -15d |
| A135-2250 |  | QC 2.2 checklist Busplugs - A110 | 1d | 2026-10-22 | 2026-10-22 | A135-2150 SS |  | -15d |
| A135-1720 |  | Megger Cable Bus Cable - A110 | 1d | 2026-10-23 | 2026-10-23 | A135-1710 |  | -19d |
| A135-1730 |  | Cable Bus inspection and covers - A110 | 1d | 2026-10-23 | 2026-10-23 | A135-1720 SS |  | -17d |
| A135-2130 |  | QC 2.2 checklist MOD-01 - A110 | 1d | 2026-10-23 | 2026-10-23 | A135-1950 |  | -16d |
| A135-2140 |  | QC 2.2 checklist MOD-02 - A110 | 1d | 2026-10-23 | 2026-10-23 | A135-1950 |  | -16d |
| A135-2280 |  | Terminations at Xfmrs - A110 | 2d | 2026-10-24 | 2026-10-26 | A135-1720 |  | -19d |
| A135-2290 |  | Terminations at SWD - A110 | 2d | 2026-10-24 | 2026-10-26 | A135-1720 |  | -19d |
| A135-2200 |  | QC 2.2 checklist SWD - A110 | 1d | 2026-10-27 | 2026-10-27 | A135-1730, A135-2120, A135-2290 |  | -19d |
| A135-2300 |  | QC 2.2 checklist Xfmrs - A110 | 1d | 2026-10-27 | 2026-10-27 | A135-2280 |  | -19d |
| A135-2210 |  | Ready for FTE - A110 | 1d | 2026-10-28 | 2026-10-28 | A135-2260, A135-2250, A135-2220, A135-2200, A135-2190, A135-2180, A135-2170, A135-2160, A135-2150, A135-2140, A135-2130, A135-2300 |  | -19d |
|  | 2 | **B110** |  | 2026-09-29 | 2026-10-28 |  |  |  |
| B135-1980 |  | Busduct installed - B110 | 1d | 2026-09-29 A | 2026-09-29 A | A135-1960 SS | 100% |  |
| B135-1990 |  | Busplugs/Tap Boxes installed - B110 | 1d | 2026-09-30 A | 2026-09-30 A | B135-1980 | 100% |  |
| B135-1660 |  | Set Skid - B110 | 1d | 2026-10-01 A | 2026-10-01 A | B135-1990, B135-1980, A135-1660 SS | 100% |  |
| B135-1770 |  | Chiller feed box and conduit complete - B110 | 2d | 2026-10-01 A | 2026-10-15 | B135-1670 SS, B135-1660 SS |  | -13d |
| B135-2050 |  | Conduit from UPS to VFD - B110 | 1d | 2026-10-01 A | 2026-10-01 A | B135-2040 | 100% |  |
| B135-2040 |  | Mount VFD Stand and VFD - B110 | 1d | 2026-10-02 A | 2026-10-02 A | B135-1660 | 100% |  |
| B135-1670 |  | Set MODs - B110 | 2d | 2026-10-14 | 2026-10-15 | B135-1660 SS |  | -16d |
| B135-1680 |  | Cable bus Support installed - B110 | 2d | 2026-10-14 | 2026-10-15 | B135-1660 SS |  | -16d |
| B135-1690 |  | SWD top covers cut out - B110 | 5d | 2026-10-14 | 2026-10-19 | B135-1660 |  | -19d |
| B135-1760 |  | Finish Cable Tray to Skid - B110 | 2d | 2026-10-14 | 2026-10-15 | B135-1660 |  | -15d |
| B135-2000 |  | Install conduit from Busplug to ATSs - B110 | 2d | 2026-10-14 | 2026-10-15 | B135-1660 |  | -15d |
| B135-2060 |  | Pull Cable from UPS to VFD - B110 | 1d | 2026-10-14 | 2026-10-14 | B135-2050 |  | -11d |
| B135-2090 |  | Mount MPZ - B110 | 1d | 2026-10-14 | 2026-10-14 | B135-1660 |  | -12d |
| B135-2260 |  | Electrical Room CRAH Set - B110 | 1d | 2026-10-14 | 2026-10-14 | B135-1660 |  | -13d |
| B135-1850 |  | Finish Conduit to Elec Room CRAH - B110 | 1d | 2026-10-15 | 2026-10-15 | B135-2260 |  | -13d |
| B135-2070 |  | Megger Cable from UPS to VFD - B110 | 1d | 2026-10-15 | 2026-10-15 | B135-2060 |  | -11d |
| B135-2100 |  | Penetrate MC Cable into MPZ - B110 | 1d | 2026-10-15 | 2026-10-15 | B135-2090 |  | -12d |
| B135-2130 |  | Terminate Cables in VFD - B110 | 1d | 2026-10-15 | 2026-10-15 | B135-2070 SS |  | -10d |
| B135-1780 |  | Pull Chiller wire - B110 | 1d | 2026-10-16 | 2026-10-16 | B135-1770, B135-1660 |  | -13d |
| B135-1810 |  | Penetrate MC into SWD - B110 | 1d | 2026-10-16 | 2026-10-16 | B135-1760 |  | -15d |
| B135-1820 |  | Penetrat MC into UPS - B110 | 1d | 2026-10-16 | 2026-10-16 | B135-1760 |  | -15d |
| B135-1830 |  | Penetrate MC into MOD-01 - B110 | 1d | 2026-10-16 | 2026-10-16 | B135-1670 |  | -15d |
| B135-1840 |  | Penetrate MC into MOD-02 - B110 | 1d | 2026-10-16 | 2026-10-16 | B135-1670 |  | -15d |
| B135-1860 |  | Pull Cable to Elec Room CRAH - B110 | 1d | 2026-10-16 | 2026-10-16 | B135-1850 |  | -13d |
| B135-1900 |  | Pull MC from MOD-01 to Mechanical Equipment - B110 | 2d | 2026-10-16 | 2026-10-17 | B135-1670 |  | -16d |
| B135-1910 |  | Pull MC from MOD-02 to Mechanical Equipment - B110 | 2d | 2026-10-16 | 2026-10-17 | B135-1670 |  | -16d |
| B135-2010 |  | Pull ATS Cable - B110 | 1d | 2026-10-16 | 2026-10-16 | B135-2000 |  | -15d |
| B135-2080 |  | Terminate Cables in UPS - B110 | 1d | 2026-10-16 | 2026-10-16 | B135-2070 |  | -11d |
| B135-2110 |  | Megger MPZ Cable - B110 | 1d | 2026-10-16 | 2026-10-16 | B135-2100 |  | -12d |
| B135-2140 |  | All Skid Grounding - B110 | 2d | 2026-10-16 | 2026-10-17 | B135-1760 |  | -12d |
| B135-2210 |  | QC 2.2 checklist VFD - B110 | 1d | 2026-10-16 | 2026-10-16 | B135-2130 |  | -10d |
| B135-1790 |  | Megger Chiller Cable - B110 | 1d | 2026-10-17 | 2026-10-17 | B135-1780 |  | -13d |
| B135-1870 |  | Megger MC Cable from Skid to Elec Room CRAH - B110 | 1d | 2026-10-17 | 2026-10-17 | B135-1860 |  | -13d |
| B135-1890 |  | Megger MC Cable from Skid to MOD - B110 | 1d | 2026-10-17 | 2026-10-17 | B135-1830, B135-1820, B135-1810 |  | -15d |
| B135-2120 |  | Terminate MC Feed at MPZ - B110 | 1d | 2026-10-17 | 2026-10-17 | B135-2110 |  | -12d |
| B135-2180 |  | QC 2.2 checklist UPS - B110 | 1d | 2026-10-17 | 2026-10-17 | B135-2080 |  | -11d |
| B135-2270 |  | Megger Cable at ATS - B110 | 1d | 2026-10-17 | 2026-10-17 | B135-2010 |  | -15d |
| B135-2300 |  | Megger MC Cable from UPS to MOD - B110 | 1d | 2026-10-17 | 2026-10-17 | B135-1840 |  | -15d |
| B135-1800 |  | Terminations at Chiller - B110 | 1d | 2026-10-19 | 2026-10-19 | B135-1790 |  | -13d |
| B135-1880 |  | Terminate Elec Room CRAH - B110 | 1d | 2026-10-19 | 2026-10-19 | B135-1870 |  | -13d |
| B135-1920 |  | Megger MC Cable from MOD-01 to Mechanical Equipment - B110 | 1d | 2026-10-19 | 2026-10-19 | B135-1900 |  | -16d |

| ID | WBS | Task | Duration | Start | Finish | Predecessors | Complete | Total float |
| --- | --- | --- | --- | --- | --- | --- | --- | --- |
| B135-1930 |  | Megger MC Cable from MOD-02 to Mechanical Equipment - B110 | 1d | 2026-10-19 | 2026-10-19 | B135-1910 |  | -16d |
| B135-2020 |  | Terminate ATS Cable at Busplugs & ATSs - B110 | 2d | 2026-10-19 | 2026-10-20 | B135-2270 |  | -15d |
| B135-2290 |  | QC 2.2 checklist MPZ - B110 | 1d | 2026-10-19 | 2026-10-19 | B135-2120 |  | -12d |
| B135-1700 |  | Cable bus Install - B110 | 2d | 2026-10-20 | 2026-10-21 | B135-1690, B135-1680 |  | -19d |
| B135-1940 |  | Terminate MOD-01 - B110 | 1d | 2026-10-20 | 2026-10-20 | B135-1890, B135-1920 |  | -16d |
| B135-1950 |  | Terminate MOD-02 - B110 | 1d | 2026-10-20 | 2026-10-20 | B135-2300, B135-1930 |  | -16d |
| B135-1960 |  | Terminate at Mechanical Equipment - B110 | 1d | 2026-10-20 | 2026-10-20 | B135-1950 SS, B135-1940 SS |  | -16d |
| B135-2190 |  | QC 2.2 checklist Elec Room CRAH - B110 | 1d | 2026-10-20 | 2026-10-20 | B135-1880 |  | -13d |
| B135-2250 |  | QC 2.2 checklist Chiller - B110 | 1d | 2026-10-20 | 2026-10-20 | B135-1800 |  | -13d |
| B135-1970 |  | Mechanical Equipment/Tray Grounding - B110 | 2d | 2026-10-21 | 2026-10-22 | B135-1960 |  | -16d |
| B135-2030 |  | ATS Lashing - B110 | 1d | 2026-10-21 | 2026-10-21 | B135-2020 |  | -15d |
| B135-2200 |  | QC 2.2 Mechanical Equipment - B110 | 1d | 2026-10-21 | 2026-10-21 | B135-1960 |  | -14d |
| B135-1710 |  | Cable pulled to A & P Xfmrs - B110 | 1d | 2026-10-22 | 2026-10-22 | B135-1700 |  | -19d |
| B135-2170 |  | QC 2.2 checklist ATSs - B110 | 1d | 2026-10-22 | 2026-10-22 | B135-2030 |  | -15d |
| B135-2280 |  | QC 2.2 checklist Busplugs - B110 | 1d | 2026-10-22 | 2026-10-22 | B135-2170 SS |  | -15d |
| B135-1720 |  | Megger Cable Bus Cable - B110 | 1d | 2026-10-23 | 2026-10-23 | B135-1710 |  | -19d |
| B135-1730 |  | Cable Bus inspection and covers - B110 | 1d | 2026-10-23 | 2026-10-23 | B135-1720 SS |  | -17d |
| B135-2150 |  | QC 2.2 checklist MOD-01 - B110 | 1d | 2026-10-23 | 2026-10-23 | B135-1970 |  | -16d |
| B135-2160 |  | QC 2.2 checklist MOD-02 - B110 | 1d | 2026-10-23 | 2026-10-23 | B135-1970 |  | -16d |
| B135-1740 |  | Terminations at Xfmrs - B110 | 2d | 2026-10-24 | 2026-10-26 | B135-1720 |  | -19d |
| B135-1750 |  | Terminations at SWD - B110 | 2d | 2026-10-24 | 2026-10-26 | B135-1720 |  | -19d |
| B135-2220 |  | QC 2.2 checklist SWD - B110 | 1d | 2026-10-27 | 2026-10-27 | B135-1730, B135-2140, B135-1750 |  | -19d |
| B135-2240 |  | QC 2.2 checklist XFMR - B110 | 1d | 2026-10-27 | 2026-10-27 | B135-1740 |  | -19d |
| B135-2230 |  | Ready for FTE - B110 | 1d | 2026-10-28 | 2026-10-28 | B135-2290, B135-2280, B135-2250, B135-2240, B135-2220, B135-2210, B135-2200, B135-2190, B135-2180, B135-2170, B135-2160, B135-2150 |  | -19d |
|  | 3 | **C110** |  | 2026-09-29 | 2026-10-28 |  |  |  |
| C135-1980 |  | Busduct installed - C110 | 1d | 2026-09-29 A | 2026-09-29 A | B135-1980 SS | 100% |  |
| C135-1990 |  | Busplugs/Tap Boxes installed - C110 | 1d | 2026-09-30 A | 2026-09-30 A | C135-1980 | 100% |  |
| C135-1660 |  | Set Skid - C110 | 1d | 2026-10-01 A | 2026-10-01 A | C135-1990, C135-1980, B135-1660 SS | 100% |  |
| C135-1770 |  | Chiller feed box and conduit complete - C110 | 2d | 2026-10-01 A | 2026-10-15 | C135-1670 SS, C135-1660 SS |  | -13d |
| C135-2050 |  | Conduit from UPS to VFD - C110 | 1d | 2026-10-01 A | 2026-10-01 A | C135-2040 | 100% |  |
| C135-2040 |  | Mount VFD Stand and VFD - C110 | 1d | 2026-10-02 A | 2026-10-02 A | C135-1660 | 100% |  |
| C135-1670 |  | Set MODs - C110 | 2d | 2026-10-14 | 2026-10-15 | C135-1660 SS |  | -16d |
| C135-1680 |  | Cable bus Support installed - C110 | 2d | 2026-10-14 | 2026-10-15 | C135-1660 SS |  | -16d |
| C135-1690 |  | SWD top covers cut out - C110 | 5d | 2026-10-14 | 2026-10-19 | C135-1660 |  | -19d |
| C135-1760 |  | Finish Cable Tray to Skid - C110 | 2d | 2026-10-14 | 2026-10-15 | C135-1660 |  | -15d |
| C135-2000 |  | Install conduit from Busplug to ATSs - C110 | 2d | 2026-10-14 | 2026-10-15 | C135-1660 |  | -15d |
| C135-2060 |  | Pull Cable from UPS to VFD - C110 | 1d | 2026-10-14 | 2026-10-14 | C135-2050 |  | -11d |
| C135-2090 |  | Mount MPZ - C110 | 1d | 2026-10-14 | 2026-10-14 | C135-1660 |  | -12d |
| C135-2260 |  | Electrical Room CRAH Set - C110 | 1d | 2026-10-14 | 2026-10-14 | C135-1660 |  | -13d |
| C135-1850 |  | Finish Conduit to Elec Room CRAH - C110 | 1d | 2026-10-15 | 2026-10-15 | C135-2260 |  | -13d |
| C135-2070 |  | Megger Cable from UPS to VFD - C110 | 1d | 2026-10-15 | 2026-10-15 | C135-2060 |  | -11d |
| C135-2100 |  | Penetrate MC Cable into MPZ - C110 | 1d | 2026-10-15 | 2026-10-15 | C135-2090 |  | -12d |
| C135-2130 |  | Terminate Cables in VFD - C110 | 1d | 2026-10-15 | 2026-10-15 | C135-2070 SS |  | -10d |
| C135-1780 |  | Pull Chiller wire - C110 | 1d | 2026-10-16 | 2026-10-16 | C135-1770, C135-1660 |  | -13d |
| C135-1810 |  | Penetrate MC into SWD - C110 | 1d | 2026-10-16 | 2026-10-16 | C135-1760 |  | -15d |
| C135-1820 |  | Penetrat MC into UPS - C110 | 1d | 2026-10-16 | 2026-10-16 | C135-1760 |  | -15d |
| C135-1830 |  | Penetrate MC into MOD-01 - C110 | 1d | 2026-10-16 | 2026-10-16 | C135-1670 |  | -15d |
| C135-1840 |  | Penetrate MC into MOD-02 - C110 | 1d | 2026-10-16 | 2026-10-16 | C135-1670 |  | -15d |
| C135-1860 |  | Pull Cable to Elec Room CRAH - C110 | 1d | 2026-10-16 | 2026-10-16 | C135-1850 |  | -13d |
| C135-1900 |  | Pull MC from MOD-01 to Mechanical Equipment - C110 | 2d | 2026-10-16 | 2026-10-17 | C135-1670 |  | -16d |
| C135-1910 |  | Pull MC from MOD-02 to Mechanical Equipment - C110 | 2d | 2026-10-16 | 2026-10-17 | C135-1670 |  | -16d |
| C135-2010 |  | Pull ATS Cable - C110 | 1d | 2026-10-16 | 2026-10-16 | C135-2000 |  | -15d |
| C135-2080 |  | Terminate Cables in UPS - C110 | 1d | 2026-10-16 | 2026-10-16 | C135-2070 |  | -11d |
| C135-2110 |  | Megger MPZ Cable - C110 | 1d | 2026-10-16 | 2026-10-16 | C135-2100 |  | -12d |
| C135-2140 |  | All Skid Grounding - C110 | 2d | 2026-10-16 | 2026-10-17 | C135-1760 |  | -12d |
| C135-2210 |  | QC 2.2 checklist VFD - C110 | 1d | 2026-10-16 | 2026-10-16 | C135-2130 |  | -10d |
| C135-1790 |  | Megger Chiller Cable - C110 | 1d | 2026-10-17 | 2026-10-17 | C135-1780 |  | -13d |
| C135-1870 |  | Megger MC Cable from Skid to Elec Room CRAH - C110 | 1d | 2026-10-17 | 2026-10-17 | C135-1860 |  | -13d |
| C135-1890 |  | Megger MC Cable from Skid to MOD - C110 | 1d | 2026-10-17 | 2026-10-17 | C135-1830, C135-1820, C135-1810 |  | -15d |
| C135-2120 |  | Terminate MC Feed at MPZ - C110 | 1d | 2026-10-17 | 2026-10-17 | C135-2110 |  | -12d |
| C135-2180 |  | QC 2.2 checklist UPS - C110 | 1d | 2026-10-17 | 2026-10-17 | C135-2080 |  | -11d |
| C135-2270 |  | Megger Cable at ATS - C110 | 1d | 2026-10-17 | 2026-10-17 | C135-2010 |  | -15d |
| C135-2300 |  | Megger MC Cable from UPS to MOD - C110 | 1d | 2026-10-17 | 2026-10-17 | C135-1840 |  | -15d |
| C135-1800 |  | Terminations at Chiller - C110 | 1d | 2026-10-19 | 2026-10-19 | C135-1790 |  | -13d |
| C135-1880 |  | Terminate Elec Room CRAH - C110 | 1d | 2026-10-19 | 2026-10-19 | C135-1870 |  | -13d |
| C135-1920 |  | Megger MC Cable from MOD-01 to Mechanical Equipment - C110 | 1d | 2026-10-19 | 2026-10-19 | C135-1900 |  | -16d |
| C135-1930 |  | Megger MC Cable from MOD-02 to Mechanical Equipment - C110 | 1d | 2026-10-19 | 2026-10-19 | C135-1910 |  | -16d |
| C135-2020 |  | Terminate ATS Cable at Busplugs & ATSs - C110 | 2d | 2026-10-19 | 2026-10-20 | C135-2270 |  | -15d |
| C135-2290 |  | QC 2.2 checklist MPZ - C110 | 1d | 2026-10-19 | 2026-10-19 | C135-2120 |  | -12d |
| C135-1700 |  | Cable bus Install - C110 | 2d | 2026-10-20 | 2026-10-21 | C135-1690, C135-1680 |  | -19d |

| ID | WBS | Task | Duration | Start | Finish | Predecessors | Complete | Total float |
| --- | --- | --- | --- | --- | --- | --- | --- | --- |
| C135-1940 |  | Terminate MOD-01 - C110 | 1d | 2026-10-20 | 2026-10-20 | C135-1890, C135-1920 |  | -16d |
| C135-1950 |  | Terminate MOD-02 - C110 | 1d | 2026-10-20 | 2026-10-20 | C135-2300, C135-1930 |  | -16d |
| C135-1960 |  | Terminate at Mechanical Equipment - C110 | 1d | 2026-10-20 | 2026-10-20 | C135-1950 SS, C135-1940 SS |  | -16d |
| C135-2190 |  | QC 2.2 checklist Elec Room CRAH - C110 | 1d | 2026-10-20 | 2026-10-20 | C135-1880 |  | -13d |
| C135-2250 |  | QC 2.2 checklist Chiller - C110 | 1d | 2026-10-20 | 2026-10-20 | C135-1800 |  | -13d |
| C135-1970 |  | Mechanical Equipment/Tray Grounding - C110 | 2d | 2026-10-21 | 2026-10-22 | C135-1960 |  | -16d |
| C135-2030 |  | ATS Lashing - C110 | 1d | 2026-10-21 | 2026-10-21 | C135-2020 |  | -15d |
| C135-2200 |  | QC 2.2 Mechanical Equipment - C110 | 1d | 2026-10-21 | 2026-10-21 | C135-1960 |  | -14d |
| C135-1710 |  | Cable pulled to A & P Xfmrs - C110 | 1d | 2026-10-22 | 2026-10-22 | C135-1700 |  | -19d |
| C135-2170 |  | QC 2.2 checklist ATSs - C110 | 1d | 2026-10-22 | 2026-10-22 | C135-2030 |  | -15d |
| C135-2280 |  | QC 2.2 checklist Busplugs - C110 | 1d | 2026-10-22 | 2026-10-22 | C135-2170 SS |  | -15d |
| C135-1720 |  | Megger Cable Bus Cable - C110 | 1d | 2026-10-23 | 2026-10-23 | C135-1710 |  | -19d |
| C135-1730 |  | Cable Bus inspection and covers - C110 | 1d | 2026-10-23 | 2026-10-23 | C135-1720 SS |  | -17d |
| C135-2150 |  | QC 2.2 checklist MOD-01 - C110 | 1d | 2026-10-23 | 2026-10-23 | C135-1970 |  | -16d |
| C135-2160 |  | QC 2.2 checklist MOD-02 - C110 | 1d | 2026-10-23 | 2026-10-23 | C135-1970 |  | -16d |
| C135-1740 |  | Terminations at Xfmrs - C110 | 2d | 2026-10-24 | 2026-10-26 | C135-1720 |  | -19d |
| C135-1750 |  | Terminations at SWD - C110 | 2d | 2026-10-24 | 2026-10-26 | C135-1720 |  | -19d |
| C135-2220 |  | QC 2.2 checklist SWD - C110 | 1d | 2026-10-27 | 2026-10-27 | C135-1730, C135-2140, C135-1750 |  | -19d |
| C135-2240 |  | QC 2.2 checklist XFMR - C110 | 1d | 2026-10-27 | 2026-10-27 | C135-1740 |  | -19d |
| C135-2230 |  | Ready for FTE - C110 | 1d | 2026-10-28 | 2026-10-28 | C135-2290, C135-2280, C135-2250, C135-2240, C135-2220, C135-2210, C135-2200, C135-2190, C135-2180, C135-2170, C135-2160, C135-2150 |  | -19d |
|  | 4 | **D110** |  | 2026-09-29 | 2026-10-28 |  |  |  |
| D135-1980 |  | Busduct installed - D110 | 1d | 2026-09-29 A | 2026-09-29 A | C135-1980 SS | 100% |  |
| D135-1990 |  | Busplugs/Tap Boxes installed - D110 | 1d | 2026-09-30 A | 2026-09-30 A | D135-1980 | 100% |  |
| D135-1660 |  | Set Skid - D110 | 1d | 2026-10-01 A | 2026-10-01 A | D135-1990, D135-1980, C135-1660 SS | 100% |  |
| D135-1770 |  | Chiller feed box and conduit complete - D110 | 2d | 2026-10-01 A | 2026-10-15 | D135-1670 SS, D135-1660 SS |  | -13d |
| D135-2050 |  | Conduit from UPS to VFD - D110 | 1d | 2026-10-01 A | 2026-10-01 A | D135-2040 | 100% |  |
| D135-2040 |  | Mount VFD Stand and VFD - D110 | 1d | 2026-10-02 A | 2026-10-02 A | D135-1660 | 100% |  |
| D135-1670 |  | Set MODs - D110 | 2d | 2026-10-14 | 2026-10-15 | D135-1660 SS |  | -16d |
| D135-1680 |  | Cable bus Support installed - D110 | 2d | 2026-10-14 | 2026-10-15 | D135-1660 SS |  | -16d |
| D135-1690 |  | SWD top covers cut out - D110 | 5d | 2026-10-14 | 2026-10-19 | D135-1660 |  | -19d |
| D135-1760 |  | Finish Cable Tray to Skid - D110 | 2d | 2026-10-14 | 2026-10-15 | D135-1660 |  | -15d |
| D135-2000 |  | Install conduit from Busplug to ATSs - D110 | 2d | 2026-10-14 | 2026-10-15 | D135-1660 |  | -15d |
| D135-2060 |  | Pull Cable from UPS to VFD - D110 | 1d | 2026-10-14 | 2026-10-14 | D135-2050 |  | -11d |
| D135-2090 |  | Mount MPZ - D110 | 1d | 2026-10-14 | 2026-10-14 | D135-1660 |  | -12d |
| D135-2260 |  | Electrical Room CRAH Set - D110 | 1d | 2026-10-14 | 2026-10-14 | D135-1660 |  | -13d |
| D135-1850 |  | Finish Conduit to Elec Room CRAH - D110 | 1d | 2026-10-15 | 2026-10-15 | D135-2260 |  | -13d |
| D135-2070 |  | Megger Cable from UPS to VFD - D110 | 1d | 2026-10-15 | 2026-10-15 | D135-2060 |  | -11d |
| D135-2100 |  | Penetrate MC Cable into MPZ - D110 | 1d | 2026-10-15 | 2026-10-15 | D135-2090 |  | -12d |
| D135-2130 |  | Terminate Cables in VFD - D110 | 1d | 2026-10-15 | 2026-10-15 | D135-2070 SS |  | -10d |
| D135-1780 |  | Pull Chiller wire - D110 | 1d | 2026-10-16 | 2026-10-16 | D135-1770, D135-1660 |  | -13d |
| D135-1810 |  | Penetrate MC into SWD - D110 | 1d | 2026-10-16 | 2026-10-16 | D135-1760 |  | -15d |
| D135-1820 |  | Penetrat MC into UPS - D110 | 1d | 2026-10-16 | 2026-10-16 | D135-1760 |  | -15d |
| D135-1830 |  | Penetrate MC into MOD-01 - D110 | 1d | 2026-10-16 | 2026-10-16 | D135-1670 |  | -15d |
| D135-1840 |  | Penetrate MC into MOD-02 - D110 | 1d | 2026-10-16 | 2026-10-16 | D135-1670 |  | -15d |
| D135-1860 |  | Pull Cable to Elec Room CRAH - D110 | 1d | 2026-10-16 | 2026-10-16 | D135-1850 |  | -13d |
| D135-1900 |  | Pull MC from MOD-01 to Mechanical Equipment - D110 | 2d | 2026-10-16 | 2026-10-17 | D135-1670 |  | -16d |
| D135-1910 |  | Pull MC from MOD-02 to Mechanical Equipment - D110 | 2d | 2026-10-16 | 2026-10-17 | D135-1670 |  | -16d |
| D135-2010 |  | Pull ATS Cable - D110 | 1d | 2026-10-16 | 2026-10-16 | D135-2000 |  | -15d |
| D135-2080 |  | Terminate Cables in UPS - D110 | 1d | 2026-10-16 | 2026-10-16 | D135-2070 |  | -11d |
| D135-2110 |  | Megger MPZ Cable - D110 | 1d | 2026-10-16 | 2026-10-16 | D135-2100 |  | -12d |
| D135-2140 |  | All Skid Grounding - D110 | 2d | 2026-10-16 | 2026-10-17 | D135-1760 |  | -12d |
| D135-2210 |  | QC 2.2 checklist VFD - D110 | 1d | 2026-10-16 | 2026-10-16 | D135-2130 |  | -10d |
| D135-1790 |  | Megger Chiller Cable - D110 | 1d | 2026-10-17 | 2026-10-17 | D135-1780 |  | -13d |
| D135-1870 |  | Megger MC Cable from Skid to Elec Room CRAH - D110 | 1d | 2026-10-17 | 2026-10-17 | D135-1860 |  | -13d |
| D135-1890 |  | Megger MC Cable from Skid to MOD - D110 | 1d | 2026-10-17 | 2026-10-17 | D135-1830, D135-1820, D135-1810 |  | -15d |
| D135-2120 |  | Terminate MC Feed at MPZ - D110 | 1d | 2026-10-17 | 2026-10-17 | D135-2110 |  | -12d |
| D135-2180 |  | QC 2.2 checklist UPS - D110 | 1d | 2026-10-17 | 2026-10-17 | D135-2080 |  | -11d |
| D135-2270 |  | Megger Cable at ATS - D110 | 1d | 2026-10-17 | 2026-10-17 | D135-2010 |  | -15d |
| D135-2300 |  | Megger MC Cable from UPS to MOD - D110 | 1d | 2026-10-17 | 2026-10-17 | D135-1840 |  | -15d |
| D135-1800 |  | Terminations at Chiller - D110 | 1d | 2026-10-19 | 2026-10-19 | D135-1790 |  | -13d |
| D135-1880 |  | Terminate Elec Room CRAH - D110 | 1d | 2026-10-19 | 2026-10-19 | D135-1870 |  | -13d |
| D135-1920 |  | Megger MC Cable from MOD-01 to Mechanical Equipment - D110 | 1d | 2026-10-19 | 2026-10-19 | D135-1900 |  | -16d |
| D135-1930 |  | Megger MC Cable from MOD-02 to Mechanical Equipment - D110 | 1d | 2026-10-19 | 2026-10-19 | D135-1910 |  | -16d |
| D135-2020 |  | Terminate ATS Cable at Busplugs & ATSs - D110 | 2d | 2026-10-19 | 2026-10-20 | D135-2270 |  | -15d |
| D135-2290 |  | QC 2.2 checklist MPZ - D110 | 1d | 2026-10-19 | 2026-10-19 | D135-2120 |  | -12d |
| D135-1700 |  | Cable bus Install - D110 | 2d | 2026-10-20 | 2026-10-21 | D135-1690, D135-1680 |  | -19d |
| D135-1940 |  | Terminate MOD-01 - D110 | 1d | 2026-10-20 | 2026-10-20 | D135-1890, D135-1920 |  | -16d |
| D135-1950 |  | Terminate MOD-02 - D110 | 1d | 2026-10-20 | 2026-10-20 | D135-2300, D135-1930 |  | -16d |
| D135-1960 |  | Terminate at Mechanical Equipment - D110 | 1d | 2026-10-20 | 2026-10-20 | D135-1950 SS, D135-1940 SS |  | -16d |
| D135-2190 |  | QC 2.2 checklist Elec Room CRAH - D110 | 1d | 2026-10-20 | 2026-10-20 | D135-1880 |  | -13d |

| ID | WBS | Task | Duration | Start | Finish | Predecessors | Complete | Total float |
| --- | --- | --- | --- | --- | --- | --- | --- | --- |
| D135-2250 |  | QC 2.2 checklist Chiller - D110 | 1d | 2026-10-20 | 2026-10-20 | D135-1800 |  | -13d |
| D135-1970 |  | Mechanical Equipment/Tray Grounding - D110 | 2d | 2026-10-21 | 2026-10-22 | D135-1960 |  | -16d |
| D135-2030 |  | ATS Lashing - D110 | 1d | 2026-10-21 | 2026-10-21 | D135-2020 |  | -15d |
| D135-2200 |  | QC 2.2 Mechanical Equipment - D110 | 1d | 2026-10-21 | 2026-10-21 | D135-1960 |  | -14d |
| D135-1710 |  | Cable pulled to A & P Xfmrs - D110 | 1d | 2026-10-22 | 2026-10-22 | D135-1700 |  | -19d |
| D135-2170 |  | QC 2.2 checklist ATSs - D110 | 1d | 2026-10-22 | 2026-10-22 | D135-2030 |  | -15d |
| D135-2280 |  | QC 2.2 checklist Busplugs - D110 | 1d | 2026-10-22 | 2026-10-22 | D135-2170 SS |  | -15d |
| D135-1720 |  | Megger Cable Bus Cable - D110 | 1d | 2026-10-23 | 2026-10-23 | D135-1710 |  | -19d |
| D135-1730 |  | Cable Bus inspection and covers - D110 | 1d | 2026-10-23 | 2026-10-23 | D135-1720 SS |  | -17d |
| D135-2150 |  | QC 2.2 checklist MOD-01 - D110 | 1d | 2026-10-23 | 2026-10-23 | D135-1970 |  | -16d |
| D135-2160 |  | QC 2.2 checklist MOD-02 - D110 | 1d | 2026-10-23 | 2026-10-23 | D135-1970 |  | -16d |
| D135-1740 |  | Terminations at Xfmrs - D110 | 2d | 2026-10-24 | 2026-10-26 | D135-1720 |  | -19d |
| D135-1750 |  | Terminations at SWD - D110 | 2d | 2026-10-24 | 2026-10-26 | D135-1720 |  | -19d |
| D135-2220 |  | QC 2.2 checklist SWD - D110 | 1d | 2026-10-27 | 2026-10-27 | D135-1730, D135-2140, D135-1750 |  | -19d |
| D135-2240 |  | QC 2.2 checklist XFMR - D110 | 1d | 2026-10-27 | 2026-10-27 | D135-1740 |  | -19d |
| D135-2230 |  | Ready for FTE - D110 | 1d | 2026-10-28 | 2026-10-28 | D135-2290, D135-2280, D135-2250, D135-2240, D135-2220, D135-2210, D135-2200, D135-2190, D135-2180, D135-2170, D135-2160, D135-2150 |  | -19d |
|  | 5 | **E110** |  | 2026-09-30 | 2026-10-28 |  |  |  |
| E135-1980 |  | Busduct installed - E110 | 1d | 2026-09-30 A | 2026-09-30 A | D135-1980 | 100% |  |
| E135-1990 |  | Busplugs/Tap Boxes installed - E110 | 1d | 2026-10-01 A | 2026-10-01 A | E135-1980 | 100% |  |
| E135-2050 |  | Conduit from UPS to VFD - E110 | 1d | 2026-10-01 A | 2026-10-01 A | E135-2040 | 100% |  |
| E135-1660 |  | Set Skid - E110 | 1d | 2026-10-02 A | 2026-10-02 A | E135-1990, E135-1980, D135-1660 | 100% |  |
| E135-1770 |  | Chiller feed box and conduit complete - E110 | 2d | 2026-10-02 A | 2026-10-15 | E135-1670 SS, E135-1660 SS |  | -13d |
| E135-2040 |  | Mount VFD Stand and VFD - E110 | 1d | 2026-10-03 A | 2026-10-03 A | E135-1660 | 100% |  |
| E135-1670 |  | Set MODs - E110 | 2d | 2026-10-14 | 2026-10-15 | E135-1660 SS |  | -16d |
| E135-1680 |  | Cable bus Support installed - E110 | 2d | 2026-10-14 | 2026-10-15 | E135-1660 SS |  | -16d |
| E135-1690 |  | SWD top covers cut out - E110 | 5d | 2026-10-14 | 2026-10-19 | E135-1660 |  | -19d |
| E135-1760 |  | Finish Cable Tray to Skid - E110 | 2d | 2026-10-14 | 2026-10-15 | E135-1660 |  | -15d |
| E135-2000 |  | Install conduit from Busplug to ATSs - E110 | 2d | 2026-10-14 | 2026-10-15 | E135-1660 |  | -15d |
| E135-2060 |  | Pull Cable from UPS to VFD - E110 | 1d | 2026-10-14 | 2026-10-14 | E135-2050 |  | -11d |
| E135-2090 |  | Mount MPZ - E110 | 1d | 2026-10-14 | 2026-10-14 | E135-1660 |  | -12d |
| E135-2260 |  | Electrical Room CRAH Set - E110 | 1d | 2026-10-14 | 2026-10-14 | E135-1660 |  | -13d |
| E135-1850 |  | Finish Conduit to Elec Room CRAH - E110 | 1d | 2026-10-15 | 2026-10-15 | E135-2260 |  | -13d |
| E135-2070 |  | Megger Cable from UPS to VFD - E110 | 1d | 2026-10-15 | 2026-10-15 | E135-2060 |  | -11d |
| E135-2100 |  | Penetrate MC Cable into MPZ - E110 | 1d | 2026-10-15 | 2026-10-15 | E135-2090 |  | -12d |
| E135-2130 |  | Terminate Cables in VFD - E110 | 1d | 2026-10-15 | 2026-10-15 | E135-2070 SS |  | -10d |
| E135-1780 |  | Pull Chiller wire - E110 | 1d | 2026-10-16 | 2026-10-16 | E135-1770, E135-1660 |  | -13d |
| E135-1810 |  | Penetrate MC into SWD - E110 | 1d | 2026-10-16 | 2026-10-16 | E135-1760 |  | -15d |
| E135-1820 |  | Penetrat MC into UPS - E110 | 1d | 2026-10-16 | 2026-10-16 | E135-1760 |  | -15d |
| E135-1830 |  | Penetrate MC into MOD-01 - E110 | 1d | 2026-10-16 | 2026-10-16 | E135-1670 |  | -15d |
| E135-1840 |  | Penetrate MC into MOD-02 - E110 | 1d | 2026-10-16 | 2026-10-16 | E135-1670 |  | -15d |
| E135-1860 |  | Pull Cable to Elec Room CRAH - E110 | 1d | 2026-10-16 | 2026-10-16 | E135-1850 |  | -13d |
| E135-1900 |  | Pull MC from MOD-01 to Mechanical Equipment - E110 | 2d | 2026-10-16 | 2026-10-17 | E135-1670 |  | -16d |
| E135-1910 |  | Pull MC from MOD-02 to Mechanical Equipment - E110 | 2d | 2026-10-16 | 2026-10-17 | E135-1670 |  | -16d |
| E135-2010 |  | Pull ATS Cable - E110 | 1d | 2026-10-16 | 2026-10-16 | E135-2000 |  | -15d |
| E135-2080 |  | Terminate Cables in UPS - E110 | 1d | 2026-10-16 | 2026-10-16 | E135-2070 |  | -11d |
| E135-2110 |  | Megger MPZ Cable - E110 | 1d | 2026-10-16 | 2026-10-16 | E135-2100 |  | -12d |
| E135-2140 |  | All Skid Grounding - E110 | 2d | 2026-10-16 | 2026-10-17 | E135-1760 |  | -12d |
| E135-2210 |  | QC 2.2 checklist VFD - E110 | 1d | 2026-10-16 | 2026-10-16 | E135-2130 |  | -10d |
| E135-1790 |  | Megger Chiller Cable - E110 | 1d | 2026-10-17 | 2026-10-17 | E135-1780 |  | -13d |
| E135-1870 |  | Megger MC Cable from Skid to Elec Room CRAH - E110 | 1d | 2026-10-17 | 2026-10-17 | E135-1860 |  | -13d |
| E135-1890 |  | Megger MC Cable from Skid to MOD - E110 | 1d | 2026-10-17 | 2026-10-17 | E135-1830, E135-1820, E135-1810 |  | -15d |
| E135-2120 |  | Terminate MC Feed at MPZ - E110 | 1d | 2026-10-17 | 2026-10-17 | E135-2110 |  | -12d |
| E135-2180 |  | QC 2.2 checklist UPS - E110 | 1d | 2026-10-17 | 2026-10-17 | E135-2080 |  | -11d |
| E135-2270 |  | Megger Cable at ATS - E110 | 1d | 2026-10-17 | 2026-10-17 | E135-2010 |  | -15d |
| E135-2300 |  | Megger MC Cable from UPS to MOD - E110 | 1d | 2026-10-17 | 2026-10-17 | E135-1840 |  | -15d |
| E135-1800 |  | Terminations at Chiller - E110 | 1d | 2026-10-19 | 2026-10-19 | E135-1790 |  | -13d |
| E135-1880 |  | Terminate Elec Room CRAH - E110 | 1d | 2026-10-19 | 2026-10-19 | E135-1870 |  | -13d |
| E135-1920 |  | Megger MC Cable from MOD-01 to Mechanical Equipment - E110 | 1d | 2026-10-19 | 2026-10-19 | E135-1900 |  | -16d |
| E135-1930 |  | Megger MC Cable from MOD-02 to Mechanical Equipment - E110 | 1d | 2026-10-19 | 2026-10-19 | E135-1910 |  | -16d |
| E135-2020 |  | Terminate ATS Cable at Busplugs & ATSs - E110 | 2d | 2026-10-19 | 2026-10-20 | E135-2270 |  | -15d |
| E135-2290 |  | QC 2.2 checklist MPZ - E110 | 1d | 2026-10-19 | 2026-10-19 | E135-2120 |  | -12d |
| E135-1700 |  | Cable bus Install - E110 | 2d | 2026-10-20 | 2026-10-21 | E135-1690, E135-1680 |  | -19d |
| E135-1940 |  | Terminate MOD-01 - E110 | 1d | 2026-10-20 | 2026-10-20 | E135-1890, E135-1920 |  | -16d |
| E135-1950 |  | Terminate MOD-02 - E110 | 1d | 2026-10-20 | 2026-10-20 | E135-2300, E135-1930 |  | -16d |
| E135-1960 |  | Terminate at Mechanical Equipment - E110 | 1d | 2026-10-20 | 2026-10-20 | E135-1950 SS, E135-1940 SS |  | -16d |
| E135-2190 |  | QC 2.2 checklist Elec Room CRAH - E110 | 1d | 2026-10-20 | 2026-10-20 | E135-1880 |  | -13d |
| E135-2250 |  | QC 2.2 checklist Chiller - E110 | 1d | 2026-10-20 | 2026-10-20 | E135-1800 |  | -13d |
| E135-1970 |  | Mechanical Equipment/Tray Grounding - E110 | 2d | 2026-10-21 | 2026-10-22 | E135-1960 |  | -16d |
| E135-2030 |  | ATS Lashing - E110 | 1d | 2026-10-21 | 2026-10-21 | E135-2020 |  | -15d |
| E135-2200 |  | QC 2.2 Mechanical Equipment - E110 | 1d | 2026-10-21 | 2026-10-21 | E135-1960 |  | -14d |

| ID | WBS | Task | Duration | Start | Finish | Predecessors | Complete | Total float |
| --- | --- | --- | --- | --- | --- | --- | --- | --- |
| E135-1710 |  | Cable pulled to A & P Xfmrs - E110 | 1d | 2026-10-22 | 2026-10-22 | E135-1700 |  | -19d |
| E135-2170 |  | QC 2.2 checklist ATSs - E110 | 1d | 2026-10-22 | 2026-10-22 | E135-2030 |  | -15d |
| E135-2280 |  | QC 2.2 checklist Busplugs - E110 | 1d | 2026-10-22 | 2026-10-22 | E135-2170 SS |  | -15d |
| E135-1720 |  | Megger Cable Bus Cable - E110 | 1d | 2026-10-23 | 2026-10-23 | E135-1710 |  | -19d |
| E135-1730 |  | Cable Bus inspection and covers - E110 | 1d | 2026-10-23 | 2026-10-23 | E135-1720 SS |  | -17d |
| E135-2150 |  | QC 2.2 checklist MOD-01 - E110 | 1d | 2026-10-23 | 2026-10-23 | E135-1970 |  | -16d |
| E135-2160 |  | QC 2.2 checklist MOD-02 - E110 | 1d | 2026-10-23 | 2026-10-23 | E135-1970 |  | -16d |
| E135-1740 |  | Terminations at Xfmrs - E110 | 2d | 2026-10-24 | 2026-10-26 | E135-1720 |  | -19d |
| E135-1750 |  | Terminations at SWD - E110 | 2d | 2026-10-24 | 2026-10-26 | E135-1720 |  | -19d |
| E135-2220 |  | QC 2.2 checklist SWD - E110 | 1d | 2026-10-27 | 2026-10-27 | E135-1730, E135-2140, E135-1750 |  | -19d |
| E135-2240 |  | QC 2.2 checklist XFMR - E110 | 1d | 2026-10-27 | 2026-10-27 | E135-1740 |  | -19d |
| E135-2230 |  | Ready for FTE - E110 | 1d | 2026-10-28 | 2026-10-28 | E135-2290, E135-2280, E135-2250, E135-2240, E135-2220, E135-2210, E135-2200, E135-2190, E135-2180, E135-2170, E135-2160, E135-2150 |  | -19d |
|  | 6 | **F110** |  | 2026-09-30 | 2026-10-28 |  |  |  |
| F135-1980 |  | Busduct installed - F110 | 1d | 2026-09-30 A | 2026-09-30 A | E135-1980 SS | 100% |  |
| F135-1990 |  | Busplugs/Tap Boxes installed - F110 | 1d | 2026-10-01 A | 2026-10-01 A | F135-1980 | 100% |  |
| F135-2050 |  | Conduit from UPS to VFD - F110 | 1d | 2026-10-01 A | 2026-10-01 A | F135-2040 | 100% |  |
| F135-1660 |  | Set Skid - F110 | 1d | 2026-10-02 A | 2026-10-02 A | F135-1990, F135-1980, E135-1660 SS | 100% |  |
| F135-1770 |  | Chiller feed box and conduit complete - F110 | 2d | 2026-10-02 A | 2026-10-15 | F135-1670 SS, F135-1660 SS |  | -13d |
| F135-2040 |  | Mount VFD Stand and VFD - F110 | 1d | 2026-10-03 A | 2026-10-03 A | F135-1660 | 100% |  |
| F135-1670 |  | Set MODs - F110 | 2d | 2026-10-14 | 2026-10-15 | F135-1660 SS |  | -16d |
| F135-1680 |  | Cable bus Support installed - F110 | 2d | 2026-10-14 | 2026-10-15 | F135-1660 SS |  | -16d |
| F135-1690 |  | SWD top covers cut out - F110 | 5d | 2026-10-14 | 2026-10-19 | F135-1660 |  | -19d |
| F135-1760 |  | Finish Cable Tray to Skid - F110 | 2d | 2026-10-14 | 2026-10-15 | F135-1660 |  | -15d |
| F135-2000 |  | Install conduit from Busplug to ATSs - F110 | 2d | 2026-10-14 | 2026-10-15 | F135-1660 |  | -15d |
| F135-2060 |  | Pull Cable from UPS to VFD - F110 | 1d | 2026-10-14 | 2026-10-14 | F135-2050 |  | -11d |
| F135-2090 |  | Mount MPZ - F110 | 1d | 2026-10-14 | 2026-10-14 | F135-1660 |  | -12d |
| F135-2260 |  | Electrical Room CRAH Set - F110 | 1d | 2026-10-14 | 2026-10-14 | F135-1660 |  | -13d |
| F135-1850 |  | Finish Conduit to Elec Room CRAH - F110 | 1d | 2026-10-15 | 2026-10-15 | F135-2260 |  | -13d |
| F135-2070 |  | Megger Cable from UPS to VFD - F110 | 1d | 2026-10-15 | 2026-10-15 | F135-2060 |  | -11d |
| F135-2100 |  | Penetrate MC Cable into MPZ - F110 | 1d | 2026-10-15 | 2026-10-15 | F135-2090 |  | -12d |
| F135-2130 |  | Terminate Cables in VFD - F110 | 1d | 2026-10-15 | 2026-10-15 | F135-2070 SS |  | -10d |
| F135-1780 |  | Pull Chiller wire - F110 | 1d | 2026-10-16 | 2026-10-16 | F135-1770, F135-1660 |  | -13d |
| F135-1810 |  | Penetrate MC into SWD - F110 | 1d | 2026-10-16 | 2026-10-16 | F135-1760 |  | -15d |
| F135-1820 |  | Penetrat MC into UPS - F110 | 1d | 2026-10-16 | 2026-10-16 | F135-1760 |  | -15d |
| F135-1830 |  | Penetrate MC into MOD-01 - F110 | 1d | 2026-10-16 | 2026-10-16 | F135-1670 |  | -15d |
| F135-1840 |  | Penetrate MC into MOD-02 - F110 | 1d | 2026-10-16 | 2026-10-16 | F135-1670 |  | -15d |
| F135-1860 |  | Pull Cable to Elec Room CRAH - F110 | 1d | 2026-10-16 | 2026-10-16 | F135-1850 |  | -13d |
| F135-1900 |  | Pull MC from MOD-01 to Mechanical Equipment - F110 | 2d | 2026-10-16 | 2026-10-17 | F135-1670 |  | -16d |
| F135-1910 |  | Pull MC from MOD-02 to Mechanical Equipment - F110 | 2d | 2026-10-16 | 2026-10-17 | F135-1670 |  | -16d |
| F135-2010 |  | Pull ATS Cable - F110 | 1d | 2026-10-16 | 2026-10-16 | F135-2000 |  | -15d |
| F135-2080 |  | Terminate Cables in UPS - F110 | 1d | 2026-10-16 | 2026-10-16 | F135-2070 |  | -11d |
| F135-2110 |  | Megger MPZ Cable - F110 | 1d | 2026-10-16 | 2026-10-16 | F135-2100 |  | -12d |
| F135-2140 |  | All Skid Grounding - F110 | 2d | 2026-10-16 | 2026-10-17 | F135-1760 |  | -12d |
| F135-2210 |  | QC 2.2 checklist VFD - F110 | 1d | 2026-10-16 | 2026-10-16 | F135-2130 |  | -10d |
| F135-1790 |  | Megger Chiller Cable - F110 | 1d | 2026-10-17 | 2026-10-17 | F135-1780 |  | -13d |
| F135-1870 |  | Megger MC Cable from Skid to Elec Room CRAH - F110 | 1d | 2026-10-17 | 2026-10-17 | F135-1860 |  | -13d |
| F135-1890 |  | Megger MC Cable from Skid to MOD - F110 | 1d | 2026-10-17 | 2026-10-17 | F135-1830, F135-1820, F135-1810 |  | -15d |
| F135-2120 |  | Terminate MC Feed at MPZ - F110 | 1d | 2026-10-17 | 2026-10-17 | F135-2110 |  | -12d |
| F135-2180 |  | QC 2.2 checklist UPS - F110 | 1d | 2026-10-17 | 2026-10-17 | F135-2080 |  | -11d |
| F135-2270 |  | Megger Cable at ATS - F110 | 1d | 2026-10-17 | 2026-10-17 | F135-2010 |  | -15d |
| F135-2300 |  | Megger MC Cable from UPS to MOD - F110 | 1d | 2026-10-17 | 2026-10-17 | F135-1840 |  | -15d |
| F135-1800 |  | Terminations at Chiller - F110 | 1d | 2026-10-19 | 2026-10-19 | F135-1790 |  | -13d |
| F135-1880 |  | Terminate Elec Room CRAH - F110 | 1d | 2026-10-19 | 2026-10-19 | F135-1870 |  | -13d |
| F135-1920 |  | Megger MC Cable from MOD-01 to Mechanical Equipment - F110 | 1d | 2026-10-19 | 2026-10-19 | F135-1900 |  | -16d |
| F135-1930 |  | Megger MC Cable from MOD-02 to Mechanical Equipment - F110 | 1d | 2026-10-19 | 2026-10-19 | F135-1910 |  | -16d |
| F135-2020 |  | Terminate ATS Cable at Busplugs & ATSs - F110 | 2d | 2026-10-19 | 2026-10-20 | F135-2270 |  | -15d |
| F135-2290 |  | QC 2.2 checklist MPZ - F110 | 1d | 2026-10-19 | 2026-10-19 | F135-2120 |  | -12d |
| F135-1700 |  | Cable bus Install - F110 | 2d | 2026-10-20 | 2026-10-21 | F135-1690, F135-1680 |  | -19d |
| F135-1940 |  | Terminate MOD-01 - F110 | 1d | 2026-10-20 | 2026-10-20 | F135-1890, F135-1920 |  | -16d |
| F135-1950 |  | Terminate MOD-02 - F110 | 1d | 2026-10-20 | 2026-10-20 | F135-2300, F135-1930 |  | -16d |
| F135-1960 |  | Terminate at Mechanical Equipment - F110 | 1d | 2026-10-20 | 2026-10-20 | F135-1950 SS, F135-1940 SS |  | -16d |
| F135-2190 |  | QC 2.2 checklist Elec Room CRAH - F110 | 1d | 2026-10-20 | 2026-10-20 | F135-1880 |  | -13d |
| F135-2250 |  | QC 2.2 checklist Chiller - F110 | 1d | 2026-10-20 | 2026-10-20 | F135-1800 |  | -13d |
| F135-1970 |  | Mechanical Equipment/Tray Grounding - F110 | 2d | 2026-10-21 | 2026-10-22 | F135-1960 |  | -16d |
| F135-2030 |  | ATS Lashing - F110 | 1d | 2026-10-21 | 2026-10-21 | F135-2020 |  | -15d |
| F135-2200 |  | QC 2.2 Mechanical Equipment - F110 | 1d | 2026-10-21 | 2026-10-21 | F135-1960 |  | -14d |
| F135-1710 |  | Cable pulled to A & P Xfmrs - F110 | 1d | 2026-10-22 | 2026-10-22 | F135-1700 |  | -19d |
| F135-2170 |  | QC 2.2 checklist ATSs - F110 | 1d | 2026-10-22 | 2026-10-22 | F135-2030 |  | -15d |
| F135-2280 |  | QC 2.2 checklist Busplugs - F110 | 1d | 2026-10-22 | 2026-10-22 | F135-2170 SS |  | -15d |
| F135-1720 |  | Megger Cable Bus Cable - F110 | 1d | 2026-10-23 | 2026-10-23 | F135-1710 |  | -19d |

| ID | WBS | Task | Duration | Start | Finish | Predecessors | Complete | Total float |
| --- | --- | --- | --- | --- | --- | --- | --- | --- |
| F135-1730 |  | Cable Bus inspection and covers - F110 | 1d | 2026-10-23 | 2026-10-23 | F135-1720 SS |  | -17d |
| F135-2150 |  | QC 2.2 checklist MOD-01 - F110 | 1d | 2026-10-23 | 2026-10-23 | F135-1970 |  | -16d |
| F135-2160 |  | QC 2.2 checklist MOD-02 - F110 | 1d | 2026-10-23 | 2026-10-23 | F135-1970 |  | -16d |
| F135-1740 |  | Terminations at Xfmrs - F110 | 2d | 2026-10-24 | 2026-10-26 | F135-1720 |  | -19d |
| F135-1750 |  | Terminations at SWD - F110 | 2d | 2026-10-24 | 2026-10-26 | F135-1720 |  | -19d |
| F135-2220 |  | QC 2.2 checklist SWD - F110 | 1d | 2026-10-27 | 2026-10-27 | F135-1730, F135-2140, F135-1750 |  | -19d |
| F135-2240 |  | QC 2.2 checklist XFMR - F110 | 1d | 2026-10-27 | 2026-10-27 | F135-1740 |  | -19d |
| F135-2230 |  | Ready for FTE - F110 | 1d | 2026-10-28 | 2026-10-28 | F135-2290, F135-2280, F135-2250, F135-2240, F135-2220, F135-2210, F135-2200, F135-2190, F135-2180, F135-2170, F135-2160, F135-2150 |  | -19d |
|  | 7 | **G110** |  | 2026-09-30 | 2026-10-28 |  |  |  |
| G135-1980 |  | Busduct installed - G110 | 1d | 2026-09-30 A | 2026-09-30 A | F135-1980 SS | 100% |  |
| G135-1990 |  | Busplugs/Tap Boxes installed - G110 | 1d | 2026-10-01 A | 2026-10-01 A | G135-1980 | 100% |  |
| G135-2050 |  | Conduit from UPS to VFD - G110 | 1d | 2026-10-01 A | 2026-10-01 A | G135-2040 | 100% |  |
| G135-1660 |  | Set Skid - G110 | 1d | 2026-10-02 A | 2026-10-02 A | G135-1990, G135-1980, F135-1660 SS | 100% |  |
| G135-1770 |  | Chiller feed box and conduit complete - G110 | 2d | 2026-10-02 A | 2026-10-15 | G135-1670 SS, G135-1660 SS |  | -13d |
| G135-2040 |  | Mount VFD Stand and VFD - G110 | 1d | 2026-10-03 A | 2026-10-03 A | G135-1660 | 100% |  |
| G135-1670 |  | Set MODs - G110 | 2d | 2026-10-14 | 2026-10-15 | G135-1660 SS |  | -16d |
| G135-1680 |  | Cable bus Support installed - G110 | 2d | 2026-10-14 | 2026-10-15 | G135-1660 SS |  | -16d |
| G135-1690 |  | SWD top covers cut out - G110 | 5d | 2026-10-14 | 2026-10-19 | G135-1660 |  | -19d |
| G135-1760 |  | Finish Cable Tray to Skid - G110 | 2d | 2026-10-14 | 2026-10-15 | G135-1660 |  | -15d |
| G135-2000 |  | Install conduit from Busplug to ATSs - G110 | 2d | 2026-10-14 | 2026-10-15 | G135-1660 |  | -15d |
| G135-2060 |  | Pull Cable from UPS to VFD - G110 | 1d | 2026-10-14 | 2026-10-14 | G135-2050 |  | -11d |
| G135-2090 |  | Mount MPZ - G110 | 1d | 2026-10-14 | 2026-10-14 | G135-1660 |  | -12d |
| G135-2260 |  | Electrical Room CRAH Set - G110 | 1d | 2026-10-14 | 2026-10-14 | G135-1660 |  | -13d |
| G135-1850 |  | Finish Conduit to Elec Room CRAH - G110 | 1d | 2026-10-15 | 2026-10-15 | G135-2260 |  | -13d |
| G135-2070 |  | Megger Cable from UPS to VFD - G110 | 1d | 2026-10-15 | 2026-10-15 | G135-2060 |  | -11d |
| G135-2100 |  | Penetrate MC Cable into MPZ - G110 | 1d | 2026-10-15 | 2026-10-15 | G135-2090 |  | -12d |
| G135-2130 |  | Terminate Cables in VFD - G110 | 1d | 2026-10-15 | 2026-10-15 | G135-2070 SS |  | -10d |
| G135-1780 |  | Pull Chiller wire - G110 | 1d | 2026-10-16 | 2026-10-16 | G135-1770, G135-1660 |  | -13d |
| G135-1810 |  | Penetrate MC into SWD - G110 | 1d | 2026-10-16 | 2026-10-16 | G135-1760 |  | -15d |
| G135-1820 |  | Penetrat MC into UPS - G110 | 1d | 2026-10-16 | 2026-10-16 | G135-1760 |  | -15d |
| G135-1830 |  | Penetrate MC into MOD-01 - G110 | 1d | 2026-10-16 | 2026-10-16 | G135-1670 |  | -15d |
| G135-1840 |  | Penetrate MC into MOD-02 - G110 | 1d | 2026-10-16 | 2026-10-16 | G135-1670 |  | -15d |
| G135-1860 |  | Pull Cable to Elec Room CRAH - G110 | 1d | 2026-10-16 | 2026-10-16 | G135-1850 |  | -13d |
| G135-1900 |  | Pull MC from MOD-01 to Mechanical Equipment - G110 | 2d | 2026-10-16 | 2026-10-17 | G135-1670 |  | -16d |
| G135-1910 |  | Pull MC from MOD-02 to Mechanical Equipment - G110 | 2d | 2026-10-16 | 2026-10-17 | G135-1670 |  | -16d |
| G135-2010 |  | Pull ATS Cable - G110 | 1d | 2026-10-16 | 2026-10-16 | G135-2000 |  | -15d |
| G135-2080 |  | Terminate Cables in UPS - G110 | 1d | 2026-10-16 | 2026-10-16 | G135-2070 |  | -11d |
| G135-2110 |  | Megger MPZ Cable - G110 | 1d | 2026-10-16 | 2026-10-16 | G135-2100 |  | -12d |
| G135-2140 |  | All Skid Grounding - G110 | 2d | 2026-10-16 | 2026-10-17 | G135-1760 |  | -12d |
| G135-2210 |  | QC 2.2 checklist VFD - G110 | 1d | 2026-10-16 | 2026-10-16 | G135-2130 |  | -10d |
| G135-1790 |  | Megger Chiller Cable - G110 | 1d | 2026-10-17 | 2026-10-17 | G135-1780 |  | -13d |
| G135-1870 |  | Megger MC Cable from Skid to Elec Room CRAH - G110 | 1d | 2026-10-17 | 2026-10-17 | G135-1860 |  | -13d |
| G135-1890 |  | Megger MC Cable from Skid to MOD - G110 | 1d | 2026-10-17 | 2026-10-17 | G135-1830, G135-1820, G135-1810 |  | -15d |
| G135-2120 |  | Terminate MC Feed at MPZ - G110 | 1d | 2026-10-17 | 2026-10-17 | G135-2110 |  | -12d |
| G135-2180 |  | QC 2.2 checklist UPS - G110 | 1d | 2026-10-17 | 2026-10-17 | G135-2080 |  | -11d |
| G135-2270 |  | Megger Cable at ATS - G110 | 1d | 2026-10-17 | 2026-10-17 | G135-2010 |  | -15d |
| G135-2300 |  | Megger MC Cable from UPS to MOD - G110 | 1d | 2026-10-17 | 2026-10-17 | G135-1840 |  | -15d |
| G135-1800 |  | Terminations at Chiller - G110 | 1d | 2026-10-19 | 2026-10-19 | G135-1790 |  | -13d |
| G135-1880 |  | Terminate Elec Room CRAH - G110 | 1d | 2026-10-19 | 2026-10-19 | G135-1870 |  | -13d |
| G135-1920 |  | Megger MC Cable from MOD-01 to Mechanical Equipment - G110 | 1d | 2026-10-19 | 2026-10-19 | G135-1900 |  | -16d |
| G135-1930 |  | Megger MC Cable from MOD-02 to Mechanical Equipment - G110 | 1d | 2026-10-19 | 2026-10-19 | G135-1910 |  | -16d |
| G135-2020 |  | Terminate ATS Cable at Busplugs & ATSs - G110 | 2d | 2026-10-19 | 2026-10-20 | G135-2270 |  | -15d |
| G135-2290 |  | QC 2.2 checklist MPZ - G110 | 1d | 2026-10-19 | 2026-10-19 | G135-2120 |  | -12d |
| G135-1700 |  | Cable bus Install - G110 | 2d | 2026-10-20 | 2026-10-21 | G135-1690, G135-1680 |  | -19d |
| G135-1940 |  | Terminate MOD-01 - G110 | 1d | 2026-10-20 | 2026-10-20 | G135-1890, G135-1920 |  | -16d |
| G135-1950 |  | Terminate MOD-02 - G110 | 1d | 2026-10-20 | 2026-10-20 | G135-2300, G135-1930 |  | -16d |
| G135-1960 |  | Terminate at Mechanical Equipment - G110 | 1d | 2026-10-20 | 2026-10-20 | G135-1950 SS, G135-1940 SS |  | -16d |
| G135-2190 |  | QC 2.2 checklist Elec Room CRAH - G110 | 1d | 2026-10-20 | 2026-10-20 | G135-1880 |  | -13d |
| G135-2250 |  | QC 2.2 checklist Chiller - G110 | 1d | 2026-10-20 | 2026-10-20 | G135-1800 |  | -13d |
| G135-1970 |  | Mechanical Equipment/Tray Grounding - G110 | 2d | 2026-10-21 | 2026-10-22 | G135-1960 |  | -16d |
| G135-2030 |  | ATS Lashing - G110 | 1d | 2026-10-21 | 2026-10-21 | G135-2020 |  | -15d |
| G135-2200 |  | QC 2.2 Mechanical Equipment - G110 | 1d | 2026-10-21 | 2026-10-21 | G135-1960 |  | -14d |
| G135-1710 |  | Cable pulled to A & P Xfmrs - G110 | 1d | 2026-10-22 | 2026-10-22 | G135-1700 |  | -19d |
| G135-2170 |  | QC 2.2 checklist ATSs - G110 | 1d | 2026-10-22 | 2026-10-22 | G135-2030 |  | -15d |
| G135-2280 |  | QC 2.2 checklist Busplugs - G110 | 1d | 2026-10-22 | 2026-10-22 | G135-2170 SS |  | -15d |
| G135-1720 |  | Megger Cable Bus Cable - G110 | 1d | 2026-10-23 | 2026-10-23 | G135-1710 |  | -19d |
| G135-1730 |  | Cable Bus inspection and covers - G110 | 1d | 2026-10-23 | 2026-10-23 | G135-1720 SS |  | -17d |
| G135-2150 |  | QC 2.2 checklist MOD-01 - G110 | 1d | 2026-10-23 | 2026-10-23 | G135-1970 |  | -16d |
| G135-2160 |  | QC 2.2 checklist MOD-02 - G110 | 1d | 2026-10-23 | 2026-10-23 | G135-1970 |  | -16d |
| G135-1740 |  | Terminations at Xfmrs - G110 | 2d | 2026-10-24 | 2026-10-26 | G135-1720 |  | -19d |

| ID | WBS | Task | Duration | Start | Finish | Predecessors | Complete | Total float |
| --- | --- | --- | --- | --- | --- | --- | --- | --- |
| G135-1750 |  | Terminations at SWD - G110 | 2d | 2026-10-24 | 2026-10-26 | G135-1720 |  | -19d |
| G135-2220 |  | QC 2.2 checklist SWD - G110 | 1d | 2026-10-27 | 2026-10-27 | G135-1730, G135-2140, G135-1750 |  | -19d |
| G135-2240 |  | QC 2.2 checklist XFMR - G110 | 1d | 2026-10-27 | 2026-10-27 | G135-1740 |  | -19d |
| G135-2230 |  | Ready for FTE - G110 | 1d | 2026-10-28 | 2026-10-28 | G135-2290, G135-2280, G135-2250, G135-2240, G135-2220, G135-2210, G135-2200, G135-2190, G135-2180, G135-2170, G135-2160, G135-2150 |  | -19d |
|  | 9 | **H110** |  | 2026-09-30 | 2026-10-28 |  |  |  |
| H135-1980 |  | Busduct installed - H110 | 1d | 2026-09-30 A | 2026-09-30 A | G135-1980 SS | 100% |  |
| H135-1990 |  | Busplugs/Tap Boxes installed - H110 | 1d | 2026-10-01 A | 2026-10-01 A | H135-1980 | 100% |  |
| H135-2050 |  | Conduit from UPS to VFD - H110 | 1d | 2026-10-01 A | 2026-10-01 A | H135-2040 | 100% |  |
| H135-1660 |  | Set Skid - H110 | 1d | 2026-10-02 A | 2026-10-02 A | H135-1990, H135-1980, G135-1660 SS | 100% |  |
| H135-1770 |  | Chiller feed box and conduit complete - H110 | 2d | 2026-10-02 A | 2026-10-15 | H135-1670 SS, H135-1660 SS |  | -13d |
| H135-2040 |  | Mount VFD Stand and VFD - H110 | 1d | 2026-10-03 A | 2026-10-03 A | H135-1660 | 100% |  |
| H135-1670 |  | Set MODs - H110 | 2d | 2026-10-14 | 2026-10-15 | H135-1660 SS |  | -16d |
| H135-1680 |  | Cable bus Support installed - H110 | 2d | 2026-10-14 | 2026-10-15 | H135-1660 SS |  | -16d |
| H135-1690 |  | SWD top covers cut out - H110 | 5d | 2026-10-14 | 2026-10-19 | H135-1660 |  | -19d |
| H135-1760 |  | Finish Cable Tray to Skid - H110 | 2d | 2026-10-14 | 2026-10-15 | H135-1660 |  | -15d |
| H135-2000 |  | Install conduit from Busplug to ATSs - H110 | 2d | 2026-10-14 | 2026-10-15 | H135-1660 |  | -15d |
| H135-2060 |  | Pull Cable from UPS to VFD - H110 | 1d | 2026-10-14 | 2026-10-14 | H135-2050 |  | -11d |
| H135-2090 |  | Mount MPZ - H110 | 1d | 2026-10-14 | 2026-10-14 | H135-1660 |  | -12d |
| H135-2260 |  | Electrical Room CRAH Set - H110 | 1d | 2026-10-14 | 2026-10-14 | H135-1660 |  | -13d |
| H135-1850 |  | Finish Conduit to Elec Room CRAH - H110 | 1d | 2026-10-15 | 2026-10-15 | H135-2260 |  | -13d |
| H135-2070 |  | Megger Cable from UPS to VFD - H110 | 1d | 2026-10-15 | 2026-10-15 | H135-2060 |  | -11d |
| H135-2100 |  | Penetrate MC Cable into MPZ - H110 | 1d | 2026-10-15 | 2026-10-15 | H135-2090 |  | -12d |
| H135-2130 |  | Terminate Cables in VFD - H110 | 1d | 2026-10-15 | 2026-10-15 | H135-2070 SS |  | -10d |
| H135-1780 |  | Pull Chiller wire - H110 | 1d | 2026-10-16 | 2026-10-16 | H135-1770, H135-1660 |  | -13d |
| H135-1810 |  | Penetrate MC into SWD - H110 | 1d | 2026-10-16 | 2026-10-16 | H135-1760 |  | -15d |
| H135-1820 |  | Penetrat MC into UPS - H110 | 1d | 2026-10-16 | 2026-10-16 | H135-1760 |  | -15d |
| H135-1830 |  | Penetrate MC into MOD-01 - H110 | 1d | 2026-10-16 | 2026-10-16 | H135-1670 |  | -15d |
| H135-1840 |  | Penetrate MC into MOD-02 - H110 | 1d | 2026-10-16 | 2026-10-16 | H135-1670 |  | -15d |
| H135-1860 |  | Pull Cable to Elec Room CRAH - H110 | 1d | 2026-10-16 | 2026-10-16 | H135-1850 |  | -13d |
| H135-1900 |  | Pull MC from MOD-01 to Mechanical Equipment - H110 | 2d | 2026-10-16 | 2026-10-17 | H135-1670 |  | -16d |
| H135-1910 |  | Pull MC from MOD-02 to Mechanical Equipment - H110 | 2d | 2026-10-16 | 2026-10-17 | H135-1670 |  | -16d |
| H135-2010 |  | Pull ATS Cable - H110 | 1d | 2026-10-16 | 2026-10-16 | H135-2000 |  | -15d |
| H135-2080 |  | Terminate Cables in UPS - H110 | 1d | 2026-10-16 | 2026-10-16 | H135-2070 |  | -11d |
| H135-2110 |  | Megger MPZ Cable - H110 | 1d | 2026-10-16 | 2026-10-16 | H135-2100 |  | -12d |
| H135-2140 |  | All Skid Grounding - H110 | 2d | 2026-10-16 | 2026-10-17 | H135-1760 |  | -12d |
| H135-2210 |  | QC 2.2 checklist VFD - H110 | 1d | 2026-10-16 | 2026-10-16 | H135-2130 |  | -10d |
| H135-1790 |  | Megger Chiller Cable - H110 | 1d | 2026-10-17 | 2026-10-17 | H135-1780 |  | -13d |
| H135-1870 |  | Megger MC Cable from Skid to Elec Room CRAH - H110 | 1d | 2026-10-17 | 2026-10-17 | H135-1860 |  | -13d |
| H135-1890 |  | Megger MC Cable from Skid to MOD - H110 | 1d | 2026-10-17 | 2026-10-17 | H135-1830, H135-1820, H135-1810 |  | -15d |
| H135-2120 |  | Terminate MC Feed at MPZ - H110 | 1d | 2026-10-17 | 2026-10-17 | H135-2110 |  | -12d |
| H135-2180 |  | QC 2.2 checklist UPS - H110 | 1d | 2026-10-17 | 2026-10-17 | H135-2080 |  | -11d |
| H135-2270 |  | Megger Cable at ATS - H110 | 1d | 2026-10-17 | 2026-10-17 | H135-2010 |  | -15d |
| H135-2300 |  | Megger MC Cable from UPS to MOD - H110 | 1d | 2026-10-17 | 2026-10-17 | H135-1840 |  | -15d |
| H135-1800 |  | Terminations at Chiller - H110 | 1d | 2026-10-19 | 2026-10-19 | H135-1790 |  | -13d |
| H135-1880 |  | Terminate Elec Room CRAH - H110 | 1d | 2026-10-19 | 2026-10-19 | H135-1870 |  | -13d |
| H135-1920 |  | Megger MC Cable from MOD-01 to Mechanical Equipment - H110 | 1d | 2026-10-19 | 2026-10-19 | H135-1900 |  | -16d |
| H135-1930 |  | Megger MC Cable from MOD-02 to Mechanical Equipment - H110 | 1d | 2026-10-19 | 2026-10-19 | H135-1910 |  | -16d |
| H135-2020 |  | Terminate ATS Cable at Busplugs & ATSs - H110 | 2d | 2026-10-19 | 2026-10-20 | H135-2270 |  | -15d |
| H135-2290 |  | QC 2.2 checklist MPZ - H110 | 1d | 2026-10-19 | 2026-10-19 | H135-2120 |  | -12d |
| H135-1700 |  | Cable bus Install - H110 | 2d | 2026-10-20 | 2026-10-21 | H135-1690, H135-1680 |  | -19d |
| H135-1940 |  | Terminate MOD-01 - H110 | 1d | 2026-10-20 | 2026-10-20 | H135-1890, H135-1920 |  | -16d |
| H135-1950 |  | Terminate MOD-02 - H110 | 1d | 2026-10-20 | 2026-10-20 | H135-2300, H135-1930 |  | -16d |
| H135-1960 |  | Terminate at Mechanical Equipment - H110 | 1d | 2026-10-20 | 2026-10-20 | H135-1950 SS, H135-1940 SS |  | -16d |
| H135-2190 |  | QC 2.2 checklist Elec Room CRAH - H110 | 1d | 2026-10-20 | 2026-10-20 | H135-1880 |  | -13d |
| H135-2250 |  | QC 2.2 checklist Chiller - H110 | 1d | 2026-10-20 | 2026-10-20 | H135-1800 |  | -13d |
| H135-1970 |  | Mechanical Equipment/Tray Grounding - H110 | 2d | 2026-10-21 | 2026-10-22 | H135-1960 |  | -16d |
| H135-2030 |  | ATS Lashing - H110 | 1d | 2026-10-21 | 2026-10-21 | H135-2020 |  | -15d |
| H135-2200 |  | QC 2.2 Mechanical Equipment - H110 | 1d | 2026-10-21 | 2026-10-21 | H135-1960 |  | -14d |
| H135-1710 |  | Cable pulled to A & P Xfmrs - H110 | 1d | 2026-10-22 | 2026-10-22 | H135-1700 |  | -19d |
| H135-2170 |  | QC 2.2 checklist ATSs - H110 | 1d | 2026-10-22 | 2026-10-22 | H135-2030 |  | -15d |
| H135-2280 |  | QC 2.2 checklist Busplugs - H110 | 1d | 2026-10-22 | 2026-10-22 | H135-2170 SS |  | -15d |
| H135-1720 |  | Megger Cable Bus Cable - H110 | 1d | 2026-10-23 | 2026-10-23 | H135-1710 |  | -19d |
| H135-1730 |  | Cable Bus inspection and covers - H110 | 1d | 2026-10-23 | 2026-10-23 | H135-1720 SS |  | -17d |
| H135-2150 |  | QC 2.2 checklist MOD-01 - H110 | 1d | 2026-10-23 | 2026-10-23 | H135-1970 |  | -16d |
| H135-2160 |  | QC 2.2 checklist MOD-02 - H110 | 1d | 2026-10-23 | 2026-10-23 | H135-1970 |  | -16d |
| H135-1740 |  | Terminations at Xfmrs - H110 | 2d | 2026-10-24 | 2026-10-26 | H135-1720 |  | -19d |
| H135-1750 |  | Terminations at SWD - H110 | 2d | 2026-10-24 | 2026-10-26 | H135-1720 |  | -19d |
| H135-2220 |  | QC 2.2 checklist SWD - H110 | 1d | 2026-10-27 | 2026-10-27 | H135-1730, H135-2140, H135-1750 |  | -19d |
| H135-2240 |  | QC 2.2 checklist XFMR - H110 | 1d | 2026-10-27 | 2026-10-27 | H135-1740 |  | -19d |
| H135-2230 |  | Ready for FTE - H110 | 1d | 2026-10-28 | 2026-10-28 | H135-2290, H135-2280, H135-2250, H135-2240, H135-2220, H135-2210, H135-2200, H135-2190, H135-2180, H135-2170, H135-2160, H135-2150 |  | -19d |

| ID | WBS | Task | Duration | Start | Finish | Predecessors | Complete | Total float |
| --- | --- | --- | --- | --- | --- | --- | --- | --- |
|  | 8 | **J110** |  | 2026-10-01 | 2026-10-28 |  |  |  |
| J135-1980 |  | Busduct installed - J110 | 1d | 2026-10-01 A | 2026-10-01 A | H135-1980 | 100% |  |
| J135-2050 |  | Conduit from UPS to VFD - J110 | 1d | 2026-10-01 A | 2026-10-01 A | J135-2040 | 100% |  |
| J135-1990 |  | Busplugs/Tap Boxes installed - J110 | 1d | 2026-10-02 A | 2026-10-02 A | J135-1980 | 100% |  |
| J135-1660 |  | Set Skid - J110 | 1d | 2026-10-03 A | 2026-10-03 A | J135-1990, J135-1980, H135-1660 | 100% |  |
| J135-1770 |  | Chiller feed box and conduit complete - J110 | 2d | 2026-10-03 A | 2026-10-15 | J135-1670 SS, J135-1660 SS |  | -13d |
| J135-2040 |  | Mount VFD Stand and VFD - J110 | 1d | 2026-10-05 A | 2026-10-05 A | J135-1660 | 100% |  |
| J135-1670 |  | Set MODs - J110 | 2d | 2026-10-14 | 2026-10-15 | J135-1660 SS |  | -16d |
| J135-1680 |  | Cable bus Support installed - J110 | 2d | 2026-10-14 | 2026-10-15 | J135-1660 SS |  | -16d |
| J135-1690 |  | SWD top covers cut out - J110 | 5d | 2026-10-14 | 2026-10-19 | J135-1660 |  | -19d |
| J135-1760 |  | Finish Cable Tray to Skid - J110 | 2d | 2026-10-14 | 2026-10-15 | J135-1660 |  | -15d |
| J135-2000 |  | Install conduit from Busplug to ATSs - J110 | 2d | 2026-10-14 | 2026-10-15 | J135-1660 |  | -15d |
| J135-2060 |  | Pull Cable from UPS to VFD - J110 | 1d | 2026-10-14 | 2026-10-14 | J135-2050 |  | -11d |
| J135-2090 |  | Mount MPZ - J110 | 1d | 2026-10-14 | 2026-10-14 | J135-1660 |  | -12d |
| J135-2260 |  | Electrical Room CRAH Set - J110 | 1d | 2026-10-14 | 2026-10-14 | J135-1660 |  | -13d |
| J135-1850 |  | Finish Conduit to Elec Room CRAH - J110 | 1d | 2026-10-15 | 2026-10-15 | J135-2260 |  | -13d |
| J135-2070 |  | Megger Cable from UPS to VFD - J110 | 1d | 2026-10-15 | 2026-10-15 | J135-2060 |  | -11d |
| J135-2100 |  | Penetrate MC Cable into MPZ - J110 | 1d | 2026-10-15 | 2026-10-15 | J135-2090 |  | -12d |
| J135-2130 |  | Terminate Cables in VFD - J110 | 1d | 2026-10-15 | 2026-10-15 | J135-2070 SS |  | -10d |
| J135-1780 |  | Pull Chiller wire - J110 | 1d | 2026-10-16 | 2026-10-16 | J135-1770, J135-1660 |  | -13d |
| J135-1810 |  | Penetrate MC into SWD - J110 | 1d | 2026-10-16 | 2026-10-16 | J135-1760 |  | -15d |
| J135-1820 |  | Penetrat MC into UPS - J110 | 1d | 2026-10-16 | 2026-10-16 | J135-1760 |  | -15d |
| J135-1830 |  | Penetrate MC into MOD-01 - J110 | 1d | 2026-10-16 | 2026-10-16 | J135-1670 |  | -15d |
| J135-1840 |  | Penetrate MC into MOD-02 - J110 | 1d | 2026-10-16 | 2026-10-16 | J135-1670 |  | -15d |
| J135-1860 |  | Pull Cable to Elec Room CRAH - J110 | 1d | 2026-10-16 | 2026-10-16 | J135-1850 |  | -13d |
| J135-1900 |  | Pull MC from MOD-01 to Mechanical Equipment - J110 | 2d | 2026-10-16 | 2026-10-17 | J135-1670 |  | -16d |
| J135-1910 |  | Pull MC from MOD-02 to Mechanical Equipment - J110 | 2d | 2026-10-16 | 2026-10-17 | J135-1670 |  | -16d |
| J135-2010 |  | Pull ATS Cable - J110 | 1d | 2026-10-16 | 2026-10-16 | J135-2000 |  | -15d |
| J135-2080 |  | Terminate Cables in UPS - J110 | 1d | 2026-10-16 | 2026-10-16 | J135-2070 |  | -11d |
| J135-2110 |  | Megger MPZ Cable - J110 | 1d | 2026-10-16 | 2026-10-16 | J135-2100 |  | -12d |
| J135-2140 |  | All Skid Grounding - J110 | 2d | 2026-10-16 | 2026-10-17 | J135-1760 |  | -12d |
| J135-2210 |  | QC 2.2 checklist VFD - J110 | 1d | 2026-10-16 | 2026-10-16 | J135-2130 |  | -10d |
| J135-1790 |  | Megger Chiller Cable - J110 | 1d | 2026-10-17 | 2026-10-17 | J135-1780 |  | -13d |
| J135-1870 |  | Megger MC Cable from Skid to Elec Room CRAH - J110 | 1d | 2026-10-17 | 2026-10-17 | J135-1860 |  | -13d |
| J135-1890 |  | Megger MC Cable from Skid to MOD - J110 | 1d | 2026-10-17 | 2026-10-17 | J135-1830, J135-1820, J135-1810 |  | -15d |
| J135-2120 |  | Terminate MC Feed at MPZ - J110 | 1d | 2026-10-17 | 2026-10-17 | J135-2110 |  | -12d |
| J135-2180 |  | QC 2.2 checklist UPS - J110 | 1d | 2026-10-17 | 2026-10-17 | J135-2080 |  | -11d |
| J135-2270 |  | Megger Cable at ATS - J110 | 1d | 2026-10-17 | 2026-10-17 | J135-2010 |  | -15d |
| J135-2300 |  | Megger MC Cable from UPS to MOD - J110 | 1d | 2026-10-17 | 2026-10-17 | J135-1840 |  | -15d |
| J135-1800 |  | Terminations at Chiller - J110 | 1d | 2026-10-19 | 2026-10-19 | J135-1790 |  | -13d |
| J135-1880 |  | Terminate Elec Room CRAH - J110 | 1d | 2026-10-19 | 2026-10-19 | J135-1870 |  | -13d |
| J135-1920 |  | Megger MC Cable from MOD-01 to Mechanical Equipment - J110 | 1d | 2026-10-19 | 2026-10-19 | J135-1900 |  | -16d |
| J135-1930 |  | Megger MC Cable from MOD-02 to Mechanical Equipment - J110 | 1d | 2026-10-19 | 2026-10-19 | J135-1910 |  | -16d |
| J135-2020 |  | Terminate ATS Cable at Busplugs & ATSs - J110 | 2d | 2026-10-19 | 2026-10-20 | J135-2270 |  | -15d |
| J135-2290 |  | QC 2.2 checklist MPZ - J110 | 1d | 2026-10-19 | 2026-10-19 | J135-2120 |  | -12d |
| J135-1700 |  | Cable bus Install - J110 | 2d | 2026-10-20 | 2026-10-21 | J135-1690, J135-1680 |  | -19d |
| J135-1940 |  | Terminate MOD-01 - J110 | 1d | 2026-10-20 | 2026-10-20 | J135-1890, J135-1920 |  | -16d |
| J135-1950 |  | Terminate MOD-02 - J110 | 1d | 2026-10-20 | 2026-10-20 | J135-2300, J135-1930 |  | -16d |
| J135-1960 |  | Terminate at Mechanical Equipment - J110 | 1d | 2026-10-20 | 2026-10-20 | J135-1950 SS, J135-1940 SS |  | -16d |
| J135-2190 |  | QC 2.2 checklist Elec Room CRAH - J110 | 1d | 2026-10-20 | 2026-10-20 | J135-1880 |  | -13d |
| J135-2250 |  | QC 2.2 checklist Chiller - J110 | 1d | 2026-10-20 | 2026-10-20 | J135-1800 |  | -13d |
| J135-1970 |  | Mechanical Equipment/Tray Grounding - J110 | 2d | 2026-10-21 | 2026-10-22 | J135-1960 |  | -16d |
| J135-2030 |  | ATS Lashing - J110 | 1d | 2026-10-21 | 2026-10-21 | J135-2020 |  | -15d |
| J135-2200 |  | QC 2.2 Mechanical Equipment - J110 | 1d | 2026-10-21 | 2026-10-21 | J135-1960 |  | -14d |
| J135-1710 |  | Cable pulled to A & P Xfmrs - J110 | 1d | 2026-10-22 | 2026-10-22 | J135-1700 |  | -19d |
| J135-2170 |  | QC 2.2 checklist ATSs - J110 | 1d | 2026-10-22 | 2026-10-22 | J135-2030 |  | -15d |
| J135-2280 |  | QC 2.2 checklist Busplugs - J110 | 1d | 2026-10-22 | 2026-10-22 | J135-2170 SS |  | -15d |
| J135-1720 |  | Megger Cable Bus Cable - J110 | 1d | 2026-10-23 | 2026-10-23 | J135-1710 |  | -19d |
| J135-1730 |  | Cable Bus inspection and covers - J110 | 1d | 2026-10-23 | 2026-10-23 | J135-1720 SS |  | -17d |
| J135-2150 |  | QC 2.2 checklist MOD-01 - J110 | 1d | 2026-10-23 | 2026-10-23 | J135-1970 |  | -16d |
| J135-2160 |  | QC 2.2 checklist MOD-02 - J110 | 1d | 2026-10-23 | 2026-10-23 | J135-1970 |  | -16d |
| J135-1740 |  | Terminations at Xfmrs - J110 | 2d | 2026-10-24 | 2026-10-26 | J135-1720 |  | -19d |
| J135-1750 |  | Terminations at SWD - J110 | 2d | 2026-10-24 | 2026-10-26 | J135-1720 |  | -19d |
| J135-2220 |  | QC 2.2 checklist SWD - J110 | 1d | 2026-10-27 | 2026-10-27 | J135-1730, J135-2140, J135-1750 |  | -19d |
| J135-2240 |  | QC 2.2 checklist XFMR - J110 | 1d | 2026-10-27 | 2026-10-27 | J135-1740 |  | -19d |
| J135-2230 |  | Ready for FTE - J110 | 1d | 2026-10-28 | 2026-10-28 | J135-2290, J135-2280, J135-2250, J135-2240, J135-2220, J135-2210, J135-2200, J135-2190, J135-2180, J135-2170, J135-2160, J135-2150 |  | -19d |
|  | 10 | **K110** |  | 2026-10-01 | 2026-10-28 |  |  |  |
| K135-1980 |  | Busduct installed - K110 | 1d | 2026-10-01 A | 2026-10-01 A | J135-1980 SS | 100% |  |
| K135-2050 |  | Conduit from UPS to VFD - K110 | 1d | 2026-10-01 A | 2026-10-01 A | K135-2040 | 100% |  |
| K135-1990 |  | Busplugs/Tap Boxes installed - K110 | 1d | 2026-10-02 A | 2026-10-02 A | K135-1980 | 100% |  |

| ID | WBS | Task | Duration | Start | Finish | Predecessors | Complete | Total float |
| --- | --- | --- | --- | --- | --- | --- | --- | --- |
| K135-1660 |  | Set Skid - K110 | 1d | 2026-10-03 A | 2026-10-03 A | K135-1990, K135-1980, J135-1660 SS | 100% |  |
| K135-1770 |  | Chiller feed box and conduit complete - K110 | 2d | 2026-10-03 A | 2026-10-15 | K135-1670 SS, K135-1660 SS |  | -13d |
| K135-2040 |  | Mount VFD Stand and VFD - K110 | 1d | 2026-10-05 A | 2026-10-05 A | K135-1660 | 100% |  |
| K135-1670 |  | Set MODs - K110 | 2d | 2026-10-14 | 2026-10-15 | K135-1660 SS |  | -16d |
| K135-1680 |  | Cable bus Support installed - K110 | 2d | 2026-10-14 | 2026-10-15 | K135-1660 SS |  | -16d |
| K135-1690 |  | SWD top covers cut out - K110 | 5d | 2026-10-14 | 2026-10-19 | K135-1660 |  | -19d |
| K135-1760 |  | Finish Cable Tray to Skid - K110 | 2d | 2026-10-14 | 2026-10-15 | K135-1660 |  | -15d |
| K135-2000 |  | Install conduit from Busplug to ATSs - K110 | 2d | 2026-10-14 | 2026-10-15 | K135-1660 |  | -15d |
| K135-2060 |  | Pull Cable from UPS to VFD - K110 | 1d | 2026-10-14 | 2026-10-14 | K135-2050 |  | -11d |
| K135-2090 |  | Mount MPZ - K110 | 1d | 2026-10-14 | 2026-10-14 | K135-1660 |  | -12d |
| K135-2260 |  | Electrical Room CRAH Set - K110 | 1d | 2026-10-14 | 2026-10-14 | K135-1660 |  | -13d |
| K135-1850 |  | Finish Conduit to Elec Room CRAH - K110 | 1d | 2026-10-15 | 2026-10-15 | K135-2260 |  | -13d |
| K135-2070 |  | Megger Cable from UPS to VFD - K110 | 1d | 2026-10-15 | 2026-10-15 | K135-2060 |  | -11d |
| K135-2100 |  | Penetrate MC Cable into MPZ - K110 | 1d | 2026-10-15 | 2026-10-15 | K135-2090 |  | -12d |
| K135-2130 |  | Terminate Cables in VFD - K110 | 1d | 2026-10-15 | 2026-10-15 | K135-2070 SS |  | -10d |
| K135-1780 |  | Pull Chiller wire - K110 | 1d | 2026-10-16 | 2026-10-16 | K135-1770, K135-1660 |  | -13d |
| K135-1810 |  | Penetrate MC into SWD - K110 | 1d | 2026-10-16 | 2026-10-16 | K135-1760 |  | -15d |
| K135-1820 |  | Penetrat MC into UPS - K110 | 1d | 2026-10-16 | 2026-10-16 | K135-1760 |  | -15d |
| K135-1830 |  | Penetrate MC into MOD-01 - K110 | 1d | 2026-10-16 | 2026-10-16 | K135-1670 |  | -15d |
| K135-1840 |  | Penetrate MC into MOD-02 - K110 | 1d | 2026-10-16 | 2026-10-16 | K135-1670 |  | -15d |
| K135-1860 |  | Pull Cable to Elec Room CRAH - K110 | 1d | 2026-10-16 | 2026-10-16 | K135-1850 |  | -13d |
| K135-1900 |  | Pull MC from MOD-01 to Mechanical Equipment - K110 | 2d | 2026-10-16 | 2026-10-17 | K135-1670 |  | -16d |
| K135-1910 |  | Pull MC from MOD-02 to Mechanical Equipment - K110 | 2d | 2026-10-16 | 2026-10-17 | K135-1670 |  | -16d |
| K135-2010 |  | Pull ATS Cable - K110 | 1d | 2026-10-16 | 2026-10-16 | K135-2000 |  | -15d |
| K135-2080 |  | Terminate Cables in UPS - K110 | 1d | 2026-10-16 | 2026-10-16 | K135-2070 |  | -11d |
| K135-2110 |  | Megger MPZ Cable - K110 | 1d | 2026-10-16 | 2026-10-16 | K135-2100 |  | -12d |
| K135-2140 |  | All Skid Grounding - K110 | 2d | 2026-10-16 | 2026-10-17 | K135-1760 |  | -12d |
| K135-2210 |  | QC 2.2 checklist VFD - K110 | 1d | 2026-10-16 | 2026-10-16 | K135-2130 |  | -10d |
| K135-1790 |  | Megger Chiller Cable - K110 | 1d | 2026-10-17 | 2026-10-17 | K135-1780 |  | -13d |
| K135-1870 |  | Megger MC Cable from Skid to Elec Room CRAH - K110 | 1d | 2026-10-17 | 2026-10-17 | K135-1860 |  | -13d |
| K135-1890 |  | Megger MC Cable from Skid to MOD - K110 | 1d | 2026-10-17 | 2026-10-17 | K135-1830, K135-1820, K135-1810 |  | -15d |
| K135-2120 |  | Terminate MC Feed at MPZ - K110 | 1d | 2026-10-17 | 2026-10-17 | K135-2110 |  | -12d |
| K135-2180 |  | QC 2.2 checklist UPS - K110 | 1d | 2026-10-17 | 2026-10-17 | K135-2080 |  | -11d |
| K135-2270 |  | Megger Cable at ATS - K110 | 1d | 2026-10-17 | 2026-10-17 | K135-2010 |  | -15d |
| K135-2300 |  | Megger MC Cable from UPS to MOD - K110 | 1d | 2026-10-17 | 2026-10-17 | K135-1840 |  | -15d |
| K135-1800 |  | Terminations at Chiller - K110 | 1d | 2026-10-19 | 2026-10-19 | K135-1790 |  | -13d |
| K135-1880 |  | Terminate Elec Room CRAH - K110 | 1d | 2026-10-19 | 2026-10-19 | K135-1870 |  | -13d |
| K135-1920 |  | Megger MC Cable from MOD-01 to Mechanical Equipment - K110 | 1d | 2026-10-19 | 2026-10-19 | K135-1900 |  | -16d |
| K135-1930 |  | Megger MC Cable from MOD-02 to Mechanical Equipment - K110 | 1d | 2026-10-19 | 2026-10-19 | K135-1910 |  | -16d |
| K135-2020 |  | Terminate ATS Cable at Busplugs & ATSs - K110 | 2d | 2026-10-19 | 2026-10-20 | K135-2270 |  | -15d |
| K135-2290 |  | QC 2.2 checklist MPZ - K110 | 1d | 2026-10-19 | 2026-10-19 | K135-2120 |  | -12d |
| K135-1700 |  | Cable bus Install - K110 | 2d | 2026-10-20 | 2026-10-21 | K135-1690, K135-1680 |  | -19d |
| K135-1940 |  | Terminate MOD-01 - K110 | 1d | 2026-10-20 | 2026-10-20 | K135-1890, K135-1920 |  | -16d |
| K135-1950 |  | Terminate MOD-02 - K110 | 1d | 2026-10-20 | 2026-10-20 | K135-2300, K135-1930 |  | -16d |
| K135-1960 |  | Terminate at Mechanical Equipment - K110 | 1d | 2026-10-20 | 2026-10-20 | K135-1950 SS, K135-1940 SS |  | -16d |
| K135-2190 |  | QC 2.2 checklist Elec Room CRAH - K110 | 1d | 2026-10-20 | 2026-10-20 | K135-1880 |  | -13d |
| K135-2250 |  | QC 2.2 checklist Chiller - K110 | 1d | 2026-10-20 | 2026-10-20 | K135-1800 |  | -13d |
| K135-1970 |  | Mechanical Equipment/Tray Grounding - K110 | 2d | 2026-10-21 | 2026-10-22 | K135-1960 |  | -16d |
| K135-2030 |  | ATS Lashing - K110 | 1d | 2026-10-21 | 2026-10-21 | K135-2020 |  | -15d |
| K135-2200 |  | QC 2.2 Mechanical Equipment - K110 | 1d | 2026-10-21 | 2026-10-21 | K135-1960 |  | -14d |
| K135-1710 |  | Cable pulled to A & P Xfmrs - K110 | 1d | 2026-10-22 | 2026-10-22 | K135-1700 |  | -19d |
| K135-2170 |  | QC 2.2 checklist ATSs - K110 | 1d | 2026-10-22 | 2026-10-22 | K135-2030 |  | -15d |
| K135-2280 |  | QC 2.2 checklist Busplugs - K110 | 1d | 2026-10-22 | 2026-10-22 | K135-2170 SS |  | -15d |
| K135-1720 |  | Megger Cable Bus Cable - K110 | 1d | 2026-10-23 | 2026-10-23 | K135-1710 |  | -19d |
| K135-1730 |  | Cable Bus inspection and covers - K110 | 1d | 2026-10-23 | 2026-10-23 | K135-1720 SS |  | -17d |
| K135-2150 |  | QC 2.2 checklist MOD-01 - K110 | 1d | 2026-10-23 | 2026-10-23 | K135-1970 |  | -16d |
| K135-2160 |  | QC 2.2 checklist MOD-02 - K110 | 1d | 2026-10-23 | 2026-10-23 | K135-1970 |  | -16d |
| K135-1740 |  | Terminations at Xfmrs - K110 | 2d | 2026-10-24 | 2026-10-26 | K135-1720 |  | -19d |
| K135-1750 |  | Terminations at SWD - K110 | 2d | 2026-10-24 | 2026-10-26 | K135-1720 |  | -19d |
| K135-2220 |  | QC 2.2 checklist SWD - K110 | 1d | 2026-10-27 | 2026-10-27 | K135-1730, K135-2140, K135-1750 |  | -19d |
| K135-2240 |  | QC 2.2 checklist XFMR - K110 | 1d | 2026-10-27 | 2026-10-27 | K135-1740 |  | -19d |
| K135-2230 |  | Ready for FTE - K110 | 1d | 2026-10-28 | 2026-10-28 | K135-2290, K135-2280, K135-2250, K135-2240, K135-2220, K135-2210, K135-2200, K135-2190, K135-2180, K135-2170, K135-2160, K135-2150 |  | -19d |
|  | 11 | **R110** |  | 2026-10-01 | 2026-11-02 |  |  |  |
| R135-2120 |  | Conduit from UPS to VFD - R110 | 1d | 2026-10-01 A | 2026-10-01 A | R135-2110 | 100% |  |
| R135-1910 |  | Chiller feed box and conduit complete - R110 | 2d | 2026-10-03 A | 2026-10-17 | R135-1830 SS |  | -15d |
| R135-2130 |  | Pull Cable from UPS to VFD - R110 | 1d | 2026-10-07 A | 2026-10-07 A | R135-2120 | 100% |  |
| R135-2030 |  | Pull MC from MOD-01 to Mechanical Equipment - R110 | 1d | 2026-10-14 | 2026-10-14 | R135-2090 SS |  | -14d |
| R135-2090 |  | Busduct installed - R110 | 1d | 2026-10-14 | 2026-10-14 | K135-1980 SS |  | -23d |
| R135-2550 |  | Pull MC from MOD-02 to Mechanical Equipment - R110 | 1d | 2026-10-14 | 2026-10-14 | R135-2090 SS |  | -14d |
| R135-2100 |  | Busplugs/Tap Boxes installed - R110 | 1d | 2026-10-15 | 2026-10-15 | R135-2090 |  | -23d |

| ID | Task | Duration | Start | Finish | Predecessors | Total float |
| --- | --- | --- | --- | --- | --- | --- |
| R135-2150 | Mount MPZ - R110 | 1d | 2026-10-15 | 2026-10-15 | R135-2090 | -18d |
| R135-1830 | Set MODs - R110 | 1d | 2026-10-16 | 2026-10-16 | R135-2090, R135-2100, K135-1660 SS | -16d |
| R135-2290 | Set Reserve SWD - R110 | 1d | 2026-10-16 | 2026-10-16 | R135-2090, R135-2100, K135-1660 SS | -23d |
| R135-2300 | Set Reserve Tie - R110 | 1d | 2026-10-16 | 2026-10-16 | R135-2090, R135-2100, K135-1660 SS | -22d |
| R135-2310 | Set Reserve UPS - R110 | 1d | 2026-10-16 | 2026-10-16 | R135-2090, R135-2100, K135-1660 SS | -16d |
| R135-2320 | Set Reserve PDU - R110 | 1d | 2026-10-16 | 2026-10-16 | R135-2090, R135-2100, K135-1660 SS | -15d |
| R135-2600 | High Pot test Reserve Busduct - R110 | 1d | 2026-10-16 | 2026-10-16 | R135-2100 | -11d |
| R135-2630 | Finish Conduit to MPZ - R110 | 5d | 2026-10-16 | 2026-10-21 | R135-2150 | -18d |
| R135-1850 | SWD top covers cut out - R110 | 5d | 2026-10-17 | 2026-10-22 | R135-2290 | -23d |
| R135-1960 | Penetrate MC into MOD-01 - R110 | 1d | 2026-10-17 | 2026-10-17 | R135-1830, R135-2030 | -16d |
| R135-1970 | Penetrate MC into MOD-02 - R110 | 1d | 2026-10-17 | 2026-10-17 | R135-1830, R135-2550 | -16d |
| R135-1980 | Finish Conduit to Elec Room CRAH - R110 | 1d | 2026-10-17 | 2026-10-17 | R135-2290 | -15d |
| R135-2110 | Mount VFD Stand and VFD - R110 | 1d | 2026-10-17 | 2026-10-17 | R135-2290 | -13d |
| R135-2350 | Install conduit from Reserve Tie to Tap Box - R110 | 2d | 2026-10-17 | 2026-10-19 | R135-2300 | -17d |
| R135-2360 | Install conduit from Reserve Tie to Reserve Tie - R110 | 6d | 2026-10-17 | 2026-10-23 | R135-2300 | -22d |
| R135-2370 | Install conduit from Busplug to Reserve PDU - R110 | 1d | 2026-10-17 | 2026-10-17 | R135-2320 | -15d |
| R135-2540 | Finish Cable Tray to Reserve Equipment - R110 | 2d | 2026-10-17 | 2026-10-19 | R135-2290 | -18d |
| R135-2570 | All Grounding - R110 | 1d | 2026-10-17 | 2026-10-17 | R135-2290 | -12d |
| R135-2620 | Pull MC Cable from SWD to MOD - R110 | 1d | 2026-10-17 | 2026-10-17 | R135-2290 | -16d |
| R135-1920 | Pull Chiller wire - R110 | 1d | 2026-10-19 | 2026-10-19 | R135-1910 | -15d |
| R135-1990 | Pull Cable to Elec Room CRAH - R110 | 1d | 2026-10-19 | 2026-10-19 | R135-1980 | -15d |
| R135-2040 | Megger MC Cable from MOD-02 to Mechanical Equipment - R110 | 1d | 2026-10-19 | 2026-10-19 | R135-1970 | -16d |
| R135-2140 | Megger Cable from UPS to VFD - R110 | 1d | 2026-10-19 | 2026-10-19 | R135-2130 | -13d |
| R135-2190 | Terminate Cables in VFD - R110 | 1d | 2026-10-19 | 2026-10-19 | R135-2140 SS | -13d |
| R135-2470 | Megger cable from Busplug to Reserve PDU - R110 | 1d | 2026-10-19 | 2026-10-19 | R135-2370 | -15d |
| R135-2560 | Megger MC Cable from MOD-01 to Mechanical Equipment - R110 | 1d | 2026-10-19 | 2026-10-19 | R135-1960 | -16d |
| R135-1930 | Megger Chiller Cable - R110 | 1d | 2026-10-20 | 2026-10-20 | R135-1920 | -15d |
| R135-1950 | Penetrate MC into Reserve SWD - R110 | 1d | 2026-10-20 | 2026-10-20 | R135-2290, R135-2540 | -18d |
| R135-2000 | Megger MC Cable from SWD to Elec Room CRAH - R110 | 1d | 2026-10-20 | 2026-10-20 | R135-1990 | -15d |
| R135-2060 | Terminate MOD-02 - R110 | 1d | 2026-10-20 | 2026-10-20 | R135-2040, R135-2040 FF | -16d |
| R135-2250 | QC 2.2 checklist VFD - R110 | 1d | 2026-10-20 | 2026-10-20 | R135-2190 | -13d |
| R135-2400 | Pull cable from Reserve Tie to Tap Box - R110 | 1d | 2026-10-20 | 2026-10-20 | R135-2350 | -17d |
| R135-2420 | Pull cable from Busplug to Reserve PDU - R110 | 1d | 2026-10-20 | 2026-10-20 | R135-2470 | -15d |
| R135-1940 | Terminations at Chiller - R110 | 1d | 2026-10-21 | 2026-10-21 | R135-1930 | -15d |
| R135-2010 | Terminate Elec Room CRAH - R110 | 1d | 2026-10-21 | 2026-10-21 | R135-2000 | -15d |
| R135-2020 | Megger MC Cable from SWD to MOD - R110 | 1d | 2026-10-21 | 2026-10-21 | R135-1950, R135-2620 | -18d |
| R135-2450 | Megger cable from Reserve Tie to Tap Box - R110 | 1d | 2026-10-21 | 2026-10-21 | R135-2400 | -17d |
| R135-2520 | Terminate Busplug to PDU - R110 | 1d | 2026-10-21 | 2026-10-21 | R135-2420 | -15d |
| R135-2050 | Terminate MOD-01 - R110 | 1d | 2026-10-22 | 2026-10-22 | R135-2020, R135-2560 | -18d |
| R135-2070 | Terminate at Mechanical Equipment - R110 | 1d | 2026-10-22 | 2026-10-22 | R135-2060 SS, R135-2050 SS, R135-2560, R135-2040 | -18d |
| R135-2160 | Penetrate MC Cable into MPZ - R110 | 1d | 2026-10-22 | 2026-10-22 | R135-2150, R135-2630 | -18d |
| R135-2230 | QC 2.2 checklist Elec Room CRAH - R110 | 1d | 2026-10-22 | 2026-10-22 | R135-2010 | -15d |
| R135-2460 | QC 2.2 checklist Busplug - R110 | 1d | 2026-10-22 | 2026-10-22 | R135-2520, R135-2600 | -15d |
| R135-1840 | Cable bus Support installed - R110 | 1d | 2026-10-23 | 2026-10-23 | R135-1850 | -22d |
| R135-2080 | Mechanical Equipment/Tray Grounding - R110 | 2d | 2026-10-23 | 2026-10-24 | R135-2070 | -18d |
| R135-2170 | Megger MPZ Cable - R110 | 1d | 2026-10-23 | 2026-10-23 | R135-2160 | -18d |
| R135-2240 | QC 2.2 Mechanical Equipment - R110 | 1d | 2026-10-23 | 2026-10-23 | R135-1940, R135-2070 | -16d |
| R135-2330 | Install conduit from SWD to Tap Box - R110 | 2d | 2026-10-23 | 2026-10-24 | R135-1850 | -23d |
| R135-2340 | Install conduit from SWD to Reserve UPS - R110 | 1d | 2026-10-23 | 2026-10-23 | R135-1850, R135-2310 | -21d |
| R135-2180 | Terminate MC Feed at MPZ - R110 | 1d | 2026-10-24 | 2026-10-24 | R135-2170 | -18d |
| R135-2390 | Pull cable from SWD to Reserve UPS - R110 | 1d | 2026-10-24 | 2026-10-24 | R135-2340 | -21d |
| R135-2410 | Pull cable from Reserve Tie to Reserve Tie - R110 | 2d | 2026-10-24 | 2026-10-26 | R135-2360 | -22d |
| R135-2530 | Cable bus Install - R110 | 1d | 2026-10-24 | 2026-10-24 | R135-1840, R135-1850 | -22d |
| R135-1860 | Cable pulled to A & P Xfmrs - R110 | 1d | 2026-10-26 | 2026-10-26 | R135-2530 | -22d |
| R135-2200 | QC 2.2 checklist MOD-01 - R110 | 1d | 2026-10-26 | 2026-10-26 | R135-2080 | -18d |
| R135-2210 | QC 2.2 checklist MOD-02 - R110 | 1d | 2026-10-26 | 2026-10-26 | R135-2080 | -18d |
| R135-2380 | Pull cable from SWD to Tap Box - R110 | 2d | 2026-10-26 | 2026-10-27 | R135-2330 | -23d |
| R135-2440 | Megger cable from SWD to Reserve UPS - R110 | 1d | 2026-10-26 | 2026-10-26 | R135-2390 | -21d |
| R135-2640 | QC 2.2 checklist MPZ - R110 | 1d | 2026-10-26 | 2026-10-26 | R135-2180 | -18d |
| R135-1870 | Megger Cable Bus Cable - R110 | 1d | 2026-10-27 | 2026-10-27 | R135-1860 | -22d |
| R135-1880 | Cable Bus inspection and covers - R110 | 1d | 2026-10-27 | 2026-10-27 | R135-1870 SS | -20d |
| R135-2490 | Terminate Reserve UPS - R110 | 1d | 2026-10-27 | 2026-10-27 | R135-2440 | -20d |
| R135-2580 | Megger cable from Reserve Tie to Reserve Tie - R110 | 1d | 2026-10-27 | 2026-10-27 | R135-2410 | -22d |
| R135-1890 | Terminations at Xfmrs - R110 | 2d | 2026-10-28 | 2026-10-29 | R135-1870 | -22d |
| R135-1900 | Terminations at SWD - R110 | 2d | 2026-10-28 | 2026-10-29 | R135-1870 | -22d |
| R135-2220 | QC 2.2 checklist Reserve UPS - R110 | 1d | 2026-10-28 | 2026-10-28 | R135-2490 | -20d |
| R135-2430 | Megger cable from SWD to Tap Box - R110 | 1d | 2026-10-28 | 2026-10-28 | R135-2380 | -23d |
| R135-2510 | Terminate Reserve Tie - R110 | 2d | 2026-10-28 | 2026-10-29 | R135-2580 | -22d |
| R135-2480 | Terminate Reserve SWD - R110 | 2d | 2026-10-29 | 2026-10-30 | R135-2440, R135-2430, R135-1870 | -23d |
| R135-2500 | Terminate Tap Boxes - R110 | 2d | 2026-10-29 | 2026-10-30 | R135-2450, R135-2430 | -23d |

| ID | WBS | Task | Duration | Start | Finish | Predecessors | Total float | Constraint |
| --- | --- | --- | --- | --- | --- | --- | --- | --- |
| R135-2280 |  | QC 2.2 checklist XFMR - R110 | 1d | 2026-10-30 | 2026-10-30 | R135-1890, R135-1890 FF | -22d |  |
| R135-2590 |  | QC 2.2 checklist Reserve Tie - R110 | 1d | 2026-10-30 | 2026-10-30 | R135-2510 | -22d |  |
| R135-2260 |  | QC 2.2 checklist SWD - R110 | 1d | 2026-10-31 | 2026-10-31 | R135-1880, R135-1900, R135-1900 FF, R135-2480, R135-2570 | -23d |  |
| R135-2610 |  | QC 2.2 checklist Tap Boxes - R110 | 1d | 2026-10-31 | 2026-10-31 | R135-2500 | -23d |  |
| R135-2270 |  | Ready for FTE - R110 | 1d | 2026-11-02 | 2026-11-02 | R135-2640, R135-2460, R135-2590, R135-2610, R135-2280, R135-2260, R135-2250, R135-2240, R135-2230, R135-2220, R135-2210, R135-2200 | -23d |  |
|  | 12 | **Commissioning** |  | 2026-11-03 | 2027-01-12 |  |  |  |
| 1350-2030 |  | DH1100 - L3 Clean Walk | 3d | 2026-11-03 | 2026-11-05 | R135-2270 | 10d |  |
| 1350-2040 |  | DH1100 - L3 PEI | 3d | 2026-11-06 | 2026-11-09 | CW.1100, 1350-2030 | 10d |  |
| 1350-2010 |  | DH1100 - L3 FTE | 4d | 2026-11-10 | 2026-11-13 | PEI.1100, 1350-2040 | 13d |  |
| 1350-2020 |  | DH1100 - L4 Cx / IST | 60d | 2026-11-14 | 2027-01-12 | 1350-2010 | 13d |  |
|  | 1 | **DH 1200** |  | 2026-10-14 | 2027-01-16 |  |  |  |
|  | 1 | **Electrical** |  | 2026-10-14 | 2026-11-06 |  |  |  |
|  | 11 | **R120** |  | 2026-10-14 | 2026-11-05 |  |  |  |
| R125-1250 |  | Pull MC from MOD-01 to Mechanical Equipment - R120 | 1d | 2026-10-14 | 2026-10-14 | R125-1330 SS | -8d |  |
| R125-1260 |  | Pull MC from MOD-02 to Mechanical Equipment - R120 | 1d | 2026-10-14 | 2026-10-14 | R125-1330 SS | -8d |  |
| R125-1330 |  | Busduct installed - R120 | 1d | 2026-10-14 | 2026-10-14 | R135-2270 | -2d | mandatory start 2026-10-12 |
| R125-1340 |  | Busplugs/Tap Boxes installed - R120 | 1d | 2026-10-15 | 2026-10-15 | R125-1330 | -18d |  |
| R125-1440 |  | Mount MPZ - R120 | 1d | 2026-10-15 | 2026-10-15 | R125-1330 | -12d |  |
| R125-1010 |  | Set MODs - R120 | 1d | 2026-10-16 | 2026-10-16 | R125-1020 SS, R125-1330, R125-1340 | -10d |  |
| R125-1020 |  | Set Reserve SWD - R120 | 1d | 2026-10-16 | 2026-10-16 | R125-1330, R125-1340 | -18d |  |
| R125-1110 |  | Set Reserve UPS - R120 | 1d | 2026-10-16 | 2026-10-16 | R125-1020 SS, R125-1330, R125-1340 | -10d |  |
| R125-1120 |  | Chiller feed box and conduit complete - R120 | 2d | 2026-10-16 | 2026-10-19 | R125-1010 SS | -9d |  |
| R125-1170 |  | Set Reserve PDU - R120 | 1d | 2026-10-16 | 2026-10-16 | R125-1020 SS, R125-1330, R125-1340 | -9d |  |
| R125-1720 |  | Set Reserve Tie - R120 | 1d | 2026-10-16 | 2026-10-16 | R125-1020 SS, R125-1330, R125-1340 | -16d |  |
| R125-1760 |  | High Pot test Reserve Busduct - R120 | 1d | 2026-10-16 | 2026-10-16 | R125-1340 | -5d |  |
| R125-1810 |  | Finish Conduit to MPZ - R120 | 5d | 2026-10-16 | 2026-10-22 | R125-1440 | -12d |  |
| R125-1040 |  | SWD top covers cut out - R120 | 5d | 2026-10-19 | 2026-10-23 | R125-1020 | -17d |  |
| R125-1180 |  | Penetrate MC into MOD-01 - R120 | 1d | 2026-10-19 | 2026-10-19 | R125-1010, R125-1250 | -10d |  |
| R125-1190 |  | Penetrate MC into MOD-02 - R120 | 1d | 2026-10-19 | 2026-10-19 | R125-1010, R125-1260 | -10d |  |
| R125-1200 |  | Finish Conduit to Elec Room CRAH - R120 | 1d | 2026-10-19 | 2026-10-19 | R125-1020 | -9d |  |
| R125-1350 |  | Install conduit from Reserve Tie to Tap Box - R120 | 2d | 2026-10-19 | 2026-10-20 | R125-1720 | -11d |  |
| R125-1360 |  | Install conduit from Reserve Tie to Reserve Tie - R120 | 6d | 2026-10-19 | 2026-10-26 | R125-1720 | -16d |  |
| R125-1370 |  | Install conduit from Busplug to Reserve PDU - R120 | 1d | 2026-10-19 | 2026-10-19 | R125-1170 | -9d |  |
| R125-1390 |  | Mount VFD Stand and VFD - R120 | 1d | 2026-10-19 | 2026-10-19 | R125-1020 | -9d |  |
| R125-1710 |  | All Grounding - R120 | 1d | 2026-10-19 | 2026-10-19 | R125-1020 | -6d |  |
| R125-1730 |  | Finish Cable Tray to Reserve Equipment - R120 | 2d | 2026-10-19 | 2026-10-20 | R125-1020 | -12d |  |
| R125-1800 |  | Pull MC Cable from SWD to MOD - R120 | 1d | 2026-10-19 | 2026-10-19 | R125-1020 | -10d |  |
| R125-1130 |  | Pull Chiller wire - R120 | 1d | 2026-10-20 | 2026-10-20 | R125-1120 | -9d |  |
| R125-1210 |  | Pull Cable to Elec Room CRAH - R120 | 1d | 2026-10-20 | 2026-10-20 | R125-1200 | -9d |  |
| R125-1270 |  | Megger MC Cable from MOD-01 to Mechanical Equipment - R120 | 1d | 2026-10-20 | 2026-10-20 | R125-1180 | -10d |  |
| R125-1280 |  | Megger MC Cable from MOD-02 to Mechanical Equipment - R120 | 1d | 2026-10-20 | 2026-10-20 | R125-1190 | -10d |  |
| R125-1400 |  | Conduit from UPS to VFD - R120 | 1d | 2026-10-20 | 2026-10-20 | R125-1390 | -9d |  |
| R125-1650 |  | Megger cable from Busplug to Reserve PDU - R120 | 1d | 2026-10-20 | 2026-10-20 | R125-1370 | -9d |  |
| R125-1140 |  | Megger Chiller Cable - R120 | 1d | 2026-10-21 | 2026-10-21 | R125-1130 | -9d |  |
| R125-1160 |  | Penetrate MC into Reserve SWD - R120 | 1d | 2026-10-21 | 2026-10-21 | R125-1020, R125-1730 | -12d |  |
| R125-1220 |  | Megger MC Cable from SWD to Elec Room CRAH - R120 | 1d | 2026-10-21 | 2026-10-21 | R125-1210 | -9d |  |
| R125-1300 |  | Terminate MOD-02 - R120 | 1d | 2026-10-21 | 2026-10-21 | R125-1280, R125-1280 FF | -10d |  |
| R125-1410 |  | Pull Cable from UPS to VFD - R120 | 1d | 2026-10-21 | 2026-10-21 | R125-1400 | -9d |  |
| R125-1490 |  | Pull cable from Reserve Tie to Tap Box - R120 | 1d | 2026-10-21 | 2026-10-21 | R125-1350 | -11d |  |
| R125-1530 |  | Pull cable from Busplug to Reserve PDU - R120 | 1d | 2026-10-21 | 2026-10-21 | R125-1650 | -9d |  |
| R125-1150 |  | Terminations at Chiller - R120 | 1d | 2026-10-22 | 2026-10-22 | R125-1140 | -9d |  |
| R125-1230 |  | Terminate Elec Room CRAH - R120 | 1d | 2026-10-22 | 2026-10-22 | R125-1220 | -9d |  |
| R125-1240 |  | Megger MC Cable from SWD to MOD - R120 | 1d | 2026-10-22 | 2026-10-22 | R125-1160, R125-1800 | -12d |  |
| R125-1420 |  | Megger Cable from UPS to VFD - R120 | 1d | 2026-10-22 | 2026-10-22 | R125-1410 | -9d |  |
| R125-1480 |  | Terminate Cables in VFD - R120 | 1d | 2026-10-22 | 2026-10-22 | R125-1420 SS | -9d |  |
| R125-1630 |  | Megger cable from Reserve Tie to Tap Box - R120 | 1d | 2026-10-22 | 2026-10-22 | R125-1490 | -11d |  |
| R125-1700 |  | Terminate Busplug to PDU - R120 | 1d | 2026-10-22 | 2026-10-22 | R125-1530 | -9d |  |
| R125-1290 |  | Terminate MOD-01 - R120 | 1d | 2026-10-23 | 2026-10-23 | R125-1240, R125-1270 | -12d |  |
| R125-1310 |  | Terminate at Mechanical Equipment - R120 | 1d | 2026-10-23 | 2026-10-23 | R125-1300 SS, R125-1290 SS, R125-1270, R125-1280 | -12d |  |
| R125-1450 |  | Penetrate MC Cable into MPZ - R120 | 1d | 2026-10-23 | 2026-10-23 | R125-1440, R125-1810 | -12d |  |
| R125-1550 |  | QC 2.2 checklist Elec Room CRAH - R120 | 1d | 2026-10-23 | 2026-10-23 | R125-1230 | -9d |  |
| R125-1570 |  | QC 2.2 checklist VFD - R120 | 1d | 2026-10-23 | 2026-10-23 | R125-1480 | -9d |  |
| R125-1640 |  | QC 2.2 checklist Busplug - R120 | 1d | 2026-10-23 | 2026-10-23 | R125-1700, R125-1760 | -9d |  |
| R125-1030 |  | Cable bus Support installed - R120 | 1d | 2026-10-26 | 2026-10-26 | R125-1040 | -16d |  |
| R125-1320 |  | Mechanical Equipment/Tray Grounding - R120 | 2d | 2026-10-26 | 2026-10-27 | R125-1310 | -12d |  |
| R125-1460 |  | Megger MPZ Cable - R120 | 1d | 2026-10-26 | 2026-10-26 | R125-1450 | -12d |  |
| R125-1560 |  | QC 2.2 Mechanical Equipment - R120 | 1d | 2026-10-26 | 2026-10-26 | R125-1150, R125-1310 | -10d |  |
| R125-1750 |  | Install conduit from SWD to Tap Box - R120 | 2d | 2026-10-26 | 2026-10-27 | R125-1040 | -17d |  |
| R125-1770 |  | Install conduit from SWD to Reserve UPS - R120 | 1d | 2026-10-26 | 2026-10-26 | R125-1040, R125-1110 | -15d |  |
| R125-1050 |  | Cable bus Install - R120 | 1d | 2026-10-27 | 2026-10-27 | R125-1030, R125-1040 | -16d |  |

| ID | WBS | Task | Duration | Start | Finish | Predecessors | Total float |
| --- | --- | --- | --- | --- | --- | --- | --- |
| R125-1430 |  | Pull cable from SWD to Reserve UPS - R120 | 1d | 2026-10-27 | 2026-10-27 | R125-1770 | -15d |
| R125-1470 |  | Terminate MC Feed at MPZ - R120 | 1d | 2026-10-27 | 2026-10-27 | R125-1460 | -12d |
| R125-1520 |  | Pull cable from Reserve Tie to Reserve Tie - R120 | 2d | 2026-10-27 | 2026-10-28 | R125-1360 | -16d |
| R125-1060 |  | Cable pulled to A & P Xfmrs - R120 | 1d | 2026-10-28 | 2026-10-28 | R125-1050 | -16d |
| R125-1380 |  | Pull cable from SWD to Tap Box - R120 | 2d | 2026-10-28 | 2026-10-29 | R125-1750 | -17d |
| R125-1500 |  | QC 2.2 checklist MOD-01 - R120 | 1d | 2026-10-28 | 2026-10-28 | R125-1320 | -12d |
| R125-1510 |  | QC 2.2 checklist MOD-02 - R120 | 1d | 2026-10-28 | 2026-10-28 | R125-1320 | -12d |
| R125-1620 |  | Megger cable from SWD to Reserve UPS - R120 | 1d | 2026-10-28 | 2026-10-28 | R125-1430 | -15d |
| R125-1820 |  | QC 2.2 checklist MPZ - R120 | 1d | 2026-10-28 | 2026-10-28 | R125-1470 | -12d |
| R125-1070 |  | Megger Cable Bus Cable - R120 | 1d | 2026-10-29 | 2026-10-29 | R125-1060 | -16d |
| R125-1080 |  | Cable Bus inspection and covers - R120 | 1d | 2026-10-29 | 2026-10-29 | R125-1070 SS | -14d |
| R125-1670 |  | Terminate Reserve UPS - R120 | 1d | 2026-10-29 | 2026-10-29 | R125-1620 | -14d |
| R125-1780 |  | Megger cable from Reserve Tie to Reserve Tie - R120 | 1d | 2026-10-29 | 2026-10-29 | R125-1520 | -16d |
| R125-1090 |  | Terminations at Xfmrs - R120 | 2d | 2026-10-30 | 2026-11-02 | R125-1070 | -16d |
| R125-1100 |  | Terminations at SWD - R120 | 2d | 2026-10-30 | 2026-11-02 | R125-1070 | -16d |
| R125-1540 |  | QC 2.2 checklist Reserve UPS - R120 | 1d | 2026-10-30 | 2026-10-30 | R125-1670 | -14d |
| R125-1610 |  | Megger cable from SWD to Tap Box - R120 | 1d | 2026-10-30 | 2026-10-30 | R125-1380 | -17d |
| R125-1690 |  | Terminate Reserve Tie - R120 | 2d | 2026-10-30 | 2026-11-02 | R125-1780 | -16d |
| R125-1660 |  | Terminate Reserve SWD - R120 | 2d | 2026-11-02 | 2026-11-03 | R125-1620, R125-1610, R125-1070 | -17d |
| R125-1680 |  | Terminate Tap Boxes - R120 | 2d | 2026-11-02 | 2026-11-03 | R125-1630, R125-1610 | -17d |
| R125-1600 |  | QC 2.2 checklist XFMR - R120 | 1d | 2026-11-03 | 2026-11-03 | R125-1090, R125-1090 FF | -16d |
| R125-1740 |  | QC 2.2 checklist Reserve Tie - R120 | 1d | 2026-11-03 | 2026-11-03 | R125-1690 | -16d |
| R125-1580 |  | QC 2.2 checklist SWD - R120 | 1d | 2026-11-04 | 2026-11-04 | R125-1080, R125-1100, R125-1100 FF, R125-1660, R125-1710 | -17d |
| R125-1790 |  | QC 2.2 checklist Tap Boxes - R120 | 1d | 2026-11-04 | 2026-11-04 | R125-1680 | -17d |
| R125-1590 |  | Ready for FTE - R120 | 1d | 2026-11-05 | 2026-11-05 | R125-1640, R125-1740, R125-1790, R125-1820, R125-1600, R125-1580, R125-1570, R125-1560, R125-1550, R125-1540, R125-1510, R125-1500 | -17d |
|  | 1 | **A120** |  | 2026-10-14 | 2026-11-04 |  |  |
| A125-1330 |  | Busduct installed - A120 | 1d | 2026-10-14 | 2026-10-14 | R125-1330 SS | -18d |
| A125-1340 |  | Busplugs/Tap Boxes installed - A120 | 1d | 2026-10-15 | 2026-10-15 | A125-1330 | -18d |
| A125-1000 |  | Set Skid - A120 | 1d | 2026-10-16 | 2026-10-16 | R125-1020 SS, A125-1340, A125-1330 SS | -18d |
| A125-1010 |  | Set MODs - A120 | 2d | 2026-10-16 | 2026-10-19 | A125-1000 SS | -12d |
| A125-1030 |  | Cable bus Support installed - A120 | 2d | 2026-10-16 | 2026-10-19 | A125-1000 SS | -12d |
| A125-1120 |  | Chiller feed box and conduit complete - A120 | 2d | 2026-10-16 | 2026-10-19 | A125-1010 SS, A125-1000 SS | -9d |
| A125-1040 |  | SWD top covers cut out - A120 | 5d | 2026-10-19 | 2026-10-23 | A125-1000 | -16d |
| A125-1110 |  | Finish Cable Tray to Skid - A120 | 2d | 2026-10-19 | 2026-10-20 | A125-1000 | -12d |
| A125-1350 |  | Install conduit from Busplug to ATSs - A120 | 2d | 2026-10-19 | 2026-10-20 | A125-1000 | -12d |
| A125-1390 |  | Mount VFD Stand and VFD - A120 | 1d | 2026-10-19 | 2026-10-19 | A125-1000 | -10d |
| A125-1440 |  | Mount MPZ - A120 | 1d | 2026-10-19 | 2026-10-19 | A125-1000 | -9d |
| A125-1620 |  | Electrical Room CRAH Set - A120 | 1d | 2026-10-19 | 2026-10-19 | A125-1000 | -10d |
| A125-1130 |  | Pull Chiller wire - A120 | 1d | 2026-10-20 | 2026-10-20 | A125-1120, A125-1000 | -9d |
| A125-1180 |  | Penetrate MC into MOD-01 - A120 | 1d | 2026-10-20 | 2026-10-20 | A125-1010 | -11d |
| A125-1190 |  | Penetrate MC into MOD-02 - A120 | 1d | 2026-10-20 | 2026-10-20 | A125-1010 | -11d |
| A125-1200 |  | Finish Conduit to Elec Room CRAH - A120 | 1d | 2026-10-20 | 2026-10-20 | A125-1620 | -10d |
| A125-1250 |  | Pull MC from MOD-01 to Mechanical Equipment - A120 | 2d | 2026-10-20 | 2026-10-21 | A125-1010 | -12d |
| A125-1260 |  | Pull MC from MOD-02 to Mechanical Equipment - A120 | 2d | 2026-10-20 | 2026-10-21 | A125-1010 | -12d |
| A125-1400 |  | Conduit from UPS to VFD - A120 | 1d | 2026-10-20 | 2026-10-20 | A125-1390 | -10d |
| A125-1450 |  | Penetrate MC Cable into MPZ - A120 | 1d | 2026-10-20 | 2026-10-20 | A125-1440 | -9d |
| A125-1140 |  | Megger Chiller Cable - A120 | 1d | 2026-10-21 | 2026-10-21 | A125-1130 | -9d |
| A125-1160 |  | Penetrate MC into SWD - A120 | 1d | 2026-10-21 | 2026-10-21 | A125-1110 | -12d |
| A125-1170 |  | Penetrat MC into UPS - A120 | 1d | 2026-10-21 | 2026-10-21 | A125-1110 | -12d |
| A125-1210 |  | Pull Cable to Elec Room CRAH - A120 | 1d | 2026-10-21 | 2026-10-21 | A125-1200 | -10d |
| A125-1360 |  | Pull ATS Cable - A120 | 1d | 2026-10-21 | 2026-10-21 | A125-1350 | -12d |
| A125-1410 |  | Pull Cable from UPS to VFD - A120 | 1d | 2026-10-21 | 2026-10-21 | A125-1400 | -10d |
| A125-1460 |  | Megger MPZ Cable - A120 | 1d | 2026-10-21 | 2026-10-21 | A125-1450 | -9d |
| A125-1490 |  | All Skid Grounding - A120 | 2d | 2026-10-21 | 2026-10-22 | A125-1110 | -9d |
| A125-1520 |  | Megger MC Cable from UPS to MOD - A120 | 1d | 2026-10-21 | 2026-10-21 | A125-1190 | -11d |
| A125-1150 |  | Terminations at Chiller - A120 | 1d | 2026-10-22 | 2026-10-22 | A125-1140 | -9d |
| A125-1220 |  | Megger MC Cable from Skid to Elec Room CRAH - A120 | 1d | 2026-10-22 | 2026-10-22 | A125-1210 | -10d |
| A125-1240 |  | Megger MC Cable from Skid to MOD - A120 | 1d | 2026-10-22 | 2026-10-22 | A125-1180, A125-1170, A125-1160 | -12d |
| A125-1270 |  | Megger MC Cable from MOD-01 to Mechanical Equipment - A120 | 1d | 2026-10-22 | 2026-10-22 | A125-1250 | -12d |
| A125-1280 |  | Megger MC Cable from MOD-02 to Mechanical Equipment - A120 | 1d | 2026-10-22 | 2026-10-22 | A125-1260 | -12d |
| A125-1420 |  | Megger Cable from UPS to VFD - A120 | 1d | 2026-10-22 | 2026-10-22 | A125-1410 | -10d |
| A125-1470 |  | Terminate MC Feed at MPZ - A120 | 1d | 2026-10-22 | 2026-10-22 | A125-1460 | -9d |
| A125-1480 |  | Terminate Cables in VFD - A120 | 1d | 2026-10-22 | 2026-10-22 | A125-1420 SS | -9d |
| A125-1630 |  | Megger Cable at ATS - A120 | 1d | 2026-10-22 | 2026-10-22 | A125-1360 | -12d |
| A125-1230 |  | Terminate Elec Room CRAH - A120 | 1d | 2026-10-23 | 2026-10-23 | A125-1220 | -10d |
| A125-1290 |  | Terminate MOD-01 - A120 | 1d | 2026-10-23 | 2026-10-23 | A125-1240, A125-1270 | -12d |
| A125-1300 |  | Terminate MOD-02 - A120 | 1d | 2026-10-23 | 2026-10-23 | A125-1520, A125-1280 | -12d |
| A125-1310 |  | Terminate at Mechanical Equipment - A120 | 1d | 2026-10-23 | 2026-10-23 | A125-1300 SS, A125-1290 SS | -12d |
| A125-1370 |  | Terminate ATS Cable at Busplugs & ATSs - A120 | 2d | 2026-10-23 | 2026-10-26 | A125-1630 | -12d |
| A125-1430 |  | Terminate Cables in UPS - A120 | 1d | 2026-10-23 | 2026-10-23 | A125-1420 | -10d |

| ID | WBS | Task | Duration | Start | Finish | Predecessors | Total float |
| --- | --- | --- | --- | --- | --- | --- | --- |
| A125-1570 |  | QC 2.2 checklist VFD - A120 | 1d | 2026-10-23 | 2026-10-23 | A125-1480 | -9d |
| A125-1610 |  | QC 2.2 checklist Chiller - A120 | 1d | 2026-10-23 | 2026-10-23 | A125-1150 | -9d |
| A125-1650 |  | QC 2.2 checklist MPZ - A120 | 1d | 2026-10-23 | 2026-10-23 | A125-1470 | -9d |
| A125-1050 |  | Cable bus Install - A120 | 2d | 2026-10-26 | 2026-10-27 | A125-1040, A125-1030 | -16d |
| A125-1320 |  | Mechanical Equipment/Tray Grounding - A120 | 2d | 2026-10-26 | 2026-10-27 | A125-1310 | -12d |
| A125-1540 |  | QC 2.2 checklist UPS - A120 | 1d | 2026-10-26 | 2026-10-26 | A125-1430 | -10d |
| A125-1550 |  | QC 2.2 checklist Elec Room CRAH - A120 | 1d | 2026-10-26 | 2026-10-26 | A125-1230 | -10d |
| A125-1560 |  | QC 2.2 Mechanical Equipment - A120 | 1d | 2026-10-26 | 2026-10-26 | A125-1310 | -10d |
| A125-1380 |  | ATS Lashing - A120 | 1d | 2026-10-27 | 2026-10-27 | A125-1370 | -12d |
| A125-1060 |  | Cable pulled to A & P Xfmrs - A120 | 1d | 2026-10-28 | 2026-10-28 | A125-1050 | -16d |
| A125-1500 |  | QC 2.2 checklist MOD-01 - A120 | 1d | 2026-10-28 | 2026-10-28 | A125-1320 | -12d |
| A125-1510 |  | QC 2.2 checklist MOD-02 - A120 | 1d | 2026-10-28 | 2026-10-28 | A125-1320 | -12d |
| A125-1530 |  | QC 2.2 checklist ATSs - A120 | 1d | 2026-10-28 | 2026-10-28 | A125-1380 | -12d |
| A125-1640 |  | QC 2.2 checklist Busplugs - A120 | 1d | 2026-10-28 | 2026-10-28 | A125-1530 SS | -12d |
| A125-1070 |  | Megger Cable Bus Cable - A120 | 1d | 2026-10-29 | 2026-10-29 | A125-1060 | -16d |
| A125-1080 |  | Cable Bus inspection and covers - A120 | 1d | 2026-10-29 | 2026-10-29 | A125-1070 SS | -14d |
| A125-1090 |  | Terminations at Xfmrs - A120 | 2d | 2026-10-30 | 2026-11-02 | A125-1070 | -16d |
| A125-1100 |  | Terminations at SWD - A120 | 2d | 2026-10-30 | 2026-11-02 | A125-1070 | -16d |
| A125-1580 |  | QC 2.2 checklist SWD - A120 | 1d | 2026-11-03 | 2026-11-03 | A125-1080, A125-1490, A125-1100 | -16d |
| A125-1600 |  | QC 2.2 checklist Xfmrs - A120 | 1d | 2026-11-03 | 2026-11-03 | A125-1090 | -16d |
| A125-1590 |  | Ready for FTE - A120 | 1d | 2026-11-04 | 2026-11-04 | A125-1650, A125-1640, A125-1610, A125-1580, A125-1570, A125-1560, A125-1550, A125-1540, A125-1530, A125-1510, A125-1500, A125-1600 | -16d |
|  | 2 | **B120** |  | 2026-10-14 | 2026-11-04 |  |  |
| B125-1330 |  | Busduct installed - B120 | 1d | 2026-10-14 | 2026-10-14 | A125-1330 SS | -18d |
| B125-1340 |  | Busplugs/Tap Boxes installed - B120 | 1d | 2026-10-15 | 2026-10-15 | B125-1330 | -18d |
| B125-1000 |  | Set Skid - B120 | 1d | 2026-10-16 | 2026-10-16 | A125-1000 SS, B125-1340, B125-1330 | -18d |
| B125-1010 |  | Set MODs - B120 | 2d | 2026-10-16 | 2026-10-19 | B125-1000 SS | -12d |
| B125-1030 |  | Cable bus Support installed - B120 | 2d | 2026-10-16 | 2026-10-19 | B125-1000 SS | -12d |
| B125-1120 |  | Chiller feed box and conduit complete - B120 | 2d | 2026-10-16 | 2026-10-19 | B125-1010 SS, B125-1000 SS | -9d |
| B125-1040 |  | SWD top covers cut out - B120 | 5d | 2026-10-19 | 2026-10-23 | B125-1000 | -16d |
| B125-1110 |  | Finish Cable Tray to Skid - B120 | 2d | 2026-10-19 | 2026-10-20 | B125-1000 | -12d |
| B125-1350 |  | Install conduit from Busplug to ATSs - B120 | 2d | 2026-10-19 | 2026-10-20 | B125-1000 | -12d |
| B125-1390 |  | Mount VFD Stand and VFD - B120 | 1d | 2026-10-19 | 2026-10-19 | B125-1000 | -10d |
| B125-1440 |  | Mount MPZ - B120 | 1d | 2026-10-19 | 2026-10-19 | B125-1000 | -9d |
| B125-1620 |  | Electrical Room CRAH Set - B120 | 1d | 2026-10-19 | 2026-10-19 | B125-1000 | -10d |
| B125-1130 |  | Pull Chiller wire - B120 | 1d | 2026-10-20 | 2026-10-20 | B125-1120, B125-1000 | -9d |
| B125-1180 |  | Penetrate MC into MOD-01 - B120 | 1d | 2026-10-20 | 2026-10-20 | B125-1010 | -11d |
| B125-1190 |  | Penetrate MC into MOD-02 - B120 | 1d | 2026-10-20 | 2026-10-20 | B125-1010 | -11d |
| B125-1200 |  | Finish Conduit to Elec Room CRAH - B120 | 1d | 2026-10-20 | 2026-10-20 | B125-1620 | -10d |
| B125-1250 |  | Pull MC from MOD-01 to Mechanical Equipment - B120 | 2d | 2026-10-20 | 2026-10-21 | B125-1010 | -12d |
| B125-1260 |  | Pull MC from MOD-02 to Mechanical Equipment - B120 | 2d | 2026-10-20 | 2026-10-21 | B125-1010 | -12d |
| B125-1400 |  | Conduit from UPS to VFD - B120 | 1d | 2026-10-20 | 2026-10-20 | B125-1390 | -10d |
| B125-1450 |  | Penetrate MC Cable into MPZ - B120 | 1d | 2026-10-20 | 2026-10-20 | B125-1440 | -9d |
| B125-1140 |  | Megger Chiller Cable - B120 | 1d | 2026-10-21 | 2026-10-21 | B125-1130 | -9d |
| B125-1160 |  | Penetrate MC into SWD - B120 | 1d | 2026-10-21 | 2026-10-21 | B125-1110 | -12d |
| B125-1170 |  | Penetrat MC into UPS - B120 | 1d | 2026-10-21 | 2026-10-21 | B125-1110 | -12d |
| B125-1210 |  | Pull Cable to Elec Room CRAH - B120 | 1d | 2026-10-21 | 2026-10-21 | B125-1200 | -10d |
| B125-1360 |  | Pull ATS Cable - B120 | 1d | 2026-10-21 | 2026-10-21 | B125-1350 | -12d |
| B125-1410 |  | Pull Cable from UPS to VFD - B120 | 1d | 2026-10-21 | 2026-10-21 | B125-1400 | -10d |
| B125-1460 |  | Megger MPZ Cable - B120 | 1d | 2026-10-21 | 2026-10-21 | B125-1450 | -9d |
| B125-1490 |  | All Skid Grounding - B120 | 2d | 2026-10-21 | 2026-10-22 | B125-1110 | -9d |
| B125-1520 |  | Megger MC Cable from UPS to MOD - B120 | 1d | 2026-10-21 | 2026-10-21 | B125-1190 | -11d |
| B125-1150 |  | Terminations at Chiller - B120 | 1d | 2026-10-22 | 2026-10-22 | B125-1140 | -9d |
| B125-1220 |  | Megger MC Cable from Skid to Elec Room CRAH - B120 | 1d | 2026-10-22 | 2026-10-22 | B125-1210 | -10d |
| B125-1240 |  | Megger MC Cable from Skid to MOD - B120 | 1d | 2026-10-22 | 2026-10-22 | B125-1180, B125-1170, B125-1160 | -12d |
| B125-1270 |  | Megger MC Cable from MOD-01 to Mechanical Equipment - B120 | 1d | 2026-10-22 | 2026-10-22 | B125-1250 | -12d |
| B125-1280 |  | Megger MC Cable from MOD-02 to Mechanical Equipment - B120 | 1d | 2026-10-22 | 2026-10-22 | B125-1260 | -12d |
| B125-1420 |  | Megger Cable from UPS to VFD - B120 | 1d | 2026-10-22 | 2026-10-22 | B125-1410 | -10d |
| B125-1470 |  | Terminate MC Feed at MPZ - B120 | 1d | 2026-10-22 | 2026-10-22 | B125-1460 | -9d |
| B125-1480 |  | Terminate Cables in VFD - B120 | 1d | 2026-10-22 | 2026-10-22 | B125-1420 SS | -9d |
| B125-1630 |  | Megger Cable at ATS - B120 | 1d | 2026-10-22 | 2026-10-22 | B125-1360 | -12d |
| B125-1230 |  | Terminate Elec Room CRAH - B120 | 1d | 2026-10-23 | 2026-10-23 | B125-1220 | -10d |
| B125-1290 |  | Terminate MOD-01 - B120 | 1d | 2026-10-23 | 2026-10-23 | B125-1240, B125-1270 | -12d |
| B125-1300 |  | Terminate MOD-02 - B120 | 1d | 2026-10-23 | 2026-10-23 | B125-1520, B125-1280 | -12d |
| B125-1310 |  | Terminate at Mechanical Equipment - B120 | 1d | 2026-10-23 | 2026-10-23 | B125-1300 SS, B125-1290 SS | -12d |
| B125-1370 |  | Terminate ATS Cable at Busplugs & ATSs - B120 | 2d | 2026-10-23 | 2026-10-26 | B125-1630 | -12d |
| B125-1430 |  | Terminate Cables in UPS - B120 | 1d | 2026-10-23 | 2026-10-23 | B125-1420 | -10d |
| B125-1570 |  | QC 2.2 checklist VFD - B120 | 1d | 2026-10-23 | 2026-10-23 | B125-1480 | -9d |
| B125-1610 |  | QC 2.2 checklist Chiller - B120 | 1d | 2026-10-23 | 2026-10-23 | B125-1150 | -9d |
| B125-1650 |  | QC 2.2 checklist MPZ - B120 | 1d | 2026-10-23 | 2026-10-23 | B125-1470 | -9d |
| B125-1050 |  | Cable bus Install - B120 | 2d | 2026-10-26 | 2026-10-27 | B125-1040, B125-1030 | -16d |

| ID | WBS | Task | Duration | Start | Finish | Predecessors | Total float |
| --- | --- | --- | --- | --- | --- | --- | --- |
| B125-1320 |  | Mechanical Equipment/Tray Grounding - B120 | 2d | 2026-10-26 | 2026-10-27 | B125-1310 | -12d |
| B125-1540 |  | QC 2.2 checklist UPS - B120 | 1d | 2026-10-26 | 2026-10-26 | B125-1430 | -10d |
| B125-1550 |  | QC 2.2 checklist Elec Room CRAH - B120 | 1d | 2026-10-26 | 2026-10-26 | B125-1230 | -10d |
| B125-1560 |  | QC 2.2 Mechanical Equipment - B120 | 1d | 2026-10-26 | 2026-10-26 | B125-1310 | -10d |
| B125-1380 |  | ATS Lashing - B120 | 1d | 2026-10-27 | 2026-10-27 | B125-1370 | -12d |
| B125-1060 |  | Cable pulled to A & P Xfmrs - B120 | 1d | 2026-10-28 | 2026-10-28 | B125-1050 | -16d |
| B125-1500 |  | QC 2.2 checklist MOD-01 - B120 | 1d | 2026-10-28 | 2026-10-28 | B125-1320 | -12d |
| B125-1510 |  | QC 2.2 checklist MOD-02 - B120 | 1d | 2026-10-28 | 2026-10-28 | B125-1320 | -12d |
| B125-1530 |  | QC 2.2 checklist ATSs - B120 | 1d | 2026-10-28 | 2026-10-28 | B125-1380 | -12d |
| B125-1640 |  | QC 2.2 checklist Busplugs - B120 | 1d | 2026-10-28 | 2026-10-28 | B125-1530 SS | -12d |
| B125-1070 |  | Megger Cable Bus Cable - B120 | 1d | 2026-10-29 | 2026-10-29 | B125-1060 | -16d |
| B125-1080 |  | Cable Bus inspection and covers - B120 | 1d | 2026-10-29 | 2026-10-29 | B125-1070 SS | -14d |
| B125-1090 |  | Terminations at Xfmrs - B120 | 2d | 2026-10-30 | 2026-11-02 | B125-1070 | -16d |
| B125-1100 |  | Terminations at SWD - B120 | 2d | 2026-10-30 | 2026-11-02 | B125-1070 | -16d |
| B125-1580 |  | QC 2.2 checklist SWD - B120 | 1d | 2026-11-03 | 2026-11-03 | B125-1080, B125-1490, B125-1100 | -16d |
| B125-1600 |  | QC 2.2 checklist XFMR - B120 | 1d | 2026-11-03 | 2026-11-03 | B125-1090 | -16d |
| B125-1590 |  | Ready for FTE - B120 | 1d | 2026-11-04 | 2026-11-04 | B125-1650, B125-1640, B125-1610, B125-1600, B125-1580, B125-1570, B125-1560, B125-1550, B125-1540, B125-1530, B125-1510, B125-1500 | -16d |
|  | 3 | **C120** |  | 2026-10-15 | 2026-11-05 |  |  |
| C125-1330 |  | Busduct installed - C120 | 1d | 2026-10-15 | 2026-10-15 | B125-1330 | -18d |
| C125-1340 |  | Busplugs/Tap Boxes installed - C120 | 1d | 2026-10-16 | 2026-10-16 | C125-1330 | -18d |
| C125-1000 |  | Set Skid - C120 | 1d | 2026-10-19 | 2026-10-19 | B125-1000, C125-1340, C125-1330 | -18d |
| C125-1010 |  | Set MODs - C120 | 2d | 2026-10-19 | 2026-10-20 | C125-1000 SS | -13d |
| C125-1030 |  | Cable bus Support installed - C120 | 2d | 2026-10-19 | 2026-10-20 | C125-1000 SS | -13d |
| C125-1120 |  | Chiller feed box and conduit complete - C120 | 2d | 2026-10-19 | 2026-10-20 | C125-1010 SS, C125-1000 SS | -10d |
| C125-1040 |  | SWD top covers cut out - C120 | 5d | 2026-10-20 | 2026-10-26 | C125-1000 | -17d |
| C125-1110 |  | Finish Cable Tray to Skid - C120 | 2d | 2026-10-20 | 2026-10-21 | C125-1000 | -13d |
| C125-1350 |  | Install conduit from Busplug to ATSs - C120 | 2d | 2026-10-20 | 2026-10-21 | C125-1000 | -13d |
| C125-1390 |  | Mount VFD Stand and VFD - C120 | 1d | 2026-10-20 | 2026-10-20 | C125-1000 | -11d |
| C125-1440 |  | Mount MPZ - C120 | 1d | 2026-10-20 | 2026-10-20 | C125-1000 | -10d |
| C125-1620 |  | Electrical Room CRAH Set - C120 | 1d | 2026-10-20 | 2026-10-20 | C125-1000 | -11d |
| C125-1130 |  | Pull Chiller wire - C120 | 1d | 2026-10-21 | 2026-10-21 | C125-1120, C125-1000 | -10d |
| C125-1180 |  | Penetrate MC into MOD-01 - C120 | 1d | 2026-10-21 | 2026-10-21 | C125-1010 | -12d |
| C125-1190 |  | Penetrate MC into MOD-02 - C120 | 1d | 2026-10-21 | 2026-10-21 | C125-1010 | -12d |
| C125-1200 |  | Finish Conduit to Elec Room CRAH - C120 | 1d | 2026-10-21 | 2026-10-21 | C125-1620 | -11d |
| C125-1250 |  | Pull MC from MOD-01 to Mechanical Equipment - C120 | 2d | 2026-10-21 | 2026-10-22 | C125-1010 | -13d |
| C125-1260 |  | Pull MC from MOD-02 to Mechanical Equipment - C120 | 2d | 2026-10-21 | 2026-10-22 | C125-1010 | -13d |
| C125-1400 |  | Conduit from UPS to VFD - C120 | 1d | 2026-10-21 | 2026-10-21 | C125-1390 | -11d |
| C125-1450 |  | Penetrate MC Cable into MPZ - C120 | 1d | 2026-10-21 | 2026-10-21 | C125-1440 | -10d |
| C125-1140 |  | Megger Chiller Cable - C120 | 1d | 2026-10-22 | 2026-10-22 | C125-1130 | -10d |
| C125-1160 |  | Penetrate MC into SWD - C120 | 1d | 2026-10-22 | 2026-10-22 | C125-1110 | -13d |
| C125-1170 |  | Penetrat MC into UPS - C120 | 1d | 2026-10-22 | 2026-10-22 | C125-1110 | -13d |
| C125-1210 |  | Pull Cable to Elec Room CRAH - C120 | 1d | 2026-10-22 | 2026-10-22 | C125-1200 | -11d |
| C125-1360 |  | Pull ATS Cable - C120 | 1d | 2026-10-22 | 2026-10-22 | C125-1350 | -13d |
| C125-1410 |  | Pull Cable from UPS to VFD - C120 | 1d | 2026-10-22 | 2026-10-22 | C125-1400 | -11d |
| C125-1460 |  | Megger MPZ Cable - C120 | 1d | 2026-10-22 | 2026-10-22 | C125-1450 | -10d |
| C125-1490 |  | All Skid Grounding - C120 | 2d | 2026-10-22 | 2026-10-23 | C125-1110 | -10d |
| C125-1520 |  | Megger MC Cable from UPS to MOD - C120 | 1d | 2026-10-22 | 2026-10-22 | C125-1190 | -12d |
| C125-1150 |  | Terminations at Chiller - C120 | 1d | 2026-10-23 | 2026-10-23 | C125-1140 | -10d |
| C125-1220 |  | Megger MC Cable from Skid to Elec Room CRAH - C120 | 1d | 2026-10-23 | 2026-10-23 | C125-1210 | -11d |
| C125-1240 |  | Megger MC Cable from Skid to MOD - C120 | 1d | 2026-10-23 | 2026-10-23 | C125-1180, C125-1170, C125-1160 | -13d |
| C125-1270 |  | Megger MC Cable from MOD-01 to Mechanical Equipment - C120 | 1d | 2026-10-23 | 2026-10-23 | C125-1250 | -13d |
| C125-1280 |  | Megger MC Cable from MOD-02 to Mechanical Equipment - C120 | 1d | 2026-10-23 | 2026-10-23 | C125-1260 | -13d |
| C125-1420 |  | Megger Cable from UPS to VFD - C120 | 1d | 2026-10-23 | 2026-10-23 | C125-1410 | -11d |
| C125-1470 |  | Terminate MC Feed at MPZ - C120 | 1d | 2026-10-23 | 2026-10-23 | C125-1460 | -10d |
| C125-1480 |  | Terminate Cables in VFD - C120 | 1d | 2026-10-23 | 2026-10-23 | C125-1420 SS | -10d |
| C125-1630 |  | Megger Cable at ATS - C120 | 1d | 2026-10-23 | 2026-10-23 | C125-1360 | -13d |
| C125-1230 |  | Terminate Elec Room CRAH - C120 | 1d | 2026-10-26 | 2026-10-26 | C125-1220 | -11d |
| C125-1290 |  | Terminate MOD-01 - C120 | 1d | 2026-10-26 | 2026-10-26 | C125-1240, C125-1270 | -13d |
| C125-1300 |  | Terminate MOD-02 - C120 | 1d | 2026-10-26 | 2026-10-26 | C125-1520, C125-1280 | -13d |
| C125-1310 |  | Terminate at Mechanical Equipment - C120 | 1d | 2026-10-26 | 2026-10-26 | C125-1300 SS, C125-1290 SS | -13d |
| C125-1370 |  | Terminate ATS Cable at Busplugs & ATSs - C120 | 2d | 2026-10-26 | 2026-10-27 | C125-1630 | -13d |
| C125-1430 |  | Terminate Cables in UPS - C120 | 1d | 2026-10-26 | 2026-10-26 | C125-1420 | -11d |
| C125-1570 |  | QC 2.2 checklist VFD - C120 | 1d | 2026-10-26 | 2026-10-26 | C125-1480 | -10d |
| C125-1610 |  | QC 2.2 checklist Chiller - C120 | 1d | 2026-10-26 | 2026-10-26 | C125-1150 | -10d |
| C125-1650 |  | QC 2.2 checklist MPZ - C120 | 1d | 2026-10-26 | 2026-10-26 | C125-1470 | -10d |
| C125-1050 |  | Cable bus Install - C120 | 2d | 2026-10-27 | 2026-10-28 | C125-1040, C125-1030 | -17d |
| C125-1320 |  | Mechanical Equipment/Tray Grounding - C120 | 2d | 2026-10-27 | 2026-10-28 | C125-1310 | -13d |
| C125-1540 |  | QC 2.2 checklist UPS - C120 | 1d | 2026-10-27 | 2026-10-27 | C125-1430 | -11d |
| C125-1550 |  | QC 2.2 checklist Elec Room CRAH - C120 | 1d | 2026-10-27 | 2026-10-27 | C125-1230 | -11d |
| C125-1560 |  | QC 2.2 Mechanical Equipment - C120 | 1d | 2026-10-27 | 2026-10-27 | C125-1310 | -11d |

| ID | WBS | Task | Duration | Start | Finish | Predecessors | Total float |
| --- | --- | --- | --- | --- | --- | --- | --- |
| C125-1380 |  | ATS Lashing - C120 | 1d | 2026-10-28 | 2026-10-28 | C125-1370 | -13d |
| C125-1060 |  | Cable pulled to A & P Xfmrs - C120 | 1d | 2026-10-29 | 2026-10-29 | C125-1050 | -17d |
| C125-1500 |  | QC 2.2 checklist MOD-01 - C120 | 1d | 2026-10-29 | 2026-10-29 | C125-1320 | -13d |
| C125-1510 |  | QC 2.2 checklist MOD-02 - C120 | 1d | 2026-10-29 | 2026-10-29 | C125-1320 | -13d |
| C125-1530 |  | QC 2.2 checklist ATSs - C120 | 1d | 2026-10-29 | 2026-10-29 | C125-1380 | -13d |
| C125-1640 |  | QC 2.2 checklist Busplugs - C120 | 1d | 2026-10-29 | 2026-10-29 | C125-1530 SS | -13d |
| C125-1070 |  | Megger Cable Bus Cable - C120 | 1d | 2026-10-30 | 2026-10-30 | C125-1060 | -17d |
| C125-1080 |  | Cable Bus inspection and covers - C120 | 1d | 2026-10-30 | 2026-10-30 | C125-1070 SS | -15d |
| C125-1090 |  | Terminations at Xfmrs - C120 | 2d | 2026-11-02 | 2026-11-03 | C125-1070 | -17d |
| C125-1100 |  | Terminations at SWD - C120 | 2d | 2026-11-02 | 2026-11-03 | C125-1070 | -17d |
| C125-1580 |  | QC 2.2 checklist SWD - C120 | 1d | 2026-11-04 | 2026-11-04 | C125-1080, C125-1490, C125-1100 | -17d |
| C125-1600 |  | QC 2.2 checklist XFMR - C120 | 1d | 2026-11-04 | 2026-11-04 | C125-1090 | -17d |
| C125-1590 |  | Ready for FTE - C120 | 1d | 2026-11-05 | 2026-11-05 | C125-1650, C125-1640, C125-1610, C125-1600, C125-1580, C125-1570, C125-1560, C125-1550, C125-1540, C125-1530, C125-1510, C125-1500 | -17d |
|  | 4 | **D120** |  | 2026-10-15 | 2026-11-05 |  |  |
| D125-1330 |  | Busduct installed - D120 | 1d | 2026-10-15 | 2026-10-15 | C125-1330 SS | -18d |
| D125-1340 |  | Busplugs/Tap Boxes installed - D120 | 1d | 2026-10-16 | 2026-10-16 | C125-1340 SS, D125-1330 | -18d |
| D125-1000 |  | Set Skid - D120 | 1d | 2026-10-19 | 2026-10-19 | C125-1000 SS, D125-1340, D125-1330 | -18d |
| D125-1010 |  | Set MODs - D120 | 2d | 2026-10-19 | 2026-10-20 | C125-1010 SS, D125-1000 SS | -13d |
| D125-1030 |  | Cable bus Support installed - D120 | 2d | 2026-10-19 | 2026-10-20 | C125-1030 SS, D125-1000 SS | -13d |
| D125-1120 |  | Chiller feed box and conduit complete - D120 | 2d | 2026-10-19 | 2026-10-20 | C125-1120 SS, D125-1010 SS, D125-1000 SS | -10d |
| D125-1040 |  | SWD top covers cut out - D120 | 5d | 2026-10-20 | 2026-10-26 | D125-1000 | -17d |
| D125-1110 |  | Finish Cable Tray to Skid - D120 | 2d | 2026-10-20 | 2026-10-21 | D125-1000 | -13d |
| D125-1350 |  | Install conduit from Busplug to ATSs - D120 | 2d | 2026-10-20 | 2026-10-21 | D125-1000 | -13d |
| D125-1390 |  | Mount VFD Stand and VFD - D120 | 1d | 2026-10-20 | 2026-10-20 | D125-1000 | -11d |
| D125-1440 |  | Mount MPZ - D120 | 1d | 2026-10-20 | 2026-10-20 | D125-1000 | -10d |
| D125-1620 |  | Electrical Room CRAH Set - D120 | 1d | 2026-10-20 | 2026-10-20 | D125-1000 | -11d |
| D125-1130 |  | Pull Chiller wire - D120 | 1d | 2026-10-21 | 2026-10-21 | D125-1120, D125-1000 | -10d |
| D125-1180 |  | Penetrate MC into MOD-01 - D120 | 1d | 2026-10-21 | 2026-10-21 | D125-1010 | -12d |
| D125-1190 |  | Penetrate MC into MOD-02 - D120 | 1d | 2026-10-21 | 2026-10-21 | D125-1010 | -12d |
| D125-1200 |  | Finish Conduit to Elec Room CRAH - D120 | 1d | 2026-10-21 | 2026-10-21 | D125-1620 | -11d |
| D125-1250 |  | Pull MC from MOD-01 to Mechanical Equipment - D120 | 2d | 2026-10-21 | 2026-10-22 | D125-1010 | -13d |
| D125-1260 |  | Pull MC from MOD-02 to Mechanical Equipment - D120 | 2d | 2026-10-21 | 2026-10-22 | D125-1010 | -13d |
| D125-1400 |  | Conduit from UPS to VFD - D120 | 1d | 2026-10-21 | 2026-10-21 | D125-1390 | -11d |
| D125-1450 |  | Penetrate MC Cable into MPZ - D120 | 1d | 2026-10-21 | 2026-10-21 | D125-1440 | -10d |
| D125-1140 |  | Megger Chiller Cable - D120 | 1d | 2026-10-22 | 2026-10-22 | D125-1130 | -10d |
| D125-1160 |  | Penetrate MC into SWD - D120 | 1d | 2026-10-22 | 2026-10-22 | D125-1110 | -13d |
| D125-1170 |  | Penetrat MC into UPS - D120 | 1d | 2026-10-22 | 2026-10-22 | D125-1110 | -13d |
| D125-1210 |  | Pull Cable to Elec Room CRAH - D120 | 1d | 2026-10-22 | 2026-10-22 | D125-1200 | -11d |
| D125-1360 |  | Pull ATS Cable - D120 | 1d | 2026-10-22 | 2026-10-22 | D125-1350 | -13d |
| D125-1410 |  | Pull Cable from UPS to VFD - D120 | 1d | 2026-10-22 | 2026-10-22 | D125-1400 | -11d |
| D125-1460 |  | Megger MPZ Cable - D120 | 1d | 2026-10-22 | 2026-10-22 | D125-1450 | -10d |
| D125-1490 |  | All Skid Grounding - D120 | 2d | 2026-10-22 | 2026-10-23 | D125-1110 | -10d |
| D125-1520 |  | Megger MC Cable from UPS to MOD - D120 | 1d | 2026-10-22 | 2026-10-22 | D125-1190 | -12d |
| D125-1150 |  | Terminations at Chiller - D120 | 1d | 2026-10-23 | 2026-10-23 | D125-1140 | -10d |
| D125-1220 |  | Megger MC Cable from Skid to Elec Room CRAH - D120 | 1d | 2026-10-23 | 2026-10-23 | D125-1210 | -11d |
| D125-1240 |  | Megger MC Cable from Skid to MOD - D120 | 1d | 2026-10-23 | 2026-10-23 | D125-1180, D125-1170, D125-1160 | -13d |
| D125-1270 |  | Megger MC Cable from MOD-01 to Mechanical Equipment - D120 | 1d | 2026-10-23 | 2026-10-23 | D125-1250 | -13d |
| D125-1280 |  | Megger MC Cable from MOD-02 to Mechanical Equipment - D120 | 1d | 2026-10-23 | 2026-10-23 | D125-1260 | -13d |
| D125-1420 |  | Megger Cable from UPS to VFD - D120 | 1d | 2026-10-23 | 2026-10-23 | D125-1410 | -11d |
| D125-1470 |  | Terminate MC Feed at MPZ - D120 | 1d | 2026-10-23 | 2026-10-23 | D125-1460 | -10d |
| D125-1480 |  | Terminate Cables in VFD - D120 | 1d | 2026-10-23 | 2026-10-23 | D125-1420 SS | -10d |
| D125-1630 |  | Megger Cable at ATS - D120 | 1d | 2026-10-23 | 2026-10-23 | D125-1360 | -13d |
| D125-1230 |  | Terminate Elec Room CRAH - D120 | 1d | 2026-10-26 | 2026-10-26 | D125-1220 | -11d |
| D125-1290 |  | Terminate MOD-01 - D120 | 1d | 2026-10-26 | 2026-10-26 | D125-1240, D125-1270 | -13d |
| D125-1300 |  | Terminate MOD-02 - D120 | 1d | 2026-10-26 | 2026-10-26 | D125-1520, D125-1280 | -13d |
| D125-1310 |  | Terminate at Mechanical Equipment - D120 | 1d | 2026-10-26 | 2026-10-26 | D125-1300 SS, D125-1290 SS | -13d |
| D125-1370 |  | Terminate ATS Cable at Busplugs & ATSs - D120 | 2d | 2026-10-26 | 2026-10-27 | D125-1630 | -13d |
| D125-1430 |  | Terminate Cables in UPS - D120 | 1d | 2026-10-26 | 2026-10-26 | D125-1420 | -11d |
| D125-1570 |  | QC 2.2 checklist VFD - D120 | 1d | 2026-10-26 | 2026-10-26 | D125-1480 | -10d |
| D125-1610 |  | QC 2.2 checklist Chiller - D120 | 1d | 2026-10-26 | 2026-10-26 | D125-1150 | -10d |
| D125-1650 |  | QC 2.2 checklist MPZ - D120 | 1d | 2026-10-26 | 2026-10-26 | D125-1470 | -10d |
| D125-1050 |  | Cable bus Install - D120 | 2d | 2026-10-27 | 2026-10-28 | D125-1040, D125-1030 | -17d |
| D125-1320 |  | Mechanical Equipment/Tray Grounding - D120 | 2d | 2026-10-27 | 2026-10-28 | D125-1310 | -13d |
| D125-1540 |  | QC 2.2 checklist UPS - D120 | 1d | 2026-10-27 | 2026-10-27 | D125-1430 | -11d |
| D125-1550 |  | QC 2.2 checklist Elec Room CRAH - D120 | 1d | 2026-10-27 | 2026-10-27 | D125-1230 | -11d |
| D125-1560 |  | QC 2.2 Mechanical Equipment - D120 | 1d | 2026-10-27 | 2026-10-27 | D125-1310 | -11d |
| D125-1380 |  | ATS Lashing - D120 | 1d | 2026-10-28 | 2026-10-28 | D125-1370 | -13d |
| D125-1060 |  | Cable pulled to A & P Xfmrs - D120 | 1d | 2026-10-29 | 2026-10-29 | D125-1050 | -17d |
| D125-1500 |  | QC 2.2 checklist MOD-01 - D120 | 1d | 2026-10-29 | 2026-10-29 | D125-1320 | -13d |
| D125-1510 |  | QC 2.2 checklist MOD-02 - D120 | 1d | 2026-10-29 | 2026-10-29 | D125-1320 | -13d |

| ID | WBS | Task | Duration | Start | Finish | Predecessors | Total float |
| --- | --- | --- | --- | --- | --- | --- | --- |
| D125-1530 |  | QC 2.2 checklist ATSs - D120 | 1d | 2026-10-29 | 2026-10-29 | D125-1380 | -13d |
| D125-1640 |  | QC 2.2 checklist Busplugs - D120 | 1d | 2026-10-29 | 2026-10-29 | D125-1530 SS | -13d |
| D125-1070 |  | Megger Cable Bus Cable - D120 | 1d | 2026-10-30 | 2026-10-30 | D125-1060 | -17d |
| D125-1080 |  | Cable Bus inspection and covers - D120 | 1d | 2026-10-30 | 2026-10-30 | D125-1070 SS | -15d |
| D125-1090 |  | Terminations at Xfmrs - D120 | 2d | 2026-11-02 | 2026-11-03 | D125-1070 | -17d |
| D125-1100 |  | Terminations at SWD - D120 | 2d | 2026-11-02 | 2026-11-03 | D125-1070 | -17d |
| D125-1580 |  | QC 2.2 checklist SWD - D120 | 1d | 2026-11-04 | 2026-11-04 | D125-1080, D125-1490, D125-1100 | -17d |
| D125-1600 |  | QC 2.2 checklist XFMR - D120 | 1d | 2026-11-04 | 2026-11-04 | D125-1090 | -17d |
| D125-1590 |  | Ready for FTE - D120 | 1d | 2026-11-05 | 2026-11-05 | D125-1650, D125-1640, D125-1610, D125-1600, D125-1580, D125-1570, D125-1560, D125-1550, D125-1540, D125-1530, D125-1510, D125-1500 | -17d |
|  | 5 | **E120** |  | 2026-10-15 | 2026-11-05 |  |  |
| E125-1330 |  | Busduct installed - E120 | 1d | 2026-10-15 | 2026-10-15 | D125-1330 SS | -18d |
| E125-1340 |  | Busplugs/Tap Boxes installed - E120 | 1d | 2026-10-16 | 2026-10-16 | E125-1330 | -18d |
| E125-1000 |  | Set Skid - E120 | 1d | 2026-10-19 | 2026-10-19 | D125-1000 SS, E125-1340, E125-1330 | -18d |
| E125-1010 |  | Set MODs - E120 | 2d | 2026-10-19 | 2026-10-20 | E125-1000 SS | -13d |
| E125-1030 |  | Cable bus Support installed - E120 | 2d | 2026-10-19 | 2026-10-20 | E125-1000 SS | -13d |
| E125-1120 |  | Chiller feed box and conduit complete - E120 | 2d | 2026-10-19 | 2026-10-20 | E125-1010 SS, E125-1000 SS | -10d |
| E125-1040 |  | SWD top covers cut out - E120 | 5d | 2026-10-20 | 2026-10-26 | E125-1000 | -17d |
| E125-1110 |  | Finish Cable Tray to Skid - E120 | 2d | 2026-10-20 | 2026-10-21 | E125-1000 | -13d |
| E125-1350 |  | Install conduit from Busplug to ATSs - E120 | 2d | 2026-10-20 | 2026-10-21 | E125-1000 | -13d |
| E125-1390 |  | Mount VFD Stand and VFD - E120 | 1d | 2026-10-20 | 2026-10-20 | E125-1000 | -11d |
| E125-1440 |  | Mount MPZ - E120 | 1d | 2026-10-20 | 2026-10-20 | E125-1000 | -10d |
| E125-1620 |  | Electrical Room CRAH Set - E120 | 1d | 2026-10-20 | 2026-10-20 | E125-1000 | -11d |
| E125-1130 |  | Pull Chiller wire - E120 | 1d | 2026-10-21 | 2026-10-21 | E125-1120, E125-1000 | -10d |
| E125-1180 |  | Penetrate MC into MOD-01 - E120 | 1d | 2026-10-21 | 2026-10-21 | E125-1010 | -12d |
| E125-1190 |  | Penetrate MC into MOD-02 - E120 | 1d | 2026-10-21 | 2026-10-21 | E125-1010 | -12d |
| E125-1200 |  | Finish Conduit to Elec Room CRAH - E120 | 1d | 2026-10-21 | 2026-10-21 | E125-1620 | -11d |
| E125-1250 |  | Pull MC from MOD-01 to Mechanical Equipment - E120 | 2d | 2026-10-21 | 2026-10-22 | E125-1010 | -13d |
| E125-1260 |  | Pull MC from MOD-02 to Mechanical Equipment - E120 | 2d | 2026-10-21 | 2026-10-22 | E125-1010 | -13d |
| E125-1400 |  | Conduit from UPS to VFD - E120 | 1d | 2026-10-21 | 2026-10-21 | E125-1390 | -11d |
| E125-1450 |  | Penetrate MC Cable into MPZ - E120 | 1d | 2026-10-21 | 2026-10-21 | E125-1440 | -10d |
| E125-1140 |  | Megger Chiller Cable - E120 | 1d | 2026-10-22 | 2026-10-22 | E125-1130 | -10d |
| E125-1160 |  | Penetrate MC into SWD - E120 | 1d | 2026-10-22 | 2026-10-22 | E125-1110 | -13d |
| E125-1170 |  | Penetrat MC into UPS - E120 | 1d | 2026-10-22 | 2026-10-22 | E125-1110 | -13d |
| E125-1210 |  | Pull Cable to Elec Room CRAH - E120 | 1d | 2026-10-22 | 2026-10-22 | E125-1200 | -11d |
| E125-1360 |  | Pull ATS Cable - E120 | 1d | 2026-10-22 | 2026-10-22 | E125-1350 | -13d |
| E125-1410 |  | Pull Cable from UPS to VFD - E120 | 1d | 2026-10-22 | 2026-10-22 | E125-1400 | -11d |
| E125-1460 |  | Megger MPZ Cable - E120 | 1d | 2026-10-22 | 2026-10-22 | E125-1450 | -10d |
| E125-1490 |  | All Skid Grounding - E120 | 2d | 2026-10-22 | 2026-10-23 | E125-1110 | -10d |
| E125-1520 |  | Megger MC Cable from UPS to MOD - E120 | 1d | 2026-10-22 | 2026-10-22 | E125-1190 | -12d |
| E125-1150 |  | Terminations at Chiller - E120 | 1d | 2026-10-23 | 2026-10-23 | E125-1140 | -10d |
| E125-1220 |  | Megger MC Cable from Skid to Elec Room CRAH - E120 | 1d | 2026-10-23 | 2026-10-23 | E125-1210 | -11d |
| E125-1240 |  | Megger MC Cable from Skid to MOD - E120 | 1d | 2026-10-23 | 2026-10-23 | E125-1180, E125-1170, E125-1160 | -13d |
| E125-1270 |  | Megger MC Cable from MOD-01 to Mechanical Equipment - E120 | 1d | 2026-10-23 | 2026-10-23 | E125-1250 | -13d |
| E125-1280 |  | Megger MC Cable from MOD-02 to Mechanical Equipment - E120 | 1d | 2026-10-23 | 2026-10-23 | E125-1260 | -13d |
| E125-1420 |  | Megger Cable from UPS to VFD - E120 | 1d | 2026-10-23 | 2026-10-23 | E125-1410 | -11d |
| E125-1470 |  | Terminate MC Feed at MPZ - E120 | 1d | 2026-10-23 | 2026-10-23 | E125-1460 | -10d |
| E125-1480 |  | Terminate Cables in VFD - E120 | 1d | 2026-10-23 | 2026-10-23 | E125-1420 SS | -10d |
| E125-1630 |  | Megger Cable at ATS - E120 | 1d | 2026-10-23 | 2026-10-23 | E125-1360 | -13d |
| E125-1230 |  | Terminate Elec Room CRAH - E120 | 1d | 2026-10-26 | 2026-10-26 | E125-1220 | -11d |
| E125-1290 |  | Terminate MOD-01 - E120 | 1d | 2026-10-26 | 2026-10-26 | E125-1240, E125-1270 | -13d |
| E125-1300 |  | Terminate MOD-02 - E120 | 1d | 2026-10-26 | 2026-10-26 | E125-1520, E125-1280 | -13d |
| E125-1310 |  | Terminate at Mechanical Equipment - E120 | 1d | 2026-10-26 | 2026-10-26 | E125-1300 SS, E125-1290 SS | -13d |
| E125-1370 |  | Terminate ATS Cable at Busplugs & ATSs - E120 | 2d | 2026-10-26 | 2026-10-27 | E125-1630 | -13d |
| E125-1430 |  | Terminate Cables in UPS - E120 | 1d | 2026-10-26 | 2026-10-26 | E125-1420 | -11d |
| E125-1570 |  | QC 2.2 checklist VFD - E120 | 1d | 2026-10-26 | 2026-10-26 | E125-1480 | -10d |
| E125-1610 |  | QC 2.2 checklist Chiller - E120 | 1d | 2026-10-26 | 2026-10-26 | E125-1150 | -10d |
| E125-1650 |  | QC 2.2 checklist MPZ - E120 | 1d | 2026-10-26 | 2026-10-26 | E125-1470 | -10d |
| E125-1050 |  | Cable bus Install - E120 | 2d | 2026-10-27 | 2026-10-28 | E125-1040, E125-1030 | -17d |
| E125-1320 |  | Mechanical Equipment/Tray Grounding - E120 | 2d | 2026-10-27 | 2026-10-28 | E125-1310 | -13d |
| E125-1540 |  | QC 2.2 checklist UPS - E120 | 1d | 2026-10-27 | 2026-10-27 | E125-1430 | -11d |
| E125-1550 |  | QC 2.2 checklist Elec Room CRAH - E120 | 1d | 2026-10-27 | 2026-10-27 | E125-1230 | -11d |
| E125-1560 |  | QC 2.2 Mechanical Equipment - E120 | 1d | 2026-10-27 | 2026-10-27 | E125-1310 | -11d |
| E125-1380 |  | ATS Lashing - E120 | 1d | 2026-10-28 | 2026-10-28 | E125-1370 | -13d |
| E125-1060 |  | Cable pulled to A & P Xfmrs - E120 | 1d | 2026-10-29 | 2026-10-29 | E125-1050 | -17d |
| E125-1500 |  | QC 2.2 checklist MOD-01 - E120 | 1d | 2026-10-29 | 2026-10-29 | E125-1320 | -13d |
| E125-1510 |  | QC 2.2 checklist MOD-02 - E120 | 1d | 2026-10-29 | 2026-10-29 | E125-1320 | -13d |
| E125-1530 |  | QC 2.2 checklist ATSs - E120 | 1d | 2026-10-29 | 2026-10-29 | E125-1380 | -13d |
| E125-1640 |  | QC 2.2 checklist Busplugs - E120 | 1d | 2026-10-29 | 2026-10-29 | E125-1530 SS | -13d |
| E125-1070 |  | Megger Cable Bus Cable - E120 | 1d | 2026-10-30 | 2026-10-30 | E125-1060 | -17d |
| E125-1080 |  | Cable Bus inspection and covers - E120 | 1d | 2026-10-30 | 2026-10-30 | E125-1070 SS | -15d |

| ID | WBS | Task | Duration | Start | Finish | Predecessors | Total float |
| --- | --- | --- | --- | --- | --- | --- | --- |
| E125-1090 |  | Terminations at Xfmrs - E120 | 2d | 2026-11-02 | 2026-11-03 | E125-1070 | -17d |
| E125-1100 |  | Terminations at SWD - E120 | 2d | 2026-11-02 | 2026-11-03 | E125-1070 | -17d |
| E125-1580 |  | QC 2.2 checklist SWD - E120 | 1d | 2026-11-04 | 2026-11-04 | E125-1080, E125-1490, E125-1100 | -17d |
| E125-1600 |  | QC 2.2 checklist XFMR - E120 | 1d | 2026-11-04 | 2026-11-04 | E125-1090 | -17d |
| E125-1590 |  | Ready for FTE - E120 | 1d | 2026-11-05 | 2026-11-05 | E125-1650, E125-1640, E125-1610, E125-1600, E125-1580, E125-1570, E125-1560, E125-1550, E125-1540, E125-1530, E125-1510, E125-1500 | -17d |
|  | 6 | **F120** |  | 2026-10-15 | 2026-11-05 |  |  |
| F125-1330 |  | Busduct installed - F120 | 1d | 2026-10-15 | 2026-10-15 | E125-1330 SS | -18d |
| F125-1340 |  | Busplugs/Tap Boxes installed - F120 | 1d | 2026-10-16 | 2026-10-16 | F125-1330 | -18d |
| F125-1000 |  | Set Skid - F120 | 1d | 2026-10-19 | 2026-10-19 | E125-1000 SS, F125-1340, F125-1330 | -18d |
| F125-1010 |  | Set MODs - F120 | 2d | 2026-10-19 | 2026-10-20 | F125-1000 SS | -13d |
| F125-1030 |  | Cable bus Support installed - F120 | 2d | 2026-10-19 | 2026-10-20 | F125-1000 SS | -13d |
| F125-1120 |  | Chiller feed box and conduit complete - F120 | 2d | 2026-10-19 | 2026-10-20 | F125-1010 SS, F125-1000 SS | -10d |
| F125-1040 |  | SWD top covers cut out - F120 | 5d | 2026-10-20 | 2026-10-26 | F125-1000 | -17d |
| F125-1110 |  | Finish Cable Tray to Skid - F120 | 2d | 2026-10-20 | 2026-10-21 | F125-1000 | -13d |
| F125-1350 |  | Install conduit from Busplug to ATSs - F120 | 2d | 2026-10-20 | 2026-10-21 | F125-1000 | -13d |
| F125-1390 |  | Mount VFD Stand and VFD - F120 | 1d | 2026-10-20 | 2026-10-20 | F125-1000 | -11d |
| F125-1440 |  | Mount MPZ - F120 | 1d | 2026-10-20 | 2026-10-20 | F125-1000 | -10d |
| F125-1620 |  | Electrical Room CRAH Set - F120 | 1d | 2026-10-20 | 2026-10-20 | F125-1000 | -11d |
| F125-1130 |  | Pull Chiller wire - F120 | 1d | 2026-10-21 | 2026-10-21 | F125-1120, F125-1000 | -10d |
| F125-1180 |  | Penetrate MC into MOD-01 - F120 | 1d | 2026-10-21 | 2026-10-21 | F125-1010 | -12d |
| F125-1190 |  | Penetrate MC into MOD-02 - F120 | 1d | 2026-10-21 | 2026-10-21 | F125-1010 | -12d |
| F125-1200 |  | Finish Conduit to Elec Room CRAH - F120 | 1d | 2026-10-21 | 2026-10-21 | F125-1620 | -11d |
| F125-1250 |  | Pull MC from MOD-01 to Mechanical Equipment - F120 | 2d | 2026-10-21 | 2026-10-22 | F125-1010 | -13d |
| F125-1260 |  | Pull MC from MOD-02 to Mechanical Equipment - F120 | 2d | 2026-10-21 | 2026-10-22 | F125-1010 | -13d |
| F125-1400 |  | Conduit from UPS to VFD - F120 | 1d | 2026-10-21 | 2026-10-21 | F125-1390 | -11d |
| F125-1450 |  | Penetrate MC Cable into MPZ - F120 | 1d | 2026-10-21 | 2026-10-21 | F125-1440 | -10d |
| F125-1140 |  | Megger Chiller Cable - F120 | 1d | 2026-10-22 | 2026-10-22 | F125-1130 | -10d |
| F125-1160 |  | Penetrate MC into SWD - F120 | 1d | 2026-10-22 | 2026-10-22 | F125-1110 | -13d |
| F125-1170 |  | Penetrat MC into UPS - F120 | 1d | 2026-10-22 | 2026-10-22 | F125-1110 | -13d |
| F125-1210 |  | Pull Cable to Elec Room CRAH - F120 | 1d | 2026-10-22 | 2026-10-22 | F125-1200 | -11d |
| F125-1360 |  | Pull ATS Cable - F120 | 1d | 2026-10-22 | 2026-10-22 | F125-1350 | -13d |
| F125-1410 |  | Pull Cable from UPS to VFD - F120 | 1d | 2026-10-22 | 2026-10-22 | F125-1400 | -11d |
| F125-1460 |  | Megger MPZ Cable - F120 | 1d | 2026-10-22 | 2026-10-22 | F125-1450 | -10d |
| F125-1490 |  | All Skid Grounding - F120 | 2d | 2026-10-22 | 2026-10-23 | F125-1110 | -10d |
| F125-1520 |  | Megger MC Cable from UPS to MOD - F120 | 1d | 2026-10-22 | 2026-10-22 | F125-1190 | -12d |
| F125-1150 |  | Terminations at Chiller - F120 | 1d | 2026-10-23 | 2026-10-23 | F125-1140 | -10d |
| F125-1220 |  | Megger MC Cable from Skid to Elec Room CRAH - F120 | 1d | 2026-10-23 | 2026-10-23 | F125-1210 | -11d |
| F125-1240 |  | Megger MC Cable from Skid to MOD - F120 | 1d | 2026-10-23 | 2026-10-23 | F125-1180, F125-1170, F125-1160 | -13d |
| F125-1270 |  | Megger MC Cable from MOD-01 to Mechanical Equipment - F120 | 1d | 2026-10-23 | 2026-10-23 | F125-1250 | -13d |
| F125-1280 |  | Megger MC Cable from MOD-02 to Mechanical Equipment - F120 | 1d | 2026-10-23 | 2026-10-23 | F125-1260 | -13d |
| F125-1420 |  | Megger Cable from UPS to VFD - F120 | 1d | 2026-10-23 | 2026-10-23 | F125-1410 | -11d |
| F125-1470 |  | Terminate MC Feed at MPZ - F120 | 1d | 2026-10-23 | 2026-10-23 | F125-1460 | -10d |
| F125-1480 |  | Terminate Cables in VFD - F120 | 1d | 2026-10-23 | 2026-10-23 | F125-1420 SS | -10d |
| F125-1630 |  | Megger Cable at ATS - F120 | 1d | 2026-10-23 | 2026-10-23 | F125-1360 | -13d |
| F125-1230 |  | Terminate Elec Room CRAH - F120 | 1d | 2026-10-26 | 2026-10-26 | F125-1220 | -11d |
| F125-1290 |  | Terminate MOD-01 - F120 | 1d | 2026-10-26 | 2026-10-26 | F125-1240, F125-1270 | -13d |
| F125-1300 |  | Terminate MOD-02 - F120 | 1d | 2026-10-26 | 2026-10-26 | F125-1520, F125-1280 | -13d |
| F125-1310 |  | Terminate at Mechanical Equipment - F120 | 1d | 2026-10-26 | 2026-10-26 | F125-1300 SS, F125-1290 SS | -13d |
| F125-1370 |  | Terminate ATS Cable at Busplugs & ATSs - F120 | 2d | 2026-10-26 | 2026-10-27 | F125-1630 | -13d |
| F125-1430 |  | Terminate Cables in UPS - F120 | 1d | 2026-10-26 | 2026-10-26 | F125-1420 | -11d |
| F125-1570 |  | QC 2.2 checklist VFD - F120 | 1d | 2026-10-26 | 2026-10-26 | F125-1480 | -10d |
| F125-1610 |  | QC 2.2 checklist Chiller - F120 | 1d | 2026-10-26 | 2026-10-26 | F125-1150 | -10d |
| F125-1650 |  | QC 2.2 checklist MPZ - F120 | 1d | 2026-10-26 | 2026-10-26 | F125-1470 | -10d |
| F125-1050 |  | Cable bus Install - F120 | 2d | 2026-10-27 | 2026-10-28 | F125-1040, F125-1030 | -17d |
| F125-1320 |  | Mechanical Equipment/Tray Grounding - F120 | 2d | 2026-10-27 | 2026-10-28 | F125-1310 | -13d |
| F125-1540 |  | QC 2.2 checklist UPS - F120 | 1d | 2026-10-27 | 2026-10-27 | F125-1430 | -11d |
| F125-1550 |  | QC 2.2 checklist Elec Room CRAH - F120 | 1d | 2026-10-27 | 2026-10-27 | F125-1230 | -11d |
| F125-1560 |  | QC 2.2 Mechanical Equipment - F120 | 1d | 2026-10-27 | 2026-10-27 | F125-1310 | -11d |
| F125-1380 |  | ATS Lashing - F120 | 1d | 2026-10-28 | 2026-10-28 | F125-1370 | -13d |
| F125-1060 |  | Cable pulled to A & P Xfmrs - F120 | 1d | 2026-10-29 | 2026-10-29 | F125-1050 | -17d |
| F125-1500 |  | QC 2.2 checklist MOD-01 - F120 | 1d | 2026-10-29 | 2026-10-29 | F125-1320 | -13d |
| F125-1510 |  | QC 2.2 checklist MOD-02 - F120 | 1d | 2026-10-29 | 2026-10-29 | F125-1320 | -13d |
| F125-1530 |  | QC 2.2 checklist ATSs - F120 | 1d | 2026-10-29 | 2026-10-29 | F125-1380 | -13d |
| F125-1640 |  | QC 2.2 checklist Busplugs - F120 | 1d | 2026-10-29 | 2026-10-29 | F125-1530 SS | -13d |
| F125-1070 |  | Megger Cable Bus Cable - F120 | 1d | 2026-10-30 | 2026-10-30 | F125-1060 | -17d |
| F125-1080 |  | Cable Bus inspection and covers - F120 | 1d | 2026-10-30 | 2026-10-30 | F125-1070 SS | -15d |
| F125-1090 |  | Terminations at Xfmrs - F120 | 2d | 2026-11-02 | 2026-11-03 | F125-1070 | -17d |
| F125-1100 |  | Terminations at SWD - F120 | 2d | 2026-11-02 | 2026-11-03 | F125-1070 | -17d |
| F125-1580 |  | QC 2.2 checklist SWD - F120 | 1d | 2026-11-04 | 2026-11-04 | F125-1080, F125-1490, F125-1100 | -17d |
| F125-1600 |  | QC 2.2 checklist XFMR - F120 | 1d | 2026-11-04 | 2026-11-04 | F125-1090 | -17d |

| ID | WBS | Task | Duration | Start | Finish | Predecessors | Total float |
| --- | --- | --- | --- | --- | --- | --- | --- |
| F125-1590 |  | Ready for FTE - F120 | 1d | 2026-11-05 | 2026-11-05 | F125-1650, F125-1640, F125-1610, F125-1600, F125-1580, F125-1570, F125-1560, F125-1550, F125-1540, F125-1530, F125-1510, F125-1500 | -17d |
|  | 7 | **G120** |  | 2026-10-16 | 2026-11-06 |  |  |
| G125-1330 |  | Busduct installed - G120 | 1d | 2026-10-16 | 2026-10-16 | F125-1330 | -18d |
| G125-1340 |  | Busplugs/Tap Boxes installed - G120 | 1d | 2026-10-19 | 2026-10-19 | G125-1330 | -18d |
| G125-1000 |  | Set Skid - G120 | 1d | 2026-10-20 | 2026-10-20 | F125-1000, G125-1340, G125-1330 | -18d |
| G125-1010 |  | Set MODs - G120 | 2d | 2026-10-20 | 2026-10-21 | G125-1000 SS | -14d |
| G125-1030 |  | Cable bus Support installed - G120 | 2d | 2026-10-20 | 2026-10-21 | G125-1000 SS | -14d |
| G125-1120 |  | Chiller feed box and conduit complete - G120 | 2d | 2026-10-20 | 2026-10-21 | G125-1010 SS, G125-1000 SS | -11d |
| G125-1040 |  | SWD top covers cut out - G120 | 5d | 2026-10-21 | 2026-10-27 | G125-1000 | -18d |
| G125-1110 |  | Finish Cable Tray to Skid - G120 | 2d | 2026-10-21 | 2026-10-22 | G125-1000 | -14d |
| G125-1350 |  | Install conduit from Busplug to ATSs - G120 | 2d | 2026-10-21 | 2026-10-22 | G125-1000 | -14d |
| G125-1390 |  | Mount VFD Stand and VFD - G120 | 1d | 2026-10-21 | 2026-10-21 | G125-1000 | -12d |
| G125-1440 |  | Mount MPZ - G120 | 1d | 2026-10-21 | 2026-10-21 | G125-1000 | -11d |
| G125-1620 |  | Electrical Room CRAH Set - G120 | 1d | 2026-10-21 | 2026-10-21 | G125-1000 | -12d |
| G125-1130 |  | Pull Chiller wire - G120 | 1d | 2026-10-22 | 2026-10-22 | G125-1120, G125-1000 | -11d |
| G125-1180 |  | Penetrate MC into MOD-01 - G120 | 1d | 2026-10-22 | 2026-10-22 | G125-1010 | -13d |
| G125-1190 |  | Penetrate MC into MOD-02 - G120 | 1d | 2026-10-22 | 2026-10-22 | G125-1010 | -13d |
| G125-1200 |  | Finish Conduit to Elec Room CRAH - G120 | 1d | 2026-10-22 | 2026-10-22 | G125-1620 | -12d |
| G125-1250 |  | Pull MC from MOD-01 to Mechanical Equipment - G120 | 2d | 2026-10-22 | 2026-10-23 | G125-1010 | -14d |
| G125-1260 |  | Pull MC from MOD-02 to Mechanical Equipment - G120 | 2d | 2026-10-22 | 2026-10-23 | G125-1010 | -14d |
| G125-1400 |  | Conduit from UPS to VFD - G120 | 1d | 2026-10-22 | 2026-10-22 | G125-1390 | -12d |
| G125-1450 |  | Penetrate MC Cable into MPZ - G120 | 1d | 2026-10-22 | 2026-10-22 | G125-1440 | -11d |
| G125-1140 |  | Megger Chiller Cable - G120 | 1d | 2026-10-23 | 2026-10-23 | G125-1130 | -11d |
| G125-1160 |  | Penetrate MC into SWD - G120 | 1d | 2026-10-23 | 2026-10-23 | G125-1110 | -14d |
| G125-1170 |  | Penetrat MC into UPS - G120 | 1d | 2026-10-23 | 2026-10-23 | G125-1110 | -14d |
| G125-1210 |  | Pull Cable to Elec Room CRAH - G120 | 1d | 2026-10-23 | 2026-10-23 | G125-1200 | -12d |
| G125-1360 |  | Pull ATS Cable - G120 | 1d | 2026-10-23 | 2026-10-23 | G125-1350 | -14d |
| G125-1410 |  | Pull Cable from UPS to VFD - G120 | 1d | 2026-10-23 | 2026-10-23 | G125-1400 | -12d |
| G125-1460 |  | Megger MPZ Cable - G120 | 1d | 2026-10-23 | 2026-10-23 | G125-1450 | -11d |
| G125-1490 |  | All Skid Grounding - G120 | 2d | 2026-10-23 | 2026-10-26 | G125-1110 | -11d |
| G125-1520 |  | Megger MC Cable from UPS to MOD - G120 | 1d | 2026-10-23 | 2026-10-23 | G125-1190 | -13d |
| G125-1150 |  | Terminations at Chiller - G120 | 1d | 2026-10-26 | 2026-10-26 | G125-1140 | -11d |
| G125-1220 |  | Megger MC Cable from Skid to Elec Room CRAH - G120 | 1d | 2026-10-26 | 2026-10-26 | G125-1210 | -12d |
| G125-1240 |  | Megger MC Cable from Skid to MOD - G120 | 1d | 2026-10-26 | 2026-10-26 | G125-1180, G125-1170, G125-1160 | -14d |
| G125-1270 |  | Megger MC Cable from MOD-01 to Mechanical Equipment - G120 | 1d | 2026-10-26 | 2026-10-26 | G125-1250 | -14d |
| G125-1280 |  | Megger MC Cable from MOD-02 to Mechanical Equipment - G120 | 1d | 2026-10-26 | 2026-10-26 | G125-1260 | -14d |
| G125-1420 |  | Megger Cable from UPS to VFD - G120 | 1d | 2026-10-26 | 2026-10-26 | G125-1410 | -12d |
| G125-1470 |  | Terminate MC Feed at MPZ - G120 | 1d | 2026-10-26 | 2026-10-26 | G125-1460 | -11d |
| G125-1480 |  | Terminate Cables in VFD - G120 | 1d | 2026-10-26 | 2026-10-26 | G125-1420 SS | -11d |
| G125-1630 |  | Megger Cable at ATS - G120 | 1d | 2026-10-26 | 2026-10-26 | G125-1360 | -14d |
| G125-1230 |  | Terminate Elec Room CRAH - G120 | 1d | 2026-10-27 | 2026-10-27 | G125-1220 | -12d |
| G125-1290 |  | Terminate MOD-01 - G120 | 1d | 2026-10-27 | 2026-10-27 | G125-1240, G125-1270 | -14d |
| G125-1300 |  | Terminate MOD-02 - G120 | 1d | 2026-10-27 | 2026-10-27 | G125-1520, G125-1280 | -14d |
| G125-1310 |  | Terminate at Mechanical Equipment - G120 | 1d | 2026-10-27 | 2026-10-27 | G125-1300 SS, G125-1290 SS | -14d |
| G125-1370 |  | Terminate ATS Cable at Busplugs & ATSs - G120 | 2d | 2026-10-27 | 2026-10-28 | G125-1630 | -14d |
| G125-1430 |  | Terminate Cables in UPS - G120 | 1d | 2026-10-27 | 2026-10-27 | G125-1420 | -12d |
| G125-1570 |  | QC 2.2 checklist VFD - G120 | 1d | 2026-10-27 | 2026-10-27 | G125-1480 | -11d |
| G125-1610 |  | QC 2.2 checklist Chiller - G120 | 1d | 2026-10-27 | 2026-10-27 | G125-1150 | -11d |
| G125-1650 |  | QC 2.2 checklist MPZ - G120 | 1d | 2026-10-27 | 2026-10-27 | G125-1470 | -11d |
| G125-1050 |  | Cable bus Install - G120 | 2d | 2026-10-28 | 2026-10-29 | G125-1040, G125-1030 | -18d |
| G125-1320 |  | Mechanical Equipment/Tray Grounding - G120 | 2d | 2026-10-28 | 2026-10-29 | G125-1310 | -14d |
| G125-1540 |  | QC 2.2 checklist UPS - G120 | 1d | 2026-10-28 | 2026-10-28 | G125-1430 | -12d |
| G125-1550 |  | QC 2.2 checklist Elec Room CRAH - G120 | 1d | 2026-10-28 | 2026-10-28 | G125-1230 | -12d |
| G125-1560 |  | QC 2.2 Mechanical Equipment - G120 | 1d | 2026-10-28 | 2026-10-28 | G125-1310 | -12d |
| G125-1380 |  | ATS Lashing - G120 | 1d | 2026-10-29 | 2026-10-29 | G125-1370 | -14d |
| G125-1060 |  | Cable pulled to A & P Xfmrs - G120 | 1d | 2026-10-30 | 2026-10-30 | G125-1050 | -18d |
| G125-1500 |  | QC 2.2 checklist MOD-01 - G120 | 1d | 2026-10-30 | 2026-10-30 | G125-1320 | -14d |
| G125-1510 |  | QC 2.2 checklist MOD-02 - G120 | 1d | 2026-10-30 | 2026-10-30 | G125-1320 | -14d |
| G125-1530 |  | QC 2.2 checklist ATSs - G120 | 1d | 2026-10-30 | 2026-10-30 | G125-1380 | -14d |
| G125-1640 |  | QC 2.2 checklist Busplugs - G120 | 1d | 2026-10-30 | 2026-10-30 | G125-1530 SS | -14d |
| G125-1070 |  | Megger Cable Bus Cable - G120 | 1d | 2026-11-02 | 2026-11-02 | G125-1060 | -18d |
| G125-1080 |  | Cable Bus inspection and covers - G120 | 1d | 2026-11-02 | 2026-11-02 | G125-1070 SS | -16d |
| G125-1090 |  | Terminations at Xfmrs - G120 | 2d | 2026-11-03 | 2026-11-04 | G125-1070 | -18d |
| G125-1100 |  | Terminations at SWD - G120 | 2d | 2026-11-03 | 2026-11-04 | G125-1070 | -18d |
| G125-1580 |  | QC 2.2 checklist SWD - G120 | 1d | 2026-11-05 | 2026-11-05 | G125-1080, G125-1490, G125-1100 | -18d |
| G125-1600 |  | QC 2.2 checklist XFMR - G120 | 1d | 2026-11-05 | 2026-11-05 | G125-1090 | -18d |
| G125-1590 |  | Ready for FTE - G120 | 1d | 2026-11-06 | 2026-11-06 | G125-1650, G125-1640, G125-1610, G125-1600, G125-1580, G125-1570, G125-1560, G125-1550, G125-1540, G125-1530, G125-1510, G125-1500 | -18d |
|  | 9 | **H120** |  | 2026-10-16 | 2026-11-06 |  |  |
| H125-1330 |  | Busduct installed - H120 | 1d | 2026-10-16 | 2026-10-16 | G125-1330 SS | -18d |
| H125-1340 |  | Busplugs/Tap Boxes installed - H120 | 1d | 2026-10-19 | 2026-10-19 | H125-1330 | -18d |

| ID | WBS | Task | Duration | Start | Finish | Predecessors | Total float |
| --- | --- | --- | --- | --- | --- | --- | --- |
| H125-1000 |  | Set Skid - H120 | 1d | 2026-10-20 | 2026-10-20 | G125-1000 SS, H125-1340, H125-1330 | -18d |
| H125-1010 |  | Set MODs - H120 | 2d | 2026-10-20 | 2026-10-21 | H125-1000 SS | -14d |
| H125-1030 |  | Cable bus Support installed - H120 | 2d | 2026-10-20 | 2026-10-21 | H125-1000 SS | -14d |
| H125-1120 |  | Chiller feed box and conduit complete - H120 | 2d | 2026-10-20 | 2026-10-21 | H125-1010 SS, H125-1000 SS | -11d |
| H125-1040 |  | SWD top covers cut out - H120 | 5d | 2026-10-21 | 2026-10-27 | H125-1000 | -18d |
| H125-1110 |  | Finish Cable Tray to Skid - H120 | 2d | 2026-10-21 | 2026-10-22 | H125-1000 | -14d |
| H125-1350 |  | Install conduit from Busplug to ATSs - H120 | 2d | 2026-10-21 | 2026-10-22 | H125-1000 | -14d |
| H125-1390 |  | Mount VFD Stand and VFD - H120 | 1d | 2026-10-21 | 2026-10-21 | H125-1000 | -12d |
| H125-1440 |  | Mount MPZ - H120 | 1d | 2026-10-21 | 2026-10-21 | H125-1000 | -11d |
| H125-1620 |  | Electrical Room CRAH Set - H120 | 1d | 2026-10-21 | 2026-10-21 | H125-1000 | -12d |
| H125-1130 |  | Pull Chiller wire - H120 | 1d | 2026-10-22 | 2026-10-22 | H125-1120, H125-1000 | -11d |
| H125-1180 |  | Penetrate MC into MOD-01 - H120 | 1d | 2026-10-22 | 2026-10-22 | H125-1010 | -13d |
| H125-1190 |  | Penetrate MC into MOD-02 - H120 | 1d | 2026-10-22 | 2026-10-22 | H125-1010 | -13d |
| H125-1200 |  | Finish Conduit to Elec Room CRAH - H120 | 1d | 2026-10-22 | 2026-10-22 | H125-1620 | -12d |
| H125-1250 |  | Pull MC from MOD-01 to Mechanical Equipment - H120 | 2d | 2026-10-22 | 2026-10-23 | H125-1010 | -14d |
| H125-1260 |  | Pull MC from MOD-02 to Mechanical Equipment - H120 | 2d | 2026-10-22 | 2026-10-23 | H125-1010 | -14d |
| H125-1400 |  | Conduit from UPS to VFD - H120 | 1d | 2026-10-22 | 2026-10-22 | H125-1390 | -12d |
| H125-1450 |  | Penetrate MC Cable into MPZ - H120 | 1d | 2026-10-22 | 2026-10-22 | H125-1440 | -11d |
| H125-1140 |  | Megger Chiller Cable - H120 | 1d | 2026-10-23 | 2026-10-23 | H125-1130 | -11d |
| H125-1160 |  | Penetrate MC into SWD - H120 | 1d | 2026-10-23 | 2026-10-23 | H125-1110 | -14d |
| H125-1170 |  | Penetrat MC into UPS - H120 | 1d | 2026-10-23 | 2026-10-23 | H125-1110 | -14d |
| H125-1210 |  | Pull Cable to Elec Room CRAH - H120 | 1d | 2026-10-23 | 2026-10-23 | H125-1200 | -12d |
| H125-1360 |  | Pull ATS Cable - H120 | 1d | 2026-10-23 | 2026-10-23 | H125-1350 | -14d |
| H125-1410 |  | Pull Cable from UPS to VFD - H120 | 1d | 2026-10-23 | 2026-10-23 | H125-1400 | -12d |
| H125-1460 |  | Megger MPZ Cable - H120 | 1d | 2026-10-23 | 2026-10-23 | H125-1450 | -11d |
| H125-1490 |  | All Skid Grounding - H120 | 2d | 2026-10-23 | 2026-10-26 | H125-1110 | -11d |
| H125-1520 |  | Megger MC Cable from UPS to MOD - H120 | 1d | 2026-10-23 | 2026-10-23 | H125-1190 | -13d |
| H125-1150 |  | Terminations at Chiller - H120 | 1d | 2026-10-26 | 2026-10-26 | H125-1140 | -11d |
| H125-1220 |  | Megger MC Cable from Skid to Elec Room CRAH - H120 | 1d | 2026-10-26 | 2026-10-26 | H125-1210 | -12d |
| H125-1240 |  | Megger MC Cable from Skid to MOD - H120 | 1d | 2026-10-26 | 2026-10-26 | H125-1180, H125-1170, H125-1160 | -14d |
| H125-1270 |  | Megger MC Cable from MOD-01 to Mechanical Equipment - H120 | 1d | 2026-10-26 | 2026-10-26 | H125-1250 | -14d |
| H125-1280 |  | Megger MC Cable from MOD-02 to Mechanical Equipment - H120 | 1d | 2026-10-26 | 2026-10-26 | H125-1260 | -14d |
| H125-1420 |  | Megger Cable from UPS to VFD - H120 | 1d | 2026-10-26 | 2026-10-26 | H125-1410 | -12d |
| H125-1470 |  | Terminate MC Feed at MPZ - H120 | 1d | 2026-10-26 | 2026-10-26 | H125-1460 | -11d |
| H125-1480 |  | Terminate Cables in VFD - H120 | 1d | 2026-10-26 | 2026-10-26 | H125-1420 SS | -11d |
| H125-1630 |  | Megger Cable at ATS - H120 | 1d | 2026-10-26 | 2026-10-26 | H125-1360 | -14d |
| H125-1230 |  | Terminate Elec Room CRAH - H120 | 1d | 2026-10-27 | 2026-10-27 | H125-1220 | -12d |
| H125-1290 |  | Terminate MOD-01 - H120 | 1d | 2026-10-27 | 2026-10-27 | H125-1240, H125-1270 | -14d |
| H125-1300 |  | Terminate MOD-02 - H120 | 1d | 2026-10-27 | 2026-10-27 | H125-1520, H125-1280 | -14d |
| H125-1310 |  | Terminate at Mechanical Equipment - H120 | 1d | 2026-10-27 | 2026-10-27 | H125-1300 SS, H125-1290 SS | -14d |
| H125-1370 |  | Terminate ATS Cable at Busplugs & ATSs - H120 | 2d | 2026-10-27 | 2026-10-28 | H125-1630 | -14d |
| H125-1430 |  | Terminate Cables in UPS - H120 | 1d | 2026-10-27 | 2026-10-27 | H125-1420 | -12d |
| H125-1570 |  | QC 2.2 checklist VFD - H120 | 1d | 2026-10-27 | 2026-10-27 | H125-1480 | -11d |
| H125-1610 |  | QC 2.2 checklist Chiller - H120 | 1d | 2026-10-27 | 2026-10-27 | H125-1150 | -11d |
| H125-1650 |  | QC 2.2 checklist MPZ - H120 | 1d | 2026-10-27 | 2026-10-27 | H125-1470 | -11d |
| H125-1050 |  | Cable bus Install - H120 | 2d | 2026-10-28 | 2026-10-29 | H125-1040, H125-1030 | -18d |
| H125-1320 |  | Mechanical Equipment/Tray Grounding - H120 | 2d | 2026-10-28 | 2026-10-29 | H125-1310 | -14d |
| H125-1540 |  | QC 2.2 checklist UPS - H120 | 1d | 2026-10-28 | 2026-10-28 | H125-1430 | -12d |
| H125-1550 |  | QC 2.2 checklist Elec Room CRAH - H120 | 1d | 2026-10-28 | 2026-10-28 | H125-1230 | -12d |
| H125-1560 |  | QC 2.2 Mechanical Equipment - H120 | 1d | 2026-10-28 | 2026-10-28 | H125-1310 | -12d |
| H125-1380 |  | ATS Lashing - H120 | 1d | 2026-10-29 | 2026-10-29 | H125-1370 | -14d |
| H125-1060 |  | Cable pulled to A & P Xfmrs - H120 | 1d | 2026-10-30 | 2026-10-30 | H125-1050 | -18d |
| H125-1500 |  | QC 2.2 checklist MOD-01 - H120 | 1d | 2026-10-30 | 2026-10-30 | H125-1320 | -14d |
| H125-1510 |  | QC 2.2 checklist MOD-02 - H120 | 1d | 2026-10-30 | 2026-10-30 | H125-1320 | -14d |
| H125-1530 |  | QC 2.2 checklist ATSs - H120 | 1d | 2026-10-30 | 2026-10-30 | H125-1380 | -14d |
| H125-1640 |  | QC 2.2 checklist Busplugs - H120 | 1d | 2026-10-30 | 2026-10-30 | H125-1530 SS | -14d |
| H125-1070 |  | Megger Cable Bus Cable - H120 | 1d | 2026-11-02 | 2026-11-02 | H125-1060 | -18d |
| H125-1080 |  | Cable Bus inspection and covers - H120 | 1d | 2026-11-02 | 2026-11-02 | H125-1070 SS | -16d |
| H125-1090 |  | Terminations at Xfmrs - H120 | 2d | 2026-11-03 | 2026-11-04 | H125-1070 | -18d |
| H125-1100 |  | Terminations at SWD - H120 | 2d | 2026-11-03 | 2026-11-04 | H125-1070 | -18d |
| H125-1580 |  | QC 2.2 checklist SWD - H120 | 1d | 2026-11-05 | 2026-11-05 | H125-1080, H125-1490, H125-1100 | -18d |
| H125-1600 |  | QC 2.2 checklist XFMR - H120 | 1d | 2026-11-05 | 2026-11-05 | H125-1090 | -18d |
| H125-1590 |  | Ready for FTE - H120 | 1d | 2026-11-06 | 2026-11-06 | H125-1650, H125-1640, H125-1610, H125-1600, H125-1580, H125-1570, H125-1560, H125-1550, H125-1540, H125-1530, H125-1510, H125-1500 | -18d |
|  | 8 | **J120** |  | 2026-10-16 | 2026-11-06 |  |  |
| J125-1330 |  | Busduct installed - J120 | 1d | 2026-10-16 | 2026-10-16 | H125-1330 SS | -18d |
| J125-1340 |  | Busplugs/Tap Boxes installed - J120 | 1d | 2026-10-19 | 2026-10-19 | J125-1330 | -18d |
| J125-1000 |  | Set Skid - J120 | 1d | 2026-10-20 | 2026-10-20 | H125-1000 SS, J125-1340, J125-1330 | -18d |
| J125-1010 |  | Set MODs - J120 | 2d | 2026-10-20 | 2026-10-21 | J125-1000 SS | -14d |
| J125-1030 |  | Cable bus Support installed - J120 | 2d | 2026-10-20 | 2026-10-21 | J125-1000 SS | -14d |
| J125-1120 |  | Chiller feed box and conduit complete - J120 | 2d | 2026-10-20 | 2026-10-21 | J125-1010 SS, J125-1000 SS | -11d |

| ID | WBS | Task | Duration | Start | Finish | Predecessors | Total float |
| --- | --- | --- | --- | --- | --- | --- | --- |
| J125-1040 |  | SWD top covers cut out - J120 | 5d | 2026-10-21 | 2026-10-27 | J125-1000 | -18d |
| J125-1110 |  | Finish Cable Tray to Skid - J120 | 2d | 2026-10-21 | 2026-10-22 | J125-1000 | -14d |
| J125-1350 |  | Install conduit from Busplug to ATSs - J120 | 2d | 2026-10-21 | 2026-10-22 | J125-1000 | -14d |
| J125-1390 |  | Mount VFD Stand and VFD - J120 | 1d | 2026-10-21 | 2026-10-21 | J125-1000 | -12d |
| J125-1440 |  | Mount MPZ - J120 | 1d | 2026-10-21 | 2026-10-21 | J125-1000 | -11d |
| J125-1620 |  | Electrical Room CRAH Set - J120 | 1d | 2026-10-21 | 2026-10-21 | J125-1000 | -12d |
| J125-1130 |  | Pull Chiller wire - J120 | 1d | 2026-10-22 | 2026-10-22 | J125-1120, J125-1000 | -11d |
| J125-1180 |  | Penetrate MC into MOD-01 - J120 | 1d | 2026-10-22 | 2026-10-22 | J125-1010 | -13d |
| J125-1190 |  | Penetrate MC into MOD-02 - J120 | 1d | 2026-10-22 | 2026-10-22 | J125-1010 | -13d |
| J125-1200 |  | Finish Conduit to Elec Room CRAH - J120 | 1d | 2026-10-22 | 2026-10-22 | J125-1620 | -12d |
| J125-1250 |  | Pull MC from MOD-01 to Mechanical Equipment - J120 | 2d | 2026-10-22 | 2026-10-23 | J125-1010 | -14d |
| J125-1260 |  | Pull MC from MOD-02 to Mechanical Equipment - J120 | 2d | 2026-10-22 | 2026-10-23 | J125-1010 | -14d |
| J125-1400 |  | Conduit from UPS to VFD - J120 | 1d | 2026-10-22 | 2026-10-22 | J125-1390 | -12d |
| J125-1450 |  | Penetrate MC Cable into MPZ - J120 | 1d | 2026-10-22 | 2026-10-22 | J125-1440 | -11d |
| J125-1140 |  | Megger Chiller Cable - J120 | 1d | 2026-10-23 | 2026-10-23 | J125-1130 | -11d |
| J125-1160 |  | Penetrate MC into SWD - J120 | 1d | 2026-10-23 | 2026-10-23 | J125-1110 | -14d |
| J125-1170 |  | Penetrat MC into UPS - J120 | 1d | 2026-10-23 | 2026-10-23 | J125-1110 | -14d |
| J125-1210 |  | Pull Cable to Elec Room CRAH - J120 | 1d | 2026-10-23 | 2026-10-23 | J125-1200 | -12d |
| J125-1360 |  | Pull ATS Cable - J120 | 1d | 2026-10-23 | 2026-10-23 | J125-1350 | -14d |
| J125-1410 |  | Pull Cable from UPS to VFD - J120 | 1d | 2026-10-23 | 2026-10-23 | J125-1400 | -12d |
| J125-1460 |  | Megger MPZ Cable - J120 | 1d | 2026-10-23 | 2026-10-23 | J125-1450 | -11d |
| J125-1490 |  | All Skid Grounding - J120 | 2d | 2026-10-23 | 2026-10-26 | J125-1110 | -11d |
| J125-1520 |  | Megger MC Cable from UPS to MOD - J120 | 1d | 2026-10-23 | 2026-10-23 | J125-1190 | -13d |
| J125-1150 |  | Terminations at Chiller - J120 | 1d | 2026-10-26 | 2026-10-26 | J125-1140 | -11d |
| J125-1220 |  | Megger MC Cable from Skid to Elec Room CRAH - J120 | 1d | 2026-10-26 | 2026-10-26 | J125-1210 | -12d |
| J125-1240 |  | Megger MC Cable from Skid to MOD - J120 | 1d | 2026-10-26 | 2026-10-26 | J125-1180, J125-1170, J125-1160 | -14d |
| J125-1270 |  | Megger MC Cable from MOD-01 to Mechanical Equipment - J120 | 1d | 2026-10-26 | 2026-10-26 | J125-1250 | -14d |
| J125-1280 |  | Megger MC Cable from MOD-02 to Mechanical Equipment - J120 | 1d | 2026-10-26 | 2026-10-26 | J125-1260 | -14d |
| J125-1420 |  | Megger Cable from UPS to VFD - J120 | 1d | 2026-10-26 | 2026-10-26 | J125-1410 | -12d |
| J125-1470 |  | Terminate MC Feed at MPZ - J120 | 1d | 2026-10-26 | 2026-10-26 | J125-1460 | -11d |
| J125-1480 |  | Terminate Cables in VFD - J120 | 1d | 2026-10-26 | 2026-10-26 | J125-1420 SS | -11d |
| J125-1630 |  | Megger Cable at ATS - J120 | 1d | 2026-10-26 | 2026-10-26 | J125-1360 | -14d |
| J125-1230 |  | Terminate Elec Room CRAH - J120 | 1d | 2026-10-27 | 2026-10-27 | J125-1220 | -12d |
| J125-1290 |  | Terminate MOD-01 - J120 | 1d | 2026-10-27 | 2026-10-27 | J125-1240, J125-1270 | -14d |
| J125-1300 |  | Terminate MOD-02 - J120 | 1d | 2026-10-27 | 2026-10-27 | J125-1520, J125-1280 | -14d |
| J125-1310 |  | Terminate at Mechanical Equipment - J120 | 1d | 2026-10-27 | 2026-10-27 | J125-1300 SS, J125-1290 SS | -14d |
| J125-1370 |  | Terminate ATS Cable at Busplugs & ATSs - J120 | 2d | 2026-10-27 | 2026-10-28 | J125-1630 | -14d |
| J125-1430 |  | Terminate Cables in UPS - J120 | 1d | 2026-10-27 | 2026-10-27 | J125-1420 | -12d |
| J125-1570 |  | QC 2.2 checklist VFD - J120 | 1d | 2026-10-27 | 2026-10-27 | J125-1480 | -11d |
| J125-1610 |  | QC 2.2 checklist Chiller - J120 | 1d | 2026-10-27 | 2026-10-27 | J125-1150 | -11d |
| J125-1650 |  | QC 2.2 checklist MPZ - J120 | 1d | 2026-10-27 | 2026-10-27 | J125-1470 | -11d |
| J125-1050 |  | Cable bus Install - J120 | 2d | 2026-10-28 | 2026-10-29 | J125-1040, J125-1030 | -18d |
| J125-1320 |  | Mechanical Equipment/Tray Grounding - J120 | 2d | 2026-10-28 | 2026-10-29 | J125-1310 | -14d |
| J125-1540 |  | QC 2.2 checklist UPS - J120 | 1d | 2026-10-28 | 2026-10-28 | J125-1430 | -12d |
| J125-1550 |  | QC 2.2 checklist Elec Room CRAH - J120 | 1d | 2026-10-28 | 2026-10-28 | J125-1230 | -12d |
| J125-1560 |  | QC 2.2 Mechanical Equipment - J120 | 1d | 2026-10-28 | 2026-10-28 | J125-1310 | -12d |
| J125-1380 |  | ATS Lashing - J120 | 1d | 2026-10-29 | 2026-10-29 | J125-1370 | -14d |
| J125-1060 |  | Cable pulled to A & P Xfmrs - J120 | 1d | 2026-10-30 | 2026-10-30 | J125-1050 | -18d |
| J125-1500 |  | QC 2.2 checklist MOD-01 - J120 | 1d | 2026-10-30 | 2026-10-30 | J125-1320 | -14d |
| J125-1510 |  | QC 2.2 checklist MOD-02 - J120 | 1d | 2026-10-30 | 2026-10-30 | J125-1320 | -14d |
| J125-1530 |  | QC 2.2 checklist ATSs - J120 | 1d | 2026-10-30 | 2026-10-30 | J125-1380 | -14d |
| J125-1640 |  | QC 2.2 checklist Busplugs - J120 | 1d | 2026-10-30 | 2026-10-30 | J125-1530 SS | -14d |
| J125-1070 |  | Megger Cable Bus Cable - J120 | 1d | 2026-11-02 | 2026-11-02 | J125-1060 | -18d |
| J125-1080 |  | Cable Bus inspection and covers - J120 | 1d | 2026-11-02 | 2026-11-02 | J125-1070 SS | -16d |
| J125-1090 |  | Terminations at Xfmrs - J120 | 2d | 2026-11-03 | 2026-11-04 | J125-1070 | -18d |
| J125-1100 |  | Terminations at SWD - J120 | 2d | 2026-11-03 | 2026-11-04 | J125-1070 | -18d |
| J125-1580 |  | QC 2.2 checklist SWD - J120 | 1d | 2026-11-05 | 2026-11-05 | J125-1080, J125-1490, J125-1100 | -18d |
| J125-1600 |  | QC 2.2 checklist XFMR - J120 | 1d | 2026-11-05 | 2026-11-05 | J125-1090 | -18d |
| J125-1590 |  | Ready for FTE - J120 | 1d | 2026-11-06 | 2026-11-06 | J125-1650, J125-1640, J125-1610, J125-1600, J125-1580, J125-1570, J125-1560, J125-1550, J125-1540, J125-1530, J125-1510, J125-1500 | -18d |
|  | 10 | **K120** |  | 2026-10-16 | 2026-11-06 |  |  |
| K125-1330 |  | Busduct installed - K120 | 1d | 2026-10-16 | 2026-10-16 | J125-1330 SS | -18d |
| K125-1340 |  | Busplugs/Tap Boxes installed - K120 | 1d | 2026-10-19 | 2026-10-19 | K125-1330 | -18d |
| K125-1000 |  | Set Skid - K120 | 1d | 2026-10-20 | 2026-10-20 | J125-1000 SS, K125-1340, K125-1330 | -18d |
| K125-1010 |  | Set MODs - K120 | 2d | 2026-10-20 | 2026-10-21 | K125-1000 SS | -14d |
| K125-1030 |  | Cable bus Support installed - K120 | 2d | 2026-10-20 | 2026-10-21 | K125-1000 SS | -14d |
| K125-1120 |  | Chiller feed box and conduit complete - K120 | 2d | 2026-10-20 | 2026-10-21 | K125-1010 SS, K125-1000 SS | -11d |
| K125-1040 |  | SWD top covers cut out - K120 | 5d | 2026-10-21 | 2026-10-27 | K125-1000 | -18d |
| K125-1110 |  | Finish Cable Tray to Skid - K120 | 2d | 2026-10-21 | 2026-10-22 | K125-1000 | -14d |
| K125-1350 |  | Install conduit from Busplug to ATSs - K120 | 2d | 2026-10-21 | 2026-10-22 | K125-1000 | -14d |
| K125-1390 |  | Mount VFD Stand and VFD - K120 | 1d | 2026-10-21 | 2026-10-21 | K125-1000 | -12d |

| ID | WBS | Task | Duration | Start | Finish | Predecessors | Total float | Constraint |
| --- | --- | --- | --- | --- | --- | --- | --- | --- |
| K125-1440 |  | Mount MPZ - K120 | 1d | 2026-10-21 | 2026-10-21 | K125-1000 | -11d |  |
| K125-1620 |  | Electrical Room CRAH Set - K120 | 1d | 2026-10-21 | 2026-10-21 | K125-1000 | -12d |  |
| K125-1130 |  | Pull Chiller wire - K120 | 1d | 2026-10-22 | 2026-10-22 | K125-1120, K125-1000 | -11d |  |
| K125-1180 |  | Penetrate MC into MOD-01 - K120 | 1d | 2026-10-22 | 2026-10-22 | K125-1010 | -13d |  |
| K125-1190 |  | Penetrate MC into MOD-02 - K120 | 1d | 2026-10-22 | 2026-10-22 | K125-1010 | -13d |  |
| K125-1200 |  | Finish Conduit to Elec Room CRAH - K120 | 1d | 2026-10-22 | 2026-10-22 | K125-1620 | -12d |  |
| K125-1250 |  | Pull MC from MOD-01 to Mechanical Equipment - K120 | 2d | 2026-10-22 | 2026-10-23 | K125-1010 | -14d |  |
| K125-1260 |  | Pull MC from MOD-02 to Mechanical Equipment - K120 | 2d | 2026-10-22 | 2026-10-23 | K125-1010 | -14d |  |
| K125-1400 |  | Conduit from UPS to VFD - K120 | 1d | 2026-10-22 | 2026-10-22 | K125-1390 | -12d |  |
| K125-1450 |  | Penetrate MC Cable into MPZ - K120 | 1d | 2026-10-22 | 2026-10-22 | K125-1440 | -11d |  |
| K125-1140 |  | Megger Chiller Cable - K120 | 1d | 2026-10-23 | 2026-10-23 | K125-1130 | -11d |  |
| K125-1160 |  | Penetrate MC into SWD - K120 | 1d | 2026-10-23 | 2026-10-23 | K125-1110 | -14d |  |
| K125-1170 |  | Penetrat MC into UPS - K120 | 1d | 2026-10-23 | 2026-10-23 | K125-1110 | -14d |  |
| K125-1210 |  | Pull Cable to Elec Room CRAH - K120 | 1d | 2026-10-23 | 2026-10-23 | K125-1200 | -12d |  |
| K125-1360 |  | Pull ATS Cable - K120 | 1d | 2026-10-23 | 2026-10-23 | K125-1350 | -14d |  |
| K125-1410 |  | Pull Cable from UPS to VFD - K120 | 1d | 2026-10-23 | 2026-10-23 | K125-1400 | -12d |  |
| K125-1460 |  | Megger MPZ Cable - K120 | 1d | 2026-10-23 | 2026-10-23 | K125-1450 | -11d |  |
| K125-1490 |  | All Skid Grounding - K120 | 2d | 2026-10-23 | 2026-10-26 | K125-1110 | -11d |  |
| K125-1520 |  | Megger MC Cable from UPS to MOD - K120 | 1d | 2026-10-23 | 2026-10-23 | K125-1190 | -13d |  |
| K125-1150 |  | Terminations at Chiller - K120 | 1d | 2026-10-26 | 2026-10-26 | K125-1140 | -11d |  |
| K125-1220 |  | Megger MC Cable from Skid to Elec Room CRAH - K120 | 1d | 2026-10-26 | 2026-10-26 | K125-1210 | -12d |  |
| K125-1240 |  | Megger MC Cable from Skid to MOD - K120 | 1d | 2026-10-26 | 2026-10-26 | K125-1180, K125-1170, K125-1160 | -14d |  |
| K125-1270 |  | Megger MC Cable from MOD-01 to Mechanical Equipment - K120 | 1d | 2026-10-26 | 2026-10-26 | K125-1250 | -14d |  |
| K125-1280 |  | Megger MC Cable from MOD-02 to Mechanical Equipment - K120 | 1d | 2026-10-26 | 2026-10-26 | K125-1260 | -14d |  |
| K125-1420 |  | Megger Cable from UPS to VFD - K120 | 1d | 2026-10-26 | 2026-10-26 | K125-1410 | -12d |  |
| K125-1470 |  | Terminate MC Feed at MPZ - K120 | 1d | 2026-10-26 | 2026-10-26 | K125-1460 | -11d |  |
| K125-1480 |  | Terminate Cables in VFD - K120 | 1d | 2026-10-26 | 2026-10-26 | K125-1420 SS | -11d |  |
| K125-1630 |  | Megger Cable at ATS - K120 | 1d | 2026-10-26 | 2026-10-26 | K125-1360 | -14d |  |
| K125-1230 |  | Terminate Elec Room CRAH - K120 | 1d | 2026-10-27 | 2026-10-27 | K125-1220 | -12d |  |
| K125-1290 |  | Terminate MOD-01 - K120 | 1d | 2026-10-27 | 2026-10-27 | K125-1240, K125-1270 | -14d |  |
| K125-1300 |  | Terminate MOD-02 - K120 | 1d | 2026-10-27 | 2026-10-27 | K125-1520, K125-1280 | -14d |  |
| K125-1310 |  | Terminate at Mechanical Equipment - K120 | 1d | 2026-10-27 | 2026-10-27 | K125-1300 SS, K125-1290 SS | -14d |  |
| K125-1370 |  | Terminate ATS Cable at Busplugs & ATSs - K120 | 2d | 2026-10-27 | 2026-10-28 | K125-1630 | -14d |  |
| K125-1430 |  | Terminate Cables in UPS - K120 | 1d | 2026-10-27 | 2026-10-27 | K125-1420 | -12d |  |
| K125-1570 |  | QC 2.2 checklist VFD - K120 | 1d | 2026-10-27 | 2026-10-27 | K125-1480 | -11d |  |
| K125-1610 |  | QC 2.2 checklist Chiller - K120 | 1d | 2026-10-27 | 2026-10-27 | K125-1150 | -11d |  |
| K125-1650 |  | QC 2.2 checklist MPZ - K120 | 1d | 2026-10-27 | 2026-10-27 | K125-1470 | -11d |  |
| K125-1050 |  | Cable bus Install - K120 | 2d | 2026-10-28 | 2026-10-29 | K125-1040, K125-1030 | -18d |  |
| K125-1320 |  | Mechanical Equipment/Tray Grounding - K120 | 2d | 2026-10-28 | 2026-10-29 | K125-1310 | -14d |  |
| K125-1540 |  | QC 2.2 checklist UPS - K120 | 1d | 2026-10-28 | 2026-10-28 | K125-1430 | -12d |  |
| K125-1550 |  | QC 2.2 checklist Elec Room CRAH - K120 | 1d | 2026-10-28 | 2026-10-28 | K125-1230 | -12d |  |
| K125-1560 |  | QC 2.2 Mechanical Equipment - K120 | 1d | 2026-10-28 | 2026-10-28 | K125-1310 | -12d |  |
| K125-1380 |  | ATS Lashing - K120 | 1d | 2026-10-29 | 2026-10-29 | K125-1370 | -14d |  |
| K125-1060 |  | Cable pulled to A & P Xfmrs - K120 | 1d | 2026-10-30 | 2026-10-30 | K125-1050 | -18d |  |
| K125-1500 |  | QC 2.2 checklist MOD-01 - K120 | 1d | 2026-10-30 | 2026-10-30 | K125-1320 | -14d |  |
| K125-1510 |  | QC 2.2 checklist MOD-02 - K120 | 1d | 2026-10-30 | 2026-10-30 | K125-1320 | -14d |  |
| K125-1530 |  | QC 2.2 checklist ATSs - K120 | 1d | 2026-10-30 | 2026-10-30 | K125-1380 | -14d |  |
| K125-1640 |  | QC 2.2 checklist Busplugs - K120 | 1d | 2026-10-30 | 2026-10-30 | K125-1530 SS | -14d |  |
| K125-1070 |  | Megger Cable Bus Cable - K120 | 1d | 2026-11-02 | 2026-11-02 | K125-1060 | -18d |  |
| K125-1080 |  | Cable Bus inspection and covers - K120 | 1d | 2026-11-02 | 2026-11-02 | K125-1070 SS | -16d |  |
| K125-1090 |  | Terminations at Xfmrs - K120 | 2d | 2026-11-03 | 2026-11-04 | K125-1070 | -18d |  |
| K125-1100 |  | Terminations at SWD - K120 | 2d | 2026-11-03 | 2026-11-04 | K125-1070 | -18d |  |
| K125-1580 |  | QC 2.2 checklist SWD - K120 | 1d | 2026-11-05 | 2026-11-05 | K125-1080, K125-1490, K125-1100 | -18d |  |
| K125-1600 |  | QC 2.2 checklist XFMR - K120 | 1d | 2026-11-05 | 2026-11-05 | K125-1090 | -18d |  |
| K125-1590 |  | Ready for FTE - K120 | 1d | 2026-11-06 | 2026-11-06 | K125-1650, K125-1640, K125-1610, K125-1600, K125-1580, K125-1570, K125-1560, K125-1550, K125-1540, K125-1530, K125-1510, K125-1500 | -18d |  |
|  | 12 | **Commissioning** |  | 2026-11-07 | 2027-01-16 |  |  |  |
| 1250-1000 |  | DH1200 - L3 Clean Walk | 3d | 2026-11-07 | 2026-11-10 | K125-1590 | 29d |  |
| 1250-1100 |  | DH1200 - L3 PEI | 3d | 2026-11-11 | 2026-11-13 | CW.1200, 1250-1000 | 29d |  |
| 1250-1200 |  | DH1200 - L3 FTE | 4d | 2026-11-14 | 2026-11-17 | PEI.1200, 1250-1100 | 38d |  |
| 1250-2000 |  | DH1200 - L4 Cx / IST | 60d | 2026-11-18 | 2027-01-16 | 1250-1200 | 38d |  |
|  | 3 | **DH 1300** |  | 2027-02-10 | 2027-05-13 |  |  |  |
|  | 1 | **Electrical** |  | 2027-02-10 | 2027-03-03 |  |  |  |
|  | 1 | **A130** |  | 2027-02-10 | 2027-02-27 |  |  |  |
| A135-1330 |  | Busduct installed - A130 | 1d | 2027-02-10 | 2027-02-10 | K125-1590 FS-4d | 0d | mandatory start 2027-02-10 |
| A135-1340 |  | Busplugs/Tap Boxes installed - A130 | 1d | 2027-02-11 | 2027-02-11 | A135-1330 | -127d |  |
| A135-1000 |  | Set Skid - A130 | 1d | 2027-02-12 | 2027-02-12 | A135-1340, A135-1330 | -127d |  |
| A135-1010 |  | Set MODs - A130 | 2d | 2027-02-12 | 2027-02-13 | A135-1000 SS | -120d |  |
| A135-1030 |  | Cable bus Support installed - A130 | 2d | 2027-02-12 | 2027-02-13 | A135-1000 SS | -120d |  |
| A135-1120 |  | Chiller feed box and conduit complete - A130 | 2d | 2027-02-12 | 2027-02-13 | A135-1010 SS, A135-1000 SS | -117d |  |
| A135-1040 |  | SWD top covers cut out - A130 | 5d | 2027-02-13 | 2027-02-18 | A135-1000 | -124d |  |

| ID | WBS | Task | Duration | Start | Finish | Predecessors | Total float |
| --- | --- | --- | --- | --- | --- | --- | --- |
| A135-1110 |  | Finish Cable Tray to Skid - A130 | 2d | 2027-02-13 | 2027-02-15 | A135-1000 | -120d |
| A135-1350 |  | Install conduit from Busplug to ATSs - A130 | 2d | 2027-02-13 | 2027-02-15 | A135-1000 | -120d |
| A135-1390 |  | Mount VFD Stand and VFD - A130 | 1d | 2027-02-13 | 2027-02-13 | A135-1000 | -118d |
| A135-1440 |  | Mount MPZ - A130 | 1d | 2027-02-13 | 2027-02-13 | A135-1000 | -117d |
| A135-1620 |  | Electrical Room CRAH Set - A130 | 1d | 2027-02-13 | 2027-02-13 | A135-1000 | -118d |
| A135-1130 |  | Pull Chiller wire - A130 | 1d | 2027-02-15 | 2027-02-15 | A135-1120, A135-1000 | -117d |
| A135-1180 |  | Penetrate MC into MOD-01 - A130 | 1d | 2027-02-15 | 2027-02-15 | A135-1010 | -119d |
| A135-1190 |  | Penetrate MC into MOD-02 - A130 | 1d | 2027-02-15 | 2027-02-15 | A135-1010 | -119d |
| A135-1200 |  | Finish Conduit to Elec Room CRAH - A130 | 1d | 2027-02-15 | 2027-02-15 | A135-1620 | -118d |
| A135-1250 |  | Pull MC from MOD-01 to Mechanical Equipment - A130 | 2d | 2027-02-15 | 2027-02-16 | A135-1010 | -120d |
| A135-1260 |  | Pull MC from MOD-02 to Mechanical Equipment - A130 | 2d | 2027-02-15 | 2027-02-16 | A135-1010 | -120d |
| A135-1400 |  | Conduit from UPS to VFD - A130 | 1d | 2027-02-15 | 2027-02-15 | A135-1390 | -118d |
| A135-1450 |  | Penetrate MC Cable into MPZ - A130 | 1d | 2027-02-15 | 2027-02-15 | A135-1440 | -117d |
| A135-1140 |  | Megger Chiller Cable - A130 | 1d | 2027-02-16 | 2027-02-16 | A135-1130 | -117d |
| A135-1160 |  | Penetrate MC into SWD - A130 | 1d | 2027-02-16 | 2027-02-16 | A135-1110 | -120d |
| A135-1170 |  | Penetrat MC into UPS - A130 | 1d | 2027-02-16 | 2027-02-16 | A135-1110 | -120d |
| A135-1210 |  | Pull Cable to Elec Room CRAH - A130 | 1d | 2027-02-16 | 2027-02-16 | A135-1200 | -118d |
| A135-1360 |  | Pull ATS Cable - A130 | 1d | 2027-02-16 | 2027-02-16 | A135-1350 | -120d |
| A135-1410 |  | Pull Cable from UPS to VFD - A130 | 1d | 2027-02-16 | 2027-02-16 | A135-1400 | -118d |
| A135-1460 |  | Megger MPZ Cable - A130 | 1d | 2027-02-16 | 2027-02-16 | A135-1450 | -117d |
| A135-1490 |  | All Skid Grounding - A130 | 2d | 2027-02-16 | 2027-02-17 | A135-1110 | -117d |
| A135-1520 |  | Megger MC Cable from UPS to MOD - A130 | 1d | 2027-02-16 | 2027-02-16 | A135-1190 | -119d |
| A135-1150 |  | Terminations at Chiller - A130 | 1d | 2027-02-17 | 2027-02-17 | A135-1140 | -117d |
| A135-1220 |  | Megger MC Cable from Skid to Elec Room CRAH - A130 | 1d | 2027-02-17 | 2027-02-17 | A135-1210 | -118d |
| A135-1240 |  | Megger MC Cable from Skid to MOD - A130 | 1d | 2027-02-17 | 2027-02-17 | A135-1180, A135-1170, A135-1160 | -120d |
| A135-1270 |  | Megger MC Cable from MOD-01 to Mechanical Equipment - A130 | 1d | 2027-02-17 | 2027-02-17 | A135-1250 | -120d |
| A135-1280 |  | Megger MC Cable from MOD-02 to Mechanical Equipment - A130 | 1d | 2027-02-17 | 2027-02-17 | A135-1260 | -120d |
| A135-1420 |  | Megger Cable from UPS to VFD - A130 | 1d | 2027-02-17 | 2027-02-17 | A135-1410 | -118d |
| A135-1470 |  | Terminate MC Feed at MPZ - A130 | 1d | 2027-02-17 | 2027-02-17 | A135-1460 | -117d |
| A135-1480 |  | Terminate Cables in VFD - A130 | 1d | 2027-02-17 | 2027-02-17 | A135-1420 SS | -117d |
| A135-1630 |  | Megger Cable at ATS - A130 | 1d | 2027-02-17 | 2027-02-17 | A135-1360 | -120d |
| A135-1230 |  | Terminate Elec Room CRAH - A130 | 1d | 2027-02-18 | 2027-02-18 | A135-1220 | -118d |
| A135-1290 |  | Terminate MOD-01 - A130 | 1d | 2027-02-18 | 2027-02-18 | A135-1240, A135-1270 | -120d |
| A135-1300 |  | Terminate MOD-02 - A130 | 1d | 2027-02-18 | 2027-02-18 | A135-1520, A135-1280 | -120d |
| A135-1310 |  | Terminate at Mechanical Equipment - A130 | 1d | 2027-02-18 | 2027-02-18 | A135-1300 SS, A135-1290 SS | -120d |
| A135-1370 |  | Terminate ATS Cable at Busplugs & ATSs - A130 | 2d | 2027-02-18 | 2027-02-19 | A135-1630 | -120d |
| A135-1430 |  | Terminate Cables in UPS - A130 | 1d | 2027-02-18 | 2027-02-18 | A135-1420 | -118d |
| A135-1570 |  | QC 2.2 checklist VFD - A130 | 1d | 2027-02-18 | 2027-02-18 | A135-1480 | -117d |
| A135-1610 |  | QC 2.2 checklist Chiller - A130 | 1d | 2027-02-18 | 2027-02-18 | A135-1150 | -117d |
| A135-1650 |  | QC 2.2 checklist MPZ - A130 | 1d | 2027-02-18 | 2027-02-18 | A135-1470 | -117d |
| A135-1050 |  | Cable bus Install - A130 | 2d | 2027-02-19 | 2027-02-20 | A135-1040, A135-1030 | -124d |
| A135-1320 |  | Mechanical Equipment/Tray Grounding - A130 | 2d | 2027-02-19 | 2027-02-20 | A135-1310 | -120d |
| A135-1540 |  | QC 2.2 checklist UPS - A130 | 1d | 2027-02-19 | 2027-02-19 | A135-1430 | -118d |
| A135-1550 |  | QC 2.2 checklist Elec Room CRAH - A130 | 1d | 2027-02-19 | 2027-02-19 | A135-1230 | -118d |
| A135-1560 |  | QC 2.2 Mechanical Equipment - A130 | 1d | 2027-02-19 | 2027-02-19 | A135-1310 | -118d |
| A135-1380 |  | ATS Lashing - A130 | 1d | 2027-02-20 | 2027-02-20 | A135-1370 | -120d |
| A135-1060 |  | Cable pulled to A & P Xfmrs - A130 | 1d | 2027-02-22 | 2027-02-22 | A135-1050 | -124d |
| A135-1500 |  | QC 2.2 checklist MOD-01 - A130 | 1d | 2027-02-22 | 2027-02-22 | A135-1320 | -120d |
| A135-1510 |  | QC 2.2 checklist MOD-02 - A130 | 1d | 2027-02-22 | 2027-02-22 | A135-1320 | -120d |
| A135-1530 |  | QC 2.2 checklist ATSs - A130 | 1d | 2027-02-22 | 2027-02-22 | A135-1380 | -120d |
| A135-1640 |  | QC 2.2 checklist Busplugs - A130 | 1d | 2027-02-22 | 2027-02-22 | A135-1530 SS | -120d |
| A135-1070 |  | Megger Cable Bus Cable - A130 | 1d | 2027-02-23 | 2027-02-23 | A135-1060 | -124d |
| A135-1080 |  | Cable Bus inspection and covers - A130 | 1d | 2027-02-23 | 2027-02-23 | A135-1070 SS | -122d |
| A135-1090 |  | Terminations at Xfmrs - A130 | 2d | 2027-02-24 | 2027-02-25 | A135-1070 | -124d |
| A135-1100 |  | Terminations at SWD - A130 | 2d | 2027-02-24 | 2027-02-25 | A135-1070 | -124d |
| A135-1580 |  | QC 2.2 checklist SWD - A130 | 1d | 2027-02-26 | 2027-02-26 | A135-1080, A135-1490, A135-1100 | -124d |
| A135-1600 |  | QC 2.2 checklist Xfmrs - A130 | 1d | 2027-02-26 | 2027-02-26 | A135-1090 | -124d |
| A135-1590 |  | Ready for FTE - A130 | 1d | 2027-02-27 | 2027-02-27 | A135-1650, A135-1640, A135-1610, A135-1580, A135-1570, A135-1560, A135-1550, A135-1540, A135-1530, A135-1510, A135-1500, A135-1600 | -124d |
|  | 2 | **B130** |  | 2027-02-10 | 2027-02-27 |  |  |
| B135-1330 |  | Busduct installed - B130 | 1d | 2027-02-10 | 2027-02-10 | A135-1330 SS | -127d |
| B135-1340 |  | Busplugs/Tap Boxes installed - B130 | 1d | 2027-02-11 | 2027-02-11 | B135-1330 | -127d |
| B135-1000 |  | Set Skid - B130 | 1d | 2027-02-12 | 2027-02-12 | B135-1340, B135-1330, A135-1000 SS | -127d |
| B135-1010 |  | Set MODs - B130 | 2d | 2027-02-12 | 2027-02-13 | B135-1000 SS | -120d |
| B135-1030 |  | Cable bus Support installed - B130 | 2d | 2027-02-12 | 2027-02-13 | B135-1000 SS | -120d |
| B135-1120 |  | Chiller feed box and conduit complete - B130 | 2d | 2027-02-12 | 2027-02-13 | B135-1010 SS, B135-1000 SS | -117d |
| B135-1040 |  | SWD top covers cut out - B130 | 5d | 2027-02-13 | 2027-02-18 | B135-1000 | -124d |
| B135-1110 |  | Finish Cable Tray to Skid - B130 | 2d | 2027-02-13 | 2027-02-15 | B135-1000 | -120d |
| B135-1350 |  | Install conduit from Busplug to ATSs - B130 | 2d | 2027-02-13 | 2027-02-15 | B135-1000 | -120d |
| B135-1390 |  | Mount VFD Stand and VFD - B130 | 1d | 2027-02-13 | 2027-02-13 | B135-1000 | -118d |
| B135-1440 |  | Mount MPZ - B130 | 1d | 2027-02-13 | 2027-02-13 | B135-1000 | -117d |

| ID | WBS | Task | Duration | Start | Finish | Predecessors | Total float |
| --- | --- | --- | --- | --- | --- | --- | --- |
| B135-1620 |  | Electrical Room CRAH Set - B130 | 1d | 2027-02-13 | 2027-02-13 | B135-1000 | -118d |
| B135-1130 |  | Pull Chiller wire - B130 | 1d | 2027-02-15 | 2027-02-15 | B135-1120, B135-1000 | -117d |
| B135-1180 |  | Penetrate MC into MOD-01 - B130 | 1d | 2027-02-15 | 2027-02-15 | B135-1010 | -119d |
| B135-1190 |  | Penetrate MC into MOD-02 - B130 | 1d | 2027-02-15 | 2027-02-15 | B135-1010 | -119d |
| B135-1200 |  | Finish Conduit to Elec Room CRAH - B130 | 1d | 2027-02-15 | 2027-02-15 | B135-1620 | -118d |
| B135-1250 |  | Pull MC from MOD-01 to Mechanical Equipment - B130 | 2d | 2027-02-15 | 2027-02-16 | B135-1010 | -120d |
| B135-1260 |  | Pull MC from MOD-02 to Mechanical Equipment - B130 | 2d | 2027-02-15 | 2027-02-16 | B135-1010 | -120d |
| B135-1400 |  | Conduit from UPS to VFD - B130 | 1d | 2027-02-15 | 2027-02-15 | B135-1390 | -118d |
| B135-1450 |  | Penetrate MC Cable into MPZ - B130 | 1d | 2027-02-15 | 2027-02-15 | B135-1440 | -117d |
| B135-1140 |  | Megger Chiller Cable - B130 | 1d | 2027-02-16 | 2027-02-16 | B135-1130 | -117d |
| B135-1160 |  | Penetrate MC into SWD - B130 | 1d | 2027-02-16 | 2027-02-16 | B135-1110 | -120d |
| B135-1170 |  | Penetrat MC into UPS - B130 | 1d | 2027-02-16 | 2027-02-16 | B135-1110 | -120d |
| B135-1210 |  | Pull Cable to Elec Room CRAH - B130 | 1d | 2027-02-16 | 2027-02-16 | B135-1200 | -118d |
| B135-1360 |  | Pull ATS Cable - B130 | 1d | 2027-02-16 | 2027-02-16 | B135-1350 | -120d |
| B135-1410 |  | Pull Cable from UPS to VFD - B130 | 1d | 2027-02-16 | 2027-02-16 | B135-1400 | -118d |
| B135-1460 |  | Megger MPZ Cable - B130 | 1d | 2027-02-16 | 2027-02-16 | B135-1450 | -117d |
| B135-1490 |  | All Skid Grounding - B130 | 2d | 2027-02-16 | 2027-02-17 | B135-1110 | -117d |
| B135-1520 |  | Megger MC Cable from UPS to MOD - B130 | 1d | 2027-02-16 | 2027-02-16 | B135-1190 | -119d |
| B135-1150 |  | Terminations at Chiller - B130 | 1d | 2027-02-17 | 2027-02-17 | B135-1140 | -117d |
| B135-1220 |  | Megger MC Cable from Skid to Elec Room CRAH - B130 | 1d | 2027-02-17 | 2027-02-17 | B135-1210 | -118d |
| B135-1240 |  | Megger MC Cable from Skid to MOD - B130 | 1d | 2027-02-17 | 2027-02-17 | B135-1180, B135-1170, B135-1160 | -120d |
| B135-1270 |  | Megger MC Cable from MOD-01 to Mechanical Equipment - B130 | 1d | 2027-02-17 | 2027-02-17 | B135-1250 | -120d |
| B135-1280 |  | Megger MC Cable from MOD-02 to Mechanical Equipment - B130 | 1d | 2027-02-17 | 2027-02-17 | B135-1260 | -120d |
| B135-1420 |  | Megger Cable from UPS to VFD - B130 | 1d | 2027-02-17 | 2027-02-17 | B135-1410 | -118d |
| B135-1470 |  | Terminate MC Feed at MPZ - B130 | 1d | 2027-02-17 | 2027-02-17 | B135-1460 | -117d |
| B135-1480 |  | Terminate Cables in VFD - B130 | 1d | 2027-02-17 | 2027-02-17 | B135-1420 SS | -117d |
| B135-1630 |  | Megger Cable at ATS - B130 | 1d | 2027-02-17 | 2027-02-17 | B135-1360 | -120d |
| B135-1230 |  | Terminate Elec Room CRAH - B130 | 1d | 2027-02-18 | 2027-02-18 | B135-1220 | -118d |
| B135-1290 |  | Terminate MOD-01 - B130 | 1d | 2027-02-18 | 2027-02-18 | B135-1240, B135-1270 | -120d |
| B135-1300 |  | Terminate MOD-02 - B130 | 1d | 2027-02-18 | 2027-02-18 | B135-1520, B135-1280 | -120d |
| B135-1310 |  | Terminate at Mechanical Equipment - B130 | 1d | 2027-02-18 | 2027-02-18 | B135-1300 SS, B135-1290 SS | -120d |
| B135-1370 |  | Terminate ATS Cable at Busplugs & ATSs - B130 | 2d | 2027-02-18 | 2027-02-19 | B135-1630 | -120d |
| B135-1430 |  | Terminate Cables in UPS - B130 | 1d | 2027-02-18 | 2027-02-18 | B135-1420 | -118d |
| B135-1570 |  | QC 2.2 checklist VFD - B130 | 1d | 2027-02-18 | 2027-02-18 | B135-1480 | -117d |
| B135-1610 |  | QC 2.2 checklist Chiller - B130 | 1d | 2027-02-18 | 2027-02-18 | B135-1150 | -117d |
| B135-1650 |  | QC 2.2 checklist MPZ - B130 | 1d | 2027-02-18 | 2027-02-18 | B135-1470 | -117d |
| B135-1050 |  | Cable bus Install - B130 | 2d | 2027-02-19 | 2027-02-20 | B135-1040, B135-1030 | -124d |
| B135-1320 |  | Mechanical Equipment/Tray Grounding - B130 | 2d | 2027-02-19 | 2027-02-20 | B135-1310 | -120d |
| B135-1540 |  | QC 2.2 checklist UPS - B130 | 1d | 2027-02-19 | 2027-02-19 | B135-1430 | -118d |
| B135-1550 |  | QC 2.2 checklist Elec Room CRAH - B130 | 1d | 2027-02-19 | 2027-02-19 | B135-1230 | -118d |
| B135-1560 |  | QC 2.2 Mechanical Equipment - B130 | 1d | 2027-02-19 | 2027-02-19 | B135-1310 | -118d |
| B135-1380 |  | ATS Lashing - B130 | 1d | 2027-02-20 | 2027-02-20 | B135-1370 | -120d |
| B135-1060 |  | Cable pulled to A & P Xfmrs - B130 | 1d | 2027-02-22 | 2027-02-22 | B135-1050 | -124d |
| B135-1500 |  | QC 2.2 checklist MOD-01 - B130 | 1d | 2027-02-22 | 2027-02-22 | B135-1320 | -120d |
| B135-1510 |  | QC 2.2 checklist MOD-02 - B130 | 1d | 2027-02-22 | 2027-02-22 | B135-1320 | -120d |
| B135-1530 |  | QC 2.2 checklist ATSs - B130 | 1d | 2027-02-22 | 2027-02-22 | B135-1380 | -120d |
| B135-1640 |  | QC 2.2 checklist Busplugs - B130 | 1d | 2027-02-22 | 2027-02-22 | B135-1530 SS | -120d |
| B135-1070 |  | Megger Cable Bus Cable - B130 | 1d | 2027-02-23 | 2027-02-23 | B135-1060 | -124d |
| B135-1080 |  | Cable Bus inspection and covers - B130 | 1d | 2027-02-23 | 2027-02-23 | B135-1070 SS | -122d |
| B135-1090 |  | Terminations at Xfmrs - B130 | 2d | 2027-02-24 | 2027-02-25 | B135-1070 | -124d |
| B135-1100 |  | Terminations at SWD - B130 | 2d | 2027-02-24 | 2027-02-25 | B135-1070 | -124d |
| B135-1580 |  | QC 2.2 checklist SWD - B130 | 1d | 2027-02-26 | 2027-02-26 | B135-1080, B135-1490, B135-1100 | -124d |
| B135-1600 |  | QC 2.2 checklist XFMR - B130 | 1d | 2027-02-26 | 2027-02-26 | B135-1090 | -124d |
| B135-1590 |  | Ready for FTE - B130 | 1d | 2027-02-27 | 2027-02-27 | B135-1650, B135-1640, B135-1610, B135-1600, B135-1580, B135-1570, B135-1560, B135-1550, B135-1540, B135-1530, B135-1510, B135-1500 | -124d |
|  | 3 | **C130** |  | 2027-02-10 | 2027-02-27 |  |  |
| C135-1330 |  | Busduct installed - C130 | 1d | 2027-02-10 | 2027-02-10 | B135-1330 SS | -127d |
| C135-1340 |  | Busplugs/Tap Boxes installed - C130 | 1d | 2027-02-11 | 2027-02-11 | C135-1330 | -127d |
| C135-1000 |  | Set Skid - C130 | 1d | 2027-02-12 | 2027-02-12 | C135-1340, C135-1330, B135-1000 SS | -127d |
| C135-1010 |  | Set MODs - C130 | 2d | 2027-02-12 | 2027-02-13 | C135-1000 SS | -120d |
| C135-1030 |  | Cable bus Support installed - C130 | 2d | 2027-02-12 | 2027-02-13 | C135-1000 SS | -120d |
| C135-1120 |  | Chiller feed box and conduit complete - C130 | 2d | 2027-02-12 | 2027-02-13 | C135-1010 SS, C135-1000 SS | -117d |
| C135-1040 |  | SWD top covers cut out - C130 | 5d | 2027-02-13 | 2027-02-18 | C135-1000 | -124d |
| C135-1110 |  | Finish Cable Tray to Skid - C130 | 2d | 2027-02-13 | 2027-02-15 | C135-1000 | -120d |
| C135-1350 |  | Install conduit from Busplug to ATSs - C130 | 2d | 2027-02-13 | 2027-02-15 | C135-1000 | -120d |
| C135-1390 |  | Mount VFD Stand and VFD - C130 | 1d | 2027-02-13 | 2027-02-13 | C135-1000 | -118d |
| C135-1440 |  | Mount MPZ - C130 | 1d | 2027-02-13 | 2027-02-13 | C135-1000 | -117d |
| C135-1620 |  | Electrical Room CRAH Set - C130 | 1d | 2027-02-13 | 2027-02-13 | C135-1000 | -118d |
| C135-1130 |  | Pull Chiller wire - C130 | 1d | 2027-02-15 | 2027-02-15 | C135-1120, C135-1000 | -117d |
| C135-1180 |  | Penetrate MC into MOD-01 - C130 | 1d | 2027-02-15 | 2027-02-15 | C135-1010 | -119d |
| C135-1190 |  | Penetrate MC into MOD-02 - C130 | 1d | 2027-02-15 | 2027-02-15 | C135-1010 | -119d |

| ID | WBS | Task | Duration | Start | Finish | Predecessors | Total float |
| --- | --- | --- | --- | --- | --- | --- | --- |
| C135-1200 |  | Finish Conduit to Elec Room CRAH - C130 | 1d | 2027-02-15 | 2027-02-15 | C135-1620 | -118d |
| C135-1250 |  | Pull MC from MOD-01 to Mechanical Equipment - C130 | 2d | 2027-02-15 | 2027-02-16 | C135-1010 | -120d |
| C135-1260 |  | Pull MC from MOD-02 to Mechanical Equipment - C130 | 2d | 2027-02-15 | 2027-02-16 | C135-1010 | -120d |
| C135-1400 |  | Conduit from UPS to VFD - C130 | 1d | 2027-02-15 | 2027-02-15 | C135-1390 | -118d |
| C135-1450 |  | Penetrate MC Cable into MPZ - C130 | 1d | 2027-02-15 | 2027-02-15 | C135-1440 | -117d |
| C135-1140 |  | Megger Chiller Cable - C130 | 1d | 2027-02-16 | 2027-02-16 | C135-1130 | -117d |
| C135-1160 |  | Penetrate MC into SWD - C130 | 1d | 2027-02-16 | 2027-02-16 | C135-1110 | -120d |
| C135-1170 |  | Penetrat MC into UPS - C130 | 1d | 2027-02-16 | 2027-02-16 | C135-1110 | -120d |
| C135-1210 |  | Pull Cable to Elec Room CRAH - C130 | 1d | 2027-02-16 | 2027-02-16 | C135-1200 | -118d |
| C135-1360 |  | Pull ATS Cable - C130 | 1d | 2027-02-16 | 2027-02-16 | C135-1350 | -120d |
| C135-1410 |  | Pull Cable from UPS to VFD - C130 | 1d | 2027-02-16 | 2027-02-16 | C135-1400 | -118d |
| C135-1460 |  | Megger MPZ Cable - C130 | 1d | 2027-02-16 | 2027-02-16 | C135-1450 | -117d |
| C135-1490 |  | All Skid Grounding - C130 | 2d | 2027-02-16 | 2027-02-17 | C135-1110 | -117d |
| C135-1520 |  | Megger MC Cable from UPS to MOD - C130 | 1d | 2027-02-16 | 2027-02-16 | C135-1190 | -119d |
| C135-1150 |  | Terminations at Chiller - C130 | 1d | 2027-02-17 | 2027-02-17 | C135-1140 | -117d |
| C135-1220 |  | Megger MC Cable from Skid to Elec Room CRAH - C130 | 1d | 2027-02-17 | 2027-02-17 | C135-1210 | -118d |
| C135-1240 |  | Megger MC Cable from Skid to MOD - C130 | 1d | 2027-02-17 | 2027-02-17 | C135-1180, C135-1170, C135-1160 | -120d |
| C135-1270 |  | Megger MC Cable from MOD-01 to Mechanical Equipment - C130 | 1d | 2027-02-17 | 2027-02-17 | C135-1250 | -120d |
| C135-1280 |  | Megger MC Cable from MOD-02 to Mechanical Equipment - C130 | 1d | 2027-02-17 | 2027-02-17 | C135-1260 | -120d |
| C135-1420 |  | Megger Cable from UPS to VFD - C130 | 1d | 2027-02-17 | 2027-02-17 | C135-1410 | -118d |
| C135-1470 |  | Terminate MC Feed at MPZ - C130 | 1d | 2027-02-17 | 2027-02-17 | C135-1460 | -117d |
| C135-1480 |  | Terminate Cables in VFD - C130 | 1d | 2027-02-17 | 2027-02-17 | C135-1420 SS | -117d |
| C135-1630 |  | Megger Cable at ATS - C130 | 1d | 2027-02-17 | 2027-02-17 | C135-1360 | -120d |
| C135-1230 |  | Terminate Elec Room CRAH - C130 | 1d | 2027-02-18 | 2027-02-18 | C135-1220 | -118d |
| C135-1290 |  | Terminate MOD-01 - C130 | 1d | 2027-02-18 | 2027-02-18 | C135-1240, C135-1270 | -120d |
| C135-1300 |  | Terminate MOD-02 - C130 | 1d | 2027-02-18 | 2027-02-18 | C135-1520, C135-1280 | -120d |
| C135-1310 |  | Terminate at Mechanical Equipment - C130 | 1d | 2027-02-18 | 2027-02-18 | C135-1300 SS, C135-1290 SS | -120d |
| C135-1370 |  | Terminate ATS Cable at Busplugs & ATSs - C130 | 2d | 2027-02-18 | 2027-02-19 | C135-1630 | -120d |
| C135-1430 |  | Terminate Cables in UPS - C130 | 1d | 2027-02-18 | 2027-02-18 | C135-1420 | -118d |
| C135-1570 |  | QC 2.2 checklist VFD - C130 | 1d | 2027-02-18 | 2027-02-18 | C135-1480 | -117d |
| C135-1610 |  | QC 2.2 checklist Chiller - C130 | 1d | 2027-02-18 | 2027-02-18 | C135-1150 | -117d |
| C135-1650 |  | QC 2.2 checklist MPZ - C130 | 1d | 2027-02-18 | 2027-02-18 | C135-1470 | -117d |
| C135-1050 |  | Cable bus Install - C130 | 2d | 2027-02-19 | 2027-02-20 | C135-1040, C135-1030 | -124d |
| C135-1320 |  | Mechanical Equipment/Tray Grounding - C130 | 2d | 2027-02-19 | 2027-02-20 | C135-1310 | -120d |
| C135-1540 |  | QC 2.2 checklist UPS - C130 | 1d | 2027-02-19 | 2027-02-19 | C135-1430 | -118d |
| C135-1550 |  | QC 2.2 checklist Elec Room CRAH - C130 | 1d | 2027-02-19 | 2027-02-19 | C135-1230 | -118d |
| C135-1560 |  | QC 2.2 Mechanical Equipment - C130 | 1d | 2027-02-19 | 2027-02-19 | C135-1310 | -118d |
| C135-1380 |  | ATS Lashing - C130 | 1d | 2027-02-20 | 2027-02-20 | C135-1370 | -120d |
| C135-1060 |  | Cable pulled to A & P Xfmrs - C130 | 1d | 2027-02-22 | 2027-02-22 | C135-1050 | -124d |
| C135-1500 |  | QC 2.2 checklist MOD-01 - C130 | 1d | 2027-02-22 | 2027-02-22 | C135-1320 | -120d |
| C135-1510 |  | QC 2.2 checklist MOD-02 - C130 | 1d | 2027-02-22 | 2027-02-22 | C135-1320 | -120d |
| C135-1530 |  | QC 2.2 checklist ATSs - C130 | 1d | 2027-02-22 | 2027-02-22 | C135-1380 | -120d |
| C135-1640 |  | QC 2.2 checklist Busplugs - C130 | 1d | 2027-02-22 | 2027-02-22 | C135-1530 SS | -120d |
| C135-1070 |  | Megger Cable Bus Cable - C130 | 1d | 2027-02-23 | 2027-02-23 | C135-1060 | -124d |
| C135-1080 |  | Cable Bus inspection and covers - C130 | 1d | 2027-02-23 | 2027-02-23 | C135-1070 SS | -122d |
| C135-1090 |  | Terminations at Xfmrs - C130 | 2d | 2027-02-24 | 2027-02-25 | C135-1070 | -124d |
| C135-1100 |  | Terminations at SWD - C130 | 2d | 2027-02-24 | 2027-02-25 | C135-1070 | -124d |
| C135-1580 |  | QC 2.2 checklist SWD - C130 | 1d | 2027-02-26 | 2027-02-26 | C135-1080, C135-1490, C135-1100 | -124d |
| C135-1600 |  | QC 2.2 checklist XFMR - C130 | 1d | 2027-02-26 | 2027-02-26 | C135-1090 | -124d |
| C135-1590 |  | Ready for FTE - C130 | 1d | 2027-02-27 | 2027-02-27 | C135-1650, C135-1640, C135-1610, C135-1600, C135-1580, C135-1570, C135-1560, C135-1550, C135-1540, C135-1530, C135-1510, C135-1500 | -124d |
|  | 4 | **D130** |  | 2027-02-10 | 2027-02-27 |  |  |
| D135-1330 |  | Busduct installed - D130 | 1d | 2027-02-10 | 2027-02-10 | C135-1330 SS | -127d |
| D135-1340 |  | Busplugs/Tap Boxes installed - D130 | 1d | 2027-02-11 | 2027-02-11 | D135-1330 | -127d |
| D135-1000 |  | Set Skid - D130 | 1d | 2027-02-12 | 2027-02-12 | D135-1340, D135-1330, C135-1000 SS | -127d |
| D135-1010 |  | Set MODs - D130 | 2d | 2027-02-12 | 2027-02-13 | D135-1000 SS | -120d |
| D135-1030 |  | Cable bus Support installed - D130 | 2d | 2027-02-12 | 2027-02-13 | D135-1000 SS | -120d |
| D135-1120 |  | Chiller feed box and conduit complete - D130 | 2d | 2027-02-12 | 2027-02-13 | D135-1010 SS, D135-1000 SS | -117d |
| D135-1040 |  | SWD top covers cut out - D130 | 5d | 2027-02-13 | 2027-02-18 | D135-1000 | -124d |
| D135-1110 |  | Finish Cable Tray to Skid - D130 | 2d | 2027-02-13 | 2027-02-15 | D135-1000 | -120d |
| D135-1350 |  | Install conduit from Busplug to ATSs - D130 | 2d | 2027-02-13 | 2027-02-15 | D135-1000 | -120d |
| D135-1390 |  | Mount VFD Stand and VFD - D130 | 1d | 2027-02-13 | 2027-02-13 | D135-1000 | -118d |
| D135-1440 |  | Mount MPZ - D130 | 1d | 2027-02-13 | 2027-02-13 | D135-1000 | -117d |
| D135-1620 |  | Electrical Room CRAH Set - D130 | 1d | 2027-02-13 | 2027-02-13 | D135-1000 | -118d |
| D135-1130 |  | Pull Chiller wire - D130 | 1d | 2027-02-15 | 2027-02-15 | D135-1120, D135-1000 | -117d |
| D135-1180 |  | Penetrate MC into MOD-01 - D130 | 1d | 2027-02-15 | 2027-02-15 | D135-1010 | -119d |
| D135-1190 |  | Penetrate MC into MOD-02 - D130 | 1d | 2027-02-15 | 2027-02-15 | D135-1010 | -119d |
| D135-1200 |  | Finish Conduit to Elec Room CRAH - D130 | 1d | 2027-02-15 | 2027-02-15 | D135-1620 | -118d |
| D135-1250 |  | Pull MC from MOD-01 to Mechanical Equipment - D130 | 2d | 2027-02-15 | 2027-02-16 | D135-1010 | -120d |
| D135-1260 |  | Pull MC from MOD-02 to Mechanical Equipment - D130 | 2d | 2027-02-15 | 2027-02-16 | D135-1010 | -120d |
| D135-1400 |  | Conduit from UPS to VFD - D130 | 1d | 2027-02-15 | 2027-02-15 | D135-1390 | -118d |

| ID | WBS | Task | Duration | Start | Finish | Predecessors | Total float |
| --- | --- | --- | --- | --- | --- | --- | --- |
| D135-1450 |  | Penetrate MC Cable into MPZ - D130 | 1d | 2027-02-15 | 2027-02-15 | D135-1440 | -117d |
| D135-1140 |  | Megger Chiller Cable - D130 | 1d | 2027-02-16 | 2027-02-16 | D135-1130 | -117d |
| D135-1160 |  | Penetrate MC into SWD - D130 | 1d | 2027-02-16 | 2027-02-16 | D135-1110 | -120d |
| D135-1170 |  | Penetrat MC into UPS - D130 | 1d | 2027-02-16 | 2027-02-16 | D135-1110 | -120d |
| D135-1210 |  | Pull Cable to Elec Room CRAH - D130 | 1d | 2027-02-16 | 2027-02-16 | D135-1200 | -118d |
| D135-1360 |  | Pull ATS Cable - D130 | 1d | 2027-02-16 | 2027-02-16 | D135-1350 | -120d |
| D135-1410 |  | Pull Cable from UPS to VFD - D130 | 1d | 2027-02-16 | 2027-02-16 | D135-1400 | -118d |
| D135-1460 |  | Megger MPZ Cable - D130 | 1d | 2027-02-16 | 2027-02-16 | D135-1450 | -117d |
| D135-1490 |  | All Skid Grounding - D130 | 2d | 2027-02-16 | 2027-02-17 | D135-1110 | -117d |
| D135-1520 |  | Megger MC Cable from UPS to MOD - D130 | 1d | 2027-02-16 | 2027-02-16 | D135-1190 | -119d |
| D135-1150 |  | Terminations at Chiller - D130 | 1d | 2027-02-17 | 2027-02-17 | D135-1140 | -117d |
| D135-1220 |  | Megger MC Cable from Skid to Elec Room CRAH - D130 | 1d | 2027-02-17 | 2027-02-17 | D135-1210 | -118d |
| D135-1240 |  | Megger MC Cable from Skid to MOD - D130 | 1d | 2027-02-17 | 2027-02-17 | D135-1180, D135-1170, D135-1160 | -120d |
| D135-1270 |  | Megger MC Cable from MOD-01 to Mechanical Equipment - D130 | 1d | 2027-02-17 | 2027-02-17 | D135-1250 | -120d |
| D135-1280 |  | Megger MC Cable from MOD-02 to Mechanical Equipment - D130 | 1d | 2027-02-17 | 2027-02-17 | D135-1260 | -120d |
| D135-1420 |  | Megger Cable from UPS to VFD - D130 | 1d | 2027-02-17 | 2027-02-17 | D135-1410 | -118d |
| D135-1470 |  | Terminate MC Feed at MPZ - D130 | 1d | 2027-02-17 | 2027-02-17 | D135-1460 | -117d |
| D135-1480 |  | Terminate Cables in VFD - D130 | 1d | 2027-02-17 | 2027-02-17 | D135-1420 SS | -117d |
| D135-1630 |  | Megger Cable at ATS - D130 | 1d | 2027-02-17 | 2027-02-17 | D135-1360 | -120d |
| D135-1230 |  | Terminate Elec Room CRAH - D130 | 1d | 2027-02-18 | 2027-02-18 | D135-1220 | -118d |
| D135-1290 |  | Terminate MOD-01 - D130 | 1d | 2027-02-18 | 2027-02-18 | D135-1240, D135-1270 | -120d |
| D135-1300 |  | Terminate MOD-02 - D130 | 1d | 2027-02-18 | 2027-02-18 | D135-1520, D135-1280 | -120d |
| D135-1310 |  | Terminate at Mechanical Equipment - D130 | 1d | 2027-02-18 | 2027-02-18 | D135-1300 SS, D135-1290 SS | -120d |
| D135-1370 |  | Terminate ATS Cable at Busplugs & ATSs - D130 | 2d | 2027-02-18 | 2027-02-19 | D135-1630 | -120d |
| D135-1430 |  | Terminate Cables in UPS - D130 | 1d | 2027-02-18 | 2027-02-18 | D135-1420 | -118d |
| D135-1570 |  | QC 2.2 checklist VFD - D130 | 1d | 2027-02-18 | 2027-02-18 | D135-1480 | -117d |
| D135-1610 |  | QC 2.2 checklist Chiller - D130 | 1d | 2027-02-18 | 2027-02-18 | D135-1150 | -117d |
| D135-1650 |  | QC 2.2 checklist MPZ - D130 | 1d | 2027-02-18 | 2027-02-18 | D135-1470 | -117d |
| D135-1050 |  | Cable bus Install - D130 | 2d | 2027-02-19 | 2027-02-20 | D135-1040, D135-1030 | -124d |
| D135-1320 |  | Mechanical Equipment/Tray Grounding - D130 | 2d | 2027-02-19 | 2027-02-20 | D135-1310 | -120d |
| D135-1540 |  | QC 2.2 checklist UPS - D130 | 1d | 2027-02-19 | 2027-02-19 | D135-1430 | -118d |
| D135-1550 |  | QC 2.2 checklist Elec Room CRAH - D130 | 1d | 2027-02-19 | 2027-02-19 | D135-1230 | -118d |
| D135-1560 |  | QC 2.2 Mechanical Equipment - D130 | 1d | 2027-02-19 | 2027-02-19 | D135-1310 | -118d |
| D135-1380 |  | ATS Lashing - D130 | 1d | 2027-02-20 | 2027-02-20 | D135-1370 | -120d |
| D135-1060 |  | Cable pulled to A & P Xfmrs - D130 | 1d | 2027-02-22 | 2027-02-22 | D135-1050 | -124d |
| D135-1500 |  | QC 2.2 checklist MOD-01 - D130 | 1d | 2027-02-22 | 2027-02-22 | D135-1320 | -120d |
| D135-1510 |  | QC 2.2 checklist MOD-02 - D130 | 1d | 2027-02-22 | 2027-02-22 | D135-1320 | -120d |
| D135-1530 |  | QC 2.2 checklist ATSs - D130 | 1d | 2027-02-22 | 2027-02-22 | D135-1380 | -120d |
| D135-1640 |  | QC 2.2 checklist Busplugs - D130 | 1d | 2027-02-22 | 2027-02-22 | D135-1530 SS | -120d |
| D135-1070 |  | Megger Cable Bus Cable - D130 | 1d | 2027-02-23 | 2027-02-23 | D135-1060 | -124d |
| D135-1080 |  | Cable Bus inspection and covers - D130 | 1d | 2027-02-23 | 2027-02-23 | D135-1070 SS | -122d |
| D135-1090 |  | Terminations at Xfmrs - D130 | 2d | 2027-02-24 | 2027-02-25 | D135-1070 | -124d |
| D135-1100 |  | Terminations at SWD - D130 | 2d | 2027-02-24 | 2027-02-25 | D135-1070 | -124d |
| D135-1580 |  | QC 2.2 checklist SWD - D130 | 1d | 2027-02-26 | 2027-02-26 | D135-1080, D135-1490, D135-1100 | -124d |
| D135-1600 |  | QC 2.2 checklist XFMR - D130 | 1d | 2027-02-26 | 2027-02-26 | D135-1090 | -124d |
| D135-1590 |  | Ready for FTE - D130 | 1d | 2027-02-27 | 2027-02-27 | D135-1650, D135-1640, D135-1610, D135-1600, D135-1580, D135-1570, D135-1560, D135-1550, D135-1540, D135-1530, D135-1510, D135-1500 | -124d |
|  | 5 | **E130** |  | 2027-02-11 | 2027-03-01 |  |  |
| E135-1330 |  | Busduct installed - E130 | 1d | 2027-02-11 | 2027-02-11 | D135-1330 | -127d |
| E135-1340 |  | Busplugs/Tap Boxes installed - E130 | 1d | 2027-02-12 | 2027-02-12 | E135-1330 | -127d |
| E135-1000 |  | Set Skid - E130 | 1d | 2027-02-13 | 2027-02-13 | E135-1340, E135-1330, D135-1000 | -127d |
| E135-1010 |  | Set MODs - E130 | 2d | 2027-02-13 | 2027-02-15 | E135-1000 SS | -121d |
| E135-1030 |  | Cable bus Support installed - E130 | 2d | 2027-02-13 | 2027-02-15 | E135-1000 SS | -121d |
| E135-1120 |  | Chiller feed box and conduit complete - E130 | 2d | 2027-02-13 | 2027-02-15 | E135-1010 SS, E135-1000 SS | -118d |
| E135-1040 |  | SWD top covers cut out - E130 | 5d | 2027-02-15 | 2027-02-19 | E135-1000 | -125d |
| E135-1110 |  | Finish Cable Tray to Skid - E130 | 2d | 2027-02-15 | 2027-02-16 | E135-1000 | -121d |
| E135-1350 |  | Install conduit from Busplug to ATSs - E130 | 2d | 2027-02-15 | 2027-02-16 | E135-1000 | -121d |
| E135-1390 |  | Mount VFD Stand and VFD - E130 | 1d | 2027-02-15 | 2027-02-15 | E135-1000 | -119d |
| E135-1440 |  | Mount MPZ - E130 | 1d | 2027-02-15 | 2027-02-15 | E135-1000 | -118d |
| E135-1620 |  | Electrical Room CRAH Set - E130 | 1d | 2027-02-15 | 2027-02-15 | E135-1000 | -119d |
| E135-1130 |  | Pull Chiller wire - E130 | 1d | 2027-02-16 | 2027-02-16 | E135-1120, E135-1000 | -118d |
| E135-1180 |  | Penetrate MC into MOD-01 - E130 | 1d | 2027-02-16 | 2027-02-16 | E135-1010 | -120d |
| E135-1190 |  | Penetrate MC into MOD-02 - E130 | 1d | 2027-02-16 | 2027-02-16 | E135-1010 | -120d |
| E135-1200 |  | Finish Conduit to Elec Room CRAH - E130 | 1d | 2027-02-16 | 2027-02-16 | E135-1620 | -119d |
| E135-1250 |  | Pull MC from MOD-01 to Mechanical Equipment - E130 | 2d | 2027-02-16 | 2027-02-17 | E135-1010 | -121d |
| E135-1260 |  | Pull MC from MOD-02 to Mechanical Equipment - E130 | 2d | 2027-02-16 | 2027-02-17 | E135-1010 | -121d |
| E135-1400 |  | Conduit from UPS to VFD - E130 | 1d | 2027-02-16 | 2027-02-16 | E135-1390 | -119d |
| E135-1450 |  | Penetrate MC Cable into MPZ - E130 | 1d | 2027-02-16 | 2027-02-16 | E135-1440 | -118d |
| E135-1140 |  | Megger Chiller Cable - E130 | 1d | 2027-02-17 | 2027-02-17 | E135-1130 | -118d |
| E135-1160 |  | Penetrate MC into SWD - E130 | 1d | 2027-02-17 | 2027-02-17 | E135-1110 | -121d |
| E135-1170 |  | Penetrat MC into UPS - E130 | 1d | 2027-02-17 | 2027-02-17 | E135-1110 | -121d |

| ID | WBS | Task | Duration | Start | Finish | Predecessors | Total float |
| --- | --- | --- | --- | --- | --- | --- | --- |
| E135-1210 |  | Pull Cable to Elec Room CRAH - E130 | 1d | 2027-02-17 | 2027-02-17 | E135-1200 | -119d |
| E135-1360 |  | Pull ATS Cable - E130 | 1d | 2027-02-17 | 2027-02-17 | E135-1350 | -121d |
| E135-1410 |  | Pull Cable from UPS to VFD - E130 | 1d | 2027-02-17 | 2027-02-17 | E135-1400 | -119d |
| E135-1460 |  | Megger MPZ Cable - E130 | 1d | 2027-02-17 | 2027-02-17 | E135-1450 | -118d |
| E135-1490 |  | All Skid Grounding - E130 | 2d | 2027-02-17 | 2027-02-18 | E135-1110 | -118d |
| E135-1520 |  | Megger MC Cable from UPS to MOD - E130 | 1d | 2027-02-17 | 2027-02-17 | E135-1190 | -120d |
| E135-1150 |  | Terminations at Chiller - E130 | 1d | 2027-02-18 | 2027-02-18 | E135-1140 | -118d |
| E135-1220 |  | Megger MC Cable from Skid to Elec Room CRAH - E130 | 1d | 2027-02-18 | 2027-02-18 | E135-1210 | -119d |
| E135-1240 |  | Megger MC Cable from Skid to MOD - E130 | 1d | 2027-02-18 | 2027-02-18 | E135-1180, E135-1170, E135-1160 | -121d |
| E135-1270 |  | Megger MC Cable from MOD-01 to Mechanical Equipment - E130 | 1d | 2027-02-18 | 2027-02-18 | E135-1250 | -121d |
| E135-1280 |  | Megger MC Cable from MOD-02 to Mechanical Equipment - E130 | 1d | 2027-02-18 | 2027-02-18 | E135-1260 | -121d |
| E135-1420 |  | Megger Cable from UPS to VFD - E130 | 1d | 2027-02-18 | 2027-02-18 | E135-1410 | -119d |
| E135-1470 |  | Terminate MC Feed at MPZ - E130 | 1d | 2027-02-18 | 2027-02-18 | E135-1460 | -118d |
| E135-1480 |  | Terminate Cables in VFD - E130 | 1d | 2027-02-18 | 2027-02-18 | E135-1420 SS | -118d |
| E135-1630 |  | Megger Cable at ATS - E130 | 1d | 2027-02-18 | 2027-02-18 | E135-1360 | -121d |
| E135-1230 |  | Terminate Elec Room CRAH - E130 | 1d | 2027-02-19 | 2027-02-19 | E135-1220 | -119d |
| E135-1290 |  | Terminate MOD-01 - E130 | 1d | 2027-02-19 | 2027-02-19 | E135-1240, E135-1270 | -121d |
| E135-1300 |  | Terminate MOD-02 - E130 | 1d | 2027-02-19 | 2027-02-19 | E135-1520, E135-1280 | -121d |
| E135-1310 |  | Terminate at Mechanical Equipment - E130 | 1d | 2027-02-19 | 2027-02-19 | E135-1300 SS, E135-1290 SS | -121d |
| E135-1370 |  | Terminate ATS Cable at Busplugs & ATSs - E130 | 2d | 2027-02-19 | 2027-02-20 | E135-1630 | -121d |
| E135-1430 |  | Terminate Cables in UPS - E130 | 1d | 2027-02-19 | 2027-02-19 | E135-1420 | -119d |
| E135-1570 |  | QC 2.2 checklist VFD - E130 | 1d | 2027-02-19 | 2027-02-19 | E135-1480 | -118d |
| E135-1610 |  | QC 2.2 checklist Chiller - E130 | 1d | 2027-02-19 | 2027-02-19 | E135-1150 | -118d |
| E135-1650 |  | QC 2.2 checklist MPZ - E130 | 1d | 2027-02-19 | 2027-02-19 | E135-1470 | -118d |
| E135-1050 |  | Cable bus Install - E130 | 2d | 2027-02-20 | 2027-02-22 | E135-1040, E135-1030 | -125d |
| E135-1320 |  | Mechanical Equipment/Tray Grounding - E130 | 2d | 2027-02-20 | 2027-02-22 | E135-1310 | -121d |
| E135-1540 |  | QC 2.2 checklist UPS - E130 | 1d | 2027-02-20 | 2027-02-20 | E135-1430 | -119d |
| E135-1550 |  | QC 2.2 checklist Elec Room CRAH - E130 | 1d | 2027-02-20 | 2027-02-20 | E135-1230 | -119d |
| E135-1560 |  | QC 2.2 Mechanical Equipment - E130 | 1d | 2027-02-20 | 2027-02-20 | E135-1310 | -119d |
| E135-1380 |  | ATS Lashing - E130 | 1d | 2027-02-22 | 2027-02-22 | E135-1370 | -121d |
| E135-1060 |  | Cable pulled to A & P Xfmrs - E130 | 1d | 2027-02-23 | 2027-02-23 | E135-1050 | -125d |
| E135-1500 |  | QC 2.2 checklist MOD-01 - E130 | 1d | 2027-02-23 | 2027-02-23 | E135-1320 | -121d |
| E135-1510 |  | QC 2.2 checklist MOD-02 - E130 | 1d | 2027-02-23 | 2027-02-23 | E135-1320 | -121d |
| E135-1530 |  | QC 2.2 checklist ATSs - E130 | 1d | 2027-02-23 | 2027-02-23 | E135-1380 | -121d |
| E135-1640 |  | QC 2.2 checklist Busplugs - E130 | 1d | 2027-02-23 | 2027-02-23 | E135-1530 SS | -121d |
| E135-1070 |  | Megger Cable Bus Cable - E130 | 1d | 2027-02-24 | 2027-02-24 | E135-1060 | -125d |
| E135-1080 |  | Cable Bus inspection and covers - E130 | 1d | 2027-02-24 | 2027-02-24 | E135-1070 SS | -123d |
| E135-1090 |  | Terminations at Xfmrs - E130 | 2d | 2027-02-25 | 2027-02-26 | E135-1070 | -125d |
| E135-1100 |  | Terminations at SWD - E130 | 2d | 2027-02-25 | 2027-02-26 | E135-1070 | -125d |
| E135-1580 |  | QC 2.2 checklist SWD - E130 | 1d | 2027-02-27 | 2027-02-27 | E135-1080, E135-1490, E135-1100 | -125d |
| E135-1600 |  | QC 2.2 checklist XFMR - E130 | 1d | 2027-02-27 | 2027-02-27 | E135-1090 | -125d |
| E135-1590 |  | Ready for FTE - E130 | 1d | 2027-03-01 | 2027-03-01 | E135-1650, E135-1640, E135-1610, E135-1600, E135-1580, E135-1570, E135-1560, E135-1550, E135-1540, E135-1530, E135-1510, E135-1500 | -125d |
|  | 6 | **F130** |  | 2027-02-11 | 2027-03-01 |  |  |
| F135-1330 |  | Busduct installed - F130 | 1d | 2027-02-11 | 2027-02-11 | E135-1330 SS | -127d |
| F135-1340 |  | Busplugs/Tap Boxes installed - F130 | 1d | 2027-02-12 | 2027-02-12 | F135-1330 | -127d |
| F135-1000 |  | Set Skid - F130 | 1d | 2027-02-13 | 2027-02-13 | F135-1340, F135-1330, E135-1000 SS | -127d |
| F135-1010 |  | Set MODs - F130 | 2d | 2027-02-13 | 2027-02-15 | F135-1000 SS | -121d |
| F135-1030 |  | Cable bus Support installed - F130 | 2d | 2027-02-13 | 2027-02-15 | F135-1000 SS | -121d |
| F135-1120 |  | Chiller feed box and conduit complete - F130 | 2d | 2027-02-13 | 2027-02-15 | F135-1010 SS, F135-1000 SS | -118d |
| F135-1040 |  | SWD top covers cut out - F130 | 5d | 2027-02-15 | 2027-02-19 | F135-1000 | -125d |
| F135-1110 |  | Finish Cable Tray to Skid - F130 | 2d | 2027-02-15 | 2027-02-16 | F135-1000 | -121d |
| F135-1350 |  | Install conduit from Busplug to ATSs - F130 | 2d | 2027-02-15 | 2027-02-16 | F135-1000 | -121d |
| F135-1390 |  | Mount VFD Stand and VFD - F130 | 1d | 2027-02-15 | 2027-02-15 | F135-1000 | -119d |
| F135-1440 |  | Mount MPZ - F130 | 1d | 2027-02-15 | 2027-02-15 | F135-1000 | -118d |
| F135-1620 |  | Electrical Room CRAH Set - F130 | 1d | 2027-02-15 | 2027-02-15 | F135-1000 | -119d |
| F135-1130 |  | Pull Chiller wire - F130 | 1d | 2027-02-16 | 2027-02-16 | F135-1120, F135-1000 | -118d |
| F135-1180 |  | Penetrate MC into MOD-01 - F130 | 1d | 2027-02-16 | 2027-02-16 | F135-1010 | -120d |
| F135-1190 |  | Penetrate MC into MOD-02 - F130 | 1d | 2027-02-16 | 2027-02-16 | F135-1010 | -120d |
| F135-1200 |  | Finish Conduit to Elec Room CRAH - F130 | 1d | 2027-02-16 | 2027-02-16 | F135-1620 | -119d |
| F135-1250 |  | Pull MC from MOD-01 to Mechanical Equipment - F130 | 2d | 2027-02-16 | 2027-02-17 | F135-1010 | -121d |
| F135-1260 |  | Pull MC from MOD-02 to Mechanical Equipment - F130 | 2d | 2027-02-16 | 2027-02-17 | F135-1010 | -121d |
| F135-1400 |  | Conduit from UPS to VFD - F130 | 1d | 2027-02-16 | 2027-02-16 | F135-1390 | -119d |
| F135-1450 |  | Penetrate MC Cable into MPZ - F130 | 1d | 2027-02-16 | 2027-02-16 | F135-1440 | -118d |
| F135-1140 |  | Megger Chiller Cable - F130 | 1d | 2027-02-17 | 2027-02-17 | F135-1130 | -118d |
| F135-1160 |  | Penetrate MC into SWD - F130 | 1d | 2027-02-17 | 2027-02-17 | F135-1110 | -121d |
| F135-1170 |  | Penetrat MC into UPS - F130 | 1d | 2027-02-17 | 2027-02-17 | F135-1110 | -121d |
| F135-1210 |  | Pull Cable to Elec Room CRAH - F130 | 1d | 2027-02-17 | 2027-02-17 | F135-1200 | -119d |
| F135-1360 |  | Pull ATS Cable - F130 | 1d | 2027-02-17 | 2027-02-17 | F135-1350 | -121d |
| F135-1410 |  | Pull Cable from UPS to VFD - F130 | 1d | 2027-02-17 | 2027-02-17 | F135-1400 | -119d |
| F135-1460 |  | Megger MPZ Cable - F130 | 1d | 2027-02-17 | 2027-02-17 | F135-1450 | -118d |

| ID | WBS | Task | Duration | Start | Finish | Predecessors | Total float |
| --- | --- | --- | --- | --- | --- | --- | --- |
| F135-1490 |  | All Skid Grounding - F130 | 2d | 2027-02-17 | 2027-02-18 | F135-1110 | -118d |
| F135-1520 |  | Megger MC Cable from UPS to MOD - F130 | 1d | 2027-02-17 | 2027-02-17 | F135-1190 | -120d |
| F135-1150 |  | Terminations at Chiller - F130 | 1d | 2027-02-18 | 2027-02-18 | F135-1140 | -118d |
| F135-1220 |  | Megger MC Cable from Skid to Elec Room CRAH - F130 | 1d | 2027-02-18 | 2027-02-18 | F135-1210 | -119d |
| F135-1240 |  | Megger MC Cable from Skid to MOD - F130 | 1d | 2027-02-18 | 2027-02-18 | F135-1180, F135-1170, F135-1160 | -121d |
| F135-1270 |  | Megger MC Cable from MOD-01 to Mechanical Equipment - F130 | 1d | 2027-02-18 | 2027-02-18 | F135-1250 | -121d |
| F135-1280 |  | Megger MC Cable from MOD-02 to Mechanical Equipment - F130 | 1d | 2027-02-18 | 2027-02-18 | F135-1260 | -121d |
| F135-1420 |  | Megger Cable from UPS to VFD - F130 | 1d | 2027-02-18 | 2027-02-18 | F135-1410 | -119d |
| F135-1470 |  | Terminate MC Feed at MPZ - F130 | 1d | 2027-02-18 | 2027-02-18 | F135-1460 | -118d |
| F135-1480 |  | Terminate Cables in VFD - F130 | 1d | 2027-02-18 | 2027-02-18 | F135-1420 SS | -118d |
| F135-1630 |  | Megger Cable at ATS - F130 | 1d | 2027-02-18 | 2027-02-18 | F135-1360 | -121d |
| F135-1230 |  | Terminate Elec Room CRAH - F130 | 1d | 2027-02-19 | 2027-02-19 | F135-1220 | -119d |
| F135-1290 |  | Terminate MOD-01 - F130 | 1d | 2027-02-19 | 2027-02-19 | F135-1240, F135-1270 | -121d |
| F135-1300 |  | Terminate MOD-02 - F130 | 1d | 2027-02-19 | 2027-02-19 | F135-1520, F135-1280 | -121d |
| F135-1310 |  | Terminate at Mechanical Equipment - F130 | 1d | 2027-02-19 | 2027-02-19 | F135-1300 SS, F135-1290 SS | -121d |
| F135-1370 |  | Terminate ATS Cable at Busplugs & ATSs - F130 | 2d | 2027-02-19 | 2027-02-20 | F135-1630 | -121d |
| F135-1430 |  | Terminate Cables in UPS - F130 | 1d | 2027-02-19 | 2027-02-19 | F135-1420 | -119d |
| F135-1570 |  | QC 2.2 checklist VFD - F130 | 1d | 2027-02-19 | 2027-02-19 | F135-1480 | -118d |
| F135-1610 |  | QC 2.2 checklist Chiller - F130 | 1d | 2027-02-19 | 2027-02-19 | F135-1150 | -118d |
| F135-1650 |  | QC 2.2 checklist MPZ - F130 | 1d | 2027-02-19 | 2027-02-19 | F135-1470 | -118d |
| F135-1050 |  | Cable bus Install - F130 | 2d | 2027-02-20 | 2027-02-22 | F135-1040, F135-1030 | -125d |
| F135-1320 |  | Mechanical Equipment/Tray Grounding - F130 | 2d | 2027-02-20 | 2027-02-22 | F135-1310 | -121d |
| F135-1540 |  | QC 2.2 checklist UPS - F130 | 1d | 2027-02-20 | 2027-02-20 | F135-1430 | -119d |
| F135-1550 |  | QC 2.2 checklist Elec Room CRAH - F130 | 1d | 2027-02-20 | 2027-02-20 | F135-1230 | -119d |
| F135-1560 |  | QC 2.2 Mechanical Equipment - F130 | 1d | 2027-02-20 | 2027-02-20 | F135-1310 | -119d |
| F135-1380 |  | ATS Lashing - F130 | 1d | 2027-02-22 | 2027-02-22 | F135-1370 | -121d |
| F135-1060 |  | Cable pulled to A & P Xfmrs - F130 | 1d | 2027-02-23 | 2027-02-23 | F135-1050 | -125d |
| F135-1500 |  | QC 2.2 checklist MOD-01 - F130 | 1d | 2027-02-23 | 2027-02-23 | F135-1320 | -121d |
| F135-1510 |  | QC 2.2 checklist MOD-02 - F130 | 1d | 2027-02-23 | 2027-02-23 | F135-1320 | -121d |
| F135-1530 |  | QC 2.2 checklist ATSs - F130 | 1d | 2027-02-23 | 2027-02-23 | F135-1380 | -121d |
| F135-1640 |  | QC 2.2 checklist Busplugs - F130 | 1d | 2027-02-23 | 2027-02-23 | F135-1530 SS | -121d |
| F135-1070 |  | Megger Cable Bus Cable - F130 | 1d | 2027-02-24 | 2027-02-24 | F135-1060 | -125d |
| F135-1080 |  | Cable Bus inspection and covers - F130 | 1d | 2027-02-24 | 2027-02-24 | F135-1070 SS | -123d |
| F135-1090 |  | Terminations at Xfmrs - F130 | 2d | 2027-02-25 | 2027-02-26 | F135-1070 | -125d |
| F135-1100 |  | Terminations at SWD - F130 | 2d | 2027-02-25 | 2027-02-26 | F135-1070 | -125d |
| F135-1580 |  | QC 2.2 checklist SWD - F130 | 1d | 2027-02-27 | 2027-02-27 | F135-1080, F135-1490, F135-1100 | -125d |
| F135-1600 |  | QC 2.2 checklist XFMR - F130 | 1d | 2027-02-27 | 2027-02-27 | F135-1090 | -125d |
| F135-1590 |  | Ready for FTE - F130 | 1d | 2027-03-01 | 2027-03-01 | F135-1650, F135-1640, F135-1610, F135-1600, F135-1580, F135-1570, F135-1560, F135-1550, F135-1540, F135-1530, F135-1510, F135-1500 | -125d |
|  | 7 | **G130** |  | 2027-02-11 | 2027-03-01 |  |  |
| G135-1330 |  | Busduct installed - G130 | 1d | 2027-02-11 | 2027-02-11 | F135-1330 SS | -127d |
| G135-1340 |  | Busplugs/Tap Boxes installed - G130 | 1d | 2027-02-12 | 2027-02-12 | G135-1330 | -127d |
| G135-1000 |  | Set Skid - G130 | 1d | 2027-02-13 | 2027-02-13 | G135-1340, G135-1330, F135-1000 SS | -127d |
| G135-1010 |  | Set MODs - G130 | 2d | 2027-02-13 | 2027-02-15 | G135-1000 SS | -121d |
| G135-1030 |  | Cable bus Support installed - G130 | 2d | 2027-02-13 | 2027-02-15 | G135-1000 SS | -121d |
| G135-1120 |  | Chiller feed box and conduit complete - G130 | 2d | 2027-02-13 | 2027-02-15 | G135-1010 SS, G135-1000 SS | -118d |
| G135-1040 |  | SWD top covers cut out - G130 | 5d | 2027-02-15 | 2027-02-19 | G135-1000 | -125d |
| G135-1110 |  | Finish Cable Tray to Skid - G130 | 2d | 2027-02-15 | 2027-02-16 | G135-1000 | -121d |
| G135-1350 |  | Install conduit from Busplug to ATSs - G130 | 2d | 2027-02-15 | 2027-02-16 | G135-1000 | -121d |
| G135-1390 |  | Mount VFD Stand and VFD - G130 | 1d | 2027-02-15 | 2027-02-15 | G135-1000 | -119d |
| G135-1440 |  | Mount MPZ - G130 | 1d | 2027-02-15 | 2027-02-15 | G135-1000 | -118d |
| G135-1620 |  | Electrical Room CRAH Set - G130 | 1d | 2027-02-15 | 2027-02-15 | G135-1000 | -119d |
| G135-1130 |  | Pull Chiller wire - G130 | 1d | 2027-02-16 | 2027-02-16 | G135-1120, G135-1000 | -118d |
| G135-1180 |  | Penetrate MC into MOD-01 - G130 | 1d | 2027-02-16 | 2027-02-16 | G135-1010 | -120d |
| G135-1190 |  | Penetrate MC into MOD-02 - G130 | 1d | 2027-02-16 | 2027-02-16 | G135-1010 | -120d |
| G135-1200 |  | Finish Conduit to Elec Room CRAH - G130 | 1d | 2027-02-16 | 2027-02-16 | G135-1620 | -119d |
| G135-1250 |  | Pull MC from MOD-01 to Mechanical Equipment - G130 | 2d | 2027-02-16 | 2027-02-17 | G135-1010 | -121d |
| G135-1260 |  | Pull MC from MOD-02 to Mechanical Equipment - G130 | 2d | 2027-02-16 | 2027-02-17 | G135-1010 | -121d |
| G135-1400 |  | Conduit from UPS to VFD - G130 | 1d | 2027-02-16 | 2027-02-16 | G135-1390 | -119d |
| G135-1450 |  | Penetrate MC Cable into MPZ - G130 | 1d | 2027-02-16 | 2027-02-16 | G135-1440 | -118d |
| G135-1140 |  | Megger Chiller Cable - G130 | 1d | 2027-02-17 | 2027-02-17 | G135-1130 | -118d |
| G135-1160 |  | Penetrate MC into SWD - G130 | 1d | 2027-02-17 | 2027-02-17 | G135-1110 | -121d |
| G135-1170 |  | Penetrat MC into UPS - G130 | 1d | 2027-02-17 | 2027-02-17 | G135-1110 | -121d |
| G135-1210 |  | Pull Cable to Elec Room CRAH - G130 | 1d | 2027-02-17 | 2027-02-17 | G135-1200 | -119d |
| G135-1360 |  | Pull ATS Cable - G130 | 1d | 2027-02-17 | 2027-02-17 | G135-1350 | -121d |
| G135-1410 |  | Pull Cable from UPS to VFD - G130 | 1d | 2027-02-17 | 2027-02-17 | G135-1400 | -119d |
| G135-1460 |  | Megger MPZ Cable - G130 | 1d | 2027-02-17 | 2027-02-17 | G135-1450 | -118d |
| G135-1490 |  | All Skid Grounding - G130 | 2d | 2027-02-17 | 2027-02-18 | G135-1110 | -118d |
| G135-1520 |  | Megger MC Cable from UPS to MOD - G130 | 1d | 2027-02-17 | 2027-02-17 | G135-1190 | -120d |
| G135-1150 |  | Terminations at Chiller - G130 | 1d | 2027-02-18 | 2027-02-18 | G135-1140 | -118d |
| G135-1220 |  | Megger MC Cable from Skid to Elec Room CRAH - G130 | 1d | 2027-02-18 | 2027-02-18 | G135-1210 | -119d |

| ID | WBS | Task | Duration | Start | Finish | Predecessors | Total float |
| --- | --- | --- | --- | --- | --- | --- | --- |
| G135-1240 |  | Megger MC Cable from Skid to MOD - G130 | 1d | 2027-02-18 | 2027-02-18 | G135-1180, G135-1170, G135-1160 | -121d |
| G135-1270 |  | Megger MC Cable from MOD-01 to Mechanical Equipment - G130 | 1d | 2027-02-18 | 2027-02-18 | G135-1250 | -121d |
| G135-1280 |  | Megger MC Cable from MOD-02 to Mechanical Equipment - G130 | 1d | 2027-02-18 | 2027-02-18 | G135-1260 | -121d |
| G135-1420 |  | Megger Cable from UPS to VFD - G130 | 1d | 2027-02-18 | 2027-02-18 | G135-1410 | -119d |
| G135-1470 |  | Terminate MC Feed at MPZ - G130 | 1d | 2027-02-18 | 2027-02-18 | G135-1460 | -118d |
| G135-1480 |  | Terminate Cables in VFD - G130 | 1d | 2027-02-18 | 2027-02-18 | G135-1420 SS | -118d |
| G135-1630 |  | Megger Cable at ATS - G130 | 1d | 2027-02-18 | 2027-02-18 | G135-1360 | -121d |
| G135-1230 |  | Terminate Elec Room CRAH - G130 | 1d | 2027-02-19 | 2027-02-19 | G135-1220 | -119d |
| G135-1290 |  | Terminate MOD-01 - G130 | 1d | 2027-02-19 | 2027-02-19 | G135-1240, G135-1270 | -121d |
| G135-1300 |  | Terminate MOD-02 - G130 | 1d | 2027-02-19 | 2027-02-19 | G135-1520, G135-1280 | -121d |
| G135-1310 |  | Terminate at Mechanical Equipment - G130 | 1d | 2027-02-19 | 2027-02-19 | G135-1300 SS, G135-1290 SS | -121d |
| G135-1370 |  | Terminate ATS Cable at Busplugs & ATSs - G130 | 2d | 2027-02-19 | 2027-02-20 | G135-1630 | -121d |
| G135-1430 |  | Terminate Cables in UPS - G130 | 1d | 2027-02-19 | 2027-02-19 | G135-1420 | -119d |
| G135-1570 |  | QC 2.2 checklist VFD - G130 | 1d | 2027-02-19 | 2027-02-19 | G135-1480 | -118d |
| G135-1610 |  | QC 2.2 checklist Chiller - G130 | 1d | 2027-02-19 | 2027-02-19 | G135-1150 | -118d |
| G135-1650 |  | QC 2.2 checklist MPZ - G130 | 1d | 2027-02-19 | 2027-02-19 | G135-1470 | -118d |
| G135-1050 |  | Cable bus Install - G130 | 2d | 2027-02-20 | 2027-02-22 | G135-1040, G135-1030 | -125d |
| G135-1320 |  | Mechanical Equipment/Tray Grounding - G130 | 2d | 2027-02-20 | 2027-02-22 | G135-1310 | -121d |
| G135-1540 |  | QC 2.2 checklist UPS - G130 | 1d | 2027-02-20 | 2027-02-20 | G135-1430 | -119d |
| G135-1550 |  | QC 2.2 checklist Elec Room CRAH - G130 | 1d | 2027-02-20 | 2027-02-20 | G135-1230 | -119d |
| G135-1560 |  | QC 2.2 Mechanical Equipment - G130 | 1d | 2027-02-20 | 2027-02-20 | G135-1310 | -119d |
| G135-1380 |  | ATS Lashing - G130 | 1d | 2027-02-22 | 2027-02-22 | G135-1370 | -121d |
| G135-1060 |  | Cable pulled to A & P Xfmrs - G130 | 1d | 2027-02-23 | 2027-02-23 | G135-1050 | -125d |
| G135-1500 |  | QC 2.2 checklist MOD-01 - G130 | 1d | 2027-02-23 | 2027-02-23 | G135-1320 | -121d |
| G135-1510 |  | QC 2.2 checklist MOD-02 - G130 | 1d | 2027-02-23 | 2027-02-23 | G135-1320 | -121d |
| G135-1530 |  | QC 2.2 checklist ATSs - G130 | 1d | 2027-02-23 | 2027-02-23 | G135-1380 | -121d |
| G135-1640 |  | QC 2.2 checklist Busplugs - G130 | 1d | 2027-02-23 | 2027-02-23 | G135-1530 SS | -121d |
| G135-1070 |  | Megger Cable Bus Cable - G130 | 1d | 2027-02-24 | 2027-02-24 | G135-1060 | -125d |
| G135-1080 |  | Cable Bus inspection and covers - G130 | 1d | 2027-02-24 | 2027-02-24 | G135-1070 SS | -123d |
| G135-1090 |  | Terminations at Xfmrs - G130 | 2d | 2027-02-25 | 2027-02-26 | G135-1070 | -125d |
| G135-1100 |  | Terminations at SWD - G130 | 2d | 2027-02-25 | 2027-02-26 | G135-1070 | -125d |
| G135-1580 |  | QC 2.2 checklist SWD - G130 | 1d | 2027-02-27 | 2027-02-27 | G135-1080, G135-1490, G135-1100 | -125d |
| G135-1600 |  | QC 2.2 checklist XFMR - G130 | 1d | 2027-02-27 | 2027-02-27 | G135-1090 | -125d |
| G135-1590 |  | Ready for FTE - G130 | 1d | 2027-03-01 | 2027-03-01 | G135-1650, G135-1640, G135-1610, G135-1600, G135-1580, G135-1570, G135-1560, G135-1550, G135-1540, G135-1530, G135-1510, G135-1500 | -125d |
|  | 9 | **H130** |  | 2027-02-11 | 2027-03-01 |  |  |
| H135-1330 |  | Busduct installed - H130 | 1d | 2027-02-11 | 2027-02-11 | G135-1330 SS | -127d |
| H135-1340 |  | Busplugs/Tap Boxes installed - H130 | 1d | 2027-02-12 | 2027-02-12 | H135-1330 | -127d |
| H135-1000 |  | Set Skid - H130 | 1d | 2027-02-13 | 2027-02-13 | H135-1340, H135-1330, G135-1000 SS | -127d |
| H135-1010 |  | Set MODs - H130 | 2d | 2027-02-13 | 2027-02-15 | H135-1000 SS | -121d |
| H135-1030 |  | Cable bus Support installed - H130 | 2d | 2027-02-13 | 2027-02-15 | H135-1000 SS | -121d |
| H135-1120 |  | Chiller feed box and conduit complete - H130 | 2d | 2027-02-13 | 2027-02-15 | H135-1010 SS, H135-1000 SS | -118d |
| H135-1040 |  | SWD top covers cut out - H130 | 5d | 2027-02-15 | 2027-02-19 | H135-1000 | -125d |
| H135-1110 |  | Finish Cable Tray to Skid - H130 | 2d | 2027-02-15 | 2027-02-16 | H135-1000 | -121d |
| H135-1350 |  | Install conduit from Busplug to ATSs - H130 | 2d | 2027-02-15 | 2027-02-16 | H135-1000 | -121d |
| H135-1390 |  | Mount VFD Stand and VFD - H130 | 1d | 2027-02-15 | 2027-02-15 | H135-1000 | -119d |
| H135-1440 |  | Mount MPZ - H130 | 1d | 2027-02-15 | 2027-02-15 | H135-1000 | -118d |
| H135-1620 |  | Electrical Room CRAH Set - H130 | 1d | 2027-02-15 | 2027-02-15 | H135-1000 | -119d |
| H135-1130 |  | Pull Chiller wire - H130 | 1d | 2027-02-16 | 2027-02-16 | H135-1120, H135-1000 | -118d |
| H135-1180 |  | Penetrate MC into MOD-01 - H130 | 1d | 2027-02-16 | 2027-02-16 | H135-1010 | -120d |
| H135-1190 |  | Penetrate MC into MOD-02 - H130 | 1d | 2027-02-16 | 2027-02-16 | H135-1010 | -120d |
| H135-1200 |  | Finish Conduit to Elec Room CRAH - H130 | 1d | 2027-02-16 | 2027-02-16 | H135-1620 | -119d |
| H135-1250 |  | Pull MC from MOD-01 to Mechanical Equipment - H130 | 2d | 2027-02-16 | 2027-02-17 | H135-1010 | -121d |
| H135-1260 |  | Pull MC from MOD-02 to Mechanical Equipment - H130 | 2d | 2027-02-16 | 2027-02-17 | H135-1010 | -121d |
| H135-1400 |  | Conduit from UPS to VFD - H130 | 1d | 2027-02-16 | 2027-02-16 | H135-1390 | -119d |
| H135-1450 |  | Penetrate MC Cable into MPZ - H130 | 1d | 2027-02-16 | 2027-02-16 | H135-1440 | -118d |
| H135-1140 |  | Megger Chiller Cable - H130 | 1d | 2027-02-17 | 2027-02-17 | H135-1130 | -118d |
| H135-1160 |  | Penetrate MC into SWD - H130 | 1d | 2027-02-17 | 2027-02-17 | H135-1110 | -121d |
| H135-1170 |  | Penetrat MC into UPS - H130 | 1d | 2027-02-17 | 2027-02-17 | H135-1110 | -121d |
| H135-1210 |  | Pull Cable to Elec Room CRAH - H130 | 1d | 2027-02-17 | 2027-02-17 | H135-1200 | -119d |
| H135-1360 |  | Pull ATS Cable - H130 | 1d | 2027-02-17 | 2027-02-17 | H135-1350 | -121d |
| H135-1410 |  | Pull Cable from UPS to VFD - H130 | 1d | 2027-02-17 | 2027-02-17 | H135-1400 | -119d |
| H135-1460 |  | Megger MPZ Cable - H130 | 1d | 2027-02-17 | 2027-02-17 | H135-1450 | -118d |
| H135-1490 |  | All Skid Grounding - H130 | 2d | 2027-02-17 | 2027-02-18 | H135-1110 | -118d |
| H135-1520 |  | Megger MC Cable from UPS to MOD - H130 | 1d | 2027-02-17 | 2027-02-17 | H135-1190 | -120d |
| H135-1150 |  | Terminations at Chiller - H130 | 1d | 2027-02-18 | 2027-02-18 | H135-1140 | -118d |
| H135-1220 |  | Megger MC Cable from Skid to Elec Room CRAH - H130 | 1d | 2027-02-18 | 2027-02-18 | H135-1210 | -119d |
| H135-1240 |  | Megger MC Cable from Skid to MOD - H130 | 1d | 2027-02-18 | 2027-02-18 | H135-1180, H135-1170, H135-1160 | -121d |
| H135-1270 |  | Megger MC Cable from MOD-01 to Mechanical Equipment - H130 | 1d | 2027-02-18 | 2027-02-18 | H135-1250 | -121d |
| H135-1280 |  | Megger MC Cable from MOD-02 to Mechanical Equipment - H130 | 1d | 2027-02-18 | 2027-02-18 | H135-1260 | -121d |
| H135-1420 |  | Megger Cable from UPS to VFD - H130 | 1d | 2027-02-18 | 2027-02-18 | H135-1410 | -119d |

| ID | WBS | Task | Duration | Start | Finish | Predecessors | Total float |
| --- | --- | --- | --- | --- | --- | --- | --- |
| H135-1470 |  | Terminate MC Feed at MPZ - H130 | 1d | 2027-02-18 | 2027-02-18 | H135-1460 | -118d |
| H135-1480 |  | Terminate Cables in VFD - H130 | 1d | 2027-02-18 | 2027-02-18 | H135-1420 SS | -118d |
| H135-1630 |  | Megger Cable at ATS - H130 | 1d | 2027-02-18 | 2027-02-18 | H135-1360 | -121d |
| H135-1230 |  | Terminate Elec Room CRAH - H130 | 1d | 2027-02-19 | 2027-02-19 | H135-1220 | -119d |
| H135-1290 |  | Terminate MOD-01 - H130 | 1d | 2027-02-19 | 2027-02-19 | H135-1240, H135-1270 | -121d |
| H135-1300 |  | Terminate MOD-02 - H130 | 1d | 2027-02-19 | 2027-02-19 | H135-1520, H135-1280 | -121d |
| H135-1310 |  | Terminate at Mechanical Equipment - H130 | 1d | 2027-02-19 | 2027-02-19 | H135-1300 SS, H135-1290 SS | -121d |
| H135-1370 |  | Terminate ATS Cable at Busplugs & ATSs - H130 | 2d | 2027-02-19 | 2027-02-20 | H135-1630 | -121d |
| H135-1430 |  | Terminate Cables in UPS - H130 | 1d | 2027-02-19 | 2027-02-19 | H135-1420 | -119d |
| H135-1570 |  | QC 2.2 checklist VFD - H130 | 1d | 2027-02-19 | 2027-02-19 | H135-1480 | -118d |
| H135-1610 |  | QC 2.2 checklist Chiller - H130 | 1d | 2027-02-19 | 2027-02-19 | H135-1150 | -118d |
| H135-1650 |  | QC 2.2 checklist MPZ - H130 | 1d | 2027-02-19 | 2027-02-19 | H135-1470 | -118d |
| H135-1050 |  | Cable bus Install - H130 | 2d | 2027-02-20 | 2027-02-22 | H135-1040, H135-1030 | -125d |
| H135-1320 |  | Mechanical Equipment/Tray Grounding - H130 | 2d | 2027-02-20 | 2027-02-22 | H135-1310 | -121d |
| H135-1540 |  | QC 2.2 checklist UPS - H130 | 1d | 2027-02-20 | 2027-02-20 | H135-1430 | -119d |
| H135-1550 |  | QC 2.2 checklist Elec Room CRAH - H130 | 1d | 2027-02-20 | 2027-02-20 | H135-1230 | -119d |
| H135-1560 |  | QC 2.2 Mechanical Equipment - H130 | 1d | 2027-02-20 | 2027-02-20 | H135-1310 | -119d |
| H135-1380 |  | ATS Lashing - H130 | 1d | 2027-02-22 | 2027-02-22 | H135-1370 | -121d |
| H135-1060 |  | Cable pulled to A & P Xfmrs - H130 | 1d | 2027-02-23 | 2027-02-23 | H135-1050 | -125d |
| H135-1500 |  | QC 2.2 checklist MOD-01 - H130 | 1d | 2027-02-23 | 2027-02-23 | H135-1320 | -121d |
| H135-1510 |  | QC 2.2 checklist MOD-02 - H130 | 1d | 2027-02-23 | 2027-02-23 | H135-1320 | -121d |
| H135-1530 |  | QC 2.2 checklist ATSs - H130 | 1d | 2027-02-23 | 2027-02-23 | H135-1380 | -121d |
| H135-1640 |  | QC 2.2 checklist Busplugs - H130 | 1d | 2027-02-23 | 2027-02-23 | H135-1530 SS | -121d |
| H135-1070 |  | Megger Cable Bus Cable - H130 | 1d | 2027-02-24 | 2027-02-24 | H135-1060 | -125d |
| H135-1080 |  | Cable Bus inspection and covers - H130 | 1d | 2027-02-24 | 2027-02-24 | H135-1070 SS | -123d |
| H135-1090 |  | Terminations at Xfmrs - H130 | 2d | 2027-02-25 | 2027-02-26 | H135-1070 | -125d |
| H135-1100 |  | Terminations at SWD - H130 | 2d | 2027-02-25 | 2027-02-26 | H135-1070 | -125d |
| H135-1580 |  | QC 2.2 checklist SWD - H130 | 1d | 2027-02-27 | 2027-02-27 | H135-1080, H135-1490, H135-1100 | -125d |
| H135-1600 |  | QC 2.2 checklist XFMR - H130 | 1d | 2027-02-27 | 2027-02-27 | H135-1090 | -125d |
| H135-1590 |  | Ready for FTE - H130 | 1d | 2027-03-01 | 2027-03-01 | H135-1650, H135-1640, H135-1610, H135-1600, H135-1580, H135-1570, H135-1560, H135-1550, H135-1540, H135-1530, H135-1510, H135-1500 | -125d |
|  | 8 | **J130** |  | 2027-02-12 | 2027-03-02 |  |  |
| J135-1330 |  | Busduct installed - J130 | 1d | 2027-02-12 | 2027-02-12 | H135-1330 | -127d |
| J135-1340 |  | Busplugs/Tap Boxes installed - J130 | 1d | 2027-02-13 | 2027-02-13 | J135-1330 | -127d |
| J135-1000 |  | Set Skid - J130 | 1d | 2027-02-15 | 2027-02-15 | J135-1340, J135-1330, H135-1000 | -127d |
| J135-1010 |  | Set MODs - J130 | 2d | 2027-02-15 | 2027-02-16 | J135-1000 SS | -122d |
| J135-1030 |  | Cable bus Support installed - J130 | 2d | 2027-02-15 | 2027-02-16 | J135-1000 SS | -122d |
| J135-1120 |  | Chiller feed box and conduit complete - J130 | 2d | 2027-02-15 | 2027-02-16 | J135-1010 SS, J135-1000 SS | -119d |
| J135-1040 |  | SWD top covers cut out - J130 | 5d | 2027-02-16 | 2027-02-20 | J135-1000 | -126d |
| J135-1110 |  | Finish Cable Tray to Skid - J130 | 2d | 2027-02-16 | 2027-02-17 | J135-1000 | -122d |
| J135-1350 |  | Install conduit from Busplug to ATSs - J130 | 2d | 2027-02-16 | 2027-02-17 | J135-1000 | -122d |
| J135-1390 |  | Mount VFD Stand and VFD - J130 | 1d | 2027-02-16 | 2027-02-16 | J135-1000 | -120d |
| J135-1440 |  | Mount MPZ - J130 | 1d | 2027-02-16 | 2027-02-16 | J135-1000 | -119d |
| J135-1620 |  | Electrical Room CRAH Set - J130 | 1d | 2027-02-16 | 2027-02-16 | J135-1000 | -120d |
| J135-1130 |  | Pull Chiller wire - J130 | 1d | 2027-02-17 | 2027-02-17 | J135-1120, J135-1000 | -119d |
| J135-1180 |  | Penetrate MC into MOD-01 - J130 | 1d | 2027-02-17 | 2027-02-17 | J135-1010 | -121d |
| J135-1190 |  | Penetrate MC into MOD-02 - J130 | 1d | 2027-02-17 | 2027-02-17 | J135-1010 | -121d |
| J135-1200 |  | Finish Conduit to Elec Room CRAH - J130 | 1d | 2027-02-17 | 2027-02-17 | J135-1620 | -120d |
| J135-1250 |  | Pull MC from MOD-01 to Mechanical Equipment - J130 | 2d | 2027-02-17 | 2027-02-18 | J135-1010 | -122d |
| J135-1260 |  | Pull MC from MOD-02 to Mechanical Equipment - J130 | 2d | 2027-02-17 | 2027-02-18 | J135-1010 | -122d |
| J135-1400 |  | Conduit from UPS to VFD - J130 | 1d | 2027-02-17 | 2027-02-17 | J135-1390 | -120d |
| J135-1450 |  | Penetrate MC Cable into MPZ - J130 | 1d | 2027-02-17 | 2027-02-17 | J135-1440 | -119d |
| J135-1140 |  | Megger Chiller Cable - J130 | 1d | 2027-02-18 | 2027-02-18 | J135-1130 | -119d |
| J135-1160 |  | Penetrate MC into SWD - J130 | 1d | 2027-02-18 | 2027-02-18 | J135-1110 | -122d |
| J135-1170 |  | Penetrat MC into UPS - J130 | 1d | 2027-02-18 | 2027-02-18 | J135-1110 | -122d |
| J135-1210 |  | Pull Cable to Elec Room CRAH - J130 | 1d | 2027-02-18 | 2027-02-18 | J135-1200 | -120d |
| J135-1360 |  | Pull ATS Cable - J130 | 1d | 2027-02-18 | 2027-02-18 | J135-1350 | -122d |
| J135-1410 |  | Pull Cable from UPS to VFD - J130 | 1d | 2027-02-18 | 2027-02-18 | J135-1400 | -120d |
| J135-1460 |  | Megger MPZ Cable - J130 | 1d | 2027-02-18 | 2027-02-18 | J135-1450 | -119d |
| J135-1490 |  | All Skid Grounding - J130 | 2d | 2027-02-18 | 2027-02-19 | J135-1110 | -119d |
| J135-1520 |  | Megger MC Cable from UPS to MOD - J130 | 1d | 2027-02-18 | 2027-02-18 | J135-1190 | -121d |
| J135-1150 |  | Terminations at Chiller - J130 | 1d | 2027-02-19 | 2027-02-19 | J135-1140 | -119d |
| J135-1220 |  | Megger MC Cable from Skid to Elec Room CRAH - J130 | 1d | 2027-02-19 | 2027-02-19 | J135-1210 | -120d |
| J135-1240 |  | Megger MC Cable from Skid to MOD - J130 | 1d | 2027-02-19 | 2027-02-19 | J135-1180, J135-1170, J135-1160 | -122d |
| J135-1270 |  | Megger MC Cable from MOD-01 to Mechanical Equipment - J130 | 1d | 2027-02-19 | 2027-02-19 | J135-1250 | -122d |
| J135-1280 |  | Megger MC Cable from MOD-02 to Mechanical Equipment - J130 | 1d | 2027-02-19 | 2027-02-19 | J135-1260 | -122d |
| J135-1420 |  | Megger Cable from UPS to VFD - J130 | 1d | 2027-02-19 | 2027-02-19 | J135-1410 | -120d |
| J135-1470 |  | Terminate MC Feed at MPZ - J130 | 1d | 2027-02-19 | 2027-02-19 | J135-1460 | -119d |
| J135-1480 |  | Terminate Cables in VFD - J130 | 1d | 2027-02-19 | 2027-02-19 | J135-1420 SS | -119d |
| J135-1630 |  | Megger Cable at ATS - J130 | 1d | 2027-02-19 | 2027-02-19 | J135-1360 | -122d |
| J135-1230 |  | Terminate Elec Room CRAH - J130 | 1d | 2027-02-20 | 2027-02-20 | J135-1220 | -120d |

| ID | WBS | Task | Duration | Start | Finish | Predecessors | Total float |
| --- | --- | --- | --- | --- | --- | --- | --- |
| J135-1290 |  | Terminate MOD-01 - J130 | 1d | 2027-02-20 | 2027-02-20 | J135-1240, J135-1270 | -122d |
| J135-1300 |  | Terminate MOD-02 - J130 | 1d | 2027-02-20 | 2027-02-20 | J135-1520, J135-1280 | -122d |
| J135-1310 |  | Terminate at Mechanical Equipment - J130 | 1d | 2027-02-20 | 2027-02-20 | J135-1300 SS, J135-1290 SS | -122d |
| J135-1370 |  | Terminate ATS Cable at Busplugs & ATSs - J130 | 2d | 2027-02-20 | 2027-02-22 | J135-1630 | -122d |
| J135-1430 |  | Terminate Cables in UPS - J130 | 1d | 2027-02-20 | 2027-02-20 | J135-1420 | -120d |
| J135-1570 |  | QC 2.2 checklist VFD - J130 | 1d | 2027-02-20 | 2027-02-20 | J135-1480 | -119d |
| J135-1610 |  | QC 2.2 checklist Chiller - J130 | 1d | 2027-02-20 | 2027-02-20 | J135-1150 | -119d |
| J135-1650 |  | QC 2.2 checklist MPZ - J130 | 1d | 2027-02-20 | 2027-02-20 | J135-1470 | -119d |
| J135-1050 |  | Cable bus Install - J130 | 2d | 2027-02-22 | 2027-02-23 | J135-1040, J135-1030 | -126d |
| J135-1320 |  | Mechanical Equipment/Tray Grounding - J130 | 2d | 2027-02-22 | 2027-02-23 | J135-1310 | -122d |
| J135-1540 |  | QC 2.2 checklist UPS - J130 | 1d | 2027-02-22 | 2027-02-22 | J135-1430 | -120d |
| J135-1550 |  | QC 2.2 checklist Elec Room CRAH - J130 | 1d | 2027-02-22 | 2027-02-22 | J135-1230 | -120d |
| J135-1560 |  | QC 2.2 Mechanical Equipment - J130 | 1d | 2027-02-22 | 2027-02-22 | J135-1310 | -120d |
| J135-1380 |  | ATS Lashing - J130 | 1d | 2027-02-23 | 2027-02-23 | J135-1370 | -122d |
| J135-1060 |  | Cable pulled to A & P Xfmrs - J130 | 1d | 2027-02-24 | 2027-02-24 | J135-1050 | -126d |
| J135-1500 |  | QC 2.2 checklist MOD-01 - J130 | 1d | 2027-02-24 | 2027-02-24 | J135-1320 | -122d |
| J135-1510 |  | QC 2.2 checklist MOD-02 - J130 | 1d | 2027-02-24 | 2027-02-24 | J135-1320 | -122d |
| J135-1530 |  | QC 2.2 checklist ATSs - J130 | 1d | 2027-02-24 | 2027-02-24 | J135-1380 | -122d |
| J135-1640 |  | QC 2.2 checklist Busplugs - J130 | 1d | 2027-02-24 | 2027-02-24 | J135-1530 SS | -122d |
| J135-1070 |  | Megger Cable Bus Cable - J130 | 1d | 2027-02-25 | 2027-02-25 | J135-1060 | -126d |
| J135-1080 |  | Cable Bus inspection and covers - J130 | 1d | 2027-02-25 | 2027-02-25 | J135-1070 SS | -124d |
| J135-1090 |  | Terminations at Xfmrs - J130 | 2d | 2027-02-26 | 2027-02-27 | J135-1070 | -126d |
| J135-1100 |  | Terminations at SWD - J130 | 2d | 2027-02-26 | 2027-02-27 | J135-1070 | -126d |
| J135-1580 |  | QC 2.2 checklist SWD - J130 | 1d | 2027-03-01 | 2027-03-01 | J135-1080, J135-1490, J135-1100 | -126d |
| J135-1600 |  | QC 2.2 checklist XFMR - J130 | 1d | 2027-03-01 | 2027-03-01 | J135-1090 | -126d |
| J135-1590 |  | Ready for FTE - J130 | 1d | 2027-03-02 | 2027-03-02 | J135-1650, J135-1640, J135-1610, J135-1600, J135-1580, J135-1570, J135-1560, J135-1550, J135-1540, J135-1530, J135-1510, J135-1500 | -126d |
|  | 10 | **K130** |  | 2027-02-12 | 2027-03-02 |  |  |
| K135-1330 |  | Busduct installed - K130 | 1d | 2027-02-12 | 2027-02-12 | J135-1330 SS | -127d |
| K135-1340 |  | Busplugs/Tap Boxes installed - K130 | 1d | 2027-02-13 | 2027-02-13 | K135-1330 | -127d |
| K135-1000 |  | Set Skid - K130 | 1d | 2027-02-15 | 2027-02-15 | K135-1340, K135-1330, J135-1000 SS | -127d |
| K135-1010 |  | Set MODs - K130 | 2d | 2027-02-15 | 2027-02-16 | K135-1000 SS | -122d |
| K135-1030 |  | Cable bus Support installed - K130 | 2d | 2027-02-15 | 2027-02-16 | K135-1000 SS | -122d |
| K135-1120 |  | Chiller feed box and conduit complete - K130 | 2d | 2027-02-15 | 2027-02-16 | K135-1010 SS, K135-1000 SS | -119d |
| K135-1040 |  | SWD top covers cut out - K130 | 5d | 2027-02-16 | 2027-02-20 | K135-1000 | -126d |
| K135-1110 |  | Finish Cable Tray to Skid - K130 | 2d | 2027-02-16 | 2027-02-17 | K135-1000 | -122d |
| K135-1350 |  | Install conduit from Busplug to ATSs - K130 | 2d | 2027-02-16 | 2027-02-17 | K135-1000 | -122d |
| K135-1390 |  | Mount VFD Stand and VFD - K130 | 1d | 2027-02-16 | 2027-02-16 | K135-1000 | -120d |
| K135-1440 |  | Mount MPZ - K130 | 1d | 2027-02-16 | 2027-02-16 | K135-1000 | -119d |
| K135-1620 |  | Electrical Room CRAH Set - K130 | 1d | 2027-02-16 | 2027-02-16 | K135-1000 | -120d |
| K135-1130 |  | Pull Chiller wire - K130 | 1d | 2027-02-17 | 2027-02-17 | K135-1120, K135-1000 | -119d |
| K135-1180 |  | Penetrate MC into MOD-01 - K130 | 1d | 2027-02-17 | 2027-02-17 | K135-1010 | -121d |
| K135-1190 |  | Penetrate MC into MOD-02 - K130 | 1d | 2027-02-17 | 2027-02-17 | K135-1010 | -121d |
| K135-1200 |  | Finish Conduit to Elec Room CRAH - K130 | 1d | 2027-02-17 | 2027-02-17 | K135-1620 | -120d |
| K135-1250 |  | Pull MC from MOD-01 to Mechanical Equipment - K130 | 2d | 2027-02-17 | 2027-02-18 | K135-1010 | -122d |
| K135-1260 |  | Pull MC from MOD-02 to Mechanical Equipment - K130 | 2d | 2027-02-17 | 2027-02-18 | K135-1010 | -122d |
| K135-1400 |  | Conduit from UPS to VFD - K130 | 1d | 2027-02-17 | 2027-02-17 | K135-1390 | -120d |
| K135-1450 |  | Penetrate MC Cable into MPZ - K130 | 1d | 2027-02-17 | 2027-02-17 | K135-1440 | -119d |
| K135-1140 |  | Megger Chiller Cable - K130 | 1d | 2027-02-18 | 2027-02-18 | K135-1130 | -119d |
| K135-1160 |  | Penetrate MC into SWD - K130 | 1d | 2027-02-18 | 2027-02-18 | K135-1110 | -122d |
| K135-1170 |  | Penetrat MC into UPS - K130 | 1d | 2027-02-18 | 2027-02-18 | K135-1110 | -122d |
| K135-1210 |  | Pull Cable to Elec Room CRAH - K130 | 1d | 2027-02-18 | 2027-02-18 | K135-1200 | -120d |
| K135-1360 |  | Pull ATS Cable - K130 | 1d | 2027-02-18 | 2027-02-18 | K135-1350 | -122d |
| K135-1410 |  | Pull Cable from UPS to VFD - K130 | 1d | 2027-02-18 | 2027-02-18 | K135-1400 | -120d |
| K135-1460 |  | Megger MPZ Cable - K130 | 1d | 2027-02-18 | 2027-02-18 | K135-1450 | -119d |
| K135-1490 |  | All Skid Grounding - K130 | 2d | 2027-02-18 | 2027-02-19 | K135-1110 | -119d |
| K135-1520 |  | Megger MC Cable from UPS to MOD - K130 | 1d | 2027-02-18 | 2027-02-18 | K135-1190 | -121d |
| K135-1150 |  | Terminations at Chiller - K130 | 1d | 2027-02-19 | 2027-02-19 | K135-1140 | -119d |
| K135-1220 |  | Megger MC Cable from Skid to Elec Room CRAH - K130 | 1d | 2027-02-19 | 2027-02-19 | K135-1210 | -120d |
| K135-1240 |  | Megger MC Cable from Skid to MOD - K130 | 1d | 2027-02-19 | 2027-02-19 | K135-1180, K135-1170, K135-1160 | -122d |
| K135-1270 |  | Megger MC Cable from MOD-01 to Mechanical Equipment - K130 | 1d | 2027-02-19 | 2027-02-19 | K135-1250 | -122d |
| K135-1280 |  | Megger MC Cable from MOD-02 to Mechanical Equipment - K130 | 1d | 2027-02-19 | 2027-02-19 | K135-1260 | -122d |
| K135-1420 |  | Megger Cable from UPS to VFD - K130 | 1d | 2027-02-19 | 2027-02-19 | K135-1410 | -120d |
| K135-1470 |  | Terminate MC Feed at MPZ - K130 | 1d | 2027-02-19 | 2027-02-19 | K135-1460 | -119d |
| K135-1480 |  | Terminate Cables in VFD - K130 | 1d | 2027-02-19 | 2027-02-19 | K135-1420 SS | -119d |
| K135-1630 |  | Megger Cable at ATS - K130 | 1d | 2027-02-19 | 2027-02-19 | K135-1360 | -122d |
| K135-1230 |  | Terminate Elec Room CRAH - K130 | 1d | 2027-02-20 | 2027-02-20 | K135-1220 | -120d |
| K135-1290 |  | Terminate MOD-01 - K130 | 1d | 2027-02-20 | 2027-02-20 | K135-1240, K135-1270 | -122d |
| K135-1300 |  | Terminate MOD-02 - K130 | 1d | 2027-02-20 | 2027-02-20 | K135-1520, K135-1280 | -122d |
| K135-1310 |  | Terminate at Mechanical Equipment - K130 | 1d | 2027-02-20 | 2027-02-20 | K135-1300 SS, K135-1290 SS | -122d |
| K135-1370 |  | Terminate ATS Cable at Busplugs & ATSs - K130 | 2d | 2027-02-20 | 2027-02-22 | K135-1630 | -122d |

| ID | WBS | Task | Duration | Start | Finish | Predecessors | Total float |
| --- | --- | --- | --- | --- | --- | --- | --- |
| K135-1430 |  | Terminate Cables in UPS - K130 | 1d | 2027-02-20 | 2027-02-20 | K135-1420 | -120d |
| K135-1570 |  | QC 2.2 checklist VFD - K130 | 1d | 2027-02-20 | 2027-02-20 | K135-1480 | -119d |
| K135-1610 |  | QC 2.2 checklist Chiller - K130 | 1d | 2027-02-20 | 2027-02-20 | K135-1150 | -119d |
| K135-1650 |  | QC 2.2 checklist MPZ - K130 | 1d | 2027-02-20 | 2027-02-20 | K135-1470 | -119d |
| K135-1050 |  | Cable bus Install - K130 | 2d | 2027-02-22 | 2027-02-23 | K135-1040, K135-1030 | -126d |
| K135-1320 |  | Mechanical Equipment/Tray Grounding - K130 | 2d | 2027-02-22 | 2027-02-23 | K135-1310 | -122d |
| K135-1540 |  | QC 2.2 checklist UPS - K130 | 1d | 2027-02-22 | 2027-02-22 | K135-1430 | -120d |
| K135-1550 |  | QC 2.2 checklist Elec Room CRAH - K130 | 1d | 2027-02-22 | 2027-02-22 | K135-1230 | -120d |
| K135-1560 |  | QC 2.2 Mechanical Equipment - K130 | 1d | 2027-02-22 | 2027-02-22 | K135-1310 | -120d |
| K135-1380 |  | ATS Lashing - K130 | 1d | 2027-02-23 | 2027-02-23 | K135-1370 | -122d |
| K135-1060 |  | Cable pulled to A & P Xfmrs - K130 | 1d | 2027-02-24 | 2027-02-24 | K135-1050 | -126d |
| K135-1500 |  | QC 2.2 checklist MOD-01 - K130 | 1d | 2027-02-24 | 2027-02-24 | K135-1320 | -122d |
| K135-1510 |  | QC 2.2 checklist MOD-02 - K130 | 1d | 2027-02-24 | 2027-02-24 | K135-1320 | -122d |
| K135-1530 |  | QC 2.2 checklist ATSs - K130 | 1d | 2027-02-24 | 2027-02-24 | K135-1380 | -122d |
| K135-1640 |  | QC 2.2 checklist Busplugs - K130 | 1d | 2027-02-24 | 2027-02-24 | K135-1530 SS | -122d |
| K135-1070 |  | Megger Cable Bus Cable - K130 | 1d | 2027-02-25 | 2027-02-25 | K135-1060 | -126d |
| K135-1080 |  | Cable Bus inspection and covers - K130 | 1d | 2027-02-25 | 2027-02-25 | K135-1070 SS | -124d |
| K135-1090 |  | Terminations at Xfmrs - K130 | 2d | 2027-02-26 | 2027-02-27 | K135-1070 | -126d |
| K135-1100 |  | Terminations at SWD - K130 | 2d | 2027-02-26 | 2027-02-27 | K135-1070 | -126d |
| K135-1580 |  | QC 2.2 checklist SWD - K130 | 1d | 2027-03-01 | 2027-03-01 | K135-1080, K135-1490, K135-1100 | -126d |
| K135-1600 |  | QC 2.2 checklist XFMR - K130 | 1d | 2027-03-01 | 2027-03-01 | K135-1090 | -126d |
| K135-1590 |  | Ready for FTE - K130 | 1d | 2027-03-02 | 2027-03-02 | K135-1650, K135-1640, K135-1610, K135-1600, K135-1580, K135-1570, K135-1560, K135-1550, K135-1540, K135-1530, K135-1510, K135-1500 | -126d |
|  | 11 | **R130** |  | 2027-02-12 | 2027-03-03 |  |  |
| R135-1250 |  | Pull MC from MOD-01 to Mechanical Equipment - R130 | 1d | 2027-02-12 | 2027-02-12 | R135-1330 SS | -118d |
| R135-1260 |  | Pull MC from MOD-02 to Mechanical Equipment - R130 | 1d | 2027-02-12 | 2027-02-12 | R135-1330 SS | -118d |
| R135-1330 |  | Busduct installed - R130 | 1d | 2027-02-12 | 2027-02-12 | K135-1330 SS | -127d |
| R135-1340 |  | Busplugs/Tap Boxes installed - R130 | 1d | 2027-02-13 | 2027-02-13 | R135-1330 | -127d |
| R135-1440 |  | Mount MPZ - R130 | 1d | 2027-02-13 | 2027-02-13 | R135-1330 | -122d |
| R135-1010 |  | Set MODs - R130 | 1d | 2027-02-15 | 2027-02-15 | R135-1330, R135-1340, K135-1000 SS | -120d |
| R135-1020 |  | Set Reserve SWD - R130 | 1d | 2027-02-15 | 2027-02-15 | R135-1330, R135-1340, K135-1000 SS | -127d |
| R135-1110 |  | Set Reserve UPS - R130 | 1d | 2027-02-15 | 2027-02-15 | R135-1330, R135-1340, K135-1000 SS | -120d |
| R135-1120 |  | Chiller feed box and conduit complete - R130 | 2d | 2027-02-15 | 2027-02-16 | R135-1010 SS | -119d |
| R135-1170 |  | Set Reserve PDU - R130 | 1d | 2027-02-15 | 2027-02-15 | R135-1330, R135-1340, K135-1000 SS | -119d |
| R135-1720 |  | Set Reserve Tie - R130 | 1d | 2027-02-15 | 2027-02-15 | R135-1330, R135-1340, K135-1000 SS | -126d |
| R135-1760 |  | High Pot test Reserve Busduct - R130 | 1d | 2027-02-15 | 2027-02-15 | R135-1340 | -115d |
| R135-1810 |  | Finish Conduit to MPZ - R130 | 5d | 2027-02-15 | 2027-02-19 | R135-1440 | -122d |
| R135-1040 |  | SWD top covers cut out - R130 | 5d | 2027-02-16 | 2027-02-20 | R135-1020 | -127d |
| R135-1180 |  | Penetrate MC into MOD-01 - R130 | 1d | 2027-02-16 | 2027-02-16 | R135-1010, R135-1250 | -120d |
| R135-1190 |  | Penetrate MC into MOD-02 - R130 | 1d | 2027-02-16 | 2027-02-16 | R135-1010, R135-1260 | -120d |
| R135-1200 |  | Finish Conduit to Elec Room CRAH - R130 | 1d | 2027-02-16 | 2027-02-16 | R135-1020 | -119d |
| R135-1350 |  | Install conduit from Reserve Tie to Tap Box - R130 | 2d | 2027-02-16 | 2027-02-17 | R135-1720 | -121d |
| R135-1360 |  | Install conduit from Reserve Tie to Reserve Tie - R130 | 6d | 2027-02-16 | 2027-02-22 | R135-1720 | -126d |
| R135-1370 |  | Install conduit from Busplug to Reserve PDU - R130 | 1d | 2027-02-16 | 2027-02-16 | R135-1170 | -119d |
| R135-1390 |  | Mount VFD Stand and VFD - R130 | 1d | 2027-02-16 | 2027-02-16 | R135-1020 | -119d |
| R135-1710 |  | All Grounding - R130 | 1d | 2027-02-16 | 2027-02-16 | R135-1020 | -116d |
| R135-1730 |  | Finish Cable Tray to Reserve Equipment - R130 | 2d | 2027-02-16 | 2027-02-17 | R135-1020 | -122d |
| R135-1800 |  | Pull MC Cable from SWD to MOD - R130 | 1d | 2027-02-16 | 2027-02-16 | R135-1020 | -120d |
| R135-1130 |  | Pull Chiller wire - R130 | 1d | 2027-02-17 | 2027-02-17 | R135-1120 | -119d |
| R135-1210 |  | Pull Cable to Elec Room CRAH - R130 | 1d | 2027-02-17 | 2027-02-17 | R135-1200 | -119d |
| R135-1270 |  | Megger MC Cable from MOD-01 to Mechanical Equipment - R130 | 1d | 2027-02-17 | 2027-02-17 | R135-1180 | -120d |
| R135-1280 |  | Megger MC Cable from MOD-02 to Mechanical Equipment - R130 | 1d | 2027-02-17 | 2027-02-17 | R135-1190 | -120d |
| R135-1400 |  | Conduit from UPS to VFD - R130 | 1d | 2027-02-17 | 2027-02-17 | R135-1390 | -119d |
| R135-1650 |  | Megger cable from Busplug to Reserve PDU - R130 | 1d | 2027-02-17 | 2027-02-17 | R135-1370 | -119d |
| R135-1140 |  | Megger Chiller Cable - R130 | 1d | 2027-02-18 | 2027-02-18 | R135-1130 | -119d |
| R135-1160 |  | Penetrate MC into Reserve SWD - R130 | 1d | 2027-02-18 | 2027-02-18 | R135-1020, R135-1730 | -122d |
| R135-1220 |  | Megger MC Cable from SWD to Elec Room CRAH - R130 | 1d | 2027-02-18 | 2027-02-18 | R135-1210 | -119d |
| R135-1300 |  | Terminate MOD-02 - R130 | 1d | 2027-02-18 | 2027-02-18 | R135-1280, R135-1280 FF | -120d |
| R135-1410 |  | Pull Cable from UPS to VFD - R130 | 1d | 2027-02-18 | 2027-02-18 | R135-1400 | -119d |
| R135-1490 |  | Pull cable from Reserve Tie to Tap Box - R130 | 1d | 2027-02-18 | 2027-02-18 | R135-1350 | -121d |
| R135-1530 |  | Pull cable from Busplug to Reserve PDU - R130 | 1d | 2027-02-18 | 2027-02-18 | R135-1650 | -119d |
| R135-1150 |  | Terminations at Chiller - R130 | 1d | 2027-02-19 | 2027-02-19 | R135-1140 | -119d |
| R135-1230 |  | Terminate Elec Room CRAH - R130 | 1d | 2027-02-19 | 2027-02-19 | R135-1220 | -119d |
| R135-1240 |  | Megger MC Cable from SWD to MOD - R130 | 1d | 2027-02-19 | 2027-02-19 | R135-1160, R135-1800 | -122d |
| R135-1420 |  | Megger Cable from UPS to VFD - R130 | 1d | 2027-02-19 | 2027-02-19 | R135-1410 | -119d |
| R135-1480 |  | Terminate Cables in VFD - R130 | 1d | 2027-02-19 | 2027-02-19 | R135-1420 SS | -119d |
| R135-1630 |  | Megger cable from Reserve Tie to Tap Box - R130 | 1d | 2027-02-19 | 2027-02-19 | R135-1490 | -121d |
| R135-1700 |  | Terminate Busplug to PDU - R130 | 1d | 2027-02-19 | 2027-02-19 | R135-1530 | -119d |
| R135-1290 |  | Terminate MOD-01 - R130 | 1d | 2027-02-20 | 2027-02-20 | R135-1240, R135-1270 | -122d |
| R135-1310 |  | Terminate at Mechanical Equipment - R130 | 1d | 2027-02-20 | 2027-02-20 | R135-1300 SS, R135-1290 SS, R135-1270, R135-1280 | -122d |
| R135-1450 |  | Penetrate MC Cable into MPZ - R130 | 1d | 2027-02-20 | 2027-02-20 | R135-1440, R135-1810 | -122d |

| ID | WBS | Task | Duration | Start | Finish | Predecessors | Total float |
| --- | --- | --- | --- | --- | --- | --- | --- |
| R135-1550 |  | QC 2.2 checklist Elec Room CRAH - R130 | 1d | 2027-02-20 | 2027-02-20 | R135-1230 | -119d |
| R135-1570 |  | QC 2.2 checklist VFD - R130 | 1d | 2027-02-20 | 2027-02-20 | R135-1480 | -119d |
| R135-1640 |  | QC 2.2 checklist Busplug - R130 | 1d | 2027-02-20 | 2027-02-20 | R135-1700, R135-1760 | -119d |
| R135-1030 |  | Cable bus Support installed - R130 | 1d | 2027-02-22 | 2027-02-22 | R135-1040 | -126d |
| R135-1320 |  | Mechanical Equipment/Tray Grounding - R130 | 2d | 2027-02-22 | 2027-02-23 | R135-1310 | -122d |
| R135-1460 |  | Megger MPZ Cable - R130 | 1d | 2027-02-22 | 2027-02-22 | R135-1450 | -122d |
| R135-1560 |  | QC 2.2 Mechanical Equipment - R130 | 1d | 2027-02-22 | 2027-02-22 | R135-1150, R135-1310 | -120d |
| R135-1750 |  | Install conduit from SWD to Tap Box - R130 | 2d | 2027-02-22 | 2027-02-23 | R135-1040 | -127d |
| R135-1770 |  | Install conduit from SWD to Reserve UPS - R130 | 1d | 2027-02-22 | 2027-02-22 | R135-1040, R135-1110 | -125d |
| R135-1050 |  | Cable bus Install - R130 | 1d | 2027-02-23 | 2027-02-23 | R135-1030, R135-1040 | -126d |
| R135-1430 |  | Pull cable from SWD to Reserve UPS - R130 | 1d | 2027-02-23 | 2027-02-23 | R135-1770 | -125d |
| R135-1470 |  | Terminate MC Feed at MPZ - R130 | 1d | 2027-02-23 | 2027-02-23 | R135-1460 | -122d |
| R135-1520 |  | Pull cable from Reserve Tie to Reserve Tie - R130 | 2d | 2027-02-23 | 2027-02-24 | R135-1360 | -126d |
| R135-1060 |  | Cable pulled to A & P Xfmrs - R130 | 1d | 2027-02-24 | 2027-02-24 | R135-1050 | -126d |
| R135-1380 |  | Pull cable from SWD to Tap Box - R130 | 2d | 2027-02-24 | 2027-02-25 | R135-1750 | -127d |
| R135-1500 |  | QC 2.2 checklist MOD-01 - R130 | 1d | 2027-02-24 | 2027-02-24 | R135-1320 | -122d |
| R135-1510 |  | QC 2.2 checklist MOD-02 - R130 | 1d | 2027-02-24 | 2027-02-24 | R135-1320 | -122d |
| R135-1620 |  | Megger cable from SWD to Reserve UPS - R130 | 1d | 2027-02-24 | 2027-02-24 | R135-1430 | -125d |
| R135-1820 |  | QC 2.2 checklist MPZ - R130 | 1d | 2027-02-24 | 2027-02-24 | R135-1470 | -122d |
| R135-1070 |  | Megger Cable Bus Cable - R130 | 1d | 2027-02-25 | 2027-02-25 | R135-1060 | -126d |
| R135-1080 |  | Cable Bus inspection and covers - R130 | 1d | 2027-02-25 | 2027-02-25 | R135-1070 SS | -124d |
| R135-1670 |  | Terminate Reserve UPS - R130 | 1d | 2027-02-25 | 2027-02-25 | R135-1620 | -124d |
| R135-1780 |  | Megger cable from Reserve Tie to Reserve Tie - R130 | 1d | 2027-02-25 | 2027-02-25 | R135-1520 | -126d |
| R135-1090 |  | Terminations at Xfmrs - R130 | 2d | 2027-02-26 | 2027-02-27 | R135-1070 | -126d |
| R135-1100 |  | Terminations at SWD - R130 | 2d | 2027-02-26 | 2027-02-27 | R135-1070 | -126d |
| R135-1540 |  | QC 2.2 checklist Reserve UPS - R130 | 1d | 2027-02-26 | 2027-02-26 | R135-1670 | -124d |
| R135-1610 |  | Megger cable from SWD to Tap Box - R130 | 1d | 2027-02-26 | 2027-02-26 | R135-1380 | -127d |
| R135-1690 |  | Terminate Reserve Tie - R130 | 2d | 2027-02-26 | 2027-02-27 | R135-1780 | -126d |
| R135-1660 |  | Terminate Reserve SWD - R130 | 2d | 2027-02-27 | 2027-03-01 | R135-1620, R135-1610, R135-1070 | -127d |
| R135-1680 |  | Terminate Tap Boxes - R130 | 2d | 2027-02-27 | 2027-03-01 | R135-1630, R135-1610 | -127d |
| R135-1600 |  | QC 2.2 checklist XFMR - R130 | 1d | 2027-03-01 | 2027-03-01 | R135-1090, R135-1090 FF | -126d |
| R135-1740 |  | QC 2.2 checklist Reserve Tie - R130 | 1d | 2027-03-01 | 2027-03-01 | R135-1690 | -126d |
| R135-1580 |  | QC 2.2 checklist SWD - R130 | 1d | 2027-03-02 | 2027-03-02 | R135-1080, R135-1100, R135-1100 FF, R135-1660, R135-1710 | -127d |
| R135-1790 |  | QC 2.2 checklist Tap Boxes - R130 | 1d | 2027-03-02 | 2027-03-02 | R135-1680 | -127d |
| R135-1590 |  | Ready for FTE - R130 | 1d | 2027-03-03 | 2027-03-03 | R135-1820, R135-1640, R135-1740, R135-1790, R135-1600, R135-1580, R135-1570, R135-1560, R135-1550, R135-1540, R135-1510, R135-1500 | -127d |
|  | 12 | **Commissioning** |  | 2027-03-04 | 2027-05-13 |  |  |
| 1350-1000 |  | DH1300 - L3 Clean Walk | 3d | 2027-03-04 | 2027-03-06 | R135-1590 | -45d |
| 1350-1100 |  | DH1300 - L3 PEI | 3d | 2027-03-08 | 2027-03-10 | CW.1300, 1350-1000 | -45d |
| 1350-1200 |  | DH1300 - L3 FTE | 4d | 2027-03-11 | 2027-03-14 | PEI.1300, 1350-1100 | -53d |
| 1350-2000 |  | DH1300 - L4 Cx / IST | 60d | 2027-03-15 | 2027-05-13 | 1350-1200 | -53d |
|  | 7 | **MOH** |  | 2026-10-14 | 2027-03-01 |  |  |
|  | 1 | **Equipment** |  | 2026-10-14 | 2027-03-01 |  |  |
| 2010 |  | Set SWD-HSE-1D-Main | 3d | 2026-10-14 | 2026-10-16 |  | 76d |
| 2120 |  | Set UPS-HSE-1D | 3d | 2026-10-14 | 2026-10-16 | 2010 SS | 77d |
| 2190 |  | Set ELI and battery cabinets | 3d | 2026-10-14 | 2026-10-16 | 2010 SS | 76d |
| 2270 |  | Set STS-HSE-1D | 3d | 2026-10-14 | 2026-10-16 | 2010 SS | 78d |
| 2340 |  | Set XFMR-ELI-1D | 3d | 2026-10-14 | 2026-10-16 | 2010 SS | 78d |
| 2400 |  | Set MTS-ELI-1D | 3d | 2026-10-14 | 2026-10-16 | 2340 SS | 78d |
| 2460 |  | Set XFMR-UPS-HSE-1D | 3d | 2026-10-14 | 2026-10-16 | 2400 SS | 78d |
| 2520 |  | Set XFMR-ELI-1D-2 | 3d | 2026-10-14 | 2026-10-16 | 2460 SS | 78d |
| 2580 |  | Set PNL-UPS-HSE-1D | 3d | 2026-10-14 | 2026-10-16 | 2010 SS | 77d |
| 2720 |  | Set PNL-ELI-1D | 3d | 2026-10-14 | 2026-10-16 | 2010 SS | 77d |
| 2790 |  | Finish Conduit to CIP-DH110 | 1d | 2026-10-14 | 2026-10-14 |  | 81d |
| 2800 |  | Pull cables to CIP-DH110 | 1d | 2026-10-14 | 2026-10-14 | 2790 SS | 81d |
| 2840 |  | Finish Conduit to CIP-DH120 | 1d | 2026-10-14 | 2026-10-14 |  | 81d |
| 2850 |  | Pull cables to CIP-DH120 | 1d | 2026-10-14 | 2026-10-14 | 2840 SS | 81d |
| 2890 |  | Finish Conduit to CIP-DH130 | 1d | 2026-10-14 | 2026-10-14 |  | 81d |
| 2900 |  | Pull cables to CIP-DH130 | 1d | 2026-10-14 | 2026-10-14 | 2890 SS | 81d |
| 2940 |  | Finish Conduit to CIP-DH140 | 1d | 2026-10-14 | 2026-10-14 |  | 81d |
| 2950 |  | Pull cables to CIP-DH140 | 1d | 2026-10-14 | 2026-10-14 | 2940 SS | 81d |
| 2990 |  | Finish Conduit to CIP-DH150 | 1d | 2026-10-14 | 2026-10-14 |  | 81d |
| 3000 |  | Pull cables to CIP-DH150 | 1d | 2026-10-14 | 2026-10-14 | 2990 SS | 81d |
| 3040 |  | Finish Conduit to CIP-DH160 | 1d | 2026-10-14 | 2026-10-14 |  | 81d |
| 3050 |  | Pull cables to CIP-DH160 | 1d | 2026-10-14 | 2026-10-14 | 3040 SS | 81d |
| 5120 |  | Set PNL-UPS-HSE-1C | 1d | 2026-10-14 | 2026-10-14 | 2010 SS | 80d |
| 5190 |  | Finish conduit to PNL-UPS-DH110-02 | 1d | 2026-10-14 | 2026-10-14 |  | 80d |
| 5220 |  | Finish conduit to PNL-UPS-DH120-02 | 1d | 2026-10-14 | 2026-10-14 |  | 80d |
| 5250 |  | Finish conduit to PNL-UPS-DH130-02 | 1d | 2026-10-14 | 2026-10-14 |  | 80d |
| 5420 |  | Set PNL-UPS-DH130-B3 | 1d | 2026-10-14 | 2026-10-14 | 2010 SS | 80d |
| 5500 |  | Conduit finished to PNL-UPS-DH110-01 | 1d | 2026-10-14 | 2026-10-14 |  | 172.88d |

| ID | Task | Duration | Start | Finish | Predecessors | Total float |
| --- | --- | --- | --- | --- | --- | --- |
| 5510 | Pull/Megger feeder cables to PNL-UPS-DH110-01 | 1d | 2026-10-14 | 2026-10-14 |  | 172.88d |
| 5570 | Conduit finished to PNL-UPS-DH120-01 | 1d | 2026-10-14 | 2026-10-14 |  | 172.88d |
| 5580 | Pull/Megger feeder cables to PNL-UPS-DH120-01 | 1d | 2026-10-14 | 2026-10-14 |  | 172.88d |
| 5640 | Conduit finished to PNL-UPS-DH130-01 | 1d | 2026-10-14 | 2026-10-14 |  | 172.88d |
| 5650 | Pull/Megger feeder cables to PNL-UPS-DH130-01 | 1d | 2026-10-14 | 2026-10-14 |  | 172.88d |
| 5710 | Conduit finished to PNL-UPS-DH140-01 | 1d | 2026-10-14 | 2026-10-14 |  | 172.88d |
| 5720 | Pull/Megger feeder cables to PNL-UPS-DH140-01 | 1d | 2026-10-14 | 2026-10-14 |  | 172.88d |
| 5770 | Set PNL-UPS-DH140-A3 | 1d | 2026-10-14 | 2026-10-14 | 2010 SS | 80d |
| 5780 | Conduit finished to PNL-UPS-DH140-02 | 1d | 2026-10-14 | 2026-10-14 |  | 82d |
| 5790 | Pull/Megger feeder cables to PNL-UPS-DH140-02 | 1d | 2026-10-14 | 2026-10-14 |  | 82d |
| 5850 | Conduit finished to PNL-UPS-DH150-01 | 1d | 2026-10-14 | 2026-10-14 |  | 172.88d |
| 5860 | Pull/Megger feeder cables to PNL-UPS-DH150-01 | 1d | 2026-10-14 | 2026-10-14 |  | 172.88d |
| 5920 | Conduit finished to PNL-UPS-DH150-02 | 1d | 2026-10-14 | 2026-10-14 |  | 172.88d |
| 5930 | Pull/Megger feeder cables to PNL-UPS-DH150-02 | 1d | 2026-10-14 | 2026-10-14 |  | 172.88d |
| 5990 | Conduit finished to PNL-UPS-DH160-01 | 1d | 2026-10-14 | 2026-10-14 |  | 172.88d |
| 6000 | Pull/Megger feeder cables to PNL-UPS-DH160-01 | 1d | 2026-10-14 | 2026-10-14 |  | 172.88d |
| 6050 | Set UPS-HSE-1C | 1d | 2026-10-14 | 2026-10-14 | 2010 SS | 80d |
| 6060 | Conduit finished to PNL-UPS-DH160-02 | 1d | 2026-10-14 | 2026-10-14 |  | 82d |
| 6070 | Pull/Megger feeder cables to PNL-UPS-DH160-02 | 1d | 2026-10-14 | 2026-10-14 |  | 82d |
| 6130 | Set STS-HSE-1C | 1d | 2026-10-14 | 2026-10-14 | 2010 SS | 79d |
| 2810 | Megger cables in CIP-DH110 | 1d | 2026-10-15 | 2026-10-15 | 2800 | 81d |
| 2860 | Megger cables in CIP-DH120 | 1d | 2026-10-15 | 2026-10-15 | 2850 | 81d |
| 2910 | Megger cables in CIP-DH130 | 1d | 2026-10-15 | 2026-10-15 | 2900 | 81d |
| 2960 | Megger cables in CIP-DH140 | 1d | 2026-10-15 | 2026-10-15 | 2950 | 81d |
| 3010 | Megger cables in CIP-DH150 | 1d | 2026-10-15 | 2026-10-15 | 3000 | 81d |
| 3060 | Megger cables in CIP-DH160 | 1d | 2026-10-15 | 2026-10-15 | 3050 | 81d |
| 5200 | Pull feeder cables to PNL-UPS-DH110-02 | 1d | 2026-10-15 | 2026-10-15 | 5190 | 80d |
| 5230 | Pull feeder cables to PNL-UPS-DH120-02 | 1d | 2026-10-15 | 2026-10-15 | 5220 | 80d |
| 5260 | Pull feeder cables to PNL-UPS-DH130-02 | 1d | 2026-10-15 | 2026-10-15 | 5250 | 80d |
| 5800 | Pull branch cables to PNL-UPS-DH140-A3 | 1d | 2026-10-15 | 2026-10-15 | 5770 | 80d |
| 6080 | Pull branch cables to UPS-HSE-1C | 1d | 2026-10-15 | 2026-10-15 | 6050 | 80d |
| 2820 | Term CIP-DH110 | 1d | 2026-10-16 | 2026-10-16 | 2810 | 81d |
| 2870 | Term CIP-DH120 | 1d | 2026-10-16 | 2026-10-16 | 2860 | 81d |
| 2920 | Term CIP-DH130 | 1d | 2026-10-16 | 2026-10-16 | 2910 | 81d |
| 2970 | Term CIP-DH140 | 1d | 2026-10-16 | 2026-10-16 | 2960 | 81d |
| 3020 | Term CIP-DH150 | 1d | 2026-10-16 | 2026-10-16 | 3010 | 81d |
| 3070 | Term CIP-DH160 | 1d | 2026-10-16 | 2026-10-16 | 3060 | 81d |
| 5210 | Megger cables in PNL-UPS-DH110-02 | 1d | 2026-10-16 | 2026-10-16 | 5200 | 80d |
| 5240 | Megger cables in PNL-UPS-DH120-02 | 1d | 2026-10-16 | 2026-10-16 | 5230 | 80d |
| 5270 | Megger cables in PNL-UPS-DH130-02 | 1d | 2026-10-16 | 2026-10-16 | 5260 | 80d |
| 5810 | Megger branch cables to PNL-UPS-DH140-A3 | 1d | 2026-10-16 | 2026-10-16 | 5800 | 80d |
| 6090 | Megger branch cables to UPS-HSE-1C | 1d | 2026-10-16 | 2026-10-16 | 6080 | 80d |
| 2020 | Finish Conduit from SWD-HSE-1D-Main | 1d | 2026-10-19 | 2026-10-19 | 2010 | 77d |
| 2030 | Pull feed from XFMR to SWD-HSE-1D-Main | 1d | 2026-10-19 | 2026-10-19 | 2020 SS | 78d |
| 2130 | Finish conduit from UPS-HSE-1D | 1d | 2026-10-19 | 2026-10-19 | 6130, 2120 | 77d |
| 2140 | Pull cables to UPS-HSE-1D | 1d | 2026-10-19 | 2026-10-19 | 2130 SS | 77d |
| 2200 | Finish conduit from ELI | 1d | 2026-10-19 | 2026-10-19 | 2190 | 76d |
| 2210 | Pull cable to ELI | 1d | 2026-10-19 | 2026-10-19 | 2200 SS | 76d |
| 2280 | Finish conduit from STS-HSE-1D | 1d | 2026-10-19 | 2026-10-19 | 2270 | 78d |
| 2290 | Pull cables to STS-HSE-1D | 1d | 2026-10-19 | 2026-10-19 | 2280 SS | 78d |
| 2350 | Finish conduit from XFMR-ELI-1D | 1d | 2026-10-19 | 2026-10-19 | 2340 | 78d |
| 2360 | Pull cables to XFMR-ELI-1D | 1d | 2026-10-19 | 2026-10-19 | 2350 SS | 78d |
| 2410 | Finish conduit from MTS-ELI-1D | 1d | 2026-10-19 | 2026-10-19 | 2400 | 78d |
| 2420 | Pull cables to MTS-ELI-1D | 1d | 2026-10-19 | 2026-10-19 | 2410 SS | 78d |
| 2470 | Finish conduit from XFMR-UPS-HSE-1D | 1d | 2026-10-19 | 2026-10-19 | 2460 | 78d |
| 2480 | Pull cables to XFMR-UPS-HSE-1D | 1d | 2026-10-19 | 2026-10-19 | 2470 SS | 78d |
| 2530 | Finish conduit from XFMR-ELI-1D-2 | 1d | 2026-10-19 | 2026-10-19 | 2520 | 78d |
| 2540 | Pull cables to XFMR-ELI-1D-2 | 1d | 2026-10-19 | 2026-10-19 | 2530 SS | 78d |
| 2590 | Finish conduit to PNL-UPS-HSE-1D | 1d | 2026-10-19 | 2026-10-19 | 2580 | 78d |
| 2600 | Pull feeder cables to PNL-UPS-HSE-1D | 1d | 2026-10-19 | 2026-10-19 | 2590 SS | 78d |
| 2610 | Pull branch cables to PNL-UPS-HSE-1D | 1d | 2026-10-19 | 2026-10-19 | 2600 SS | 78d |
| 2730 | Finish conduit to PNL-ELI-1D | 1d | 2026-10-19 | 2026-10-19 | 2720 | 78d |
| 2740 | Pull feeder cables to PNL-ELI-1D | 1d | 2026-10-19 | 2026-10-19 | 2730 SS | 78d |
| 2750 | Pull branch cables to PNL-ELI-1D | 1d | 2026-10-19 | 2026-10-19 | 2740 SS | 78d |
| 2830 | QC 2.2 checklist CIP-DH110 | 1d | 2026-10-19 | 2026-10-19 | 2820 | 81d |
| 2880 | QC 2.2 checklist CCIP-DH120 | 1d | 2026-10-19 | 2026-10-19 | 2870 | 81d |
| 2930 | QC 2.2 checklist CCIP-DH130 | 1d | 2026-10-19 | 2026-10-19 | 2920 | 81d |
| 2980 | QC 2.2 checklist CCIP-DH140 | 1d | 2026-10-19 | 2026-10-19 | 2970 | 81d |
| 3030 | QC 2.2 checklist CCIP-DH150 | 1d | 2026-10-19 | 2026-10-19 | 3020 | 81d |
| 3080 | QC 2.2 checklist CCIP-DH160 | 1d | 2026-10-19 | 2026-10-19 | 3070 | 81d |

| ID | Task | Duration | Start | Finish | Predecessors | Total float |
| --- | --- | --- | --- | --- | --- | --- |
| 3570 | Set XFMR-G140-01 | 1d | 2026-10-19 | 2026-10-19 | R125-1020, 2010 SS | 77d |
| 5090 | Finish conduit to MMR | 1d | 2026-10-19 | 2026-10-19 | 2580 | 77d |
| 5130 | Finish conduit to PNL-UPS-HSE-1C | 1d | 2026-10-19 | 2026-10-19 | 2580, 5120 | 78d |
| 5140 | Pull feeder cables to PNL-UPS-HSE-1C | 1d | 2026-10-19 | 2026-10-19 | 5130 SS | 78d |
| 5150 | Pull branch cables to PNL-UPS-HSE-1C | 1d | 2026-10-19 | 2026-10-19 | 5140 SS | 78d |
| 5430 | Finish conduit toPNL-UPS-DH130-B3 | 1d | 2026-10-19 | 2026-10-19 | 5420, 2580 | 78d |
| 5440 | Pull feeder cables to PNL-UPS-DH130-B3 | 1d | 2026-10-19 | 2026-10-19 | 5430 SS | 78d |
| 5450 | Pull branch cables to PNL-UPS-DH130-B3 | 1d | 2026-10-19 | 2026-10-19 | 5440 SS | 78d |
| 5820 | Term PNL-UPS-DH140-A3 | 1d | 2026-10-19 | 2026-10-19 | 5810, 5790, 5780 | 80d |
| 6100 | Term UPS-HSE-1C | 1d | 2026-10-19 | 2026-10-19 | 6070 FF, 6060 FF, 6090, 6070, 6060 | 80d |
| 2040 | Megger cables from XFMR to SWD-HSE-1D-Main | 1d | 2026-10-20 | 2026-10-20 | 2030 | 78d |
| 2050 | Pull cables to SWD-HSE-1D-Main | 1d | 2026-10-20 | 2026-10-20 | 2020 | 77d |
| 2150 | Megger cables in UPS-HSE-1D | 1d | 2026-10-20 | 2026-10-20 | 2140 | 77d |
| 2220 | Megger cable in ELI | 1d | 2026-10-20 | 2026-10-20 | 2210 | 76d |
| 2300 | Megger cables in STS-HSE-1D | 1d | 2026-10-20 | 2026-10-20 | 2290 | 78d |
| 2310 | Cables pulled/megged from UPS-HSE-1A | 1d | 2026-10-20 | 2026-10-20 | 2280 | 78d |
| 2370 | Megger cables in XFMR-ELI-1D | 1d | 2026-10-20 | 2026-10-20 | 2360 | 78d |
| 2430 | Megger cables in MTS-ELI-1D | 1d | 2026-10-20 | 2026-10-20 | 2420 | 78d |
| 2490 | Megger cables in XFMR-UPS-HSE-1D | 1d | 2026-10-20 | 2026-10-20 | 2480 | 78d |
| 2550 | Megger cables in XFMR-ELI-1D-2 | 1d | 2026-10-20 | 2026-10-20 | 2540 | 78d |
| 2620 | Megger cables in PNL-UPS-HSE-1D | 1d | 2026-10-20 | 2026-10-20 | 2610 | 78d |
| 2760 | Megger cables in PNL-ELI-1D | 1d | 2026-10-20 | 2026-10-20 | 2750 | 78d |
| 3580 | Finish conduit to XFMR-G140-01 | 1d | 2026-10-20 | 2026-10-20 | 3570 | 77d |
| 3590 | Pull feeder cables to XFMR-G140-01 | 1d | 2026-10-20 | 2026-10-20 | 3580 SS | 77d |
| 5100 | Pull cable to MMR | 1d | 2026-10-20 | 2026-10-20 | 5090 | 77d |
| 5160 | Megger cables in PNL-UPS-HSE-1C | 1d | 2026-10-20 | 2026-10-20 | 5150 | 78d |
| 5460 | Megger cables in PNL-UPS-DH130-B3 | 1d | 2026-10-20 | 2026-10-20 | 5450 | 78d |
| 5830 | QC 2.2 checklist PNL-UPS-DH140-A3 | 1d | 2026-10-20 | 2026-10-20 | 5820 | 80d |
| 6110 | QC 2.2 checklist UPS-HSE-1C | 1d | 2026-10-20 | 2026-10-20 | 6100 | 80d |
| 2070 | Term XFMR-HSE-1Da | 1d | 2026-10-21 | 2026-10-21 | 2040 | 78d |
| 2080 | Term XFMR-HSE-1Dp | 1d | 2026-10-21 | 2026-10-21 | 2040 | 78d |
| 2160 | Term UPS-HSE-1D | 1d | 2026-10-21 | 2026-10-21 | 2150 | 77d |
| 2230 | Term ELI | 1d | 2026-10-21 | 2026-10-21 | 2220 | 76d |
| 2320 | Term STS-HSE-1D | 1d | 2026-10-21 | 2026-10-21 | 2310, 2300 | 78d |
| 2380 | Term XFMR-ELI-1D | 1d | 2026-10-21 | 2026-10-21 | 2370 | 78d |
| 2440 | Term MTS-ELI-1D | 1d | 2026-10-21 | 2026-10-21 | 2430 | 78d |
| 2500 | Term XFMR-UPS-HSE-1D | 1d | 2026-10-21 | 2026-10-21 | 2490 | 78d |
| 2560 | Term XFMR-ELI-1D-2 | 1d | 2026-10-21 | 2026-10-21 | 2550 | 78d |
| 2770 | Term PNL-ELI-1D | 1d | 2026-10-21 | 2026-10-21 | 2760 | 78d |
| 3600 | Megger cables in XFMR-G140-01 | 1d | 2026-10-21 | 2026-10-21 | 3590 | 77d |
| 5110 | Megger cable to MMR | 1d | 2026-10-21 | 2026-10-21 | 5100 | 77d |
| 5170 | Term PNL-UPS-HSE-1C | 1d | 2026-10-21 | 2026-10-21 | 5160, 5270, 5240, 5210 | 78d |
| 5470 | Term PNL-UPS-DH130-B3 | 1d | 2026-10-21 | 2026-10-21 | 5460 | 78d |
| 6120 | Megger cables at SWD-HSE-1D-Main | 1d | 2026-10-21 | 2026-10-21 | 2050 | 77d |
| 2060 | Term SWD-HSE-1D-Main | 1d | 2026-10-22 | 2026-10-22 | 6120 | 77d |
| 2100 | QC 2.2 checklist XFMR-HSE-1Da | 1d | 2026-10-22 | 2026-10-22 | 2070 | 78d |
| 2110 | QC 2.2 checklist XFMR-HSE-1Dp | 1d | 2026-10-22 | 2026-10-22 | 2080 | 78d |
| 2170 | Battery hookup in UPS-HSE-1D | 1d | 2026-10-22 | 2026-10-22 | 2160 | 77d |
| 2240 | Battery hookup in ELI | 1d | 2026-10-22 | 2026-10-22 | 2230 | 76d |
| 2330 | QC 2.2 checklist STS-HSE-1D | 1d | 2026-10-22 | 2026-10-22 | 2320 | 78d |
| 2390 | QC 2.2 checklist XFMR-ELI-1D | 1d | 2026-10-22 | 2026-10-22 | 2380 | 78d |
| 2450 | QC 2.2 checklist MTS-ELI-1D | 1d | 2026-10-22 | 2026-10-22 | 2440 | 78d |
| 2510 | QC 2.2 checklist XFMR-UPS-HSE-1D | 1d | 2026-10-22 | 2026-10-22 | 2500 | 78d |
| 2570 | QC 2.2 checklist XFMR-ELI-1D-2 | 1d | 2026-10-22 | 2026-10-22 | 2560 | 78d |
| 2630 | Term PNL-UPS-HSE-1D | 1d | 2026-10-22 | 2026-10-22 | 5110, 2620 | 77d |
| 2780 | QC 2/2 checklistPNL-ELI-1D | 1d | 2026-10-22 | 2026-10-22 | 2770 | 78d |
| 3610 | Term XFMR-G140-01 | 1d | 2026-10-22 | 2026-10-22 | 3600 | 77d |
| 5180 | QC 2/2 checklist PNL-UPS-HSE-1C | 1d | 2026-10-22 | 2026-10-22 | 5170 | 78d |
| 5480 | QC 2/2 checklist PNL-UPS-DH130-B3 | 1d | 2026-10-22 | 2026-10-22 | 5470 | 78d |
| 2090 | QC 2.2 checklist SWD-HSE-1D-Main | 1d | 2026-10-23 | 2026-10-23 | 2060 | 77d |
| 2180 | QC 2.2 checklist UPS-HSE-1D | 1d | 2026-10-23 | 2026-10-23 | 2170, 2160 | 77d |
| 2260 | Vendor Startup on ELI | 1d | 2026-10-23 | 2026-10-23 | 2240 | 76d |
| 2640 | QC 2/2 checklist PNL-UPS-HSE-1D | 1d | 2026-10-23 | 2026-10-23 | 2630 | 77d |
| 3620 | QC 2/2 checklist XFMR-G140-01 | 1d | 2026-10-23 | 2026-10-23 | 3610 | 77d |
| 2250 | QC 2.2 checklist ELI | 1d | 2026-10-26 | 2026-10-26 | 2260, 2230, 2240 | 76d |
| 3160 | Set PNL-ELI-DH-130 | 1d | 2027-02-10 | 2027-02-10 | A135-1330 SS, 2010 SS | 0d |
| 3770 | Set PNL-DH130 | 1d | 2027-02-10 | 2027-02-10 | A135-1330 SS, 2010 SS | 0d |
| 3830 | Set PNL-DH130-MP | 1d | 2027-02-10 | 2027-02-10 | A135-1330 SS, 2010 SS | 0d |
| 3970 | Set XFMR-DH130-RP | 1d | 2027-02-10 | 2027-02-10 | A135-1330 SS, 2010 SS | 0d |
| 4030 | Set PNL-DH130-RP | 1d | 2027-02-10 | 2027-02-10 | A135-1330 SS, 2010 SS | 0d |

| ID | Task | Duration | Start | Finish | Predecessors | Total float |
| --- | --- | --- | --- | --- | --- | --- |
| 3170 | Finish conduit to PNL-ELI-DH-130 | 1d | 2027-02-11 | 2027-02-11 | 3160, 2720 | 0d |
| 3180 | Pull feeder cables to PNL-ELI-DH-130 | 1d | 2027-02-11 | 2027-02-11 | 3170 SS | 0d |
| 3190 | Pull branch cables to PNL-ELI-DH-130 | 1d | 2027-02-11 | 2027-02-11 | 3180 SS | 0d |
| 3780 | Finish conduit to PNL-DH130 | 1d | 2027-02-11 | 2027-02-11 | 3770 | 0d |
| 3790 | Pull feeder cables to PNL-DH130 | 1d | 2027-02-11 | 2027-02-11 | 3780 SS | 0d |
| 3840 | Finish conduit to PNL-DH130-MP | 1d | 2027-02-11 | 2027-02-11 | 3830 | 0d |
| 3850 | Pull feeder cables to PNL-DH130-MP | 1d | 2027-02-11 | 2027-02-11 | 3840 SS | 0d |
| 3860 | Pull branch cables to PNL-DH130-MP | 1d | 2027-02-11 | 2027-02-11 | 3850 SS | 0d |
| 3980 | Finish conduit to XFMR-DH130-RP | 1d | 2027-02-11 | 2027-02-11 | 3970 | 0d |
| 3990 | Pull feeder cables to XFMR-DH130-RP | 1d | 2027-02-11 | 2027-02-11 | 3980 SS | 0d |
| 4040 | Finish conduit to PNL-DH130-RP | 1d | 2027-02-11 | 2027-02-11 | 4030 | 0d |
| 4050 | Pull feeder cables to PNL-DH130-RP | 1d | 2027-02-11 | 2027-02-11 | 4040 SS | 0d |
| 4060 | Pull branch cables to PNL-DH130-RP | 1d | 2027-02-11 | 2027-02-11 | 4050 SS | 0d |
| 3200 | Megger cables in PNL-ELI-DH-130 | 1d | 2027-02-12 | 2027-02-12 | 3190 | 0d |
| 3800 | Megger cables in PNL-DH130 | 1d | 2027-02-12 | 2027-02-12 | 3790 | 0d |
| 3870 | Megger cables in PNL-DH130-MP | 1d | 2027-02-12 | 2027-02-12 | 3860 | 0d |
| 4000 | Megger cables in XFMR-DH130-RP | 1d | 2027-02-12 | 2027-02-12 | 3990 | 0d |
| 4070 | Megger cables in PNL-DH130-RP | 1d | 2027-02-12 | 2027-02-12 | 4060 | 0d |
| 3210 | Term PNL-ELI-DH-130 | 1d | 2027-02-15 | 2027-02-15 | 3200 | 0d |
| 3230 | Set PNL-ELI-DH-140 | 1d | 2027-02-15 | 2027-02-15 | R145-1330 SS, 2010 SS | -3d |
| 3810 | Term PNL-DH130 | 1d | 2027-02-15 | 2027-02-15 | 3800 | 0d |
| 3880 | Term PNL-DH130-MP | 1d | 2027-02-15 | 2027-02-15 | 3870 | 0d |
| 4010 | Term XFMR-DH130-RP | 1d | 2027-02-15 | 2027-02-15 | 4000 | 0d |
| 4080 | Term PNL-DH130-RP | 1d | 2027-02-15 | 2027-02-15 | 4070 | 0d |
| 4170 | Set PNL-DH140 | 1d | 2027-02-15 | 2027-02-15 | R145-1330 SS, 2010 SS | -3d |
| 4230 | Set PNL-DH140-MP | 1d | 2027-02-15 | 2027-02-15 | R145-1330 SS, 2010 SS | -3d |
| 4300 | Set PNL-DH140-LP | 1d | 2027-02-15 | 2027-02-15 | R145-1330 SS, 2010 SS | -3d |
| 4370 | Set XFMR-DH140-RP | 1d | 2027-02-15 | 2027-02-15 | R145-1330 SS, 2010 SS | -3d |
| 4430 | Set PNL-DH140-RP | 1d | 2027-02-15 | 2027-02-15 | R145-1330 SS, 2010 SS | -3d |
| 3220 | QC 2/2 checklist PNL-ELI-DH-130 | 1d | 2027-02-16 | 2027-02-16 | 3210 | 0d |
| 3240 | Finish conduit to PNL-ELI-DH-140 | 1d | 2027-02-16 | 2027-02-16 | 3230, 2720 | -3d |
| 3250 | Pull feeder cables to PNL-ELI-DH-140 | 1d | 2027-02-16 | 2027-02-16 | 3240 SS | -3d |
| 3260 | Pull branch cables to PNL-ELI-DH-140 | 1d | 2027-02-16 | 2027-02-16 | 3250 SS | -3d |
| 3820 | QC 2/2 checklist PNL-DH130 | 1d | 2027-02-16 | 2027-02-16 | 3810 | 0d |
| 3890 | QC 2/2 checklist PNL-DH130-MP | 1d | 2027-02-16 | 2027-02-16 | 3880 | 0d |
| 4020 | QC 2/2 checklist XFMR-DH130-RP | 1d | 2027-02-16 | 2027-02-16 | 4010 | 0d |
| 4090 | QC 2/2 checklist PNL-DH130-RP | 1d | 2027-02-16 | 2027-02-16 | 4080 | 0d |
| 4180 | Finish conduit to PNL-DH140 | 1d | 2027-02-16 | 2027-02-16 | 4170 | -3d |
| 4190 | Pull feeder cables to PNL-DH140 | 1d | 2027-02-16 | 2027-02-16 | 4180 SS | -3d |
| 4240 | Finish conduit to PNL-DH140-MP | 1d | 2027-02-16 | 2027-02-16 | 4230 | -3d |
| 4250 | Pull feeder cables to PNL-DH140-MP | 1d | 2027-02-16 | 2027-02-16 | 4240 SS | -3d |
| 4260 | Pull branch cables to PNL-DH140-MP | 1d | 2027-02-16 | 2027-02-16 | 4250 SS | -3d |
| 4310 | Finish conduit to PNL-DH140-LP | 1d | 2027-02-16 | 2027-02-16 | 4300 | -3d |
| 4320 | Pull feeder cables to PNL-DH140-LP | 1d | 2027-02-16 | 2027-02-16 | 4310 SS | -3d |
| 4330 | Pull branch cables to PNL-DH140-LP | 1d | 2027-02-16 | 2027-02-16 | 4320 SS | -3d |
| 4380 | Finish conduit to XFMR-DH140-RP | 1d | 2027-02-16 | 2027-02-16 | 4370 | -3d |
| 4390 | Pull feeder cables to XFMR-DH140-RP | 1d | 2027-02-16 | 2027-02-16 | 4380 SS | -3d |
| 4440 | Finish conduit to PNL-DH140-RP | 1d | 2027-02-16 | 2027-02-16 | 4430 | -3d |
| 4450 | Pull feeder cables to PNL-DH140-RP | 1d | 2027-02-16 | 2027-02-16 | 4440 SS | -3d |
| 4460 | Pull branch cables to PNL-DH140-RP | 1d | 2027-02-16 | 2027-02-16 | 4450 SS | -3d |
| 3270 | Megger cables in PNL-ELI-DH-140 | 1d | 2027-02-17 | 2027-02-17 | 3260 | -3d |
| 4200 | Megger cables in PNL-DH140 | 1d | 2027-02-17 | 2027-02-17 | 4190 | -3d |
| 4270 | Megger cables in PNL-DH140-MP | 1d | 2027-02-17 | 2027-02-17 | 4260 | -3d |
| 4340 | Megger cables in PNL-DH140-LP | 1d | 2027-02-17 | 2027-02-17 | 4330 | -3d |
| 4400 | Megger cables in XFMR-DH140-RP | 1d | 2027-02-17 | 2027-02-17 | 4390 | -3d |
| 4470 | Megger cables in PNL-DH140-RP | 1d | 2027-02-17 | 2027-02-17 | 4460 | -3d |
| 3280 | Term PNL-ELI-DH-140 | 1d | 2027-02-18 | 2027-02-18 | 3270 | -3d |
| 4210 | Term PNL-DH140 | 1d | 2027-02-18 | 2027-02-18 | 4200 | -3d |
| 4280 | Term PNL-DH140-MP | 1d | 2027-02-18 | 2027-02-18 | 4270 | -3d |
| 4350 | Term PNL-DH140-LP | 1d | 2027-02-18 | 2027-02-18 | 4340 | -3d |
| 4410 | Term XFMR-DH140-RP | 1d | 2027-02-18 | 2027-02-18 | 4400 | -3d |
| 4480 | Term PNL-DH140-RP | 1d | 2027-02-18 | 2027-02-18 | 4470 | -3d |
| 3290 | QC 2/2 checklist PNL-ELI-DH-140 | 1d | 2027-02-19 | 2027-02-19 | 3280 | -3d |
| 4220 | QC 2/2 checklist PNL-DH140 | 1d | 2027-02-19 | 2027-02-19 | 4210 | -3d |
| 4290 | QC 2/2 checklist PNL-DH140-MP | 1d | 2027-02-19 | 2027-02-19 | 4280 | -3d |
| 4360 | QC 2/2 checklist PNL-DH140-LP | 1d | 2027-02-19 | 2027-02-19 | 4350 | -3d |
| 4420 | QC 2/2 checklist XFMR-DH140-RP | 1d | 2027-02-19 | 2027-02-19 | 4410 | -3d |
| 4490 | QC 2/2 checklist PNL-DH140-RP | 1d | 2027-02-19 | 2027-02-19 | 4480 | -3d |
| 3300 | Set ELI-1D | 1d | 2027-02-22 | 2027-02-22 | A155-1330 SS, 2010 SS | -9d |
| 4770 | Set Set XFMR-UPS-HSE-1C | 1d | 2027-02-22 | 2027-02-22 | A155-1330 SS, 2010 SS | -8d |

| ID | WBS | Task | Duration | Start | Finish | Predecessors | Total float | Constraint |
| --- | --- | --- | --- | --- | --- | --- | --- | --- |
| 3310 |  | Finish conduit to ELI-1D | 1d | 2027-02-23 | 2027-02-23 | 3300, 2720 | -9d |  |
| 3320 |  | Pull feeder cables to ELI-1D | 1d | 2027-02-23 | 2027-02-23 | 3310 SS | -9d |  |
| 4780 |  | Finish conduit toXFMR-UPS-HSE-1C | 1d | 2027-02-23 | 2027-02-23 | 4770 | -8d |  |
| 4790 |  | Pull feeder cables to XFMR-UPS-HSE-1C | 1d | 2027-02-23 | 2027-02-23 | 4780 SS | -8d |  |
| 3330 |  | Pull branch cables to ELI-1D | 1d | 2027-02-24 | 2027-02-24 | 3320 | -9d |  |
| 4800 |  | Megger cables in XFMR-UPS-HSE-1C | 1d | 2027-02-24 | 2027-02-24 | 4790 | -8d |  |
| 3340 |  | Megger cables in ELI-1D | 1d | 2027-02-25 | 2027-02-25 | 3330 | -9d |  |
| 4810 |  | Term XFMR-UPS-HSE-1C | 1d | 2027-02-25 | 2027-02-25 | 4800 | -8d |  |
| 3350 |  | Term ELI-1D | 1d | 2027-02-26 | 2027-02-26 | 3340 | -9d |  |
| 4820 |  | QC 2/2 checklist XFMR-UPS-HSE-1C | 1d | 2027-02-26 | 2027-02-26 | 4810 | -8d |  |
| 3360 |  | QC 2/2 checklist ELI-1D | 1d | 2027-03-01 | 2027-03-01 | 3350 | -9d |  |
|  | 4 | **DH 1400** |  | 2027-02-15 | 2027-05-16 |  |  |  |
|  | 1 | **Electrical** |  | 2027-02-15 | 2027-03-06 |  |  |  |
|  | 11 | **R140** |  | 2027-02-15 | 2027-03-05 |  |  |  |
| R145-1250 |  | Pull MC from MOD-01 to Mechanical Equipment - R140 | 1d | 2027-02-15 | 2027-02-15 | R145-1330 SS | -67d |  |
| R145-1260 |  | Pull MC from MOD-02 to Mechanical Equipment - R140 | 1d | 2027-02-15 | 2027-02-15 | R145-1330 SS | -67d |  |
| R145-1330 |  | Busduct installed - R140 | 1d | 2027-02-15 | 2027-02-15 | R135-1590 FS-2d | 0d | mandatory start 2027-02-15 |
| R145-1340 |  | Busplugs/Tap Boxes installed - R140 | 1d | 2027-02-16 | 2027-02-16 | R145-1330 | -77d |  |
| R145-1440 |  | Mount MPZ - R140 | 1d | 2027-02-16 | 2027-02-16 | R145-1330 | -71d |  |
| R145-1010 |  | Set MODs - R140 | 1d | 2027-02-17 | 2027-02-17 | R145-1330, R145-1340 | -69d |  |
| R145-1020 |  | Set Reserve SWD - R140 | 1d | 2027-02-17 | 2027-02-17 | R145-1330, R145-1340 | -77d |  |
| R145-1110 |  | Set Reserve UPS - R140 | 1d | 2027-02-17 | 2027-02-17 | R145-1330, R145-1340 | -69d |  |
| R145-1120 |  | Chiller feed box and conduit complete - R140 | 2d | 2027-02-17 | 2027-02-18 | R145-1010 SS | -68d |  |
| R145-1170 |  | Set Reserve PDU - R140 | 1d | 2027-02-17 | 2027-02-17 | R145-1330, R145-1340 | -68d |  |
| R145-1720 |  | Set Reserve Tie - R140 | 1d | 2027-02-17 | 2027-02-17 | R145-1330, R145-1340 | -75d |  |
| R145-1760 |  | High Pot test Reserve Busduct - R140 | 1d | 2027-02-17 | 2027-02-17 | R145-1340 | -64d |  |
| R145-1810 |  | Finish Conduit to MPZ - R140 | 5d | 2027-02-17 | 2027-02-22 | R145-1440 | -71d |  |
| R145-1040 |  | SWD top covers cut out - R140 | 5d | 2027-02-18 | 2027-02-23 | R145-1020 | -76d |  |
| R145-1180 |  | Penetrate MC into MOD-01 - R140 | 1d | 2027-02-18 | 2027-02-18 | R145-1010, R145-1250 | -69d |  |
| R145-1190 |  | Penetrate MC into MOD-02 - R140 | 1d | 2027-02-18 | 2027-02-18 | R145-1010, R145-1260 | -69d |  |
| R145-1200 |  | Finish Conduit to Elec Room CRAH - R140 | 1d | 2027-02-18 | 2027-02-18 | R145-1020 | -68d |  |
| R145-1350 |  | Install conduit from Reserve Tie to Tap Box - R140 | 2d | 2027-02-18 | 2027-02-19 | R145-1720 | -70d |  |
| R145-1360 |  | Install conduit from Reserve Tie to Reserve Tie - R140 | 6d | 2027-02-18 | 2027-02-24 | R145-1720 | -75d |  |
| R145-1370 |  | Install conduit from Busplug to Reserve PDU - R140 | 1d | 2027-02-18 | 2027-02-18 | R145-1170 | -68d |  |
| R145-1390 |  | Mount VFD Stand and VFD - R140 | 1d | 2027-02-18 | 2027-02-18 | R145-1020 | -68d |  |
| R145-1710 |  | All Grounding - R140 | 1d | 2027-02-18 | 2027-02-18 | R145-1020 | -65d |  |
| R145-1730 |  | Finish Cable Tray to Reserve Equipment - R140 | 2d | 2027-02-18 | 2027-02-19 | R145-1020 | -71d |  |
| R145-1800 |  | Pull MC Cable from SWD to MOD - R140 | 1d | 2027-02-18 | 2027-02-18 | R145-1020 | -69d |  |
| R145-1130 |  | Pull Chiller wire - R140 | 1d | 2027-02-19 | 2027-02-19 | R145-1120 | -68d |  |
| R145-1210 |  | Pull Cable to Elec Room CRAH - R140 | 1d | 2027-02-19 | 2027-02-19 | R145-1200 | -68d |  |
| R145-1270 |  | Megger MC Cable from MOD-01 to Mechanical Equipment - R140 | 1d | 2027-02-19 | 2027-02-19 | R145-1180 | -69d |  |
| R145-1280 |  | Megger MC Cable from MOD-02 to Mechanical Equipment - R140 | 1d | 2027-02-19 | 2027-02-19 | R145-1190 | -69d |  |
| R145-1400 |  | Conduit from UPS to VFD - R140 | 1d | 2027-02-19 | 2027-02-19 | R145-1390 | -68d |  |
| R145-1650 |  | Megger cable from Busplug to Reserve PDU - R140 | 1d | 2027-02-19 | 2027-02-19 | R145-1370 | -68d |  |
| R145-1140 |  | Megger Chiller Cable - R140 | 1d | 2027-02-20 | 2027-02-20 | R145-1130 | -68d |  |
| R145-1160 |  | Penetrate MC into Reserve SWD - R140 | 1d | 2027-02-20 | 2027-02-20 | R145-1020, R145-1730 | -71d |  |
| R145-1220 |  | Megger MC Cable from SWD to Elec Room CRAH - R140 | 1d | 2027-02-20 | 2027-02-20 | R145-1210 | -68d |  |
| R145-1300 |  | Terminate MOD-02 - R140 | 1d | 2027-02-20 | 2027-02-20 | R145-1280, R145-1280 FF | -69d |  |
| R145-1410 |  | Pull Cable from UPS to VFD - R140 | 1d | 2027-02-20 | 2027-02-20 | R145-1400 | -68d |  |
| R145-1490 |  | Pull cable from Reserve Tie to Tap Box - R140 | 1d | 2027-02-20 | 2027-02-20 | R145-1350 | -70d |  |
| R145-1530 |  | Pull cable from Busplug to Reserve PDU - R140 | 1d | 2027-02-20 | 2027-02-20 | R145-1650 | -68d |  |
| R145-1150 |  | Terminations at Chiller - R140 | 1d | 2027-02-22 | 2027-02-22 | R145-1140 | -68d |  |
| R145-1230 |  | Terminate Elec Room CRAH - R140 | 1d | 2027-02-22 | 2027-02-22 | R145-1220 | -68d |  |
| R145-1240 |  | Megger MC Cable from SWD to MOD - R140 | 1d | 2027-02-22 | 2027-02-22 | R145-1160, R145-1800 | -71d |  |
| R145-1420 |  | Megger Cable from UPS to VFD - R140 | 1d | 2027-02-22 | 2027-02-22 | R145-1410 | -68d |  |
| R145-1480 |  | Terminate Cables in VFD - R140 | 1d | 2027-02-22 | 2027-02-22 | R145-1420 SS | -68d |  |
| R145-1630 |  | Megger cable from Reserve Tie to Tap Box - R140 | 1d | 2027-02-22 | 2027-02-22 | R145-1490 | -70d |  |
| R145-1700 |  | Terminate Busplug to PDU - R140 | 1d | 2027-02-22 | 2027-02-22 | R145-1530 | -68d |  |
| R145-1290 |  | Terminate MOD-01 - R140 | 1d | 2027-02-23 | 2027-02-23 | R145-1240, R145-1270 | -71d |  |
| R145-1310 |  | Terminate at Mechanical Equipment - R140 | 1d | 2027-02-23 | 2027-02-23 | R145-1300 SS, R145-1290 SS, R145-1270, R145-1280 | -71d |  |
| R145-1450 |  | Penetrate MC Cable into MPZ - R140 | 1d | 2027-02-23 | 2027-02-23 | R145-1440, R145-1810 | -71d |  |
| R145-1550 |  | QC 2.2 checklist Elec Room CRAH - R140 | 1d | 2027-02-23 | 2027-02-23 | R145-1230 | -68d |  |
| R145-1570 |  | QC 2.2 checklist VFD - R140 | 1d | 2027-02-23 | 2027-02-23 | R145-1480 | -68d |  |
| R145-1640 |  | QC 2.2 checklist Busplug - R140 | 1d | 2027-02-23 | 2027-02-23 | R145-1700, R145-1760 | -68d |  |
| R145-1030 |  | Cable bus Support installed - R140 | 1d | 2027-02-24 | 2027-02-24 | R145-1040 | -75d |  |
| R145-1320 |  | Mechanical Equipment/Tray Grounding - R140 | 2d | 2027-02-24 | 2027-02-25 | R145-1310 | -71d |  |
| R145-1460 |  | Megger MPZ Cable - R140 | 1d | 2027-02-24 | 2027-02-24 | R145-1450 | -71d |  |
| R145-1560 |  | QC 2.2 Mechanical Equipment - R140 | 1d | 2027-02-24 | 2027-02-24 | R145-1150, R145-1310 | -69d |  |
| R145-1750 |  | Install conduit from SWD to Tap Box - R140 | 2d | 2027-02-24 | 2027-02-25 | R145-1040 | -76d |  |
| R145-1770 |  | Install conduit from SWD to Reserve UPS - R140 | 1d | 2027-02-24 | 2027-02-24 | R145-1040, R145-1110 | -74d |  |

| ID | WBS | Task | Duration | Start | Finish | Predecessors | Total float |
| --- | --- | --- | --- | --- | --- | --- | --- |
| R145-1050 |  | Cable bus Install - R140 | 1d | 2027-02-25 | 2027-02-25 | R145-1030, R145-1040 | -75d |
| R145-1430 |  | Pull cable from SWD to Reserve UPS - R140 | 1d | 2027-02-25 | 2027-02-25 | R145-1770 | -74d |
| R145-1470 |  | Terminate MC Feed at MPZ - R140 | 1d | 2027-02-25 | 2027-02-25 | R145-1460 | -71d |
| R145-1520 |  | Pull cable from Reserve Tie to Reserve Tie - R140 | 2d | 2027-02-25 | 2027-02-26 | R145-1360 | -75d |
| R145-1060 |  | Cable pulled to A & P Xfmrs - R140 | 1d | 2027-02-26 | 2027-02-26 | R145-1050 | -75d |
| R145-1380 |  | Pull cable from SWD to Tap Box - R140 | 2d | 2027-02-26 | 2027-02-27 | R145-1750 | -76d |
| R145-1500 |  | QC 2.2 checklist MOD-01 - R140 | 1d | 2027-02-26 | 2027-02-26 | R145-1320 | -71d |
| R145-1510 |  | QC 2.2 checklist MOD-02 - R140 | 1d | 2027-02-26 | 2027-02-26 | R145-1320 | -71d |
| R145-1620 |  | Megger cable from SWD to Reserve UPS - R140 | 1d | 2027-02-26 | 2027-02-26 | R145-1430 | -74d |
| R145-1820 |  | QC 2.2 checklist MPZ - R140 | 1d | 2027-02-26 | 2027-02-26 | R145-1470 | -71d |
| R145-1070 |  | Megger Cable Bus Cable - R140 | 1d | 2027-02-27 | 2027-02-27 | R145-1060 | -75d |
| R145-1080 |  | Cable Bus inspection and covers - R140 | 1d | 2027-02-27 | 2027-02-27 | R145-1070 SS | -73d |
| R145-1670 |  | Terminate Reserve UPS - R140 | 1d | 2027-02-27 | 2027-02-27 | R145-1620 | -73d |
| R145-1780 |  | Megger cable from Reserve Tie to Reserve Tie - R140 | 1d | 2027-02-27 | 2027-02-27 | R145-1520 | -75d |
| R145-1090 |  | Terminations at Xfmrs - R140 | 2d | 2027-03-01 | 2027-03-02 | R145-1070 | -75d |
| R145-1100 |  | Terminations at SWD - R140 | 2d | 2027-03-01 | 2027-03-02 | R145-1070 | -75d |
| R145-1540 |  | QC 2.2 checklist Reserve UPS - R140 | 1d | 2027-03-01 | 2027-03-01 | R145-1670 | -73d |
| R145-1610 |  | Megger cable from SWD to Tap Box - R140 | 1d | 2027-03-01 | 2027-03-01 | R145-1380 | -76d |
| R145-1690 |  | Terminate Reserve Tie - R140 | 2d | 2027-03-01 | 2027-03-02 | R145-1780 | -75d |
| R145-1660 |  | Terminate Reserve SWD - R140 | 2d | 2027-03-02 | 2027-03-03 | R145-1620, R145-1610, R145-1070 | -76d |
| R145-1680 |  | Terminate Tap Boxes - R140 | 2d | 2027-03-02 | 2027-03-03 | R145-1630, R145-1610 | -76d |
| R145-1600 |  | QC 2.2 checklist XFMR - R140 | 1d | 2027-03-03 | 2027-03-03 | R145-1090, R145-1090 FF | -75d |
| R145-1740 |  | QC 2.2 checklist Reserve Tie - R140 | 1d | 2027-03-03 | 2027-03-03 | R145-1690 | -75d |
| R145-1580 |  | QC 2.2 checklist SWD - R140 | 1d | 2027-03-04 | 2027-03-04 | R145-1080, R145-1100, R145-1100 FF, R145-1660, R145-1710 | -76d |
| R145-1790 |  | QC 2.2 checklist Tap Boxes - R140 | 1d | 2027-03-04 | 2027-03-04 | R145-1680 | -76d |
| R145-1590 |  | Ready for FTE - R140 | 1d | 2027-03-05 | 2027-03-05 | R145-1820, R145-1640, R145-1740, R145-1790, R145-1600, R145-1580, R145-1570, R145-1560, R145-1550, R145-1540, R145-1510, R145-1500 | -76d |
|  | 2 | **A140** |  | 2027-02-15 | 2027-03-04 |  |  |
| A145-1330 |  | Busduct installed - A140 | 1d | 2027-02-15 | 2027-02-15 | R145-1330 SS | -77d |
| A145-1340 |  | Busplugs/Tap Boxes installed - A140 | 1d | 2027-02-16 | 2027-02-16 | A145-1330 | -77d |
| A145-1000 |  | Set Skid - A140 | 1d | 2027-02-17 | 2027-02-17 | R145-1020 SS, A145-1340, A145-1330 | -77d |
| A145-1010 |  | Set MODs - A140 | 2d | 2027-02-17 | 2027-02-18 | A145-1000 SS | -71d |
| A145-1030 |  | Cable bus Support installed - A140 | 2d | 2027-02-17 | 2027-02-18 | A145-1000 SS | -71d |
| A145-1120 |  | Chiller feed box and conduit complete - A140 | 2d | 2027-02-17 | 2027-02-18 | A145-1010 SS, A145-1000 SS | -68d |
| A145-1040 |  | SWD top covers cut out - A140 | 5d | 2027-02-18 | 2027-02-23 | A145-1000 | -75d |
| A145-1110 |  | Finish Cable Tray to Skid - A140 | 2d | 2027-02-18 | 2027-02-19 | A145-1000 | -71d |
| A145-1350 |  | Install conduit from Busplug to ATSs - A140 | 2d | 2027-02-18 | 2027-02-19 | A145-1000 | -71d |
| A145-1390 |  | Mount VFD Stand and VFD - A140 | 1d | 2027-02-18 | 2027-02-18 | A145-1000 | -69d |
| A145-1440 |  | Mount MPZ - A140 | 1d | 2027-02-18 | 2027-02-18 | A145-1000 | -68d |
| A145-1620 |  | Electrical Room CRAH Set - A140 | 1d | 2027-02-18 | 2027-02-18 | A145-1000 | -69d |
| A145-1130 |  | Pull Chiller wire - A140 | 1d | 2027-02-19 | 2027-02-19 | A145-1120, A145-1000 | -68d |
| A145-1180 |  | Penetrate MC into MOD-01 - A140 | 1d | 2027-02-19 | 2027-02-19 | A145-1010 | -70d |
| A145-1190 |  | Penetrate MC into MOD-02 - A140 | 1d | 2027-02-19 | 2027-02-19 | A145-1010 | -70d |
| A145-1200 |  | Finish Conduit to Elec Room CRAH - A140 | 1d | 2027-02-19 | 2027-02-19 | A145-1620 | -69d |
| A145-1250 |  | Pull MC from MOD-01 to Mechanical Equipment - A140 | 2d | 2027-02-19 | 2027-02-20 | A145-1010 | -71d |
| A145-1260 |  | Pull MC from MOD-02 to Mechanical Equipment - A140 | 2d | 2027-02-19 | 2027-02-20 | A145-1010 | -71d |
| A145-1400 |  | Conduit from UPS to VFD - A140 | 1d | 2027-02-19 | 2027-02-19 | A145-1390 | -69d |
| A145-1450 |  | Penetrate MC Cable into MPZ - A140 | 1d | 2027-02-19 | 2027-02-19 | A145-1440 | -68d |
| A145-1140 |  | Megger Chiller Cable - A140 | 1d | 2027-02-20 | 2027-02-20 | A145-1130 | -68d |
| A145-1160 |  | Penetrate MC into SWD - A140 | 1d | 2027-02-20 | 2027-02-20 | A145-1110 | -71d |
| A145-1170 |  | Penetrat MC into UPS - A140 | 1d | 2027-02-20 | 2027-02-20 | A145-1110 | -71d |
| A145-1210 |  | Pull Cable to Elec Room CRAH - A140 | 1d | 2027-02-20 | 2027-02-20 | A145-1200 | -69d |
| A145-1360 |  | Pull ATS Cable - A140 | 1d | 2027-02-20 | 2027-02-20 | A145-1350 | -71d |
| A145-1410 |  | Pull Cable from UPS to VFD - A140 | 1d | 2027-02-20 | 2027-02-20 | A145-1400 | -69d |
| A145-1460 |  | Megger MPZ Cable - A140 | 1d | 2027-02-20 | 2027-02-20 | A145-1450 | -68d |
| A145-1490 |  | All Skid Grounding - A140 | 2d | 2027-02-20 | 2027-02-22 | A145-1110 | -68d |
| A145-1520 |  | Megger MC Cable from UPS to MOD - A140 | 1d | 2027-02-20 | 2027-02-20 | A145-1190 | -70d |
| A145-1150 |  | Terminations at Chiller - A140 | 1d | 2027-02-22 | 2027-02-22 | A145-1140 | -68d |
| A145-1220 |  | Megger MC Cable from Skid to Elec Room CRAH - A140 | 1d | 2027-02-22 | 2027-02-22 | A145-1210 | -69d |
| A145-1240 |  | Megger MC Cable from Skid to MOD - A140 | 1d | 2027-02-22 | 2027-02-22 | A145-1180, A145-1170, A145-1160 | -71d |
| A145-1270 |  | Megger MC Cable from MOD-01 to Mechanical Equipment - A140 | 1d | 2027-02-22 | 2027-02-22 | A145-1250 | -71d |
| A145-1280 |  | Megger MC Cable from MOD-02 to Mechanical Equipment - A140 | 1d | 2027-02-22 | 2027-02-22 | A145-1260 | -71d |
| A145-1420 |  | Megger Cable from UPS to VFD - A140 | 1d | 2027-02-22 | 2027-02-22 | A145-1410 | -69d |
| A145-1470 |  | Terminate MC Feed at MPZ - A140 | 1d | 2027-02-22 | 2027-02-22 | A145-1460 | -68d |
| A145-1480 |  | Terminate Cables in VFD - A140 | 1d | 2027-02-22 | 2027-02-22 | A145-1420 SS | -68d |
| A145-1630 |  | Megger Cable at ATS - A140 | 1d | 2027-02-22 | 2027-02-22 | A145-1360 | -71d |
| A145-1230 |  | Terminate Elec Room CRAH - A140 | 1d | 2027-02-23 | 2027-02-23 | A145-1220 | -69d |
| A145-1290 |  | Terminate MOD-01 - A140 | 1d | 2027-02-23 | 2027-02-23 | A145-1240, A145-1270 | -71d |
| A145-1300 |  | Terminate MOD-02 - A140 | 1d | 2027-02-23 | 2027-02-23 | A145-1520, A145-1280 | -71d |
| A145-1310 |  | Terminate at Mechanical Equipment - A140 | 1d | 2027-02-23 | 2027-02-23 | A145-1300 SS, A145-1290 SS | -71d |
| A145-1370 |  | Terminate ATS Cable at Busplugs & ATSs - A140 | 2d | 2027-02-23 | 2027-02-24 | A145-1630 | -71d |

| ID | WBS | Task | Duration | Start | Finish | Predecessors | Total float |
| --- | --- | --- | --- | --- | --- | --- | --- |
| A145-1430 |  | Terminate Cables in UPS - A140 | 1d | 2027-02-23 | 2027-02-23 | A145-1420 | -69d |
| A145-1570 |  | QC 2.2 checklist VFD - A140 | 1d | 2027-02-23 | 2027-02-23 | A145-1480 | -68d |
| A145-1610 |  | QC 2.2 checklist Chiller - A140 | 1d | 2027-02-23 | 2027-02-23 | A145-1150 | -68d |
| A145-1650 |  | QC 2.2 checklist MPZ - A140 | 1d | 2027-02-23 | 2027-02-23 | A145-1470 | -68d |
| A145-1050 |  | Cable bus Install - A140 | 2d | 2027-02-24 | 2027-02-25 | A145-1040, A145-1030 | -75d |
| A145-1320 |  | Mechanical Equipment/Tray Grounding - A140 | 2d | 2027-02-24 | 2027-02-25 | A145-1310 | -71d |
| A145-1540 |  | QC 2.2 checklist UPS - A140 | 1d | 2027-02-24 | 2027-02-24 | A145-1430 | -69d |
| A145-1550 |  | QC 2.2 checklist Elec Room CRAH - A140 | 1d | 2027-02-24 | 2027-02-24 | A145-1230 | -69d |
| A145-1560 |  | QC 2.2 Mechanical Equipment - A140 | 1d | 2027-02-24 | 2027-02-24 | A145-1310 | -69d |
| A145-1380 |  | ATS Lashing - A140 | 1d | 2027-02-25 | 2027-02-25 | A145-1370 | -71d |
| A145-1060 |  | Cable pulled to A & P Xfmrs - A140 | 1d | 2027-02-26 | 2027-02-26 | A145-1050 | -75d |
| A145-1500 |  | QC 2.2 checklist MOD-01 - A140 | 1d | 2027-02-26 | 2027-02-26 | A145-1320 | -71d |
| A145-1510 |  | QC 2.2 checklist MOD-02 - A140 | 1d | 2027-02-26 | 2027-02-26 | A145-1320 | -71d |
| A145-1530 |  | QC 2.2 checklist ATSs - A140 | 1d | 2027-02-26 | 2027-02-26 | A145-1380 | -71d |
| A145-1640 |  | QC 2.2 checklist Busplugs - A140 | 1d | 2027-02-26 | 2027-02-26 | A145-1530 SS | -71d |
| A145-1070 |  | Megger Cable Bus Cable - A140 | 1d | 2027-02-27 | 2027-02-27 | A145-1060 | -75d |
| A145-1080 |  | Cable Bus inspection and covers - A140 | 1d | 2027-02-27 | 2027-02-27 | A145-1070 SS | -73d |
| A145-1090 |  | Terminations at Xfmrs - A140 | 2d | 2027-03-01 | 2027-03-02 | A145-1070 | -75d |
| A145-1100 |  | Terminations at SWD - A140 | 2d | 2027-03-01 | 2027-03-02 | A145-1070 | -75d |
| A145-1580 |  | QC 2.2 checklist SWD - A140 | 1d | 2027-03-03 | 2027-03-03 | A145-1080, A145-1490, A145-1100 | -75d |
| A145-1600 |  | QC 2.2 checklist Xfmrs - A140 | 1d | 2027-03-03 | 2027-03-03 | A145-1090 | -75d |
| A145-1590 |  | Ready for FTE - A140 | 1d | 2027-03-04 | 2027-03-04 | A145-1650, A145-1640, A145-1610, A145-1580, A145-1570, A145-1560, A145-1550, A145-1540, A145-1530, A145-1510, A145-1500, A145-1600 | -75d |
|  | 1 | **B140** |  | 2027-02-15 | 2027-03-04 |  |  |
| B145-1330 |  | Busduct installed - B140 | 1d | 2027-02-15 | 2027-02-15 | A145-1330 SS | -77d |
| B145-1340 |  | Busplugs/Tap Boxes installed - B140 | 1d | 2027-02-16 | 2027-02-16 | B145-1330 | -77d |
| B145-1000 |  | Set Skid - B140 | 1d | 2027-02-17 | 2027-02-17 | A145-1000 SS, B145-1340, B145-1330 | -77d |
| B145-1010 |  | Set MODs - B140 | 2d | 2027-02-17 | 2027-02-18 | B145-1000 SS | -71d |
| B145-1030 |  | Cable bus Support installed - B140 | 2d | 2027-02-17 | 2027-02-18 | B145-1000 SS | -71d |
| B145-1120 |  | Chiller feed box and conduit complete - B140 | 2d | 2027-02-17 | 2027-02-18 | B145-1010 SS, B145-1000 SS | -68d |
| B145-1040 |  | SWD top covers cut out - B140 | 5d | 2027-02-18 | 2027-02-23 | B145-1000 | -75d |
| B145-1110 |  | Finish Cable Tray to Skid - B140 | 2d | 2027-02-18 | 2027-02-19 | B145-1000 | -71d |
| B145-1350 |  | Install conduit from Busplug to ATSs - B140 | 2d | 2027-02-18 | 2027-02-19 | B145-1000 | -71d |
| B145-1390 |  | Mount VFD Stand and VFD - B140 | 1d | 2027-02-18 | 2027-02-18 | B145-1000 | -69d |
| B145-1440 |  | Mount MPZ - B140 | 1d | 2027-02-18 | 2027-02-18 | B145-1000 | -68d |
| B145-1620 |  | Electrical Room CRAH Set - B140 | 1d | 2027-02-18 | 2027-02-18 | B145-1000 | -69d |
| B145-1130 |  | Pull Chiller wire - B140 | 1d | 2027-02-19 | 2027-02-19 | B145-1120, B145-1000 | -68d |
| B145-1180 |  | Penetrate MC into MOD-01 - B140 | 1d | 2027-02-19 | 2027-02-19 | B145-1010 | -70d |
| B145-1190 |  | Penetrate MC into MOD-02 - B140 | 1d | 2027-02-19 | 2027-02-19 | B145-1010 | -70d |
| B145-1200 |  | Finish Conduit to Elec Room CRAH - B140 | 1d | 2027-02-19 | 2027-02-19 | B145-1620 | -69d |
| B145-1250 |  | Pull MC from MOD-01 to Mechanical Equipment - B140 | 2d | 2027-02-19 | 2027-02-20 | B145-1010 | -71d |
| B145-1260 |  | Pull MC from MOD-02 to Mechanical Equipment - B140 | 2d | 2027-02-19 | 2027-02-20 | B145-1010 | -71d |
| B145-1400 |  | Conduit from UPS to VFD - B140 | 1d | 2027-02-19 | 2027-02-19 | B145-1390 | -69d |
| B145-1450 |  | Penetrate MC Cable into MPZ - B140 | 1d | 2027-02-19 | 2027-02-19 | B145-1440 | -68d |
| B145-1140 |  | Megger Chiller Cable - B140 | 1d | 2027-02-20 | 2027-02-20 | B145-1130 | -68d |
| B145-1160 |  | Penetrate MC into SWD - B140 | 1d | 2027-02-20 | 2027-02-20 | B145-1110 | -71d |
| B145-1170 |  | Penetrat MC into UPS - B140 | 1d | 2027-02-20 | 2027-02-20 | B145-1110 | -71d |
| B145-1210 |  | Pull Cable to Elec Room CRAH - B140 | 1d | 2027-02-20 | 2027-02-20 | B145-1200 | -69d |
| B145-1360 |  | Pull ATS Cable - B140 | 1d | 2027-02-20 | 2027-02-20 | B145-1350 | -71d |
| B145-1410 |  | Pull Cable from UPS to VFD - B140 | 1d | 2027-02-20 | 2027-02-20 | B145-1400 | -69d |
| B145-1460 |  | Megger MPZ Cable - B140 | 1d | 2027-02-20 | 2027-02-20 | B145-1450 | -68d |
| B145-1490 |  | All Skid Grounding - B140 | 2d | 2027-02-20 | 2027-02-22 | B145-1110 | -68d |
| B145-1520 |  | Megger MC Cable from UPS to MOD - B140 | 1d | 2027-02-20 | 2027-02-20 | B145-1190 | -70d |
| B145-1150 |  | Terminations at Chiller - B140 | 1d | 2027-02-22 | 2027-02-22 | B145-1140 | -68d |
| B145-1220 |  | Megger MC Cable from Skid to Elec Room CRAH - B140 | 1d | 2027-02-22 | 2027-02-22 | B145-1210 | -69d |
| B145-1240 |  | Megger MC Cable from Skid to MOD - B140 | 1d | 2027-02-22 | 2027-02-22 | B145-1180, B145-1170, B145-1160 | -71d |
| B145-1270 |  | Megger MC Cable from MOD-01 to Mechanical Equipment - B140 | 1d | 2027-02-22 | 2027-02-22 | B145-1250 | -71d |
| B145-1280 |  | Megger MC Cable from MOD-02 to Mechanical Equipment - B140 | 1d | 2027-02-22 | 2027-02-22 | B145-1260 | -71d |
| B145-1420 |  | Megger Cable from UPS to VFD - B140 | 1d | 2027-02-22 | 2027-02-22 | B145-1410 | -69d |
| B145-1470 |  | Terminate MC Feed at MPZ - B140 | 1d | 2027-02-22 | 2027-02-22 | B145-1460 | -68d |
| B145-1480 |  | Terminate Cables in VFD - B140 | 1d | 2027-02-22 | 2027-02-22 | B145-1420 SS | -68d |
| B145-1630 |  | Megger Cable at ATS - B140 | 1d | 2027-02-22 | 2027-02-22 | B145-1360 | -71d |
| B145-1230 |  | Terminate Elec Room CRAH - B140 | 1d | 2027-02-23 | 2027-02-23 | B145-1220 | -69d |
| B145-1290 |  | Terminate MOD-01 - B140 | 1d | 2027-02-23 | 2027-02-23 | B145-1240, B145-1270 | -71d |
| B145-1300 |  | Terminate MOD-02 - B140 | 1d | 2027-02-23 | 2027-02-23 | B145-1520, B145-1280 | -71d |
| B145-1310 |  | Terminate at Mechanical Equipment - B140 | 1d | 2027-02-23 | 2027-02-23 | B145-1300 SS, B145-1290 SS | -71d |
| B145-1370 |  | Terminate ATS Cable at Busplugs & ATSs - B140 | 2d | 2027-02-23 | 2027-02-24 | B145-1630 | -71d |
| B145-1430 |  | Terminate Cables in UPS - B140 | 1d | 2027-02-23 | 2027-02-23 | B145-1420 | -69d |
| B145-1570 |  | QC 2.2 checklist VFD - B140 | 1d | 2027-02-23 | 2027-02-23 | B145-1480 | -68d |
| B145-1610 |  | QC 2.2 checklist Chiller - B140 | 1d | 2027-02-23 | 2027-02-23 | B145-1150 | -68d |
| B145-1650 |  | QC 2.2 checklist MPZ - B140 | 1d | 2027-02-23 | 2027-02-23 | B145-1470 | -68d |

| ID | WBS | Task | Duration | Start | Finish | Predecessors | Total float |
| --- | --- | --- | --- | --- | --- | --- | --- |
| B145-1050 |  | Cable bus Install - B140 | 2d | 2027-02-24 | 2027-02-25 | B145-1040, B145-1030 | -75d |
| B145-1320 |  | Mechanical Equipment/Tray Grounding - B140 | 2d | 2027-02-24 | 2027-02-25 | B145-1310 | -71d |
| B145-1540 |  | QC 2.2 checklist UPS - B140 | 1d | 2027-02-24 | 2027-02-24 | B145-1430 | -69d |
| B145-1550 |  | QC 2.2 checklist Elec Room CRAH - B140 | 1d | 2027-02-24 | 2027-02-24 | B145-1230 | -69d |
| B145-1560 |  | QC 2.2 Mechanical Equipment - B140 | 1d | 2027-02-24 | 2027-02-24 | B145-1310 | -69d |
| B145-1380 |  | ATS Lashing - B140 | 1d | 2027-02-25 | 2027-02-25 | B145-1370 | -71d |
| B145-1060 |  | Cable pulled to A & P Xfmrs - B140 | 1d | 2027-02-26 | 2027-02-26 | B145-1050 | -75d |
| B145-1500 |  | QC 2.2 checklist MOD-01 - B140 | 1d | 2027-02-26 | 2027-02-26 | B145-1320 | -71d |
| B145-1510 |  | QC 2.2 checklist MOD-02 - B140 | 1d | 2027-02-26 | 2027-02-26 | B145-1320 | -71d |
| B145-1530 |  | QC 2.2 checklist ATSs - B140 | 1d | 2027-02-26 | 2027-02-26 | B145-1380 | -71d |
| B145-1640 |  | QC 2.2 checklist Busplugs - B140 | 1d | 2027-02-26 | 2027-02-26 | B145-1530 SS | -71d |
| B145-1070 |  | Megger Cable Bus Cable - B140 | 1d | 2027-02-27 | 2027-02-27 | B145-1060 | -75d |
| B145-1080 |  | Cable Bus inspection and covers - B140 | 1d | 2027-02-27 | 2027-02-27 | B145-1070 SS | -73d |
| B145-1090 |  | Terminations at Xfmrs - B140 | 2d | 2027-03-01 | 2027-03-02 | B145-1070 | -75d |
| B145-1100 |  | Terminations at SWD - B140 | 2d | 2027-03-01 | 2027-03-02 | B145-1070 | -75d |
| B145-1580 |  | QC 2.2 checklist SWD - B140 | 1d | 2027-03-03 | 2027-03-03 | B145-1080, B145-1490, B145-1100 | -75d |
| B145-1600 |  | QC 2.2 checklist XFMR - B140 | 1d | 2027-03-03 | 2027-03-03 | B145-1090 | -75d |
| B145-1590 |  | Ready for FTE - B140 | 1d | 2027-03-04 | 2027-03-04 | B145-1650, B145-1640, B145-1610, B145-1600, B145-1580, B145-1570, B145-1560, B145-1550, B145-1540, B145-1530, B145-1510, B145-1500 | -75d |
|  | 3 | **C140** |  | 2027-02-16 | 2027-03-05 |  |  |
| C145-1330 |  | Busduct installed - C140 | 1d | 2027-02-16 | 2027-02-16 | B145-1330 | -77d |
| C145-1340 |  | Busplugs/Tap Boxes installed - C140 | 1d | 2027-02-17 | 2027-02-17 | C145-1330 | -77d |
| C145-1000 |  | Set Skid - C140 | 1d | 2027-02-18 | 2027-02-18 | B145-1000, C145-1340, C145-1330 | -77d |
| C145-1010 |  | Set MODs - C140 | 2d | 2027-02-18 | 2027-02-19 | C145-1000 SS | -72d |
| C145-1030 |  | Cable bus Support installed - C140 | 2d | 2027-02-18 | 2027-02-19 | C145-1000 SS | -72d |
| C145-1120 |  | Chiller feed box and conduit complete - C140 | 2d | 2027-02-18 | 2027-02-19 | C145-1010 SS, C145-1000 SS | -69d |
| C145-1040 |  | SWD top covers cut out - C140 | 5d | 2027-02-19 | 2027-02-24 | C145-1000 | -76d |
| C145-1110 |  | Finish Cable Tray to Skid - C140 | 2d | 2027-02-19 | 2027-02-20 | C145-1000 | -72d |
| C145-1350 |  | Install conduit from Busplug to ATSs - C140 | 2d | 2027-02-19 | 2027-02-20 | C145-1000 | -72d |
| C145-1390 |  | Mount VFD Stand and VFD - C140 | 1d | 2027-02-19 | 2027-02-19 | C145-1000 | -70d |
| C145-1440 |  | Mount MPZ - C140 | 1d | 2027-02-19 | 2027-02-19 | C145-1000 | -69d |
| C145-1620 |  | Electrical Room CRAH Set - C140 | 1d | 2027-02-19 | 2027-02-19 | C145-1000 | -70d |
| C145-1130 |  | Pull Chiller wire - C140 | 1d | 2027-02-20 | 2027-02-20 | C145-1120, C145-1000 | -69d |
| C145-1180 |  | Penetrate MC into MOD-01 - C140 | 1d | 2027-02-20 | 2027-02-20 | C145-1010 | -71d |
| C145-1190 |  | Penetrate MC into MOD-02 - C140 | 1d | 2027-02-20 | 2027-02-20 | C145-1010 | -71d |
| C145-1200 |  | Finish Conduit to Elec Room CRAH - C140 | 1d | 2027-02-20 | 2027-02-20 | C145-1620 | -70d |
| C145-1250 |  | Pull MC from MOD-01 to Mechanical Equipment - C140 | 2d | 2027-02-20 | 2027-02-22 | C145-1010 | -72d |
| C145-1260 |  | Pull MC from MOD-02 to Mechanical Equipment - C140 | 2d | 2027-02-20 | 2027-02-22 | C145-1010 | -72d |
| C145-1400 |  | Conduit from UPS to VFD - C140 | 1d | 2027-02-20 | 2027-02-20 | C145-1390 | -70d |
| C145-1450 |  | Penetrate MC Cable into MPZ - C140 | 1d | 2027-02-20 | 2027-02-20 | C145-1440 | -69d |
| C145-1140 |  | Megger Chiller Cable - C140 | 1d | 2027-02-22 | 2027-02-22 | C145-1130 | -69d |
| C145-1160 |  | Penetrate MC into SWD - C140 | 1d | 2027-02-22 | 2027-02-22 | C145-1110 | -72d |
| C145-1170 |  | Penetrat MC into UPS - C140 | 1d | 2027-02-22 | 2027-02-22 | C145-1110 | -72d |
| C145-1210 |  | Pull Cable to Elec Room CRAH - C140 | 1d | 2027-02-22 | 2027-02-22 | C145-1200 | -70d |
| C145-1360 |  | Pull ATS Cable - C140 | 1d | 2027-02-22 | 2027-02-22 | C145-1350 | -72d |
| C145-1410 |  | Pull Cable from UPS to VFD - C140 | 1d | 2027-02-22 | 2027-02-22 | C145-1400 | -70d |
| C145-1460 |  | Megger MPZ Cable - C140 | 1d | 2027-02-22 | 2027-02-22 | C145-1450 | -69d |
| C145-1490 |  | All Skid Grounding - C140 | 2d | 2027-02-22 | 2027-02-23 | C145-1110 | -69d |
| C145-1520 |  | Megger MC Cable from UPS to MOD - C140 | 1d | 2027-02-22 | 2027-02-22 | C145-1190 | -71d |
| C145-1150 |  | Terminations at Chiller - C140 | 1d | 2027-02-23 | 2027-02-23 | C145-1140 | -69d |
| C145-1220 |  | Megger MC Cable from Skid to Elec Room CRAH - C140 | 1d | 2027-02-23 | 2027-02-23 | C145-1210 | -70d |
| C145-1240 |  | Megger MC Cable from Skid to MOD - C140 | 1d | 2027-02-23 | 2027-02-23 | C145-1180, C145-1170, C145-1160 | -72d |
| C145-1270 |  | Megger MC Cable from MOD-01 to Mechanical Equipment - C140 | 1d | 2027-02-23 | 2027-02-23 | C145-1250 | -72d |
| C145-1280 |  | Megger MC Cable from MOD-02 to Mechanical Equipment - C140 | 1d | 2027-02-23 | 2027-02-23 | C145-1260 | -72d |
| C145-1420 |  | Megger Cable from UPS to VFD - C140 | 1d | 2027-02-23 | 2027-02-23 | C145-1410 | -70d |
| C145-1470 |  | Terminate MC Feed at MPZ - C140 | 1d | 2027-02-23 | 2027-02-23 | C145-1460 | -69d |
| C145-1480 |  | Terminate Cables in VFD - C140 | 1d | 2027-02-23 | 2027-02-23 | C145-1420 SS | -69d |
| C145-1630 |  | Megger Cable at ATS - C140 | 1d | 2027-02-23 | 2027-02-23 | C145-1360 | -72d |
| C145-1230 |  | Terminate Elec Room CRAH - C140 | 1d | 2027-02-24 | 2027-02-24 | C145-1220 | -70d |
| C145-1290 |  | Terminate MOD-01 - C140 | 1d | 2027-02-24 | 2027-02-24 | C145-1240, C145-1270 | -72d |
| C145-1300 |  | Terminate MOD-02 - C140 | 1d | 2027-02-24 | 2027-02-24 | C145-1520, C145-1280 | -72d |
| C145-1310 |  | Terminate at Mechanical Equipment - C140 | 1d | 2027-02-24 | 2027-02-24 | C145-1300 SS, C145-1290 SS | -72d |
| C145-1370 |  | Terminate ATS Cable at Busplugs & ATSs - C140 | 2d | 2027-02-24 | 2027-02-25 | C145-1630 | -72d |
| C145-1430 |  | Terminate Cables in UPS - C140 | 1d | 2027-02-24 | 2027-02-24 | C145-1420 | -70d |
| C145-1570 |  | QC 2.2 checklist VFD - C140 | 1d | 2027-02-24 | 2027-02-24 | C145-1480 | -69d |
| C145-1610 |  | QC 2.2 checklist Chiller - C140 | 1d | 2027-02-24 | 2027-02-24 | C145-1150 | -69d |
| C145-1650 |  | QC 2.2 checklist MPZ - C140 | 1d | 2027-02-24 | 2027-02-24 | C145-1470 | -69d |
| C145-1050 |  | Cable bus Install - C140 | 2d | 2027-02-25 | 2027-02-26 | C145-1040, C145-1030 | -76d |
| C145-1320 |  | Mechanical Equipment/Tray Grounding - C140 | 2d | 2027-02-25 | 2027-02-26 | C145-1310 | -72d |
| C145-1540 |  | QC 2.2 checklist UPS - C140 | 1d | 2027-02-25 | 2027-02-25 | C145-1430 | -70d |
| C145-1550 |  | QC 2.2 checklist Elec Room CRAH - C140 | 1d | 2027-02-25 | 2027-02-25 | C145-1230 | -70d |

| ID | WBS | Task | Duration | Start | Finish | Predecessors | Total float |
| --- | --- | --- | --- | --- | --- | --- | --- |
| C145-1560 |  | QC 2.2 Mechanical Equipment - C140 | 1d | 2027-02-25 | 2027-02-25 | C145-1310 | -70d |
| C145-1380 |  | ATS Lashing - C140 | 1d | 2027-02-26 | 2027-02-26 | C145-1370 | -72d |
| C145-1060 |  | Cable pulled to A & P Xfmrs - C140 | 1d | 2027-02-27 | 2027-02-27 | C145-1050 | -76d |
| C145-1500 |  | QC 2.2 checklist MOD-01 - C140 | 1d | 2027-02-27 | 2027-02-27 | C145-1320 | -72d |
| C145-1510 |  | QC 2.2 checklist MOD-02 - C140 | 1d | 2027-02-27 | 2027-02-27 | C145-1320 | -72d |
| C145-1530 |  | QC 2.2 checklist ATSs - C140 | 1d | 2027-02-27 | 2027-02-27 | C145-1380 | -72d |
| C145-1640 |  | QC 2.2 checklist Busplugs - C140 | 1d | 2027-02-27 | 2027-02-27 | C145-1530 SS | -72d |
| C145-1070 |  | Megger Cable Bus Cable - C140 | 1d | 2027-03-01 | 2027-03-01 | C145-1060 | -76d |
| C145-1080 |  | Cable Bus inspection and covers - C140 | 1d | 2027-03-01 | 2027-03-01 | C145-1070 SS | -74d |
| C145-1090 |  | Terminations at Xfmrs - C140 | 2d | 2027-03-02 | 2027-03-03 | C145-1070 | -76d |
| C145-1100 |  | Terminations at SWD - C140 | 2d | 2027-03-02 | 2027-03-03 | C145-1070 | -76d |
| C145-1580 |  | QC 2.2 checklist SWD - C140 | 1d | 2027-03-04 | 2027-03-04 | C145-1080, C145-1490, C145-1100 | -76d |
| C145-1600 |  | QC 2.2 checklist XFMR - C140 | 1d | 2027-03-04 | 2027-03-04 | C145-1090 | -76d |
| C145-1590 |  | Ready for FTE - C140 | 1d | 2027-03-05 | 2027-03-05 | C145-1650, C145-1640, C145-1610, C145-1600, C145-1580, C145-1570, C145-1560, C145-1550, C145-1540, C145-1530, C145-1510, C145-1500 | -76d |
|  | 4 | **D140** |  | 2027-02-16 | 2027-03-05 |  |  |
| D145-1330 |  | Busduct installed - D140 | 1d | 2027-02-16 | 2027-02-16 | C145-1330 SS | -77d |
| D145-1340 |  | Busplugs/Tap Boxes installed - D140 | 1d | 2027-02-17 | 2027-02-17 | D145-1330 | -77d |
| D145-1000 |  | Set Skid - D140 | 1d | 2027-02-18 | 2027-02-18 | C145-1000 SS, D145-1340, D145-1330 | -77d |
| D145-1010 |  | Set MODs - D140 | 2d | 2027-02-18 | 2027-02-19 | D145-1000 SS | -72d |
| D145-1030 |  | Cable bus Support installed - D140 | 2d | 2027-02-18 | 2027-02-19 | D145-1000 SS | -72d |
| D145-1120 |  | Chiller feed box and conduit complete - D140 | 2d | 2027-02-18 | 2027-02-19 | D145-1010 SS, D145-1000 SS | -69d |
| D145-1040 |  | SWD top covers cut out - D140 | 5d | 2027-02-19 | 2027-02-24 | D145-1000 | -76d |
| D145-1110 |  | Finish Cable Tray to Skid - D140 | 2d | 2027-02-19 | 2027-02-20 | D145-1000 | -72d |
| D145-1350 |  | Install conduit from Busplug to ATSs - D140 | 2d | 2027-02-19 | 2027-02-20 | D145-1000 | -72d |
| D145-1390 |  | Mount VFD Stand and VFD - D140 | 1d | 2027-02-19 | 2027-02-19 | D145-1000 | -70d |
| D145-1440 |  | Mount MPZ - D140 | 1d | 2027-02-19 | 2027-02-19 | D145-1000 | -69d |
| D145-1620 |  | Electrical Room CRAH Set - D140 | 1d | 2027-02-19 | 2027-02-19 | D145-1000 | -70d |
| D145-1130 |  | Pull Chiller wire - D140 | 1d | 2027-02-20 | 2027-02-20 | D145-1120, D145-1000 | -69d |
| D145-1180 |  | Penetrate MC into MOD-01 - D140 | 1d | 2027-02-20 | 2027-02-20 | D145-1010 | -71d |
| D145-1190 |  | Penetrate MC into MOD-02 - D140 | 1d | 2027-02-20 | 2027-02-20 | D145-1010 | -71d |
| D145-1200 |  | Finish Conduit to Elec Room CRAH - D140 | 1d | 2027-02-20 | 2027-02-20 | D145-1620 | -70d |
| D145-1250 |  | Pull MC from MOD-01 to Mechanical Equipment - D140 | 2d | 2027-02-20 | 2027-02-22 | D145-1010 | -72d |
| D145-1260 |  | Pull MC from MOD-02 to Mechanical Equipment - D140 | 2d | 2027-02-20 | 2027-02-22 | D145-1010 | -72d |
| D145-1400 |  | Conduit from UPS to VFD - D140 | 1d | 2027-02-20 | 2027-02-20 | D145-1390 | -70d |
| D145-1450 |  | Penetrate MC Cable into MPZ - D140 | 1d | 2027-02-20 | 2027-02-20 | D145-1440 | -69d |
| D145-1140 |  | Megger Chiller Cable - D140 | 1d | 2027-02-22 | 2027-02-22 | D145-1130 | -69d |
| D145-1160 |  | Penetrate MC into SWD - D140 | 1d | 2027-02-22 | 2027-02-22 | D145-1110 | -72d |
| D145-1170 |  | Penetrat MC into UPS - D140 | 1d | 2027-02-22 | 2027-02-22 | D145-1110 | -72d |
| D145-1210 |  | Pull Cable to Elec Room CRAH - D140 | 1d | 2027-02-22 | 2027-02-22 | D145-1200 | -70d |
| D145-1360 |  | Pull ATS Cable - D140 | 1d | 2027-02-22 | 2027-02-22 | D145-1350 | -72d |
| D145-1410 |  | Pull Cable from UPS to VFD - D140 | 1d | 2027-02-22 | 2027-02-22 | D145-1400 | -70d |
| D145-1460 |  | Megger MPZ Cable - D140 | 1d | 2027-02-22 | 2027-02-22 | D145-1450 | -69d |
| D145-1490 |  | All Skid Grounding - D140 | 2d | 2027-02-22 | 2027-02-23 | D145-1110 | -69d |
| D145-1520 |  | Megger MC Cable from UPS to MOD - D140 | 1d | 2027-02-22 | 2027-02-22 | D145-1190 | -71d |
| D145-1150 |  | Terminations at Chiller - D140 | 1d | 2027-02-23 | 2027-02-23 | D145-1140 | -69d |
| D145-1220 |  | Megger MC Cable from Skid to Elec Room CRAH - D140 | 1d | 2027-02-23 | 2027-02-23 | D145-1210 | -70d |
| D145-1240 |  | Megger MC Cable from Skid to MOD - D140 | 1d | 2027-02-23 | 2027-02-23 | D145-1180, D145-1170, D145-1160 | -72d |
| D145-1270 |  | Megger MC Cable from MOD-01 to Mechanical Equipment - D140 | 1d | 2027-02-23 | 2027-02-23 | D145-1250 | -72d |
| D145-1280 |  | Megger MC Cable from MOD-02 to Mechanical Equipment - D140 | 1d | 2027-02-23 | 2027-02-23 | D145-1260 | -72d |
| D145-1420 |  | Megger Cable from UPS to VFD - D140 | 1d | 2027-02-23 | 2027-02-23 | D145-1410 | -70d |
| D145-1470 |  | Terminate MC Feed at MPZ - D140 | 1d | 2027-02-23 | 2027-02-23 | D145-1460 | -69d |
| D145-1480 |  | Terminate Cables in VFD - D140 | 1d | 2027-02-23 | 2027-02-23 | D145-1420 SS | -69d |
| D145-1630 |  | Megger Cable at ATS - D140 | 1d | 2027-02-23 | 2027-02-23 | D145-1360 | -72d |
| D145-1230 |  | Terminate Elec Room CRAH - D140 | 1d | 2027-02-24 | 2027-02-24 | D145-1220 | -70d |
| D145-1290 |  | Terminate MOD-01 - D140 | 1d | 2027-02-24 | 2027-02-24 | D145-1240, D145-1270 | -72d |
| D145-1300 |  | Terminate MOD-02 - D140 | 1d | 2027-02-24 | 2027-02-24 | D145-1520, D145-1280 | -72d |
| D145-1310 |  | Terminate at Mechanical Equipment - D140 | 1d | 2027-02-24 | 2027-02-24 | D145-1300 SS, D145-1290 SS | -72d |
| D145-1370 |  | Terminate ATS Cable at Busplugs & ATSs - D140 | 2d | 2027-02-24 | 2027-02-25 | D145-1630 | -72d |
| D145-1430 |  | Terminate Cables in UPS - D140 | 1d | 2027-02-24 | 2027-02-24 | D145-1420 | -70d |
| D145-1570 |  | QC 2.2 checklist VFD - D140 | 1d | 2027-02-24 | 2027-02-24 | D145-1480 | -69d |
| D145-1610 |  | QC 2.2 checklist Chiller - D140 | 1d | 2027-02-24 | 2027-02-24 | D145-1150 | -69d |
| D145-1650 |  | QC 2.2 checklist MPZ - D140 | 1d | 2027-02-24 | 2027-02-24 | D145-1470 | -69d |
| D145-1050 |  | Cable bus Install - D140 | 2d | 2027-02-25 | 2027-02-26 | D145-1040, D145-1030 | -76d |
| D145-1320 |  | Mechanical Equipment/Tray Grounding - D140 | 2d | 2027-02-25 | 2027-02-26 | D145-1310 | -72d |
| D145-1540 |  | QC 2.2 checklist UPS - D140 | 1d | 2027-02-25 | 2027-02-25 | D145-1430 | -70d |
| D145-1550 |  | QC 2.2 checklist Elec Room CRAH - D140 | 1d | 2027-02-25 | 2027-02-25 | D145-1230 | -70d |
| D145-1560 |  | QC 2.2 Mechanical Equipment - D140 | 1d | 2027-02-25 | 2027-02-25 | D145-1310 | -70d |
| D145-1380 |  | ATS Lashing - D140 | 1d | 2027-02-26 | 2027-02-26 | D145-1370 | -72d |
| D145-1060 |  | Cable pulled to A & P Xfmrs - D140 | 1d | 2027-02-27 | 2027-02-27 | D145-1050 | -76d |
| D145-1500 |  | QC 2.2 checklist MOD-01 - D140 | 1d | 2027-02-27 | 2027-02-27 | D145-1320 | -72d |

| ID | WBS | Task | Duration | Start | Finish | Predecessors | Total float |
| --- | --- | --- | --- | --- | --- | --- | --- |
| D145-1510 |  | QC 2.2 checklist MOD-02 - D140 | 1d | 2027-02-27 | 2027-02-27 | D145-1320 | -72d |
| D145-1530 |  | QC 2.2 checklist ATSs - D140 | 1d | 2027-02-27 | 2027-02-27 | D145-1380 | -72d |
| D145-1640 |  | QC 2.2 checklist Busplugs - D140 | 1d | 2027-02-27 | 2027-02-27 | D145-1530 SS | -72d |
| D145-1070 |  | Megger Cable Bus Cable - D140 | 1d | 2027-03-01 | 2027-03-01 | D145-1060 | -76d |
| D145-1080 |  | Cable Bus inspection and covers - D140 | 1d | 2027-03-01 | 2027-03-01 | D145-1070 SS | -74d |
| D145-1090 |  | Terminations at Xfmrs - D140 | 2d | 2027-03-02 | 2027-03-03 | D145-1070 | -76d |
| D145-1100 |  | Terminations at SWD - D140 | 2d | 2027-03-02 | 2027-03-03 | D145-1070 | -76d |
| D145-1580 |  | QC 2.2 checklist SWD - D140 | 1d | 2027-03-04 | 2027-03-04 | D145-1080, D145-1490, D145-1100 | -76d |
| D145-1600 |  | QC 2.2 checklist XFMR - D140 | 1d | 2027-03-04 | 2027-03-04 | D145-1090 | -76d |
| D145-1590 |  | Ready for FTE - D140 | 1d | 2027-03-05 | 2027-03-05 | D145-1650, D145-1640, D145-1610, D145-1600, D145-1580, D145-1570, D145-1560, D145-1550, D145-1540, D145-1530, D145-1510, D145-1500 | -76d |
|  | 5 | **E140** |  | 2027-02-16 | 2027-03-05 |  |  |
| E145-1330 |  | Busduct installed - E140 | 1d | 2027-02-16 | 2027-02-16 | D145-1330 SS | -77d |
| E145-1340 |  | Busplugs/Tap Boxes installed - E140 | 1d | 2027-02-17 | 2027-02-17 | E145-1330 | -77d |
| E145-1000 |  | Set Skid - E140 | 1d | 2027-02-18 | 2027-02-18 | D145-1000 SS, E145-1340, E145-1330 | -77d |
| E145-1010 |  | Set MODs - E140 | 2d | 2027-02-18 | 2027-02-19 | E145-1000 SS | -72d |
| E145-1030 |  | Cable bus Support installed - E140 | 2d | 2027-02-18 | 2027-02-19 | E145-1000 SS | -72d |
| E145-1120 |  | Chiller feed box and conduit complete - E140 | 2d | 2027-02-18 | 2027-02-19 | E145-1010 SS, E145-1000 SS | -69d |
| E145-1040 |  | SWD top covers cut out - E140 | 5d | 2027-02-19 | 2027-02-24 | E145-1000 | -76d |
| E145-1110 |  | Finish Cable Tray to Skid - E140 | 2d | 2027-02-19 | 2027-02-20 | E145-1000 | -72d |
| E145-1350 |  | Install conduit from Busplug to ATSs - E140 | 2d | 2027-02-19 | 2027-02-20 | E145-1000 | -72d |
| E145-1390 |  | Mount VFD Stand and VFD - E140 | 1d | 2027-02-19 | 2027-02-19 | E145-1000 | -70d |
| E145-1440 |  | Mount MPZ - E140 | 1d | 2027-02-19 | 2027-02-19 | E145-1000 | -69d |
| E145-1620 |  | Electrical Room CRAH Set - E140 | 1d | 2027-02-19 | 2027-02-19 | E145-1000 | -70d |
| E145-1130 |  | Pull Chiller wire - E140 | 1d | 2027-02-20 | 2027-02-20 | E145-1120, E145-1000 | -69d |
| E145-1180 |  | Penetrate MC into MOD-01 - E140 | 1d | 2027-02-20 | 2027-02-20 | E145-1010 | -71d |
| E145-1190 |  | Penetrate MC into MOD-02 - E140 | 1d | 2027-02-20 | 2027-02-20 | E145-1010 | -71d |
| E145-1200 |  | Finish Conduit to Elec Room CRAH - E140 | 1d | 2027-02-20 | 2027-02-20 | E145-1620 | -70d |
| E145-1250 |  | Pull MC from MOD-01 to Mechanical Equipment - E140 | 2d | 2027-02-20 | 2027-02-22 | E145-1010 | -72d |
| E145-1260 |  | Pull MC from MOD-02 to Mechanical Equipment - E140 | 2d | 2027-02-20 | 2027-02-22 | E145-1010 | -72d |
| E145-1400 |  | Conduit from UPS to VFD - E140 | 1d | 2027-02-20 | 2027-02-20 | E145-1390 | -70d |
| E145-1450 |  | Penetrate MC Cable into MPZ - E140 | 1d | 2027-02-20 | 2027-02-20 | E145-1440 | -69d |
| E145-1140 |  | Megger Chiller Cable - E140 | 1d | 2027-02-22 | 2027-02-22 | E145-1130 | -69d |
| E145-1160 |  | Penetrate MC into SWD - E140 | 1d | 2027-02-22 | 2027-02-22 | E145-1110 | -72d |
| E145-1170 |  | Penetrat MC into UPS - E140 | 1d | 2027-02-22 | 2027-02-22 | E145-1110 | -72d |
| E145-1210 |  | Pull Cable to Elec Room CRAH - E140 | 1d | 2027-02-22 | 2027-02-22 | E145-1200 | -70d |
| E145-1360 |  | Pull ATS Cable - E140 | 1d | 2027-02-22 | 2027-02-22 | E145-1350 | -72d |
| E145-1410 |  | Pull Cable from UPS to VFD - E140 | 1d | 2027-02-22 | 2027-02-22 | E145-1400 | -70d |
| E145-1460 |  | Megger MPZ Cable - E140 | 1d | 2027-02-22 | 2027-02-22 | E145-1450 | -69d |
| E145-1490 |  | All Skid Grounding - E140 | 2d | 2027-02-22 | 2027-02-23 | E145-1110 | -69d |
| E145-1520 |  | Megger MC Cable from UPS to MOD - E140 | 1d | 2027-02-22 | 2027-02-22 | E145-1190 | -71d |
| E145-1150 |  | Terminations at Chiller - E140 | 1d | 2027-02-23 | 2027-02-23 | E145-1140 | -69d |
| E145-1220 |  | Megger MC Cable from Skid to Elec Room CRAH - E140 | 1d | 2027-02-23 | 2027-02-23 | E145-1210 | -70d |
| E145-1240 |  | Megger MC Cable from Skid to MOD - E140 | 1d | 2027-02-23 | 2027-02-23 | E145-1180, E145-1170, E145-1160 | -72d |
| E145-1270 |  | Megger MC Cable from MOD-01 to Mechanical Equipment - E140 | 1d | 2027-02-23 | 2027-02-23 | E145-1250 | -72d |
| E145-1280 |  | Megger MC Cable from MOD-02 to Mechanical Equipment - E140 | 1d | 2027-02-23 | 2027-02-23 | E145-1260 | -72d |
| E145-1420 |  | Megger Cable from UPS to VFD - E140 | 1d | 2027-02-23 | 2027-02-23 | E145-1410 | -70d |
| E145-1470 |  | Terminate MC Feed at MPZ - E140 | 1d | 2027-02-23 | 2027-02-23 | E145-1460 | -69d |
| E145-1480 |  | Terminate Cables in VFD - E140 | 1d | 2027-02-23 | 2027-02-23 | E145-1420 SS | -69d |
| E145-1630 |  | Megger Cable at ATS - E140 | 1d | 2027-02-23 | 2027-02-23 | E145-1360 | -72d |
| E145-1230 |  | Terminate Elec Room CRAH - E140 | 1d | 2027-02-24 | 2027-02-24 | E145-1220 | -70d |
| E145-1290 |  | Terminate MOD-01 - E140 | 1d | 2027-02-24 | 2027-02-24 | E145-1240, E145-1270 | -72d |
| E145-1300 |  | Terminate MOD-02 - E140 | 1d | 2027-02-24 | 2027-02-24 | E145-1520, E145-1280 | -72d |
| E145-1310 |  | Terminate at Mechanical Equipment - E140 | 1d | 2027-02-24 | 2027-02-24 | E145-1300 SS, E145-1290 SS | -72d |
| E145-1370 |  | Terminate ATS Cable at Busplugs & ATSs - E140 | 2d | 2027-02-24 | 2027-02-25 | E145-1630 | -72d |
| E145-1430 |  | Terminate Cables in UPS - E140 | 1d | 2027-02-24 | 2027-02-24 | E145-1420 | -70d |
| E145-1570 |  | QC 2.2 checklist VFD - E140 | 1d | 2027-02-24 | 2027-02-24 | E145-1480 | -69d |
| E145-1610 |  | QC 2.2 checklist Chiller - E140 | 1d | 2027-02-24 | 2027-02-24 | E145-1150 | -69d |
| E145-1650 |  | QC 2.2 checklist MPZ - E140 | 1d | 2027-02-24 | 2027-02-24 | E145-1470 | -69d |
| E145-1050 |  | Cable bus Install - E140 | 2d | 2027-02-25 | 2027-02-26 | E145-1040, E145-1030 | -76d |
| E145-1320 |  | Mechanical Equipment/Tray Grounding - E140 | 2d | 2027-02-25 | 2027-02-26 | E145-1310 | -72d |
| E145-1540 |  | QC 2.2 checklist UPS - E140 | 1d | 2027-02-25 | 2027-02-25 | E145-1430 | -70d |
| E145-1550 |  | QC 2.2 checklist Elec Room CRAH - E140 | 1d | 2027-02-25 | 2027-02-25 | E145-1230 | -70d |
| E145-1560 |  | QC 2.2 Mechanical Equipment - E140 | 1d | 2027-02-25 | 2027-02-25 | E145-1310 | -70d |
| E145-1380 |  | ATS Lashing - E140 | 1d | 2027-02-26 | 2027-02-26 | E145-1370 | -72d |
| E145-1060 |  | Cable pulled to A & P Xfmrs - E140 | 1d | 2027-02-27 | 2027-02-27 | E145-1050 | -76d |
| E145-1500 |  | QC 2.2 checklist MOD-01 - E140 | 1d | 2027-02-27 | 2027-02-27 | E145-1320 | -72d |
| E145-1510 |  | QC 2.2 checklist MOD-02 - E140 | 1d | 2027-02-27 | 2027-02-27 | E145-1320 | -72d |
| E145-1530 |  | QC 2.2 checklist ATSs - E140 | 1d | 2027-02-27 | 2027-02-27 | E145-1380 | -72d |
| E145-1640 |  | QC 2.2 checklist Busplugs - E140 | 1d | 2027-02-27 | 2027-02-27 | E145-1530 SS | -72d |
| E145-1070 |  | Megger Cable Bus Cable - E140 | 1d | 2027-03-01 | 2027-03-01 | E145-1060 | -76d |

| ID | WBS | Task | Duration | Start | Finish | Predecessors | Total float |
| --- | --- | --- | --- | --- | --- | --- | --- |
| E145-1080 |  | Cable Bus inspection and covers - E140 | 1d | 2027-03-01 | 2027-03-01 | E145-1070 SS | -74d |
| E145-1090 |  | Terminations at Xfmrs - E140 | 2d | 2027-03-02 | 2027-03-03 | E145-1070 | -76d |
| E145-1100 |  | Terminations at SWD - E140 | 2d | 2027-03-02 | 2027-03-03 | E145-1070 | -76d |
| E145-1580 |  | QC 2.2 checklist SWD - E140 | 1d | 2027-03-04 | 2027-03-04 | E145-1080, E145-1490, E145-1100 | -76d |
| E145-1600 |  | QC 2.2 checklist XFMR - E140 | 1d | 2027-03-04 | 2027-03-04 | E145-1090 | -76d |
| E145-1590 |  | Ready for FTE - E140 | 1d | 2027-03-05 | 2027-03-05 | E145-1650, E145-1640, E145-1610, E145-1600, E145-1580, E145-1570, E145-1560, E145-1550, E145-1540, E145-1530, E145-1510, E145-1500 | -76d |
|  | 6 | **F140** |  | 2027-02-16 | 2027-03-05 |  |  |
| F145-1330 |  | Busduct installed - F140 | 1d | 2027-02-16 | 2027-02-16 | E145-1330 SS | -77d |
| F145-1340 |  | Busplugs/Tap Boxes installed - F140 | 1d | 2027-02-17 | 2027-02-17 | F145-1330 | -77d |
| F145-1000 |  | Set Skid - F140 | 1d | 2027-02-18 | 2027-02-18 | E145-1000 SS, F145-1340, F145-1330 | -77d |
| F145-1010 |  | Set MODs - F140 | 2d | 2027-02-18 | 2027-02-19 | F145-1000 SS | -72d |
| F145-1030 |  | Cable bus Support installed - F140 | 2d | 2027-02-18 | 2027-02-19 | F145-1000 SS | -72d |
| F145-1120 |  | Chiller feed box and conduit complete - F140 | 2d | 2027-02-18 | 2027-02-19 | F145-1010 SS, F145-1000 SS | -69d |
| F145-1040 |  | SWD top covers cut out - F140 | 5d | 2027-02-19 | 2027-02-24 | F145-1000 | -76d |
| F145-1110 |  | Finish Cable Tray to Skid - F140 | 2d | 2027-02-19 | 2027-02-20 | F145-1000 | -72d |
| F145-1350 |  | Install conduit from Busplug to ATSs - F140 | 2d | 2027-02-19 | 2027-02-20 | F145-1000 | -72d |
| F145-1390 |  | Mount VFD Stand and VFD - F140 | 1d | 2027-02-19 | 2027-02-19 | F145-1000 | -70d |
| F145-1440 |  | Mount MPZ - F140 | 1d | 2027-02-19 | 2027-02-19 | F145-1000 | -69d |
| F145-1620 |  | Electrical Room CRAH Set - F140 | 1d | 2027-02-19 | 2027-02-19 | F145-1000 | -70d |
| F145-1130 |  | Pull Chiller wire - F140 | 1d | 2027-02-20 | 2027-02-20 | F145-1120, F145-1000 | -69d |
| F145-1180 |  | Penetrate MC into MOD-01 - F140 | 1d | 2027-02-20 | 2027-02-20 | F145-1010 | -71d |
| F145-1190 |  | Penetrate MC into MOD-02 - F140 | 1d | 2027-02-20 | 2027-02-20 | F145-1010 | -71d |
| F145-1200 |  | Finish Conduit to Elec Room CRAH - F140 | 1d | 2027-02-20 | 2027-02-20 | F145-1620 | -70d |
| F145-1250 |  | Pull MC from MOD-01 to Mechanical Equipment - F140 | 2d | 2027-02-20 | 2027-02-22 | F145-1010 | -72d |
| F145-1260 |  | Pull MC from MOD-02 to Mechanical Equipment - F140 | 2d | 2027-02-20 | 2027-02-22 | F145-1010 | -72d |
| F145-1400 |  | Conduit from UPS to VFD - F140 | 1d | 2027-02-20 | 2027-02-20 | F145-1390 | -70d |
| F145-1450 |  | Penetrate MC Cable into MPZ - F140 | 1d | 2027-02-20 | 2027-02-20 | F145-1440 | -69d |
| F145-1140 |  | Megger Chiller Cable - F140 | 1d | 2027-02-22 | 2027-02-22 | F145-1130 | -69d |
| F145-1160 |  | Penetrate MC into SWD - F140 | 1d | 2027-02-22 | 2027-02-22 | F145-1110 | -72d |
| F145-1170 |  | Penetrat MC into UPS - F140 | 1d | 2027-02-22 | 2027-02-22 | F145-1110 | -72d |
| F145-1210 |  | Pull Cable to Elec Room CRAH - F140 | 1d | 2027-02-22 | 2027-02-22 | F145-1200 | -70d |
| F145-1360 |  | Pull ATS Cable - F140 | 1d | 2027-02-22 | 2027-02-22 | F145-1350 | -72d |
| F145-1410 |  | Pull Cable from UPS to VFD - F140 | 1d | 2027-02-22 | 2027-02-22 | F145-1400 | -70d |
| F145-1460 |  | Megger MPZ Cable - F140 | 1d | 2027-02-22 | 2027-02-22 | F145-1450 | -69d |
| F145-1490 |  | All Skid Grounding - F140 | 2d | 2027-02-22 | 2027-02-23 | F145-1110 | -69d |
| F145-1520 |  | Megger MC Cable from UPS to MOD - F140 | 1d | 2027-02-22 | 2027-02-22 | F145-1190 | -71d |
| F145-1150 |  | Terminations at Chiller - F140 | 1d | 2027-02-23 | 2027-02-23 | F145-1140 | -69d |
| F145-1220 |  | Megger MC Cable from Skid to Elec Room CRAH - F140 | 1d | 2027-02-23 | 2027-02-23 | F145-1210 | -70d |
| F145-1240 |  | Megger MC Cable from Skid to MOD - F140 | 1d | 2027-02-23 | 2027-02-23 | F145-1180, F145-1170, F145-1160 | -72d |
| F145-1270 |  | Megger MC Cable from MOD-01 to Mechanical Equipment - F140 | 1d | 2027-02-23 | 2027-02-23 | F145-1250 | -72d |
| F145-1280 |  | Megger MC Cable from MOD-02 to Mechanical Equipment - F140 | 1d | 2027-02-23 | 2027-02-23 | F145-1260 | -72d |
| F145-1420 |  | Megger Cable from UPS to VFD - F140 | 1d | 2027-02-23 | 2027-02-23 | F145-1410 | -70d |
| F145-1470 |  | Terminate MC Feed at MPZ - F140 | 1d | 2027-02-23 | 2027-02-23 | F145-1460 | -69d |
| F145-1480 |  | Terminate Cables in VFD - F140 | 1d | 2027-02-23 | 2027-02-23 | F145-1420 SS | -69d |
| F145-1630 |  | Megger Cable at ATS - F140 | 1d | 2027-02-23 | 2027-02-23 | F145-1360 | -72d |
| F145-1230 |  | Terminate Elec Room CRAH - F140 | 1d | 2027-02-24 | 2027-02-24 | F145-1220 | -70d |
| F145-1290 |  | Terminate MOD-01 - F140 | 1d | 2027-02-24 | 2027-02-24 | F145-1240, F145-1270 | -72d |
| F145-1300 |  | Terminate MOD-02 - F140 | 1d | 2027-02-24 | 2027-02-24 | F145-1520, F145-1280 | -72d |
| F145-1310 |  | Terminate at Mechanical Equipment - F140 | 1d | 2027-02-24 | 2027-02-24 | F145-1300 SS, F145-1290 SS | -72d |
| F145-1370 |  | Terminate ATS Cable at Busplugs & ATSs - F140 | 2d | 2027-02-24 | 2027-02-25 | F145-1630 | -72d |
| F145-1430 |  | Terminate Cables in UPS - F140 | 1d | 2027-02-24 | 2027-02-24 | F145-1420 | -70d |
| F145-1570 |  | QC 2.2 checklist VFD - F140 | 1d | 2027-02-24 | 2027-02-24 | F145-1480 | -69d |
| F145-1610 |  | QC 2.2 checklist Chiller - F140 | 1d | 2027-02-24 | 2027-02-24 | F145-1150 | -69d |
| F145-1650 |  | QC 2.2 checklist MPZ - F140 | 1d | 2027-02-24 | 2027-02-24 | F145-1470 | -69d |
| F145-1050 |  | Cable bus Install - F140 | 2d | 2027-02-25 | 2027-02-26 | F145-1040, F145-1030 | -76d |
| F145-1320 |  | Mechanical Equipment/Tray Grounding - F140 | 2d | 2027-02-25 | 2027-02-26 | F145-1310 | -72d |
| F145-1540 |  | QC 2.2 checklist UPS - F140 | 1d | 2027-02-25 | 2027-02-25 | F145-1430 | -70d |
| F145-1550 |  | QC 2.2 checklist Elec Room CRAH - F140 | 1d | 2027-02-25 | 2027-02-25 | F145-1230 | -70d |
| F145-1560 |  | QC 2.2 Mechanical Equipment - F140 | 1d | 2027-02-25 | 2027-02-25 | F145-1310 | -70d |
| F145-1380 |  | ATS Lashing - F140 | 1d | 2027-02-26 | 2027-02-26 | F145-1370 | -72d |
| F145-1060 |  | Cable pulled to A & P Xfmrs - F140 | 1d | 2027-02-27 | 2027-02-27 | F145-1050 | -76d |
| F145-1500 |  | QC 2.2 checklist MOD-01 - F140 | 1d | 2027-02-27 | 2027-02-27 | F145-1320 | -72d |
| F145-1510 |  | QC 2.2 checklist MOD-02 - F140 | 1d | 2027-02-27 | 2027-02-27 | F145-1320 | -72d |
| F145-1530 |  | QC 2.2 checklist ATSs - F140 | 1d | 2027-02-27 | 2027-02-27 | F145-1380 | -72d |
| F145-1640 |  | QC 2.2 checklist Busplugs - F140 | 1d | 2027-02-27 | 2027-02-27 | F145-1530 SS | -72d |
| F145-1070 |  | Megger Cable Bus Cable - F140 | 1d | 2027-03-01 | 2027-03-01 | F145-1060 | -76d |
| F145-1080 |  | Cable Bus inspection and covers - F140 | 1d | 2027-03-01 | 2027-03-01 | F145-1070 SS | -74d |
| F145-1090 |  | Terminations at Xfmrs - F140 | 2d | 2027-03-02 | 2027-03-03 | F145-1070 | -76d |
| F145-1100 |  | Terminations at SWD - F140 | 2d | 2027-03-02 | 2027-03-03 | F145-1070 | -76d |
| F145-1580 |  | QC 2.2 checklist SWD - F140 | 1d | 2027-03-04 | 2027-03-04 | F145-1080, F145-1490, F145-1100 | -76d |

| ID | WBS | Task | Duration | Start | Finish | Predecessors | Total float |
| --- | --- | --- | --- | --- | --- | --- | --- |
| F145-1600 |  | QC 2.2 checklist XFMR - F140 | 1d | 2027-03-04 | 2027-03-04 | F145-1090 | -76d |
| F145-1590 |  | Ready for FTE - F140 | 1d | 2027-03-05 | 2027-03-05 | F145-1650, F145-1640, F145-1610, F145-1600, F145-1580, F145-1570, F145-1560, F145-1550, F145-1540, F145-1530, F145-1510, F145-1500 | -76d |
|  | 7 | **G140** |  | 2027-02-17 | 2027-03-06 |  |  |
| G145-1330 |  | Busduct installed - G140 | 1d | 2027-02-17 | 2027-02-17 | F145-1330 | -77d |
| G145-1340 |  | Busplugs/Tap Boxes installed - G140 | 1d | 2027-02-18 | 2027-02-18 | G145-1330 | -77d |
| G145-1000 |  | Set Skid - G140 | 1d | 2027-02-19 | 2027-02-19 | F145-1000, G145-1340, G145-1330 | -77d |
| G145-1010 |  | Set MODs - G140 | 2d | 2027-02-19 | 2027-02-20 | G145-1000 SS | -73d |
| G145-1030 |  | Cable bus Support installed - G140 | 2d | 2027-02-19 | 2027-02-20 | G145-1000 SS | -73d |
| G145-1120 |  | Chiller feed box and conduit complete - G140 | 2d | 2027-02-19 | 2027-02-20 | G145-1010 SS, G145-1000 SS | -70d |
| G145-1040 |  | SWD top covers cut out - G140 | 5d | 2027-02-20 | 2027-02-25 | G145-1000 | -77d |
| G145-1110 |  | Finish Cable Tray to Skid - G140 | 2d | 2027-02-20 | 2027-02-22 | G145-1000 | -73d |
| G145-1350 |  | Install conduit from Busplug to ATSs - G140 | 2d | 2027-02-20 | 2027-02-22 | G145-1000 | -73d |
| G145-1390 |  | Mount VFD Stand and VFD - G140 | 1d | 2027-02-20 | 2027-02-20 | G145-1000 | -71d |
| G145-1440 |  | Mount MPZ - G140 | 1d | 2027-02-20 | 2027-02-20 | G145-1000 | -70d |
| G145-1620 |  | Electrical Room CRAH Set - G140 | 1d | 2027-02-20 | 2027-02-20 | G145-1000 | -71d |
| G145-1130 |  | Pull Chiller wire - G140 | 1d | 2027-02-22 | 2027-02-22 | G145-1120, G145-1000 | -70d |
| G145-1180 |  | Penetrate MC into MOD-01 - G140 | 1d | 2027-02-22 | 2027-02-22 | G145-1010 | -72d |
| G145-1190 |  | Penetrate MC into MOD-02 - G140 | 1d | 2027-02-22 | 2027-02-22 | G145-1010 | -72d |
| G145-1200 |  | Finish Conduit to Elec Room CRAH - G140 | 1d | 2027-02-22 | 2027-02-22 | G145-1620 | -71d |
| G145-1250 |  | Pull MC from MOD-01 to Mechanical Equipment - G140 | 2d | 2027-02-22 | 2027-02-23 | G145-1010 | -73d |
| G145-1260 |  | Pull MC from MOD-02 to Mechanical Equipment - G140 | 2d | 2027-02-22 | 2027-02-23 | G145-1010 | -73d |
| G145-1400 |  | Conduit from UPS to VFD - G140 | 1d | 2027-02-22 | 2027-02-22 | G145-1390 | -71d |
| G145-1450 |  | Penetrate MC Cable into MPZ - G140 | 1d | 2027-02-22 | 2027-02-22 | G145-1440 | -70d |
| G145-1140 |  | Megger Chiller Cable - G140 | 1d | 2027-02-23 | 2027-02-23 | G145-1130 | -70d |
| G145-1160 |  | Penetrate MC into SWD - G140 | 1d | 2027-02-23 | 2027-02-23 | G145-1110 | -73d |
| G145-1170 |  | Penetrat MC into UPS - G140 | 1d | 2027-02-23 | 2027-02-23 | G145-1110 | -73d |
| G145-1210 |  | Pull Cable to Elec Room CRAH - G140 | 1d | 2027-02-23 | 2027-02-23 | G145-1200 | -71d |
| G145-1360 |  | Pull ATS Cable - G140 | 1d | 2027-02-23 | 2027-02-23 | G145-1350 | -73d |
| G145-1410 |  | Pull Cable from UPS to VFD - G140 | 1d | 2027-02-23 | 2027-02-23 | G145-1400 | -71d |
| G145-1460 |  | Megger MPZ Cable - G140 | 1d | 2027-02-23 | 2027-02-23 | G145-1450 | -70d |
| G145-1490 |  | All Skid Grounding - G140 | 2d | 2027-02-23 | 2027-02-24 | G145-1110 | -70d |
| G145-1520 |  | Megger MC Cable from UPS to MOD - G140 | 1d | 2027-02-23 | 2027-02-23 | G145-1190 | -72d |
| G145-1150 |  | Terminations at Chiller - G140 | 1d | 2027-02-24 | 2027-02-24 | G145-1140 | -70d |
| G145-1220 |  | Megger MC Cable from Skid to Elec Room CRAH - G140 | 1d | 2027-02-24 | 2027-02-24 | G145-1210 | -71d |
| G145-1240 |  | Megger MC Cable from Skid to MOD - G140 | 1d | 2027-02-24 | 2027-02-24 | G145-1180, G145-1170, G145-1160 | -73d |
| G145-1270 |  | Megger MC Cable from MOD-01 to Mechanical Equipment - G140 | 1d | 2027-02-24 | 2027-02-24 | G145-1250 | -73d |
| G145-1280 |  | Megger MC Cable from MOD-02 to Mechanical Equipment - G140 | 1d | 2027-02-24 | 2027-02-24 | G145-1260 | -73d |
| G145-1420 |  | Megger Cable from UPS to VFD - G140 | 1d | 2027-02-24 | 2027-02-24 | G145-1410 | -71d |
| G145-1470 |  | Terminate MC Feed at MPZ - G140 | 1d | 2027-02-24 | 2027-02-24 | G145-1460 | -70d |
| G145-1480 |  | Terminate Cables in VFD - G140 | 1d | 2027-02-24 | 2027-02-24 | G145-1420 SS | -70d |
| G145-1630 |  | Megger Cable at ATS - G140 | 1d | 2027-02-24 | 2027-02-24 | G145-1360 | -73d |
| G145-1230 |  | Terminate Elec Room CRAH - G140 | 1d | 2027-02-25 | 2027-02-25 | G145-1220 | -71d |
| G145-1290 |  | Terminate MOD-01 - G140 | 1d | 2027-02-25 | 2027-02-25 | G145-1240, G145-1270 | -73d |
| G145-1300 |  | Terminate MOD-02 - G140 | 1d | 2027-02-25 | 2027-02-25 | G145-1520, G145-1280 | -73d |
| G145-1310 |  | Terminate at Mechanical Equipment - G140 | 1d | 2027-02-25 | 2027-02-25 | G145-1300 SS, G145-1290 SS | -73d |
| G145-1370 |  | Terminate ATS Cable at Busplugs & ATSs - G140 | 2d | 2027-02-25 | 2027-02-26 | G145-1630 | -73d |
| G145-1430 |  | Terminate Cables in UPS - G140 | 1d | 2027-02-25 | 2027-02-25 | G145-1420 | -71d |
| G145-1570 |  | QC 2.2 checklist VFD - G140 | 1d | 2027-02-25 | 2027-02-25 | G145-1480 | -70d |
| G145-1610 |  | QC 2.2 checklist Chiller - G140 | 1d | 2027-02-25 | 2027-02-25 | G145-1150 | -70d |
| G145-1650 |  | QC 2.2 checklist MPZ - G140 | 1d | 2027-02-25 | 2027-02-25 | G145-1470 | -70d |
| G145-1050 |  | Cable bus Install - G140 | 2d | 2027-02-26 | 2027-02-27 | G145-1040, G145-1030 | -77d |
| G145-1320 |  | Mechanical Equipment/Tray Grounding - G140 | 2d | 2027-02-26 | 2027-02-27 | G145-1310 | -73d |
| G145-1540 |  | QC 2.2 checklist UPS - G140 | 1d | 2027-02-26 | 2027-02-26 | G145-1430 | -71d |
| G145-1550 |  | QC 2.2 checklist Elec Room CRAH - G140 | 1d | 2027-02-26 | 2027-02-26 | G145-1230 | -71d |
| G145-1560 |  | QC 2.2 Mechanical Equipment - G140 | 1d | 2027-02-26 | 2027-02-26 | G145-1310 | -71d |
| G145-1380 |  | ATS Lashing - G140 | 1d | 2027-02-27 | 2027-02-27 | G145-1370 | -73d |
| G145-1060 |  | Cable pulled to A & P Xfmrs - G140 | 1d | 2027-03-01 | 2027-03-01 | G145-1050 | -77d |
| G145-1500 |  | QC 2.2 checklist MOD-01 - G140 | 1d | 2027-03-01 | 2027-03-01 | G145-1320 | -73d |
| G145-1510 |  | QC 2.2 checklist MOD-02 - G140 | 1d | 2027-03-01 | 2027-03-01 | G145-1320 | -73d |
| G145-1530 |  | QC 2.2 checklist ATSs - G140 | 1d | 2027-03-01 | 2027-03-01 | G145-1380 | -73d |
| G145-1640 |  | QC 2.2 checklist Busplugs - G140 | 1d | 2027-03-01 | 2027-03-01 | G145-1530 SS | -73d |
| G145-1070 |  | Megger Cable Bus Cable - G140 | 1d | 2027-03-02 | 2027-03-02 | G145-1060 | -77d |
| G145-1080 |  | Cable Bus inspection and covers - G140 | 1d | 2027-03-02 | 2027-03-02 | G145-1070 SS | -75d |
| G145-1090 |  | Terminations at Xfmrs - G140 | 2d | 2027-03-03 | 2027-03-04 | G145-1070 | -77d |
| G145-1100 |  | Terminations at SWD - G140 | 2d | 2027-03-03 | 2027-03-04 | G145-1070 | -77d |
| G145-1580 |  | QC 2.2 checklist SWD - G140 | 1d | 2027-03-05 | 2027-03-05 | G145-1080, G145-1490, G145-1100 | -77d |
| G145-1600 |  | QC 2.2 checklist XFMR - G140 | 1d | 2027-03-05 | 2027-03-05 | G145-1090 | -77d |
| G145-1590 |  | Ready for FTE - G140 | 1d | 2027-03-06 | 2027-03-06 | G145-1650, G145-1640, G145-1610, G145-1600, G145-1580, G145-1570, G145-1560, G145-1550, G145-1540, G145-1530, G145-1510, G145-1500 | -77d |
|  | 9 | **H140** |  | 2027-02-17 | 2027-03-06 |  |  |
| H145-1330 |  | Busduct installed - H140 | 1d | 2027-02-17 | 2027-02-17 | G145-1330 SS | -77d |

| ID | WBS | Task | Duration | Start | Finish | Predecessors | Total float |
| --- | --- | --- | --- | --- | --- | --- | --- |
| H145-1340 |  | Busplugs/Tap Boxes installed - H140 | 1d | 2027-02-18 | 2027-02-18 | H145-1330 | -77d |
| H145-1000 |  | Set Skid - H140 | 1d | 2027-02-19 | 2027-02-19 | G145-1000 SS, H145-1340, H145-1330 | -77d |
| H145-1010 |  | Set MODs - H140 | 2d | 2027-02-19 | 2027-02-20 | H145-1000 SS | -73d |
| H145-1030 |  | Cable bus Support installed - H140 | 2d | 2027-02-19 | 2027-02-20 | H145-1000 SS | -73d |
| H145-1120 |  | Chiller feed box and conduit complete - H140 | 2d | 2027-02-19 | 2027-02-20 | H145-1010 SS, H145-1000 SS | -70d |
| H145-1040 |  | SWD top covers cut out - H140 | 5d | 2027-02-20 | 2027-02-25 | H145-1000 | -77d |
| H145-1110 |  | Finish Cable Tray to Skid - H140 | 2d | 2027-02-20 | 2027-02-22 | H145-1000 | -73d |
| H145-1350 |  | Install conduit from Busplug to ATSs - H140 | 2d | 2027-02-20 | 2027-02-22 | H145-1000 | -73d |
| H145-1390 |  | Mount VFD Stand and VFD - H140 | 1d | 2027-02-20 | 2027-02-20 | H145-1000 | -71d |
| H145-1440 |  | Mount MPZ - H140 | 1d | 2027-02-20 | 2027-02-20 | H145-1000 | -70d |
| H145-1620 |  | Electrical Room CRAH Set - H140 | 1d | 2027-02-20 | 2027-02-20 | H145-1000 | -71d |
| H145-1130 |  | Pull Chiller wire - H140 | 1d | 2027-02-22 | 2027-02-22 | H145-1120, H145-1000 | -70d |
| H145-1180 |  | Penetrate MC into MOD-01 - H140 | 1d | 2027-02-22 | 2027-02-22 | H145-1010 | -72d |
| H145-1190 |  | Penetrate MC into MOD-02 - H140 | 1d | 2027-02-22 | 2027-02-22 | H145-1010 | -72d |
| H145-1200 |  | Finish Conduit to Elec Room CRAH - H140 | 1d | 2027-02-22 | 2027-02-22 | H145-1620 | -71d |
| H145-1250 |  | Pull MC from MOD-01 to Mechanical Equipment - H140 | 2d | 2027-02-22 | 2027-02-23 | H145-1010 | -73d |
| H145-1260 |  | Pull MC from MOD-02 to Mechanical Equipment - H140 | 2d | 2027-02-22 | 2027-02-23 | H145-1010 | -73d |
| H145-1400 |  | Conduit from UPS to VFD - H140 | 1d | 2027-02-22 | 2027-02-22 | H145-1390 | -71d |
| H145-1450 |  | Penetrate MC Cable into MPZ - H140 | 1d | 2027-02-22 | 2027-02-22 | H145-1440 | -70d |
| H145-1140 |  | Megger Chiller Cable - H140 | 1d | 2027-02-23 | 2027-02-23 | H145-1130 | -70d |
| H145-1160 |  | Penetrate MC into SWD - H140 | 1d | 2027-02-23 | 2027-02-23 | H145-1110 | -73d |
| H145-1170 |  | Penetrat MC into UPS - H140 | 1d | 2027-02-23 | 2027-02-23 | H145-1110 | -73d |
| H145-1210 |  | Pull Cable to Elec Room CRAH - H140 | 1d | 2027-02-23 | 2027-02-23 | H145-1200 | -71d |
| H145-1360 |  | Pull ATS Cable - H140 | 1d | 2027-02-23 | 2027-02-23 | H145-1350 | -73d |
| H145-1410 |  | Pull Cable from UPS to VFD - H140 | 1d | 2027-02-23 | 2027-02-23 | H145-1400 | -71d |
| H145-1460 |  | Megger MPZ Cable - H140 | 1d | 2027-02-23 | 2027-02-23 | H145-1450 | -70d |
| H145-1490 |  | All Skid Grounding - H140 | 2d | 2027-02-23 | 2027-02-24 | H145-1110 | -70d |
| H145-1520 |  | Megger MC Cable from UPS to MOD - H140 | 1d | 2027-02-23 | 2027-02-23 | H145-1190 | -72d |
| H145-1150 |  | Terminations at Chiller - H140 | 1d | 2027-02-24 | 2027-02-24 | H145-1140 | -70d |
| H145-1220 |  | Megger MC Cable from Skid to Elec Room CRAH - H140 | 1d | 2027-02-24 | 2027-02-24 | H145-1210 | -71d |
| H145-1240 |  | Megger MC Cable from Skid to MOD - H140 | 1d | 2027-02-24 | 2027-02-24 | H145-1180, H145-1170, H145-1160 | -73d |
| H145-1270 |  | Megger MC Cable from MOD-01 to Mechanical Equipment - H140 | 1d | 2027-02-24 | 2027-02-24 | H145-1250 | -73d |
| H145-1280 |  | Megger MC Cable from MOD-02 to Mechanical Equipment - H140 | 1d | 2027-02-24 | 2027-02-24 | H145-1260 | -73d |
| H145-1420 |  | Megger Cable from UPS to VFD - H140 | 1d | 2027-02-24 | 2027-02-24 | H145-1410 | -71d |
| H145-1470 |  | Terminate MC Feed at MPZ - H140 | 1d | 2027-02-24 | 2027-02-24 | H145-1460 | -70d |
| H145-1480 |  | Terminate Cables in VFD - H140 | 1d | 2027-02-24 | 2027-02-24 | H145-1420 SS | -70d |
| H145-1630 |  | Megger Cable at ATS - H140 | 1d | 2027-02-24 | 2027-02-24 | H145-1360 | -73d |
| H145-1230 |  | Terminate Elec Room CRAH - H140 | 1d | 2027-02-25 | 2027-02-25 | H145-1220 | -71d |
| H145-1290 |  | Terminate MOD-01 - H140 | 1d | 2027-02-25 | 2027-02-25 | H145-1240, H145-1270 | -73d |
| H145-1300 |  | Terminate MOD-02 - H140 | 1d | 2027-02-25 | 2027-02-25 | H145-1520, H145-1280 | -73d |
| H145-1310 |  | Terminate at Mechanical Equipment - H140 | 1d | 2027-02-25 | 2027-02-25 | H145-1300 SS, H145-1290 SS | -73d |
| H145-1370 |  | Terminate ATS Cable at Busplugs & ATSs - H140 | 2d | 2027-02-25 | 2027-02-26 | H145-1630 | -73d |
| H145-1430 |  | Terminate Cables in UPS - H140 | 1d | 2027-02-25 | 2027-02-25 | H145-1420 | -71d |
| H145-1570 |  | QC 2.2 checklist VFD - H140 | 1d | 2027-02-25 | 2027-02-25 | H145-1480 | -70d |
| H145-1610 |  | QC 2.2 checklist Chiller - H140 | 1d | 2027-02-25 | 2027-02-25 | H145-1150 | -70d |
| H145-1650 |  | QC 2.2 checklist MPZ - H140 | 1d | 2027-02-25 | 2027-02-25 | H145-1470 | -70d |
| H145-1050 |  | Cable bus Install - H140 | 2d | 2027-02-26 | 2027-02-27 | H145-1040, H145-1030 | -77d |
| H145-1320 |  | Mechanical Equipment/Tray Grounding - H140 | 2d | 2027-02-26 | 2027-02-27 | H145-1310 | -73d |
| H145-1540 |  | QC 2.2 checklist UPS - H140 | 1d | 2027-02-26 | 2027-02-26 | H145-1430 | -71d |
| H145-1550 |  | QC 2.2 checklist Elec Room CRAH - H140 | 1d | 2027-02-26 | 2027-02-26 | H145-1230 | -71d |
| H145-1560 |  | QC 2.2 Mechanical Equipment - H140 | 1d | 2027-02-26 | 2027-02-26 | H145-1310 | -71d |
| H145-1380 |  | ATS Lashing - H140 | 1d | 2027-02-27 | 2027-02-27 | H145-1370 | -73d |
| H145-1060 |  | Cable pulled to A & P Xfmrs - H140 | 1d | 2027-03-01 | 2027-03-01 | H145-1050 | -77d |
| H145-1500 |  | QC 2.2 checklist MOD-01 - H140 | 1d | 2027-03-01 | 2027-03-01 | H145-1320 | -73d |
| H145-1510 |  | QC 2.2 checklist MOD-02 - H140 | 1d | 2027-03-01 | 2027-03-01 | H145-1320 | -73d |
| H145-1530 |  | QC 2.2 checklist ATSs - H140 | 1d | 2027-03-01 | 2027-03-01 | H145-1380 | -73d |
| H145-1640 |  | QC 2.2 checklist Busplugs - H140 | 1d | 2027-03-01 | 2027-03-01 | H145-1530 SS | -73d |
| H145-1070 |  | Megger Cable Bus Cable - H140 | 1d | 2027-03-02 | 2027-03-02 | H145-1060 | -77d |
| H145-1080 |  | Cable Bus inspection and covers - H140 | 1d | 2027-03-02 | 2027-03-02 | H145-1070 SS | -75d |
| H145-1090 |  | Terminations at Xfmrs - H140 | 2d | 2027-03-03 | 2027-03-04 | H145-1070 | -77d |
| H145-1100 |  | Terminations at SWD - H140 | 2d | 2027-03-03 | 2027-03-04 | H145-1070 | -77d |
| H145-1580 |  | QC 2.2 checklist SWD - H140 | 1d | 2027-03-05 | 2027-03-05 | H145-1080, H145-1490, H145-1100 | -77d |
| H145-1600 |  | QC 2.2 checklist XFMR - H140 | 1d | 2027-03-05 | 2027-03-05 | H145-1090 | -77d |
| H145-1590 |  | Ready for FTE - H140 | 1d | 2027-03-06 | 2027-03-06 | H145-1650, H145-1640, H145-1610, H145-1600, H145-1580, H145-1570, H145-1560, H145-1550, H145-1540, H145-1530, H145-1510, H145-1500 | -77d |
|  | 8 | **J140** |  | 2027-02-17 | 2027-03-06 |  |  |
| J145-1330 |  | Busduct installed - J140 | 1d | 2027-02-17 | 2027-02-17 | H145-1330 SS | -77d |
| J145-1340 |  | Busplugs/Tap Boxes installed - J140 | 1d | 2027-02-18 | 2027-02-18 | J145-1330 | -77d |
| J145-1000 |  | Set Skid - J140 | 1d | 2027-02-19 | 2027-02-19 | H145-1000 SS, J145-1340, J145-1330 | -77d |
| J145-1010 |  | Set MODs - J140 | 2d | 2027-02-19 | 2027-02-20 | J145-1000 SS | -73d |
| J145-1030 |  | Cable bus Support installed - J140 | 2d | 2027-02-19 | 2027-02-20 | J145-1000 SS | -73d |

| ID | WBS | Task | Duration | Start | Finish | Predecessors | Total float |
| --- | --- | --- | --- | --- | --- | --- | --- |
| J145-1120 |  | Chiller feed box and conduit complete - J140 | 2d | 2027-02-19 | 2027-02-20 | J145-1010 SS, J145-1000 SS | -70d |
| J145-1040 |  | SWD top covers cut out - J140 | 5d | 2027-02-20 | 2027-02-25 | J145-1000 | -77d |
| J145-1110 |  | Finish Cable Tray to Skid - J140 | 2d | 2027-02-20 | 2027-02-22 | J145-1000 | -73d |
| J145-1350 |  | Install conduit from Busplug to ATSs - J140 | 2d | 2027-02-20 | 2027-02-22 | J145-1000 | -73d |
| J145-1390 |  | Mount VFD Stand and VFD - J140 | 1d | 2027-02-20 | 2027-02-20 | J145-1000 | -71d |
| J145-1440 |  | Mount MPZ - J140 | 1d | 2027-02-20 | 2027-02-20 | J145-1000 | -70d |
| J145-1620 |  | Electrical Room CRAH Set - J140 | 1d | 2027-02-20 | 2027-02-20 | J145-1000 | -71d |
| J145-1130 |  | Pull Chiller wire - J140 | 1d | 2027-02-22 | 2027-02-22 | J145-1120, J145-1000 | -70d |
| J145-1180 |  | Penetrate MC into MOD-01 - J140 | 1d | 2027-02-22 | 2027-02-22 | J145-1010 | -72d |
| J145-1190 |  | Penetrate MC into MOD-02 - J140 | 1d | 2027-02-22 | 2027-02-22 | J145-1010 | -72d |
| J145-1200 |  | Finish Conduit to Elec Room CRAH - J140 | 1d | 2027-02-22 | 2027-02-22 | J145-1620 | -71d |
| J145-1250 |  | Pull MC from MOD-01 to Mechanical Equipment - J140 | 2d | 2027-02-22 | 2027-02-23 | J145-1010 | -73d |
| J145-1260 |  | Pull MC from MOD-02 to Mechanical Equipment - J140 | 2d | 2027-02-22 | 2027-02-23 | J145-1010 | -73d |
| J145-1400 |  | Conduit from UPS to VFD - J140 | 1d | 2027-02-22 | 2027-02-22 | J145-1390 | -71d |
| J145-1450 |  | Penetrate MC Cable into MPZ - J140 | 1d | 2027-02-22 | 2027-02-22 | J145-1440 | -70d |
| J145-1140 |  | Megger Chiller Cable - J140 | 1d | 2027-02-23 | 2027-02-23 | J145-1130 | -70d |
| J145-1160 |  | Penetrate MC into SWD - J140 | 1d | 2027-02-23 | 2027-02-23 | J145-1110 | -73d |
| J145-1170 |  | Penetrat MC into UPS - J140 | 1d | 2027-02-23 | 2027-02-23 | J145-1110 | -73d |
| J145-1210 |  | Pull Cable to Elec Room CRAH - J140 | 1d | 2027-02-23 | 2027-02-23 | J145-1200 | -71d |
| J145-1360 |  | Pull ATS Cable - J140 | 1d | 2027-02-23 | 2027-02-23 | J145-1350 | -73d |
| J145-1410 |  | Pull Cable from UPS to VFD - J140 | 1d | 2027-02-23 | 2027-02-23 | J145-1400 | -71d |
| J145-1460 |  | Megger MPZ Cable - J140 | 1d | 2027-02-23 | 2027-02-23 | J145-1450 | -70d |
| J145-1490 |  | All Skid Grounding - J140 | 2d | 2027-02-23 | 2027-02-24 | J145-1110 | -70d |
| J145-1520 |  | Megger MC Cable from UPS to MOD - J140 | 1d | 2027-02-23 | 2027-02-23 | J145-1190 | -72d |
| J145-1150 |  | Terminations at Chiller - J140 | 1d | 2027-02-24 | 2027-02-24 | J145-1140 | -70d |
| J145-1220 |  | Megger MC Cable from Skid to Elec Room CRAH - J140 | 1d | 2027-02-24 | 2027-02-24 | J145-1210 | -71d |
| J145-1240 |  | Megger MC Cable from Skid to MOD - J140 | 1d | 2027-02-24 | 2027-02-24 | J145-1180, J145-1170, J145-1160 | -73d |
| J145-1270 |  | Megger MC Cable from MOD-01 to Mechanical Equipment - J140 | 1d | 2027-02-24 | 2027-02-24 | J145-1250 | -73d |
| J145-1280 |  | Megger MC Cable from MOD-02 to Mechanical Equipment - J140 | 1d | 2027-02-24 | 2027-02-24 | J145-1260 | -73d |
| J145-1420 |  | Megger Cable from UPS to VFD - J140 | 1d | 2027-02-24 | 2027-02-24 | J145-1410 | -71d |
| J145-1470 |  | Terminate MC Feed at MPZ - J140 | 1d | 2027-02-24 | 2027-02-24 | J145-1460 | -70d |
| J145-1480 |  | Terminate Cables in VFD - J140 | 1d | 2027-02-24 | 2027-02-24 | J145-1420 SS | -70d |
| J145-1630 |  | Megger Cable at ATS - J140 | 1d | 2027-02-24 | 2027-02-24 | J145-1360 | -73d |
| J145-1230 |  | Terminate Elec Room CRAH - J140 | 1d | 2027-02-25 | 2027-02-25 | J145-1220 | -71d |
| J145-1290 |  | Terminate MOD-01 - J140 | 1d | 2027-02-25 | 2027-02-25 | J145-1240, J145-1270 | -73d |
| J145-1300 |  | Terminate MOD-02 - J140 | 1d | 2027-02-25 | 2027-02-25 | J145-1520, J145-1280 | -73d |
| J145-1310 |  | Terminate at Mechanical Equipment - J140 | 1d | 2027-02-25 | 2027-02-25 | J145-1300 SS, J145-1290 SS | -73d |
| J145-1370 |  | Terminate ATS Cable at Busplugs & ATSs - J140 | 2d | 2027-02-25 | 2027-02-26 | J145-1630 | -73d |
| J145-1430 |  | Terminate Cables in UPS - J140 | 1d | 2027-02-25 | 2027-02-25 | J145-1420 | -71d |
| J145-1570 |  | QC 2.2 checklist VFD - J140 | 1d | 2027-02-25 | 2027-02-25 | J145-1480 | -70d |
| J145-1610 |  | QC 2.2 checklist Chiller - J140 | 1d | 2027-02-25 | 2027-02-25 | J145-1150 | -70d |
| J145-1650 |  | QC 2.2 checklist MPZ - J140 | 1d | 2027-02-25 | 2027-02-25 | J145-1470 | -70d |
| J145-1050 |  | Cable bus Install - J140 | 2d | 2027-02-26 | 2027-02-27 | J145-1040, J145-1030 | -77d |
| J145-1320 |  | Mechanical Equipment/Tray Grounding - J140 | 2d | 2027-02-26 | 2027-02-27 | J145-1310 | -73d |
| J145-1540 |  | QC 2.2 checklist UPS - J140 | 1d | 2027-02-26 | 2027-02-26 | J145-1430 | -71d |
| J145-1550 |  | QC 2.2 checklist Elec Room CRAH - J140 | 1d | 2027-02-26 | 2027-02-26 | J145-1230 | -71d |
| J145-1560 |  | QC 2.2 Mechanical Equipment - J140 | 1d | 2027-02-26 | 2027-02-26 | J145-1310 | -71d |
| J145-1380 |  | ATS Lashing - J140 | 1d | 2027-02-27 | 2027-02-27 | J145-1370 | -73d |
| J145-1060 |  | Cable pulled to A & P Xfmrs - J140 | 1d | 2027-03-01 | 2027-03-01 | J145-1050 | -77d |
| J145-1500 |  | QC 2.2 checklist MOD-01 - J140 | 1d | 2027-03-01 | 2027-03-01 | J145-1320 | -73d |
| J145-1510 |  | QC 2.2 checklist MOD-02 - J140 | 1d | 2027-03-01 | 2027-03-01 | J145-1320 | -73d |
| J145-1530 |  | QC 2.2 checklist ATSs - J140 | 1d | 2027-03-01 | 2027-03-01 | J145-1380 | -73d |
| J145-1640 |  | QC 2.2 checklist Busplugs - J140 | 1d | 2027-03-01 | 2027-03-01 | J145-1530 SS | -73d |
| J145-1070 |  | Megger Cable Bus Cable - J140 | 1d | 2027-03-02 | 2027-03-02 | J145-1060 | -77d |
| J145-1080 |  | Cable Bus inspection and covers - J140 | 1d | 2027-03-02 | 2027-03-02 | J145-1070 SS | -75d |
| J145-1090 |  | Terminations at Xfmrs - J140 | 2d | 2027-03-03 | 2027-03-04 | J145-1070 | -77d |
| J145-1100 |  | Terminations at SWD - J140 | 2d | 2027-03-03 | 2027-03-04 | J145-1070 | -77d |
| J145-1580 |  | QC 2.2 checklist SWD - J140 | 1d | 2027-03-05 | 2027-03-05 | J145-1080, J145-1490, J145-1100 | -77d |
| J145-1600 |  | QC 2.2 checklist XFMR - J140 | 1d | 2027-03-05 | 2027-03-05 | J145-1090 | -77d |
| J145-1590 |  | Ready for FTE - J140 | 1d | 2027-03-06 | 2027-03-06 | J145-1650, J145-1640, J145-1610, J145-1600, J145-1580, J145-1570, J145-1560, J145-1550, J145-1540, J145-1530, J145-1510, J145-1500 | -77d |
|  | 10 | **K140** |  | 2027-02-17 | 2027-03-06 |  |  |
| K145-1330 |  | Busduct installed - K140 | 1d | 2027-02-17 | 2027-02-17 | J145-1330 SS | -77d |
| K145-1340 |  | Busplugs/Tap Boxes installed - K140 | 1d | 2027-02-18 | 2027-02-18 | K145-1330 | -77d |
| K145-1000 |  | Set Skid - K140 | 1d | 2027-02-19 | 2027-02-19 | J145-1000 SS, K145-1340, K145-1330 | -77d |
| K145-1010 |  | Set MODs - K140 | 2d | 2027-02-19 | 2027-02-20 | K145-1000 SS | -73d |
| K145-1030 |  | Cable bus Support installed - K140 | 2d | 2027-02-19 | 2027-02-20 | K145-1000 SS | -73d |
| K145-1120 |  | Chiller feed box and conduit complete - K140 | 2d | 2027-02-19 | 2027-02-20 | K145-1010 SS, K145-1000 SS | -70d |
| K145-1040 |  | SWD top covers cut out - K140 | 5d | 2027-02-20 | 2027-02-25 | K145-1000 | -77d |
| K145-1110 |  | Finish Cable Tray to Skid - K140 | 2d | 2027-02-20 | 2027-02-22 | K145-1000 | -73d |
| K145-1350 |  | Install conduit from Busplug to ATSs - K140 | 2d | 2027-02-20 | 2027-02-22 | K145-1000 | -73d |

| ID | WBS | Task | Duration | Start | Finish | Predecessors | Total float | Constraint |
| --- | --- | --- | --- | --- | --- | --- | --- | --- |
| K145-1390 |  | Mount VFD Stand and VFD - K140 | 1d | 2027-02-20 | 2027-02-20 | K145-1000 | -71d |  |
| K145-1440 |  | Mount MPZ - K140 | 1d | 2027-02-20 | 2027-02-20 | K145-1000 | -70d |  |
| K145-1620 |  | Electrical Room CRAH Set - K140 | 1d | 2027-02-20 | 2027-02-20 | K145-1000 | -71d |  |
| K145-1130 |  | Pull Chiller wire - K140 | 1d | 2027-02-22 | 2027-02-22 | K145-1120, K145-1000 | -70d |  |
| K145-1180 |  | Penetrate MC into MOD-01 - K140 | 1d | 2027-02-22 | 2027-02-22 | K145-1010 | -72d |  |
| K145-1190 |  | Penetrate MC into MOD-02 - K140 | 1d | 2027-02-22 | 2027-02-22 | K145-1010 | -72d |  |
| K145-1200 |  | Finish Conduit to Elec Room CRAH - K140 | 1d | 2027-02-22 | 2027-02-22 | K145-1620 | -71d |  |
| K145-1250 |  | Pull MC from MOD-01 to Mechanical Equipment - K140 | 2d | 2027-02-22 | 2027-02-23 | K145-1010 | -73d |  |
| K145-1260 |  | Pull MC from MOD-02 to Mechanical Equipment - K140 | 2d | 2027-02-22 | 2027-02-23 | K145-1010 | -73d |  |
| K145-1400 |  | Conduit from UPS to VFD - K140 | 1d | 2027-02-22 | 2027-02-22 | K145-1390 | -71d |  |
| K145-1450 |  | Penetrate MC Cable into MPZ - K140 | 1d | 2027-02-22 | 2027-02-22 | K145-1440 | -70d |  |
| K145-1140 |  | Megger Chiller Cable - K140 | 1d | 2027-02-23 | 2027-02-23 | K145-1130 | -70d |  |
| K145-1160 |  | Penetrate MC into SWD - K140 | 1d | 2027-02-23 | 2027-02-23 | K145-1110 | -73d |  |
| K145-1170 |  | Penetrat MC into UPS - K140 | 1d | 2027-02-23 | 2027-02-23 | K145-1110 | -73d |  |
| K145-1210 |  | Pull Cable to Elec Room CRAH - K140 | 1d | 2027-02-23 | 2027-02-23 | K145-1200 | -71d |  |
| K145-1360 |  | Pull ATS Cable - K140 | 1d | 2027-02-23 | 2027-02-23 | K145-1350 | -73d |  |
| K145-1410 |  | Pull Cable from UPS to VFD - K140 | 1d | 2027-02-23 | 2027-02-23 | K145-1400 | -71d |  |
| K145-1460 |  | Megger MPZ Cable - K140 | 1d | 2027-02-23 | 2027-02-23 | K145-1450 | -70d |  |
| K145-1490 |  | All Skid Grounding - K140 | 2d | 2027-02-23 | 2027-02-24 | K145-1110 | -70d |  |
| K145-1520 |  | Megger MC Cable from UPS to MOD - K140 | 1d | 2027-02-23 | 2027-02-23 | K145-1190 | -72d |  |
| K145-1150 |  | Terminations at Chiller - K140 | 1d | 2027-02-24 | 2027-02-24 | K145-1140 | -70d |  |
| K145-1220 |  | Megger MC Cable from Skid to Elec Room CRAH - K140 | 1d | 2027-02-24 | 2027-02-24 | K145-1210 | -71d |  |
| K145-1240 |  | Megger MC Cable from Skid to MOD - K140 | 1d | 2027-02-24 | 2027-02-24 | K145-1180, K145-1170, K145-1160 | -73d |  |
| K145-1270 |  | Megger MC Cable from MOD-01 to Mechanical Equipment - K140 | 1d | 2027-02-24 | 2027-02-24 | K145-1250 | -73d |  |
| K145-1280 |  | Megger MC Cable from MOD-02 to Mechanical Equipment - K140 | 1d | 2027-02-24 | 2027-02-24 | K145-1260 | -73d |  |
| K145-1420 |  | Megger Cable from UPS to VFD - K140 | 1d | 2027-02-24 | 2027-02-24 | K145-1410 | -71d |  |
| K145-1470 |  | Terminate MC Feed at MPZ - K140 | 1d | 2027-02-24 | 2027-02-24 | K145-1460 | -70d |  |
| K145-1480 |  | Terminate Cables in VFD - K140 | 1d | 2027-02-24 | 2027-02-24 | K145-1420 SS | -70d |  |
| K145-1630 |  | Megger Cable at ATS - K140 | 1d | 2027-02-24 | 2027-02-24 | K145-1360 | -73d |  |
| K145-1230 |  | Terminate Elec Room CRAH - K140 | 1d | 2027-02-25 | 2027-02-25 | K145-1220 | -71d |  |
| K145-1290 |  | Terminate MOD-01 - K140 | 1d | 2027-02-25 | 2027-02-25 | K145-1240, K145-1270 | -73d |  |
| K145-1300 |  | Terminate MOD-02 - K140 | 1d | 2027-02-25 | 2027-02-25 | K145-1520, K145-1280 | -73d |  |
| K145-1310 |  | Terminate at Mechanical Equipment - K140 | 1d | 2027-02-25 | 2027-02-25 | K145-1300 SS, K145-1290 SS | -73d |  |
| K145-1370 |  | Terminate ATS Cable at Busplugs & ATSs - K140 | 2d | 2027-02-25 | 2027-02-26 | K145-1630 | -73d |  |
| K145-1430 |  | Terminate Cables in UPS - K140 | 1d | 2027-02-25 | 2027-02-25 | K145-1420 | -71d |  |
| K145-1570 |  | QC 2.2 checklist VFD - K140 | 1d | 2027-02-25 | 2027-02-25 | K145-1480 | -70d |  |
| K145-1610 |  | QC 2.2 checklist Chiller - K140 | 1d | 2027-02-25 | 2027-02-25 | K145-1150 | -70d |  |
| K145-1650 |  | QC 2.2 checklist MPZ - K140 | 1d | 2027-02-25 | 2027-02-25 | K145-1470 | -70d |  |
| K145-1050 |  | Cable bus Install - K140 | 2d | 2027-02-26 | 2027-02-27 | K145-1040, K145-1030 | -77d |  |
| K145-1320 |  | Mechanical Equipment/Tray Grounding - K140 | 2d | 2027-02-26 | 2027-02-27 | K145-1310 | -73d |  |
| K145-1540 |  | QC 2.2 checklist UPS - K140 | 1d | 2027-02-26 | 2027-02-26 | K145-1430 | -71d |  |
| K145-1550 |  | QC 2.2 checklist Elec Room CRAH - K140 | 1d | 2027-02-26 | 2027-02-26 | K145-1230 | -71d |  |
| K145-1560 |  | QC 2.2 Mechanical Equipment - K140 | 1d | 2027-02-26 | 2027-02-26 | K145-1310 | -71d |  |
| K145-1380 |  | ATS Lashing - K140 | 1d | 2027-02-27 | 2027-02-27 | K145-1370 | -73d |  |
| K145-1060 |  | Cable pulled to A & P Xfmrs - K140 | 1d | 2027-03-01 | 2027-03-01 | K145-1050 | -77d |  |
| K145-1500 |  | QC 2.2 checklist MOD-01 - K140 | 1d | 2027-03-01 | 2027-03-01 | K145-1320 | -73d |  |
| K145-1510 |  | QC 2.2 checklist MOD-02 - K140 | 1d | 2027-03-01 | 2027-03-01 | K145-1320 | -73d |  |
| K145-1530 |  | QC 2.2 checklist ATSs - K140 | 1d | 2027-03-01 | 2027-03-01 | K145-1380 | -73d |  |
| K145-1640 |  | QC 2.2 checklist Busplugs - K140 | 1d | 2027-03-01 | 2027-03-01 | K145-1530 SS | -73d |  |
| K145-1070 |  | Megger Cable Bus Cable - K140 | 1d | 2027-03-02 | 2027-03-02 | K145-1060 | -77d |  |
| K145-1080 |  | Cable Bus inspection and covers - K140 | 1d | 2027-03-02 | 2027-03-02 | K145-1070 SS | -75d |  |
| K145-1090 |  | Terminations at Xfmrs - K140 | 2d | 2027-03-03 | 2027-03-04 | K145-1070 | -77d |  |
| K145-1100 |  | Terminations at SWD - K140 | 2d | 2027-03-03 | 2027-03-04 | K145-1070 | -77d |  |
| K145-1580 |  | QC 2.2 checklist SWD - K140 | 1d | 2027-03-05 | 2027-03-05 | K145-1080, K145-1490, K145-1100 | -77d |  |
| K145-1600 |  | QC 2.2 checklist XFMR - K140 | 1d | 2027-03-05 | 2027-03-05 | K145-1090 | -77d |  |
| K145-1590 |  | Ready for FTE - K140 | 1d | 2027-03-06 | 2027-03-06 | K145-1650, K145-1640, K145-1610, K145-1600, K145-1580, K145-1570, K145-1560, K145-1550, K145-1540, K145-1530, K145-1510, K145-1500 | -77d |  |
|  | 12 | **Commissioning** |  | 2027-03-08 | 2027-05-16 |  |  |  |
| 1450-1000 |  | DH1400 - L3 Clean Walk | 3d | 2027-03-08 | 2027-03-10 | K145-1590 | -22d |  |
| 1450-1100 |  | DH1400 - L3 PEI | 3d | 2027-03-11 | 2027-03-13 | CW.1400, 1450-1000 | -22d |  |
| 1450-1200 |  | DH1400 - L3 FTE | 4d | 2027-03-14 | 2027-03-17 | PEI.1400, 1450-1100 | -25d |  |
| 1450-2000 |  | DH1400 - L4 Cx / IST | 60d | 2027-03-18 | 2027-05-16 | 1450-1200 | -25d |  |
|  | 6 | **DH 1500** |  | 2027-02-22 | 2027-05-25 |  |  |  |
|  | 1 | **Electrical** |  | 2027-02-22 | 2027-03-15 |  |  |  |
|  | 2 | **A150** |  | 2027-02-22 | 2027-03-11 |  |  |  |
| A155-1330 |  | Busduct installed - A150 | 1d | 2027-02-22 | 2027-02-22 | K145-1590 FS-2d | 0d | mandatory start 2027-02-22 |
| A155-1340 |  | Busplugs/Tap Boxes installed - A150 | 1d | 2027-02-23 | 2027-02-23 | A155-1330 | -115d |  |
| A155-1000 |  | Set Skid - A150 | 1d | 2027-02-24 | 2027-02-24 | A155-1340, A155-1330 | -115d |  |
| A155-1010 |  | Set MODs - A150 | 2d | 2027-02-24 | 2027-02-25 | A155-1000 SS | -108d |  |
| A155-1030 |  | Cable bus Support installed - A150 | 2d | 2027-02-24 | 2027-02-25 | A155-1000 SS | -108d |  |
| A155-1120 |  | Chiller feed box and conduit complete - A150 | 2d | 2027-02-24 | 2027-02-25 | A155-1010 SS, A155-1000 SS | -105d |  |

| ID | WBS | Task | Duration | Start | Finish | Predecessors | Total float |
| --- | --- | --- | --- | --- | --- | --- | --- |
| A155-1040 |  | SWD top covers cut out - A150 | 5d | 2027-02-25 | 2027-03-02 | A155-1000 | -112d |
| A155-1110 |  | Finish Cable Tray to Skid - A150 | 2d | 2027-02-25 | 2027-02-26 | A155-1000 | -108d |
| A155-1350 |  | Install conduit from Busplug to ATSs - A150 | 2d | 2027-02-25 | 2027-02-26 | A155-1000 | -108d |
| A155-1390 |  | Mount VFD Stand and VFD - A150 | 1d | 2027-02-25 | 2027-02-25 | A155-1000 | -106d |
| A155-1440 |  | Mount MPZ - A150 | 1d | 2027-02-25 | 2027-02-25 | A155-1000 | -105d |
| A155-1620 |  | Electrical Room CRAH Set - A150 | 1d | 2027-02-25 | 2027-02-25 | A155-1000 | -106d |
| A155-1130 |  | Pull Chiller wire - A150 | 1d | 2027-02-26 | 2027-02-26 | A155-1120, A155-1000 | -105d |
| A155-1180 |  | Penetrate MC into MOD-01 - A150 | 1d | 2027-02-26 | 2027-02-26 | A155-1010 | -107d |
| A155-1190 |  | Penetrate MC into MOD-02 - A150 | 1d | 2027-02-26 | 2027-02-26 | A155-1010 | -107d |
| A155-1200 |  | Finish Conduit to Elec Room CRAH - A150 | 1d | 2027-02-26 | 2027-02-26 | A155-1620 | -106d |
| A155-1250 |  | Pull MC from MOD-01 to Mechanical Equipment - A150 | 2d | 2027-02-26 | 2027-02-27 | A155-1010 | -108d |
| A155-1260 |  | Pull MC from MOD-02 to Mechanical Equipment - A150 | 2d | 2027-02-26 | 2027-02-27 | A155-1010 | -108d |
| A155-1400 |  | Conduit from UPS to VFD - A150 | 1d | 2027-02-26 | 2027-02-26 | A155-1390 | -106d |
| A155-1450 |  | Penetrate MC Cable into MPZ - A150 | 1d | 2027-02-26 | 2027-02-26 | A155-1440 | -105d |
| A155-1140 |  | Megger Chiller Cable - A150 | 1d | 2027-02-27 | 2027-02-27 | A155-1130 | -105d |
| A155-1160 |  | Penetrate MC into SWD - A150 | 1d | 2027-02-27 | 2027-02-27 | A155-1110 | -108d |
| A155-1170 |  | Penetrat MC into UPS - A150 | 1d | 2027-02-27 | 2027-02-27 | A155-1110 | -108d |
| A155-1210 |  | Pull Cable to Elec Room CRAH - A150 | 1d | 2027-02-27 | 2027-02-27 | A155-1200 | -106d |
| A155-1360 |  | Pull ATS Cable - A150 | 1d | 2027-02-27 | 2027-02-27 | A155-1350 | -108d |
| A155-1410 |  | Pull Cable from UPS to VFD - A150 | 1d | 2027-02-27 | 2027-02-27 | A155-1400 | -106d |
| A155-1460 |  | Megger MPZ Cable - A150 | 1d | 2027-02-27 | 2027-02-27 | A155-1450 | -105d |
| A155-1490 |  | All Skid Grounding - A150 | 2d | 2027-02-27 | 2027-03-01 | A155-1110 | -105d |
| A155-1520 |  | Megger MC Cable from UPS to MOD - A150 | 1d | 2027-02-27 | 2027-02-27 | A155-1190 | -107d |
| A155-1150 |  | Terminations at Chiller - A150 | 1d | 2027-03-01 | 2027-03-01 | A155-1140 | -105d |
| A155-1220 |  | Megger MC Cable from Skid to Elec Room CRAH - A150 | 1d | 2027-03-01 | 2027-03-01 | A155-1210 | -106d |
| A155-1240 |  | Megger MC Cable from Skid to MOD - A150 | 1d | 2027-03-01 | 2027-03-01 | A155-1180, A155-1170, A155-1160 | -108d |
| A155-1270 |  | Megger MC Cable from MOD-01 to Mechanical Equipment - A150 | 1d | 2027-03-01 | 2027-03-01 | A155-1250 | -108d |
| A155-1280 |  | Megger MC Cable from MOD-02 to Mechanical Equipment - A150 | 1d | 2027-03-01 | 2027-03-01 | A155-1260 | -108d |
| A155-1420 |  | Megger Cable from UPS to VFD - A150 | 1d | 2027-03-01 | 2027-03-01 | A155-1410 | -106d |
| A155-1470 |  | Terminate MC Feed at MPZ - A150 | 1d | 2027-03-01 | 2027-03-01 | A155-1460 | -105d |
| A155-1480 |  | Terminate Cables in VFD - A150 | 1d | 2027-03-01 | 2027-03-01 | A155-1420 SS | -105d |
| A155-1630 |  | Megger Cable at ATS - A150 | 1d | 2027-03-01 | 2027-03-01 | A155-1360 | -108d |
| A155-1230 |  | Terminate Elec Room CRAH - A150 | 1d | 2027-03-02 | 2027-03-02 | A155-1220 | -106d |
| A155-1290 |  | Terminate MOD-01 - A150 | 1d | 2027-03-02 | 2027-03-02 | A155-1240, A155-1270 | -108d |
| A155-1300 |  | Terminate MOD-02 - A150 | 1d | 2027-03-02 | 2027-03-02 | A155-1520, A155-1280 | -108d |
| A155-1310 |  | Terminate at Mechanical Equipment - A150 | 1d | 2027-03-02 | 2027-03-02 | A155-1300 SS, A155-1290 SS | -108d |
| A155-1370 |  | Terminate ATS Cable at Busplugs & ATSs - A150 | 2d | 2027-03-02 | 2027-03-03 | A155-1630 | -108d |
| A155-1430 |  | Terminate Cables in UPS - A150 | 1d | 2027-03-02 | 2027-03-02 | A155-1420 | -106d |
| A155-1570 |  | QC 2.2 checklist VFD - A150 | 1d | 2027-03-02 | 2027-03-02 | A155-1480 | -105d |
| A155-1610 |  | QC 2.2 checklist Chiller - A150 | 1d | 2027-03-02 | 2027-03-02 | A155-1150 | -105d |
| A155-1650 |  | QC 2.2 checklist MPZ - A150 | 1d | 2027-03-02 | 2027-03-02 | A155-1470 | -105d |
| A155-1050 |  | Cable bus Install - A150 | 2d | 2027-03-03 | 2027-03-04 | A155-1040, A155-1030 | -112d |
| A155-1320 |  | Mechanical Equipment/Tray Grounding - A150 | 2d | 2027-03-03 | 2027-03-04 | A155-1310 | -108d |
| A155-1540 |  | QC 2.2 checklist UPS - A150 | 1d | 2027-03-03 | 2027-03-03 | A155-1430 | -106d |
| A155-1550 |  | QC 2.2 checklist Elec Room CRAH - A150 | 1d | 2027-03-03 | 2027-03-03 | A155-1230 | -106d |
| A155-1560 |  | QC 2.2 Mechanical Equipment - A150 | 1d | 2027-03-03 | 2027-03-03 | A155-1310 | -106d |
| A155-1380 |  | ATS Lashing - A150 | 1d | 2027-03-04 | 2027-03-04 | A155-1370 | -108d |
| A155-1060 |  | Cable pulled to A & P Xfmrs - A150 | 1d | 2027-03-05 | 2027-03-05 | A155-1050 | -112d |
| A155-1500 |  | QC 2.2 checklist MOD-01 - A150 | 1d | 2027-03-05 | 2027-03-05 | A155-1320 | -108d |
| A155-1510 |  | QC 2.2 checklist MOD-02 - A150 | 1d | 2027-03-05 | 2027-03-05 | A155-1320 | -108d |
| A155-1530 |  | QC 2.2 checklist ATSs - A150 | 1d | 2027-03-05 | 2027-03-05 | A155-1380 | -108d |
| A155-1640 |  | QC 2.2 checklist Busplugs - A150 | 1d | 2027-03-05 | 2027-03-05 | A155-1530 SS | -108d |
| A155-1070 |  | Megger Cable Bus Cable - A150 | 1d | 2027-03-06 | 2027-03-06 | A155-1060 | -112d |
| A155-1080 |  | Cable Bus inspection and covers - A150 | 1d | 2027-03-06 | 2027-03-06 | A155-1070 SS | -110d |
| A155-1090 |  | Terminations at Xfmrs - A150 | 2d | 2027-03-08 | 2027-03-09 | A155-1070 | -112d |
| A155-1100 |  | Terminations at SWD - A150 | 2d | 2027-03-08 | 2027-03-09 | A155-1070 | -112d |
| A155-1580 |  | QC 2.2 checklist SWD - A150 | 1d | 2027-03-10 | 2027-03-10 | A155-1080, A155-1490, A155-1100 | -112d |
| A155-1600 |  | QC 2.2 checklist Xfmrs - A150 | 1d | 2027-03-10 | 2027-03-10 | A155-1090 | -112d |
| A155-1590 |  | Ready for FTE - A150 | 1d | 2027-03-11 | 2027-03-11 | A155-1650, A155-1640, A155-1610, A155-1580, A155-1570, A155-1560, A155-1550, A155-1540, A155-1530, A155-1510, A155-1500, A155-1600 | -112d |
|  | 1 | **B150** |  | 2027-02-22 | 2027-03-11 |  |  |
| B155-1330 |  | Busduct installed - B150 | 1d | 2027-02-22 | 2027-02-22 | A155-1330 SS | -115d |
| B155-1340 |  | Busplugs/Tap Boxes installed - B150 | 1d | 2027-02-23 | 2027-02-23 | B155-1330 | -115d |
| B155-1000 |  | Set Skid - B150 | 1d | 2027-02-24 | 2027-02-24 | A155-1000 SS, B155-1340, B155-1330 | -115d |
| B155-1010 |  | Set MODs - B150 | 2d | 2027-02-24 | 2027-02-25 | B155-1000 SS | -108d |
| B155-1030 |  | Cable bus Support installed - B150 | 2d | 2027-02-24 | 2027-02-25 | B155-1000 SS | -108d |
| B155-1120 |  | Chiller feed box and conduit complete - B150 | 2d | 2027-02-24 | 2027-02-25 | B155-1010 SS, B155-1000 SS | -105d |
| B155-1040 |  | SWD top covers cut out - B150 | 5d | 2027-02-25 | 2027-03-02 | B155-1000 | -112d |
| B155-1110 |  | Finish Cable Tray to Skid - B150 | 2d | 2027-02-25 | 2027-02-26 | B155-1000 | -108d |
| B155-1350 |  | Install conduit from Busplug to ATSs - B150 | 2d | 2027-02-25 | 2027-02-26 | B155-1000 | -108d |
| B155-1390 |  | Mount VFD Stand and VFD - B150 | 1d | 2027-02-25 | 2027-02-25 | B155-1000 | -106d |

| ID | WBS | Task | Duration | Start | Finish | Predecessors | Total float |
| --- | --- | --- | --- | --- | --- | --- | --- |
| B155-1440 |  | Mount MPZ - B150 | 1d | 2027-02-25 | 2027-02-25 | B155-1000 | -105d |
| B155-1620 |  | Electrical Room CRAH Set - B150 | 1d | 2027-02-25 | 2027-02-25 | B155-1000 | -106d |
| B155-1130 |  | Pull Chiller wire - B150 | 1d | 2027-02-26 | 2027-02-26 | B155-1120, B155-1000 | -105d |
| B155-1180 |  | Penetrate MC into MOD-01 - B150 | 1d | 2027-02-26 | 2027-02-26 | B155-1010 | -107d |
| B155-1190 |  | Penetrate MC into MOD-02 - B150 | 1d | 2027-02-26 | 2027-02-26 | B155-1010 | -107d |
| B155-1200 |  | Finish Conduit to Elec Room CRAH - B150 | 1d | 2027-02-26 | 2027-02-26 | B155-1620 | -106d |
| B155-1250 |  | Pull MC from MOD-01 to Mechanical Equipment - B150 | 2d | 2027-02-26 | 2027-02-27 | B155-1010 | -108d |
| B155-1260 |  | Pull MC from MOD-02 to Mechanical Equipment - B150 | 2d | 2027-02-26 | 2027-02-27 | B155-1010 | -108d |
| B155-1400 |  | Conduit from UPS to VFD - B150 | 1d | 2027-02-26 | 2027-02-26 | B155-1390 | -106d |
| B155-1450 |  | Penetrate MC Cable into MPZ - B150 | 1d | 2027-02-26 | 2027-02-26 | B155-1440 | -105d |
| B155-1140 |  | Megger Chiller Cable - B150 | 1d | 2027-02-27 | 2027-02-27 | B155-1130 | -105d |
| B155-1160 |  | Penetrate MC into SWD - B150 | 1d | 2027-02-27 | 2027-02-27 | B155-1110 | -108d |
| B155-1170 |  | Penetrat MC into UPS - B150 | 1d | 2027-02-27 | 2027-02-27 | B155-1110 | -108d |
| B155-1210 |  | Pull Cable to Elec Room CRAH - B150 | 1d | 2027-02-27 | 2027-02-27 | B155-1200 | -106d |
| B155-1360 |  | Pull ATS Cable - B150 | 1d | 2027-02-27 | 2027-02-27 | B155-1350 | -108d |
| B155-1410 |  | Pull Cable from UPS to VFD - B150 | 1d | 2027-02-27 | 2027-02-27 | B155-1400 | -106d |
| B155-1460 |  | Megger MPZ Cable - B150 | 1d | 2027-02-27 | 2027-02-27 | B155-1450 | -105d |
| B155-1490 |  | All Skid Grounding - B150 | 2d | 2027-02-27 | 2027-03-01 | B155-1110 | -105d |
| B155-1520 |  | Megger MC Cable from UPS to MOD - B150 | 1d | 2027-02-27 | 2027-02-27 | B155-1190 | -107d |
| B155-1150 |  | Terminations at Chiller - B150 | 1d | 2027-03-01 | 2027-03-01 | B155-1140 | -105d |
| B155-1220 |  | Megger MC Cable from Skid to Elec Room CRAH - B150 | 1d | 2027-03-01 | 2027-03-01 | B155-1210 | -106d |
| B155-1240 |  | Megger MC Cable from Skid to MOD - B150 | 1d | 2027-03-01 | 2027-03-01 | B155-1180, B155-1170, B155-1160 | -108d |
| B155-1270 |  | Megger MC Cable from MOD-01 to Mechanical Equipment - B150 | 1d | 2027-03-01 | 2027-03-01 | B155-1250 | -108d |
| B155-1280 |  | Megger MC Cable from MOD-02 to Mechanical Equipment - B150 | 1d | 2027-03-01 | 2027-03-01 | B155-1260 | -108d |
| B155-1420 |  | Megger Cable from UPS to VFD - B150 | 1d | 2027-03-01 | 2027-03-01 | B155-1410 | -106d |
| B155-1470 |  | Terminate MC Feed at MPZ - B150 | 1d | 2027-03-01 | 2027-03-01 | B155-1460 | -105d |
| B155-1480 |  | Terminate Cables in VFD - B150 | 1d | 2027-03-01 | 2027-03-01 | B155-1420 SS | -105d |
| B155-1630 |  | Megger Cable at ATS - B150 | 1d | 2027-03-01 | 2027-03-01 | B155-1360 | -108d |
| B155-1230 |  | Terminate Elec Room CRAH - B150 | 1d | 2027-03-02 | 2027-03-02 | B155-1220 | -106d |
| B155-1290 |  | Terminate MOD-01 - B150 | 1d | 2027-03-02 | 2027-03-02 | B155-1240, B155-1270 | -108d |
| B155-1300 |  | Terminate MOD-02 - B150 | 1d | 2027-03-02 | 2027-03-02 | B155-1520, B155-1280 | -108d |
| B155-1310 |  | Terminate at Mechanical Equipment - B150 | 1d | 2027-03-02 | 2027-03-02 | B155-1300 SS, B155-1290 SS | -108d |
| B155-1370 |  | Terminate ATS Cable at Busplugs & ATSs - B150 | 2d | 2027-03-02 | 2027-03-03 | B155-1630 | -108d |
| B155-1430 |  | Terminate Cables in UPS - B150 | 1d | 2027-03-02 | 2027-03-02 | B155-1420 | -106d |
| B155-1570 |  | QC 2.2 checklist VFD - B150 | 1d | 2027-03-02 | 2027-03-02 | B155-1480 | -105d |
| B155-1610 |  | QC 2.2 checklist Chiller - B150 | 1d | 2027-03-02 | 2027-03-02 | B155-1150 | -105d |
| B155-1650 |  | QC 2.2 checklist MPZ - B150 | 1d | 2027-03-02 | 2027-03-02 | B155-1470 | -105d |
| B155-1050 |  | Cable bus Install - B150 | 2d | 2027-03-03 | 2027-03-04 | B155-1040, B155-1030 | -112d |
| B155-1320 |  | Mechanical Equipment/Tray Grounding - B150 | 2d | 2027-03-03 | 2027-03-04 | B155-1310 | -108d |
| B155-1540 |  | QC 2.2 checklist UPS - B150 | 1d | 2027-03-03 | 2027-03-03 | B155-1430 | -106d |
| B155-1550 |  | QC 2.2 checklist Elec Room CRAH - B150 | 1d | 2027-03-03 | 2027-03-03 | B155-1230 | -106d |
| B155-1560 |  | QC 2.2 Mechanical Equipment - B150 | 1d | 2027-03-03 | 2027-03-03 | B155-1310 | -106d |
| B155-1380 |  | ATS Lashing - B150 | 1d | 2027-03-04 | 2027-03-04 | B155-1370 | -108d |
| B155-1060 |  | Cable pulled to A & P Xfmrs - B150 | 1d | 2027-03-05 | 2027-03-05 | B155-1050 | -112d |
| B155-1500 |  | QC 2.2 checklist MOD-01 - B150 | 1d | 2027-03-05 | 2027-03-05 | B155-1320 | -108d |
| B155-1510 |  | QC 2.2 checklist MOD-02 - B150 | 1d | 2027-03-05 | 2027-03-05 | B155-1320 | -108d |
| B155-1530 |  | QC 2.2 checklist ATSs - B150 | 1d | 2027-03-05 | 2027-03-05 | B155-1380 | -108d |
| B155-1640 |  | QC 2.2 checklist Busplugs - B150 | 1d | 2027-03-05 | 2027-03-05 | B155-1530 SS | -108d |
| B155-1070 |  | Megger Cable Bus Cable - B150 | 1d | 2027-03-06 | 2027-03-06 | B155-1060 | -112d |
| B155-1080 |  | Cable Bus inspection and covers - B150 | 1d | 2027-03-06 | 2027-03-06 | B155-1070 SS | -110d |
| B155-1090 |  | Terminations at Xfmrs - B150 | 2d | 2027-03-08 | 2027-03-09 | B155-1070 | -112d |
| B155-1100 |  | Terminations at SWD - B150 | 2d | 2027-03-08 | 2027-03-09 | B155-1070 | -112d |
| B155-1580 |  | QC 2.2 checklist SWD - B150 | 1d | 2027-03-10 | 2027-03-10 | B155-1080, B155-1490, B155-1100 | -112d |
| B155-1600 |  | QC 2.2 checklist XFMR - B150 | 1d | 2027-03-10 | 2027-03-10 | B155-1090 | -112d |
| B155-1590 |  | Ready for FTE - B150 | 1d | 2027-03-11 | 2027-03-11 | B155-1650, B155-1640, B155-1610, B155-1600, B155-1580, B155-1570, B155-1560, B155-1550, B155-1540, B155-1530, B155-1510, B155-1500 | -112d |
|  | 3 | **C150** |  | 2027-02-22 | 2027-03-11 |  |  |
| C155-1330 |  | Busduct installed - C150 | 1d | 2027-02-22 | 2027-02-22 | B155-1330 SS | -115d |
| C155-1340 |  | Busplugs/Tap Boxes installed - C150 | 1d | 2027-02-23 | 2027-02-23 | C155-1330 | -115d |
| C155-1000 |  | Set Skid - C150 | 1d | 2027-02-24 | 2027-02-24 | B155-1000 SS, C155-1340, C155-1330 | -115d |
| C155-1010 |  | Set MODs - C150 | 2d | 2027-02-24 | 2027-02-25 | C155-1000 SS | -108d |
| C155-1030 |  | Cable bus Support installed - C150 | 2d | 2027-02-24 | 2027-02-25 | C155-1000 SS | -108d |
| C155-1120 |  | Chiller feed box and conduit complete - C150 | 2d | 2027-02-24 | 2027-02-25 | C155-1010 SS, C155-1000 SS | -105d |
| C155-1040 |  | SWD top covers cut out - C150 | 5d | 2027-02-25 | 2027-03-02 | C155-1000 | -112d |
| C155-1110 |  | Finish Cable Tray to Skid - C150 | 2d | 2027-02-25 | 2027-02-26 | C155-1000 | -108d |
| C155-1350 |  | Install conduit from Busplug to ATSs - C150 | 2d | 2027-02-25 | 2027-02-26 | C155-1000 | -108d |
| C155-1390 |  | Mount VFD Stand and VFD - C150 | 1d | 2027-02-25 | 2027-02-25 | C155-1000 | -106d |
| C155-1440 |  | Mount MPZ - C150 | 1d | 2027-02-25 | 2027-02-25 | C155-1000 | -105d |
| C155-1620 |  | Electrical Room CRAH Set - C150 | 1d | 2027-02-25 | 2027-02-25 | C155-1000 | -106d |
| C155-1130 |  | Pull Chiller wire - C150 | 1d | 2027-02-26 | 2027-02-26 | C155-1120, C155-1000 | -105d |
| C155-1180 |  | Penetrate MC into MOD-01 - C150 | 1d | 2027-02-26 | 2027-02-26 | C155-1010 | -107d |

| ID | WBS | Task | Duration | Start | Finish | Predecessors | Total float |
| --- | --- | --- | --- | --- | --- | --- | --- |
| C155-1190 |  | Penetrate MC into MOD-02 - C150 | 1d | 2027-02-26 | 2027-02-26 | C155-1010 | -107d |
| C155-1200 |  | Finish Conduit to Elec Room CRAH - C150 | 1d | 2027-02-26 | 2027-02-26 | C155-1620 | -106d |
| C155-1250 |  | Pull MC from MOD-01 to Mechanical Equipment - C150 | 2d | 2027-02-26 | 2027-02-27 | C155-1010 | -108d |
| C155-1260 |  | Pull MC from MOD-02 to Mechanical Equipment - C150 | 2d | 2027-02-26 | 2027-02-27 | C155-1010 | -108d |
| C155-1400 |  | Conduit from UPS to VFD - C150 | 1d | 2027-02-26 | 2027-02-26 | C155-1390 | -106d |
| C155-1450 |  | Penetrate MC Cable into MPZ - C150 | 1d | 2027-02-26 | 2027-02-26 | C155-1440 | -105d |
| C155-1140 |  | Megger Chiller Cable - C150 | 1d | 2027-02-27 | 2027-02-27 | C155-1130 | -105d |
| C155-1160 |  | Penetrate MC into SWD - C150 | 1d | 2027-02-27 | 2027-02-27 | C155-1110 | -108d |
| C155-1170 |  | Penetrat MC into UPS - C150 | 1d | 2027-02-27 | 2027-02-27 | C155-1110 | -108d |
| C155-1210 |  | Pull Cable to Elec Room CRAH - C150 | 1d | 2027-02-27 | 2027-02-27 | C155-1200 | -106d |
| C155-1360 |  | Pull ATS Cable - C150 | 1d | 2027-02-27 | 2027-02-27 | C155-1350 | -108d |
| C155-1410 |  | Pull Cable from UPS to VFD - C150 | 1d | 2027-02-27 | 2027-02-27 | C155-1400 | -106d |
| C155-1460 |  | Megger MPZ Cable - C150 | 1d | 2027-02-27 | 2027-02-27 | C155-1450 | -105d |
| C155-1490 |  | All Skid Grounding - C150 | 2d | 2027-02-27 | 2027-03-01 | C155-1110 | -105d |
| C155-1520 |  | Megger MC Cable from UPS to MOD - C150 | 1d | 2027-02-27 | 2027-02-27 | C155-1190 | -107d |
| C155-1150 |  | Terminations at Chiller - C150 | 1d | 2027-03-01 | 2027-03-01 | C155-1140 | -105d |
| C155-1220 |  | Megger MC Cable from Skid to Elec Room CRAH - C150 | 1d | 2027-03-01 | 2027-03-01 | C155-1210 | -106d |
| C155-1240 |  | Megger MC Cable from Skid to MOD - C150 | 1d | 2027-03-01 | 2027-03-01 | C155-1180, C155-1170, C155-1160 | -108d |
| C155-1270 |  | Megger MC Cable from MOD-01 to Mechanical Equipment - C150 | 1d | 2027-03-01 | 2027-03-01 | C155-1250 | -108d |
| C155-1280 |  | Megger MC Cable from MOD-02 to Mechanical Equipment - C150 | 1d | 2027-03-01 | 2027-03-01 | C155-1260 | -108d |
| C155-1420 |  | Megger Cable from UPS to VFD - C150 | 1d | 2027-03-01 | 2027-03-01 | C155-1410 | -106d |
| C155-1470 |  | Terminate MC Feed at MPZ - C150 | 1d | 2027-03-01 | 2027-03-01 | C155-1460 | -105d |
| C155-1480 |  | Terminate Cables in VFD - C150 | 1d | 2027-03-01 | 2027-03-01 | C155-1420 SS | -105d |
| C155-1630 |  | Megger Cable at ATS - C150 | 1d | 2027-03-01 | 2027-03-01 | C155-1360 | -108d |
| C155-1230 |  | Terminate Elec Room CRAH - C150 | 1d | 2027-03-02 | 2027-03-02 | C155-1220 | -106d |
| C155-1290 |  | Terminate MOD-01 - C150 | 1d | 2027-03-02 | 2027-03-02 | C155-1240, C155-1270 | -108d |
| C155-1300 |  | Terminate MOD-02 - C150 | 1d | 2027-03-02 | 2027-03-02 | C155-1520, C155-1280 | -108d |
| C155-1310 |  | Terminate at Mechanical Equipment - C150 | 1d | 2027-03-02 | 2027-03-02 | C155-1300 SS, C155-1290 SS | -108d |
| C155-1370 |  | Terminate ATS Cable at Busplugs & ATSs - C150 | 2d | 2027-03-02 | 2027-03-03 | C155-1630 | -108d |
| C155-1430 |  | Terminate Cables in UPS - C150 | 1d | 2027-03-02 | 2027-03-02 | C155-1420 | -106d |
| C155-1570 |  | QC 2.2 checklist VFD - C150 | 1d | 2027-03-02 | 2027-03-02 | C155-1480 | -105d |
| C155-1610 |  | QC 2.2 checklist Chiller - C150 | 1d | 2027-03-02 | 2027-03-02 | C155-1150 | -105d |
| C155-1650 |  | QC 2.2 checklist MPZ - C150 | 1d | 2027-03-02 | 2027-03-02 | C155-1470 | -105d |
| C155-1050 |  | Cable bus Install - C150 | 2d | 2027-03-03 | 2027-03-04 | C155-1040, C155-1030 | -112d |
| C155-1320 |  | Mechanical Equipment/Tray Grounding - C150 | 2d | 2027-03-03 | 2027-03-04 | C155-1310 | -108d |
| C155-1540 |  | QC 2.2 checklist UPS - C150 | 1d | 2027-03-03 | 2027-03-03 | C155-1430 | -106d |
| C155-1550 |  | QC 2.2 checklist Elec Room CRAH - C150 | 1d | 2027-03-03 | 2027-03-03 | C155-1230 | -106d |
| C155-1560 |  | QC 2.2 Mechanical Equipment - C150 | 1d | 2027-03-03 | 2027-03-03 | C155-1310 | -106d |
| C155-1380 |  | ATS Lashing - C150 | 1d | 2027-03-04 | 2027-03-04 | C155-1370 | -108d |
| C155-1060 |  | Cable pulled to A & P Xfmrs - C150 | 1d | 2027-03-05 | 2027-03-05 | C155-1050 | -112d |
| C155-1500 |  | QC 2.2 checklist MOD-01 - C150 | 1d | 2027-03-05 | 2027-03-05 | C155-1320 | -108d |
| C155-1510 |  | QC 2.2 checklist MOD-02 - C150 | 1d | 2027-03-05 | 2027-03-05 | C155-1320 | -108d |
| C155-1530 |  | QC 2.2 checklist ATSs - C150 | 1d | 2027-03-05 | 2027-03-05 | C155-1380 | -108d |
| C155-1640 |  | QC 2.2 checklist Busplugs - C150 | 1d | 2027-03-05 | 2027-03-05 | C155-1530 SS | -108d |
| C155-1070 |  | Megger Cable Bus Cable - C150 | 1d | 2027-03-06 | 2027-03-06 | C155-1060 | -112d |
| C155-1080 |  | Cable Bus inspection and covers - C150 | 1d | 2027-03-06 | 2027-03-06 | C155-1070 SS | -110d |
| C155-1090 |  | Terminations at Xfmrs - C150 | 2d | 2027-03-08 | 2027-03-09 | C155-1070 | -112d |
| C155-1100 |  | Terminations at SWD - C150 | 2d | 2027-03-08 | 2027-03-09 | C155-1070 | -112d |
| C155-1580 |  | QC 2.2 checklist SWD - C150 | 1d | 2027-03-10 | 2027-03-10 | C155-1080, C155-1490, C155-1100 | -112d |
| C155-1600 |  | QC 2.2 checklist XFMR - C150 | 1d | 2027-03-10 | 2027-03-10 | C155-1090 | -112d |
| C155-1590 |  | Ready for FTE - C150 | 1d | 2027-03-11 | 2027-03-11 | C155-1650, C155-1640, C155-1610, C155-1600, C155-1580, C155-1570, C155-1560, C155-1550, C155-1540, C155-1530, C155-1510, C155-1500 | -112d |
|  | 4 | **D150** |  | 2027-02-22 | 2027-03-11 |  |  |
| D155-1330 |  | Busduct installed - D150 | 1d | 2027-02-22 | 2027-02-22 | C155-1330 SS | -115d |
| D155-1340 |  | Busplugs/Tap Boxes installed - D150 | 1d | 2027-02-23 | 2027-02-23 | D155-1330 | -115d |
| D155-1000 |  | Set Skid - D150 | 1d | 2027-02-24 | 2027-02-24 | C155-1000 SS, D155-1340, D155-1330 | -115d |
| D155-1010 |  | Set MODs - D150 | 2d | 2027-02-24 | 2027-02-25 | D155-1000 SS | -108d |
| D155-1030 |  | Cable bus Support installed - D150 | 2d | 2027-02-24 | 2027-02-25 | D155-1000 SS | -108d |
| D155-1120 |  | Chiller feed box and conduit complete - D150 | 2d | 2027-02-24 | 2027-02-25 | D155-1010 SS, D155-1000 SS | -105d |
| D155-1040 |  | SWD top covers cut out - D150 | 5d | 2027-02-25 | 2027-03-02 | D155-1000 | -112d |
| D155-1110 |  | Finish Cable Tray to Skid - D150 | 2d | 2027-02-25 | 2027-02-26 | D155-1000 | -108d |
| D155-1350 |  | Install conduit from Busplug to ATSs - D150 | 2d | 2027-02-25 | 2027-02-26 | D155-1000 | -108d |
| D155-1390 |  | Mount VFD Stand and VFD - D150 | 1d | 2027-02-25 | 2027-02-25 | D155-1000 | -106d |
| D155-1440 |  | Mount MPZ - D150 | 1d | 2027-02-25 | 2027-02-25 | D155-1000 | -105d |
| D155-1620 |  | Electrical Room CRAH Set - D150 | 1d | 2027-02-25 | 2027-02-25 | D155-1000 | -106d |
| D155-1130 |  | Pull Chiller wire - D150 | 1d | 2027-02-26 | 2027-02-26 | D155-1120, D155-1000 | -105d |
| D155-1180 |  | Penetrate MC into MOD-01 - D150 | 1d | 2027-02-26 | 2027-02-26 | D155-1010 | -107d |
| D155-1190 |  | Penetrate MC into MOD-02 - D150 | 1d | 2027-02-26 | 2027-02-26 | D155-1010 | -107d |
| D155-1200 |  | Finish Conduit to Elec Room CRAH - D150 | 1d | 2027-02-26 | 2027-02-26 | D155-1620 | -106d |
| D155-1250 |  | Pull MC from MOD-01 to Mechanical Equipment - D150 | 2d | 2027-02-26 | 2027-02-27 | D155-1010 | -108d |
| D155-1260 |  | Pull MC from MOD-02 to Mechanical Equipment - D150 | 2d | 2027-02-26 | 2027-02-27 | D155-1010 | -108d |

| ID | WBS | Task | Duration | Start | Finish | Predecessors | Total float |
| --- | --- | --- | --- | --- | --- | --- | --- |
| D155-1400 |  | Conduit from UPS to VFD - D150 | 1d | 2027-02-26 | 2027-02-26 | D155-1390 | -106d |
| D155-1450 |  | Penetrate MC Cable into MPZ - D150 | 1d | 2027-02-26 | 2027-02-26 | D155-1440 | -105d |
| D155-1140 |  | Megger Chiller Cable - D150 | 1d | 2027-02-27 | 2027-02-27 | D155-1130 | -105d |
| D155-1160 |  | Penetrate MC into SWD - D150 | 1d | 2027-02-27 | 2027-02-27 | D155-1110 | -108d |
| D155-1170 |  | Penetrat MC into UPS - D150 | 1d | 2027-02-27 | 2027-02-27 | D155-1110 | -108d |
| D155-1210 |  | Pull Cable to Elec Room CRAH - D150 | 1d | 2027-02-27 | 2027-02-27 | D155-1200 | -106d |
| D155-1360 |  | Pull ATS Cable - D150 | 1d | 2027-02-27 | 2027-02-27 | D155-1350 | -108d |
| D155-1410 |  | Pull Cable from UPS to VFD - D150 | 1d | 2027-02-27 | 2027-02-27 | D155-1400 | -106d |
| D155-1460 |  | Megger MPZ Cable - D150 | 1d | 2027-02-27 | 2027-02-27 | D155-1450 | -105d |
| D155-1490 |  | All Skid Grounding - D150 | 2d | 2027-02-27 | 2027-03-01 | D155-1110 | -105d |
| D155-1520 |  | Megger MC Cable from UPS to MOD - D150 | 1d | 2027-02-27 | 2027-02-27 | D155-1190 | -107d |
| D155-1150 |  | Terminations at Chiller - D150 | 1d | 2027-03-01 | 2027-03-01 | D155-1140 | -105d |
| D155-1220 |  | Megger MC Cable from Skid to Elec Room CRAH - D150 | 1d | 2027-03-01 | 2027-03-01 | D155-1210 | -106d |
| D155-1240 |  | Megger MC Cable from Skid to MOD - D150 | 1d | 2027-03-01 | 2027-03-01 | D155-1180, D155-1170, D155-1160 | -108d |
| D155-1270 |  | Megger MC Cable from MOD-01 to Mechanical Equipment - D150 | 1d | 2027-03-01 | 2027-03-01 | D155-1250 | -108d |
| D155-1280 |  | Megger MC Cable from MOD-02 to Mechanical Equipment - D150 | 1d | 2027-03-01 | 2027-03-01 | D155-1260 | -108d |
| D155-1420 |  | Megger Cable from UPS to VFD - D150 | 1d | 2027-03-01 | 2027-03-01 | D155-1410 | -106d |
| D155-1470 |  | Terminate MC Feed at MPZ - D150 | 1d | 2027-03-01 | 2027-03-01 | D155-1460 | -105d |
| D155-1480 |  | Terminate Cables in VFD - D150 | 1d | 2027-03-01 | 2027-03-01 | D155-1420 SS | -105d |
| D155-1630 |  | Megger Cable at ATS - D150 | 1d | 2027-03-01 | 2027-03-01 | D155-1360 | -108d |
| D155-1230 |  | Terminate Elec Room CRAH - D150 | 1d | 2027-03-02 | 2027-03-02 | D155-1220 | -106d |
| D155-1290 |  | Terminate MOD-01 - D150 | 1d | 2027-03-02 | 2027-03-02 | D155-1240, D155-1270 | -108d |
| D155-1300 |  | Terminate MOD-02 - D150 | 1d | 2027-03-02 | 2027-03-02 | D155-1520, D155-1280 | -108d |
| D155-1310 |  | Terminate at Mechanical Equipment - D150 | 1d | 2027-03-02 | 2027-03-02 | D155-1300 SS, D155-1290 SS | -108d |
| D155-1370 |  | Terminate ATS Cable at Busplugs & ATSs - D150 | 2d | 2027-03-02 | 2027-03-03 | D155-1630 | -108d |
| D155-1430 |  | Terminate Cables in UPS - D150 | 1d | 2027-03-02 | 2027-03-02 | D155-1420 | -106d |
| D155-1570 |  | QC 2.2 checklist VFD - D150 | 1d | 2027-03-02 | 2027-03-02 | D155-1480 | -105d |
| D155-1610 |  | QC 2.2 checklist Chiller - D150 | 1d | 2027-03-02 | 2027-03-02 | D155-1150 | -105d |
| D155-1650 |  | QC 2.2 checklist MPZ - D150 | 1d | 2027-03-02 | 2027-03-02 | D155-1470 | -105d |
| D155-1050 |  | Cable bus Install - D150 | 2d | 2027-03-03 | 2027-03-04 | D155-1040, D155-1030 | -112d |
| D155-1320 |  | Mechanical Equipment/Tray Grounding - D150 | 2d | 2027-03-03 | 2027-03-04 | D155-1310 | -108d |
| D155-1540 |  | QC 2.2 checklist UPS - D150 | 1d | 2027-03-03 | 2027-03-03 | D155-1430 | -106d |
| D155-1550 |  | QC 2.2 checklist Elec Room CRAH - D150 | 1d | 2027-03-03 | 2027-03-03 | D155-1230 | -106d |
| D155-1560 |  | QC 2.2 Mechanical Equipment - D150 | 1d | 2027-03-03 | 2027-03-03 | D155-1310 | -106d |
| D155-1380 |  | ATS Lashing - D150 | 1d | 2027-03-04 | 2027-03-04 | D155-1370 | -108d |
| D155-1060 |  | Cable pulled to A & P Xfmrs - D150 | 1d | 2027-03-05 | 2027-03-05 | D155-1050 | -112d |
| D155-1500 |  | QC 2.2 checklist MOD-01 - D150 | 1d | 2027-03-05 | 2027-03-05 | D155-1320 | -108d |
| D155-1510 |  | QC 2.2 checklist MOD-02 - D150 | 1d | 2027-03-05 | 2027-03-05 | D155-1320 | -108d |
| D155-1530 |  | QC 2.2 checklist ATSs - D150 | 1d | 2027-03-05 | 2027-03-05 | D155-1380 | -108d |
| D155-1640 |  | QC 2.2 checklist Busplugs - D150 | 1d | 2027-03-05 | 2027-03-05 | D155-1530 SS | -108d |
| D155-1070 |  | Megger Cable Bus Cable - D150 | 1d | 2027-03-06 | 2027-03-06 | D155-1060 | -112d |
| D155-1080 |  | Cable Bus inspection and covers - D150 | 1d | 2027-03-06 | 2027-03-06 | D155-1070 SS | -110d |
| D155-1090 |  | Terminations at Xfmrs - D150 | 2d | 2027-03-08 | 2027-03-09 | D155-1070 | -112d |
| D155-1100 |  | Terminations at SWD - D150 | 2d | 2027-03-08 | 2027-03-09 | D155-1070 | -112d |
| D155-1580 |  | QC 2.2 checklist SWD - D150 | 1d | 2027-03-10 | 2027-03-10 | D155-1080, D155-1490, D155-1100 | -112d |
| D155-1600 |  | QC 2.2 checklist XFMR - D150 | 1d | 2027-03-10 | 2027-03-10 | D155-1090 | -112d |
| D155-1590 |  | Ready for FTE - D150 | 1d | 2027-03-11 | 2027-03-11 | D155-1650, D155-1640, D155-1610, D155-1600, D155-1580, D155-1570, D155-1560, D155-1550, D155-1540, D155-1530, D155-1510, D155-1500 | -112d |
|  | 5 | **E150** |  | 2027-02-23 | 2027-03-12 |  |  |
| E155-1330 |  | Busduct installed - E150 | 1d | 2027-02-23 | 2027-02-23 | D155-1330 | -115d |
| E155-1340 |  | Busplugs/Tap Boxes installed - E150 | 1d | 2027-02-24 | 2027-02-24 | E155-1330 | -115d |
| E155-1000 |  | Set Skid - E150 | 1d | 2027-02-25 | 2027-02-25 | D155-1000, E155-1340, E155-1330 | -115d |
| E155-1010 |  | Set MODs - E150 | 2d | 2027-02-25 | 2027-02-26 | E155-1000 SS | -109d |
| E155-1030 |  | Cable bus Support installed - E150 | 2d | 2027-02-25 | 2027-02-26 | E155-1000 SS | -109d |
| E155-1120 |  | Chiller feed box and conduit complete - E150 | 2d | 2027-02-25 | 2027-02-26 | E155-1010 SS, E155-1000 SS | -106d |
| E155-1040 |  | SWD top covers cut out - E150 | 5d | 2027-02-26 | 2027-03-03 | E155-1000 | -113d |
| E155-1110 |  | Finish Cable Tray to Skid - E150 | 2d | 2027-02-26 | 2027-02-27 | E155-1000 | -109d |
| E155-1350 |  | Install conduit from Busplug to ATSs - E150 | 2d | 2027-02-26 | 2027-02-27 | E155-1000 | -109d |
| E155-1390 |  | Mount VFD Stand and VFD - E150 | 1d | 2027-02-26 | 2027-02-26 | E155-1000 | -107d |
| E155-1440 |  | Mount MPZ - E150 | 1d | 2027-02-26 | 2027-02-26 | E155-1000 | -106d |
| E155-1620 |  | Electrical Room CRAH Set - E150 | 1d | 2027-02-26 | 2027-02-26 | E155-1000 | -107d |
| E155-1130 |  | Pull Chiller wire - E150 | 1d | 2027-02-27 | 2027-02-27 | E155-1120, E155-1000 | -106d |
| E155-1180 |  | Penetrate MC into MOD-01 - E150 | 1d | 2027-02-27 | 2027-02-27 | E155-1010 | -108d |
| E155-1190 |  | Penetrate MC into MOD-02 - E150 | 1d | 2027-02-27 | 2027-02-27 | E155-1010 | -108d |
| E155-1200 |  | Finish Conduit to Elec Room CRAH - E150 | 1d | 2027-02-27 | 2027-02-27 | E155-1620 | -107d |
| E155-1250 |  | Pull MC from MOD-01 to Mechanical Equipment - E150 | 2d | 2027-02-27 | 2027-03-01 | E155-1010 | -109d |
| E155-1260 |  | Pull MC from MOD-02 to Mechanical Equipment - E150 | 2d | 2027-02-27 | 2027-03-01 | E155-1010 | -109d |
| E155-1400 |  | Conduit from UPS to VFD - E150 | 1d | 2027-02-27 | 2027-02-27 | E155-1390 | -107d |
| E155-1450 |  | Penetrate MC Cable into MPZ - E150 | 1d | 2027-02-27 | 2027-02-27 | E155-1440 | -106d |
| E155-1140 |  | Megger Chiller Cable - E150 | 1d | 2027-03-01 | 2027-03-01 | E155-1130 | -106d |
| E155-1160 |  | Penetrate MC into SWD - E150 | 1d | 2027-03-01 | 2027-03-01 | E155-1110 | -109d |

| ID | WBS | Task | Duration | Start | Finish | Predecessors | Total float |
| --- | --- | --- | --- | --- | --- | --- | --- |
| E155-1170 |  | Penetrat MC into UPS - E150 | 1d | 2027-03-01 | 2027-03-01 | E155-1110 | -109d |
| E155-1210 |  | Pull Cable to Elec Room CRAH - E150 | 1d | 2027-03-01 | 2027-03-01 | E155-1200 | -107d |
| E155-1360 |  | Pull ATS Cable - E150 | 1d | 2027-03-01 | 2027-03-01 | E155-1350 | -109d |
| E155-1410 |  | Pull Cable from UPS to VFD - E150 | 1d | 2027-03-01 | 2027-03-01 | E155-1400 | -107d |
| E155-1460 |  | Megger MPZ Cable - E150 | 1d | 2027-03-01 | 2027-03-01 | E155-1450 | -106d |
| E155-1490 |  | All Skid Grounding - E150 | 2d | 2027-03-01 | 2027-03-02 | E155-1110 | -106d |
| E155-1520 |  | Megger MC Cable from UPS to MOD - E150 | 1d | 2027-03-01 | 2027-03-01 | E155-1190 | -108d |
| E155-1150 |  | Terminations at Chiller - E150 | 1d | 2027-03-02 | 2027-03-02 | E155-1140 | -106d |
| E155-1220 |  | Megger MC Cable from Skid to Elec Room CRAH - E150 | 1d | 2027-03-02 | 2027-03-02 | E155-1210 | -107d |
| E155-1240 |  | Megger MC Cable from Skid to MOD - E150 | 1d | 2027-03-02 | 2027-03-02 | E155-1180, E155-1170, E155-1160 | -109d |
| E155-1270 |  | Megger MC Cable from MOD-01 to Mechanical Equipment - E150 | 1d | 2027-03-02 | 2027-03-02 | E155-1250 | -109d |
| E155-1280 |  | Megger MC Cable from MOD-02 to Mechanical Equipment - E150 | 1d | 2027-03-02 | 2027-03-02 | E155-1260 | -109d |
| E155-1420 |  | Megger Cable from UPS to VFD - E150 | 1d | 2027-03-02 | 2027-03-02 | E155-1410 | -107d |
| E155-1470 |  | Terminate MC Feed at MPZ - E150 | 1d | 2027-03-02 | 2027-03-02 | E155-1460 | -106d |
| E155-1480 |  | Terminate Cables in VFD - E150 | 1d | 2027-03-02 | 2027-03-02 | E155-1420 SS | -106d |
| E155-1630 |  | Megger Cable at ATS - E150 | 1d | 2027-03-02 | 2027-03-02 | E155-1360 | -109d |
| E155-1230 |  | Terminate Elec Room CRAH - E150 | 1d | 2027-03-03 | 2027-03-03 | E155-1220 | -107d |
| E155-1290 |  | Terminate MOD-01 - E150 | 1d | 2027-03-03 | 2027-03-03 | E155-1240, E155-1270 | -109d |
| E155-1300 |  | Terminate MOD-02 - E150 | 1d | 2027-03-03 | 2027-03-03 | E155-1520, E155-1280 | -109d |
| E155-1310 |  | Terminate at Mechanical Equipment - E150 | 1d | 2027-03-03 | 2027-03-03 | E155-1300 SS, E155-1290 SS | -109d |
| E155-1370 |  | Terminate ATS Cable at Busplugs & ATSs - E150 | 2d | 2027-03-03 | 2027-03-04 | E155-1630 | -109d |
| E155-1430 |  | Terminate Cables in UPS - E150 | 1d | 2027-03-03 | 2027-03-03 | E155-1420 | -107d |
| E155-1570 |  | QC 2.2 checklist VFD - E150 | 1d | 2027-03-03 | 2027-03-03 | E155-1480 | -106d |
| E155-1610 |  | QC 2.2 checklist Chiller - E150 | 1d | 2027-03-03 | 2027-03-03 | E155-1150 | -106d |
| E155-1650 |  | QC 2.2 checklist MPZ - E150 | 1d | 2027-03-03 | 2027-03-03 | E155-1470 | -106d |
| E155-1050 |  | Cable bus Install - E150 | 2d | 2027-03-04 | 2027-03-05 | E155-1040, E155-1030 | -113d |
| E155-1320 |  | Mechanical Equipment/Tray Grounding - E150 | 2d | 2027-03-04 | 2027-03-05 | E155-1310 | -109d |
| E155-1540 |  | QC 2.2 checklist UPS - E150 | 1d | 2027-03-04 | 2027-03-04 | E155-1430 | -107d |
| E155-1550 |  | QC 2.2 checklist Elec Room CRAH - E150 | 1d | 2027-03-04 | 2027-03-04 | E155-1230 | -107d |
| E155-1560 |  | QC 2.2 Mechanical Equipment - E150 | 1d | 2027-03-04 | 2027-03-04 | E155-1310 | -107d |
| E155-1380 |  | ATS Lashing - E150 | 1d | 2027-03-05 | 2027-03-05 | E155-1370 | -109d |
| E155-1060 |  | Cable pulled to A & P Xfmrs - E150 | 1d | 2027-03-06 | 2027-03-06 | E155-1050 | -113d |
| E155-1500 |  | QC 2.2 checklist MOD-01 - E150 | 1d | 2027-03-06 | 2027-03-06 | E155-1320 | -109d |
| E155-1510 |  | QC 2.2 checklist MOD-02 - E150 | 1d | 2027-03-06 | 2027-03-06 | E155-1320 | -109d |
| E155-1530 |  | QC 2.2 checklist ATSs - E150 | 1d | 2027-03-06 | 2027-03-06 | E155-1380 | -109d |
| E155-1640 |  | QC 2.2 checklist Busplugs - E150 | 1d | 2027-03-06 | 2027-03-06 | E155-1530 SS | -109d |
| E155-1070 |  | Megger Cable Bus Cable - E150 | 1d | 2027-03-08 | 2027-03-08 | E155-1060 | -113d |
| E155-1080 |  | Cable Bus inspection and covers - E150 | 1d | 2027-03-08 | 2027-03-08 | E155-1070 SS | -111d |
| E155-1090 |  | Terminations at Xfmrs - E150 | 2d | 2027-03-09 | 2027-03-10 | E155-1070 | -113d |
| E155-1100 |  | Terminations at SWD - E150 | 2d | 2027-03-09 | 2027-03-10 | E155-1070 | -113d |
| E155-1580 |  | QC 2.2 checklist SWD - E150 | 1d | 2027-03-11 | 2027-03-11 | E155-1080, E155-1490, E155-1100 | -113d |
| E155-1600 |  | QC 2.2 checklist XFMR - E150 | 1d | 2027-03-11 | 2027-03-11 | E155-1090 | -113d |
| E155-1590 |  | Ready for FTE - E150 | 1d | 2027-03-12 | 2027-03-12 | E155-1650, E155-1640, E155-1610, E155-1600, E155-1580, E155-1570, E155-1560, E155-1550, E155-1540, E155-1530, E155-1510, E155-1500 | -113d |
|  | 6 | **F150** |  | 2027-02-23 | 2027-03-12 |  |  |
| F155-1330 |  | Busduct installed - F150 | 1d | 2027-02-23 | 2027-02-23 | E155-1330 SS | -115d |
| F155-1340 |  | Busplugs/Tap Boxes installed - F150 | 1d | 2027-02-24 | 2027-02-24 | F155-1330 | -115d |
| F155-1000 |  | Set Skid - F150 | 1d | 2027-02-25 | 2027-02-25 | E155-1000 SS, F155-1340, F155-1330 | -115d |
| F155-1010 |  | Set MODs - F150 | 2d | 2027-02-25 | 2027-02-26 | F155-1000 SS | -109d |
| F155-1030 |  | Cable bus Support installed - F150 | 2d | 2027-02-25 | 2027-02-26 | F155-1000 SS | -109d |
| F155-1120 |  | Chiller feed box and conduit complete - F150 | 2d | 2027-02-25 | 2027-02-26 | F155-1010 SS, F155-1000 SS | -106d |
| F155-1040 |  | SWD top covers cut out - F150 | 5d | 2027-02-26 | 2027-03-03 | F155-1000 | -113d |
| F155-1110 |  | Finish Cable Tray to Skid - F150 | 2d | 2027-02-26 | 2027-02-27 | F155-1000 | -109d |
| F155-1350 |  | Install conduit from Busplug to ATSs - F150 | 2d | 2027-02-26 | 2027-02-27 | F155-1000 | -109d |
| F155-1390 |  | Mount VFD Stand and VFD - F150 | 1d | 2027-02-26 | 2027-02-26 | F155-1000 | -107d |
| F155-1440 |  | Mount MPZ - F150 | 1d | 2027-02-26 | 2027-02-26 | F155-1000 | -106d |
| F155-1620 |  | Electrical Room CRAH Set - F150 | 1d | 2027-02-26 | 2027-02-26 | F155-1000 | -107d |
| F155-1130 |  | Pull Chiller wire - F150 | 1d | 2027-02-27 | 2027-02-27 | F155-1120, F155-1000 | -106d |
| F155-1180 |  | Penetrate MC into MOD-01 - F150 | 1d | 2027-02-27 | 2027-02-27 | F155-1010 | -108d |
| F155-1190 |  | Penetrate MC into MOD-02 - F150 | 1d | 2027-02-27 | 2027-02-27 | F155-1010 | -108d |
| F155-1200 |  | Finish Conduit to Elec Room CRAH - F150 | 1d | 2027-02-27 | 2027-02-27 | F155-1620 | -107d |
| F155-1250 |  | Pull MC from MOD-01 to Mechanical Equipment - F150 | 2d | 2027-02-27 | 2027-03-01 | F155-1010 | -109d |
| F155-1260 |  | Pull MC from MOD-02 to Mechanical Equipment - F150 | 2d | 2027-02-27 | 2027-03-01 | F155-1010 | -109d |
| F155-1400 |  | Conduit from UPS to VFD - F150 | 1d | 2027-02-27 | 2027-02-27 | F155-1390 | -107d |
| F155-1450 |  | Penetrate MC Cable into MPZ - F150 | 1d | 2027-02-27 | 2027-02-27 | F155-1440 | -106d |
| F155-1140 |  | Megger Chiller Cable - F150 | 1d | 2027-03-01 | 2027-03-01 | F155-1130 | -106d |
| F155-1160 |  | Penetrate MC into SWD - F150 | 1d | 2027-03-01 | 2027-03-01 | F155-1110 | -109d |
| F155-1170 |  | Penetrat MC into UPS - F150 | 1d | 2027-03-01 | 2027-03-01 | F155-1110 | -109d |
| F155-1210 |  | Pull Cable to Elec Room CRAH - F150 | 1d | 2027-03-01 | 2027-03-01 | F155-1200 | -107d |
| F155-1360 |  | Pull ATS Cable - F150 | 1d | 2027-03-01 | 2027-03-01 | F155-1350 | -109d |
| F155-1410 |  | Pull Cable from UPS to VFD - F150 | 1d | 2027-03-01 | 2027-03-01 | F155-1400 | -107d |

| ID | WBS | Task | Duration | Start | Finish | Predecessors | Total float |
| --- | --- | --- | --- | --- | --- | --- | --- |
| F155-1460 |  | Megger MPZ Cable - F150 | 1d | 2027-03-01 | 2027-03-01 | F155-1450 | -106d |
| F155-1490 |  | All Skid Grounding - F150 | 2d | 2027-03-01 | 2027-03-02 | F155-1110 | -106d |
| F155-1520 |  | Megger MC Cable from UPS to MOD - F150 | 1d | 2027-03-01 | 2027-03-01 | F155-1190 | -108d |
| F155-1150 |  | Terminations at Chiller - F150 | 1d | 2027-03-02 | 2027-03-02 | F155-1140 | -106d |
| F155-1220 |  | Megger MC Cable from Skid to Elec Room CRAH - F150 | 1d | 2027-03-02 | 2027-03-02 | F155-1210 | -107d |
| F155-1240 |  | Megger MC Cable from Skid to MOD - F150 | 1d | 2027-03-02 | 2027-03-02 | F155-1180, F155-1170, F155-1160 | -109d |
| F155-1270 |  | Megger MC Cable from MOD-01 to Mechanical Equipment - F150 | 1d | 2027-03-02 | 2027-03-02 | F155-1250 | -109d |
| F155-1280 |  | Megger MC Cable from MOD-02 to Mechanical Equipment - F150 | 1d | 2027-03-02 | 2027-03-02 | F155-1260 | -109d |
| F155-1420 |  | Megger Cable from UPS to VFD - F150 | 1d | 2027-03-02 | 2027-03-02 | F155-1410 | -107d |
| F155-1470 |  | Terminate MC Feed at MPZ - F150 | 1d | 2027-03-02 | 2027-03-02 | F155-1460 | -106d |
| F155-1480 |  | Terminate Cables in VFD - F150 | 1d | 2027-03-02 | 2027-03-02 | F155-1420 SS | -106d |
| F155-1630 |  | Megger Cable at ATS - F150 | 1d | 2027-03-02 | 2027-03-02 | F155-1360 | -109d |
| F155-1230 |  | Terminate Elec Room CRAH - F150 | 1d | 2027-03-03 | 2027-03-03 | F155-1220 | -107d |
| F155-1290 |  | Terminate MOD-01 - F150 | 1d | 2027-03-03 | 2027-03-03 | F155-1240, F155-1270 | -109d |
| F155-1300 |  | Terminate MOD-02 - F150 | 1d | 2027-03-03 | 2027-03-03 | F155-1520, F155-1280 | -109d |
| F155-1310 |  | Terminate at Mechanical Equipment - F150 | 1d | 2027-03-03 | 2027-03-03 | F155-1300 SS, F155-1290 SS | -109d |
| F155-1370 |  | Terminate ATS Cable at Busplugs & ATSs - F150 | 2d | 2027-03-03 | 2027-03-04 | F155-1630 | -109d |
| F155-1430 |  | Terminate Cables in UPS - F150 | 1d | 2027-03-03 | 2027-03-03 | F155-1420 | -107d |
| F155-1570 |  | QC 2.2 checklist VFD - F150 | 1d | 2027-03-03 | 2027-03-03 | F155-1480 | -106d |
| F155-1610 |  | QC 2.2 checklist Chiller - F150 | 1d | 2027-03-03 | 2027-03-03 | F155-1150 | -106d |
| F155-1650 |  | QC 2.2 checklist MPZ - F150 | 1d | 2027-03-03 | 2027-03-03 | F155-1470 | -106d |
| F155-1050 |  | Cable bus Install - F150 | 2d | 2027-03-04 | 2027-03-05 | F155-1040, F155-1030 | -113d |
| F155-1320 |  | Mechanical Equipment/Tray Grounding - F150 | 2d | 2027-03-04 | 2027-03-05 | F155-1310 | -109d |
| F155-1540 |  | QC 2.2 checklist UPS - F150 | 1d | 2027-03-04 | 2027-03-04 | F155-1430 | -107d |
| F155-1550 |  | QC 2.2 checklist Elec Room CRAH - F150 | 1d | 2027-03-04 | 2027-03-04 | F155-1230 | -107d |
| F155-1560 |  | QC 2.2 Mechanical Equipment - F150 | 1d | 2027-03-04 | 2027-03-04 | F155-1310 | -107d |
| F155-1380 |  | ATS Lashing - F150 | 1d | 2027-03-05 | 2027-03-05 | F155-1370 | -109d |
| F155-1060 |  | Cable pulled to A & P Xfmrs - F150 | 1d | 2027-03-06 | 2027-03-06 | F155-1050 | -113d |
| F155-1500 |  | QC 2.2 checklist MOD-01 - F150 | 1d | 2027-03-06 | 2027-03-06 | F155-1320 | -109d |
| F155-1510 |  | QC 2.2 checklist MOD-02 - F150 | 1d | 2027-03-06 | 2027-03-06 | F155-1320 | -109d |
| F155-1530 |  | QC 2.2 checklist ATSs - F150 | 1d | 2027-03-06 | 2027-03-06 | F155-1380 | -109d |
| F155-1640 |  | QC 2.2 checklist Busplugs - F150 | 1d | 2027-03-06 | 2027-03-06 | F155-1530 SS | -109d |
| F155-1070 |  | Megger Cable Bus Cable - F150 | 1d | 2027-03-08 | 2027-03-08 | F155-1060 | -113d |
| F155-1080 |  | Cable Bus inspection and covers - F150 | 1d | 2027-03-08 | 2027-03-08 | F155-1070 SS | -111d |
| F155-1090 |  | Terminations at Xfmrs - F150 | 2d | 2027-03-09 | 2027-03-10 | F155-1070 | -113d |
| F155-1100 |  | Terminations at SWD - F150 | 2d | 2027-03-09 | 2027-03-10 | F155-1070 | -113d |
| F155-1580 |  | QC 2.2 checklist SWD - F150 | 1d | 2027-03-11 | 2027-03-11 | F155-1080, F155-1490, F155-1100 | -113d |
| F155-1600 |  | QC 2.2 checklist XFMR - F150 | 1d | 2027-03-11 | 2027-03-11 | F155-1090 | -113d |
| F155-1590 |  | Ready for FTE - F150 | 1d | 2027-03-12 | 2027-03-12 | F155-1650, F155-1640, F155-1610, F155-1600, F155-1580, F155-1570, F155-1560, F155-1550, F155-1540, F155-1530, F155-1510, F155-1500 | -113d |
|  | 7 | **G150** |  | 2027-02-23 | 2027-03-12 |  |  |
| G155-1330 |  | Busduct installed - G150 | 1d | 2027-02-23 | 2027-02-23 | F155-1330 SS | -115d |
| G155-1340 |  | Busplugs/Tap Boxes installed - G150 | 1d | 2027-02-24 | 2027-02-24 | G155-1330 | -115d |
| G155-1000 |  | Set Skid - G150 | 1d | 2027-02-25 | 2027-02-25 | F155-1000 SS, G155-1340, G155-1330 | -115d |
| G155-1010 |  | Set MODs - G150 | 2d | 2027-02-25 | 2027-02-26 | G155-1000 SS | -109d |
| G155-1030 |  | Cable bus Support installed - G150 | 2d | 2027-02-25 | 2027-02-26 | G155-1000 SS | -109d |
| G155-1120 |  | Chiller feed box and conduit complete - G150 | 2d | 2027-02-25 | 2027-02-26 | G155-1010 SS, G155-1000 SS | -106d |
| G155-1040 |  | SWD top covers cut out - G150 | 5d | 2027-02-26 | 2027-03-03 | G155-1000 | -113d |
| G155-1110 |  | Finish Cable Tray to Skid - G150 | 2d | 2027-02-26 | 2027-02-27 | G155-1000 | -109d |
| G155-1350 |  | Install conduit from Busplug to ATSs - G150 | 2d | 2027-02-26 | 2027-02-27 | G155-1000 | -109d |
| G155-1390 |  | Mount VFD Stand and VFD - G150 | 1d | 2027-02-26 | 2027-02-26 | G155-1000 | -107d |
| G155-1440 |  | Mount MPZ - G150 | 1d | 2027-02-26 | 2027-02-26 | G155-1000 | -106d |
| G155-1620 |  | Electrical Room CRAH Set - G150 | 1d | 2027-02-26 | 2027-02-26 | G155-1000 | -107d |
| G155-1130 |  | Pull Chiller wire - G150 | 1d | 2027-02-27 | 2027-02-27 | G155-1120, G155-1000 | -106d |
| G155-1180 |  | Penetrate MC into MOD-01 - G150 | 1d | 2027-02-27 | 2027-02-27 | G155-1010 | -108d |
| G155-1190 |  | Penetrate MC into MOD-02 - G150 | 1d | 2027-02-27 | 2027-02-27 | G155-1010 | -108d |
| G155-1200 |  | Finish Conduit to Elec Room CRAH - G150 | 1d | 2027-02-27 | 2027-02-27 | G155-1620 | -107d |
| G155-1250 |  | Pull MC from MOD-01 to Mechanical Equipment - G150 | 2d | 2027-02-27 | 2027-03-01 | G155-1010 | -109d |
| G155-1260 |  | Pull MC from MOD-02 to Mechanical Equipment - G150 | 2d | 2027-02-27 | 2027-03-01 | G155-1010 | -109d |
| G155-1400 |  | Conduit from UPS to VFD - G150 | 1d | 2027-02-27 | 2027-02-27 | G155-1390 | -107d |
| G155-1450 |  | Penetrate MC Cable into MPZ - G150 | 1d | 2027-02-27 | 2027-02-27 | G155-1440 | -106d |
| G155-1140 |  | Megger Chiller Cable - G150 | 1d | 2027-03-01 | 2027-03-01 | G155-1130 | -106d |
| G155-1160 |  | Penetrate MC into SWD - G150 | 1d | 2027-03-01 | 2027-03-01 | G155-1110 | -109d |
| G155-1170 |  | Penetrat MC into UPS - G150 | 1d | 2027-03-01 | 2027-03-01 | G155-1110 | -109d |
| G155-1210 |  | Pull Cable to Elec Room CRAH - G150 | 1d | 2027-03-01 | 2027-03-01 | G155-1200 | -107d |
| G155-1360 |  | Pull ATS Cable - G150 | 1d | 2027-03-01 | 2027-03-01 | G155-1350 | -109d |
| G155-1410 |  | Pull Cable from UPS to VFD - G150 | 1d | 2027-03-01 | 2027-03-01 | G155-1400 | -107d |
| G155-1460 |  | Megger MPZ Cable - G150 | 1d | 2027-03-01 | 2027-03-01 | G155-1450 | -106d |
| G155-1490 |  | All Skid Grounding - G150 | 2d | 2027-03-01 | 2027-03-02 | G155-1110 | -106d |
| G155-1520 |  | Megger MC Cable from UPS to MOD - G150 | 1d | 2027-03-01 | 2027-03-01 | G155-1190 | -108d |
| G155-1150 |  | Terminations at Chiller - G150 | 1d | 2027-03-02 | 2027-03-02 | G155-1140 | -106d |

| ID | WBS | Task | Duration | Start | Finish | Predecessors | Total float |
| --- | --- | --- | --- | --- | --- | --- | --- |
| G155-1220 |  | Megger MC Cable from Skid to Elec Room CRAH - G150 | 1d | 2027-03-02 | 2027-03-02 | G155-1210 | -107d |
| G155-1240 |  | Megger MC Cable from Skid to MOD - G150 | 1d | 2027-03-02 | 2027-03-02 | G155-1180, G155-1170, G155-1160 | -109d |
| G155-1270 |  | Megger MC Cable from MOD-01 to Mechanical Equipment - G150 | 1d | 2027-03-02 | 2027-03-02 | G155-1250 | -109d |
| G155-1280 |  | Megger MC Cable from MOD-02 to Mechanical Equipment - G150 | 1d | 2027-03-02 | 2027-03-02 | G155-1260 | -109d |
| G155-1420 |  | Megger Cable from UPS to VFD - G150 | 1d | 2027-03-02 | 2027-03-02 | G155-1410 | -107d |
| G155-1470 |  | Terminate MC Feed at MPZ - G150 | 1d | 2027-03-02 | 2027-03-02 | G155-1460 | -106d |
| G155-1480 |  | Terminate Cables in VFD - G150 | 1d | 2027-03-02 | 2027-03-02 | G155-1420 SS | -106d |
| G155-1630 |  | Megger Cable at ATS - G150 | 1d | 2027-03-02 | 2027-03-02 | G155-1360 | -109d |
| G155-1230 |  | Terminate Elec Room CRAH - G150 | 1d | 2027-03-03 | 2027-03-03 | G155-1220 | -107d |
| G155-1290 |  | Terminate MOD-01 - G150 | 1d | 2027-03-03 | 2027-03-03 | G155-1240, G155-1270 | -109d |
| G155-1300 |  | Terminate MOD-02 - G150 | 1d | 2027-03-03 | 2027-03-03 | G155-1520, G155-1280 | -109d |
| G155-1310 |  | Terminate at Mechanical Equipment - G150 | 1d | 2027-03-03 | 2027-03-03 | G155-1300 SS, G155-1290 SS | -109d |
| G155-1370 |  | Terminate ATS Cable at Busplugs & ATSs - G150 | 2d | 2027-03-03 | 2027-03-04 | G155-1630 | -109d |
| G155-1430 |  | Terminate Cables in UPS - G150 | 1d | 2027-03-03 | 2027-03-03 | G155-1420 | -107d |
| G155-1570 |  | QC 2.2 checklist VFD - G150 | 1d | 2027-03-03 | 2027-03-03 | G155-1480 | -106d |
| G155-1610 |  | QC 2.2 checklist Chiller - G150 | 1d | 2027-03-03 | 2027-03-03 | G155-1150 | -106d |
| G155-1650 |  | QC 2.2 checklist MPZ - G150 | 1d | 2027-03-03 | 2027-03-03 | G155-1470 | -106d |
| G155-1050 |  | Cable bus Install - G150 | 2d | 2027-03-04 | 2027-03-05 | G155-1040, G155-1030 | -113d |
| G155-1320 |  | Mechanical Equipment/Tray Grounding - G150 | 2d | 2027-03-04 | 2027-03-05 | G155-1310 | -109d |
| G155-1540 |  | QC 2.2 checklist UPS - G150 | 1d | 2027-03-04 | 2027-03-04 | G155-1430 | -107d |
| G155-1550 |  | QC 2.2 checklist Elec Room CRAH - G150 | 1d | 2027-03-04 | 2027-03-04 | G155-1230 | -107d |
| G155-1560 |  | QC 2.2 Mechanical Equipment - G150 | 1d | 2027-03-04 | 2027-03-04 | G155-1310 | -107d |
| G155-1380 |  | ATS Lashing - G150 | 1d | 2027-03-05 | 2027-03-05 | G155-1370 | -109d |
| G155-1060 |  | Cable pulled to A & P Xfmrs - G150 | 1d | 2027-03-06 | 2027-03-06 | G155-1050 | -113d |
| G155-1500 |  | QC 2.2 checklist MOD-01 - G150 | 1d | 2027-03-06 | 2027-03-06 | G155-1320 | -109d |
| G155-1510 |  | QC 2.2 checklist MOD-02 - G150 | 1d | 2027-03-06 | 2027-03-06 | G155-1320 | -109d |
| G155-1530 |  | QC 2.2 checklist ATSs - G150 | 1d | 2027-03-06 | 2027-03-06 | G155-1380 | -109d |
| G155-1640 |  | QC 2.2 checklist Busplugs - G150 | 1d | 2027-03-06 | 2027-03-06 | G155-1530 SS | -109d |
| G155-1070 |  | Megger Cable Bus Cable - G150 | 1d | 2027-03-08 | 2027-03-08 | G155-1060 | -113d |
| G155-1080 |  | Cable Bus inspection and covers - G150 | 1d | 2027-03-08 | 2027-03-08 | G155-1070 SS | -111d |
| G155-1090 |  | Terminations at Xfmrs - G150 | 2d | 2027-03-09 | 2027-03-10 | G155-1070 | -113d |
| G155-1100 |  | Terminations at SWD - G150 | 2d | 2027-03-09 | 2027-03-10 | G155-1070 | -113d |
| G155-1580 |  | QC 2.2 checklist SWD - G150 | 1d | 2027-03-11 | 2027-03-11 | G155-1080, G155-1490, G155-1100 | -113d |
| G155-1600 |  | QC 2.2 checklist XFMR - G150 | 1d | 2027-03-11 | 2027-03-11 | G155-1090 | -113d |
| G155-1590 |  | Ready for FTE - G150 | 1d | 2027-03-12 | 2027-03-12 | G155-1650, G155-1640, G155-1610, G155-1600, G155-1580, G155-1570, G155-1560, G155-1550, G155-1540, G155-1530, G155-1510, G155-1500 | -113d |
|  | 9 | **H150** |  | 2027-02-23 | 2027-03-12 |  |  |
| H155-1330 |  | Busduct installed - H150 | 1d | 2027-02-23 | 2027-02-23 | G155-1330 SS | -115d |
| H155-1340 |  | Busplugs/Tap Boxes installed - H150 | 1d | 2027-02-24 | 2027-02-24 | H155-1330 | -115d |
| H155-1000 |  | Set Skid - H150 | 1d | 2027-02-25 | 2027-02-25 | G155-1000 SS, H155-1340, H155-1330 | -115d |
| H155-1010 |  | Set MODs - H150 | 2d | 2027-02-25 | 2027-02-26 | H155-1000 SS | -109d |
| H155-1030 |  | Cable bus Support installed - H150 | 2d | 2027-02-25 | 2027-02-26 | H155-1000 SS | -109d |
| H155-1120 |  | Chiller feed box and conduit complete - H150 | 2d | 2027-02-25 | 2027-02-26 | H155-1010 SS, H155-1000 SS | -106d |
| H155-1040 |  | SWD top covers cut out - H150 | 5d | 2027-02-26 | 2027-03-03 | H155-1000 | -113d |
| H155-1110 |  | Finish Cable Tray to Skid - H150 | 2d | 2027-02-26 | 2027-02-27 | H155-1000 | -109d |
| H155-1350 |  | Install conduit from Busplug to ATSs - H150 | 2d | 2027-02-26 | 2027-02-27 | H155-1000 | -109d |
| H155-1390 |  | Mount VFD Stand and VFD - H150 | 1d | 2027-02-26 | 2027-02-26 | H155-1000 | -107d |
| H155-1440 |  | Mount MPZ - H150 | 1d | 2027-02-26 | 2027-02-26 | H155-1000 | -106d |
| H155-1620 |  | Electrical Room CRAH Set - H150 | 1d | 2027-02-26 | 2027-02-26 | H155-1000 | -107d |
| H155-1130 |  | Pull Chiller wire - H150 | 1d | 2027-02-27 | 2027-02-27 | H155-1120, H155-1000 | -106d |
| H155-1180 |  | Penetrate MC into MOD-01 - H150 | 1d | 2027-02-27 | 2027-02-27 | H155-1010 | -108d |
| H155-1190 |  | Penetrate MC into MOD-02 - H150 | 1d | 2027-02-27 | 2027-02-27 | H155-1010 | -108d |
| H155-1200 |  | Finish Conduit to Elec Room CRAH - H150 | 1d | 2027-02-27 | 2027-02-27 | H155-1620 | -107d |
| H155-1250 |  | Pull MC from MOD-01 to Mechanical Equipment - H150 | 2d | 2027-02-27 | 2027-03-01 | H155-1010 | -109d |
| H155-1260 |  | Pull MC from MOD-02 to Mechanical Equipment - H150 | 2d | 2027-02-27 | 2027-03-01 | H155-1010 | -109d |
| H155-1400 |  | Conduit from UPS to VFD - H150 | 1d | 2027-02-27 | 2027-02-27 | H155-1390 | -107d |
| H155-1450 |  | Penetrate MC Cable into MPZ - H150 | 1d | 2027-02-27 | 2027-02-27 | H155-1440 | -106d |
| H155-1140 |  | Megger Chiller Cable - H150 | 1d | 2027-03-01 | 2027-03-01 | H155-1130 | -106d |
| H155-1160 |  | Penetrate MC into SWD - H150 | 1d | 2027-03-01 | 2027-03-01 | H155-1110 | -109d |
| H155-1170 |  | Penetrat MC into UPS - H150 | 1d | 2027-03-01 | 2027-03-01 | H155-1110 | -109d |
| H155-1210 |  | Pull Cable to Elec Room CRAH - H150 | 1d | 2027-03-01 | 2027-03-01 | H155-1200 | -107d |
| H155-1360 |  | Pull ATS Cable - H150 | 1d | 2027-03-01 | 2027-03-01 | H155-1350 | -109d |
| H155-1410 |  | Pull Cable from UPS to VFD - H150 | 1d | 2027-03-01 | 2027-03-01 | H155-1400 | -107d |
| H155-1460 |  | Megger MPZ Cable - H150 | 1d | 2027-03-01 | 2027-03-01 | H155-1450 | -106d |
| H155-1490 |  | All Skid Grounding - H150 | 2d | 2027-03-01 | 2027-03-02 | H155-1110 | -106d |
| H155-1520 |  | Megger MC Cable from UPS to MOD - H150 | 1d | 2027-03-01 | 2027-03-01 | H155-1190 | -108d |
| H155-1150 |  | Terminations at Chiller - H150 | 1d | 2027-03-02 | 2027-03-02 | H155-1140 | -106d |
| H155-1220 |  | Megger MC Cable from Skid to Elec Room CRAH - H150 | 1d | 2027-03-02 | 2027-03-02 | H155-1210 | -107d |
| H155-1240 |  | Megger MC Cable from Skid to MOD - H150 | 1d | 2027-03-02 | 2027-03-02 | H155-1180, H155-1170, H155-1160 | -109d |
| H155-1270 |  | Megger MC Cable from MOD-01 to Mechanical Equipment - H150 | 1d | 2027-03-02 | 2027-03-02 | H155-1250 | -109d |
| H155-1280 |  | Megger MC Cable from MOD-02 to Mechanical Equipment - H150 | 1d | 2027-03-02 | 2027-03-02 | H155-1260 | -109d |

| ID | WBS | Task | Duration | Start | Finish | Predecessors | Total float |
| --- | --- | --- | --- | --- | --- | --- | --- |
| H155-1420 |  | Megger Cable from UPS to VFD - H150 | 1d | 2027-03-02 | 2027-03-02 | H155-1410 | -107d |
| H155-1470 |  | Terminate MC Feed at MPZ - H150 | 1d | 2027-03-02 | 2027-03-02 | H155-1460 | -106d |
| H155-1480 |  | Terminate Cables in VFD - H150 | 1d | 2027-03-02 | 2027-03-02 | H155-1420 SS | -106d |
| H155-1630 |  | Megger Cable at ATS - H150 | 1d | 2027-03-02 | 2027-03-02 | H155-1360 | -109d |
| H155-1230 |  | Terminate Elec Room CRAH - H150 | 1d | 2027-03-03 | 2027-03-03 | H155-1220 | -107d |
| H155-1290 |  | Terminate MOD-01 - H150 | 1d | 2027-03-03 | 2027-03-03 | H155-1240, H155-1270 | -109d |
| H155-1300 |  | Terminate MOD-02 - H150 | 1d | 2027-03-03 | 2027-03-03 | H155-1520, H155-1280 | -109d |
| H155-1310 |  | Terminate at Mechanical Equipment - H150 | 1d | 2027-03-03 | 2027-03-03 | H155-1300 SS, H155-1290 SS | -109d |
| H155-1370 |  | Terminate ATS Cable at Busplugs & ATSs - H150 | 2d | 2027-03-03 | 2027-03-04 | H155-1630 | -109d |
| H155-1430 |  | Terminate Cables in UPS - H150 | 1d | 2027-03-03 | 2027-03-03 | H155-1420 | -107d |
| H155-1570 |  | QC 2.2 checklist VFD - H150 | 1d | 2027-03-03 | 2027-03-03 | H155-1480 | -106d |
| H155-1610 |  | QC 2.2 checklist Chiller - H150 | 1d | 2027-03-03 | 2027-03-03 | H155-1150 | -106d |
| H155-1650 |  | QC 2.2 checklist MPZ - H150 | 1d | 2027-03-03 | 2027-03-03 | H155-1470 | -106d |
| H155-1050 |  | Cable bus Install - H150 | 2d | 2027-03-04 | 2027-03-05 | H155-1040, H155-1030 | -113d |
| H155-1320 |  | Mechanical Equipment/Tray Grounding - H150 | 2d | 2027-03-04 | 2027-03-05 | H155-1310 | -109d |
| H155-1540 |  | QC 2.2 checklist UPS - H150 | 1d | 2027-03-04 | 2027-03-04 | H155-1430 | -107d |
| H155-1550 |  | QC 2.2 checklist Elec Room CRAH - H150 | 1d | 2027-03-04 | 2027-03-04 | H155-1230 | -107d |
| H155-1560 |  | QC 2.2 Mechanical Equipment - H150 | 1d | 2027-03-04 | 2027-03-04 | H155-1310 | -107d |
| H155-1380 |  | ATS Lashing - H150 | 1d | 2027-03-05 | 2027-03-05 | H155-1370 | -109d |
| H155-1060 |  | Cable pulled to A & P Xfmrs - H150 | 1d | 2027-03-06 | 2027-03-06 | H155-1050 | -113d |
| H155-1500 |  | QC 2.2 checklist MOD-01 - H150 | 1d | 2027-03-06 | 2027-03-06 | H155-1320 | -109d |
| H155-1510 |  | QC 2.2 checklist MOD-02 - H150 | 1d | 2027-03-06 | 2027-03-06 | H155-1320 | -109d |
| H155-1530 |  | QC 2.2 checklist ATSs - H150 | 1d | 2027-03-06 | 2027-03-06 | H155-1380 | -109d |
| H155-1640 |  | QC 2.2 checklist Busplugs - H150 | 1d | 2027-03-06 | 2027-03-06 | H155-1530 SS | -109d |
| H155-1070 |  | Megger Cable Bus Cable - H150 | 1d | 2027-03-08 | 2027-03-08 | H155-1060 | -113d |
| H155-1080 |  | Cable Bus inspection and covers - H150 | 1d | 2027-03-08 | 2027-03-08 | H155-1070 SS | -111d |
| H155-1090 |  | Terminations at Xfmrs - H150 | 2d | 2027-03-09 | 2027-03-10 | H155-1070 | -113d |
| H155-1100 |  | Terminations at SWD - H150 | 2d | 2027-03-09 | 2027-03-10 | H155-1070 | -113d |
| H155-1580 |  | QC 2.2 checklist SWD - H150 | 1d | 2027-03-11 | 2027-03-11 | H155-1080, H155-1490, H155-1100 | -113d |
| H155-1600 |  | QC 2.2 checklist XFMR - H150 | 1d | 2027-03-11 | 2027-03-11 | H155-1090 | -113d |
| H155-1590 |  | Ready for FTE - H150 | 1d | 2027-03-12 | 2027-03-12 | H155-1650, H155-1640, H155-1610, H155-1600, H155-1580, H155-1570, H155-1560, H155-1550, H155-1540, H155-1530, H155-1510, H155-1500 | -113d |
|  | 8 | **J150** |  | 2027-02-24 | 2027-03-13 |  |  |
| J155-1330 |  | Busduct installed - J150 | 1d | 2027-02-24 | 2027-02-24 | H155-1330 | -115d |
| J155-1340 |  | Busplugs/Tap Boxes installed - J150 | 1d | 2027-02-25 | 2027-02-25 | J155-1330 | -115d |
| J155-1000 |  | Set Skid - J150 | 1d | 2027-02-26 | 2027-02-26 | H155-1000, J155-1340, J155-1330 | -115d |
| J155-1010 |  | Set MODs - J150 | 2d | 2027-02-26 | 2027-02-27 | J155-1000 SS | -110d |
| J155-1030 |  | Cable bus Support installed - J150 | 2d | 2027-02-26 | 2027-02-27 | J155-1000 SS | -110d |
| J155-1120 |  | Chiller feed box and conduit complete - J150 | 2d | 2027-02-26 | 2027-02-27 | J155-1010 SS, J155-1000 SS | -107d |
| J155-1040 |  | SWD top covers cut out - J150 | 5d | 2027-02-27 | 2027-03-04 | J155-1000 | -114d |
| J155-1110 |  | Finish Cable Tray to Skid - J150 | 2d | 2027-02-27 | 2027-03-01 | J155-1000 | -110d |
| J155-1350 |  | Install conduit from Busplug to ATSs - J150 | 2d | 2027-02-27 | 2027-03-01 | J155-1000 | -110d |
| J155-1390 |  | Mount VFD Stand and VFD - J150 | 1d | 2027-02-27 | 2027-02-27 | J155-1000 | -108d |
| J155-1440 |  | Mount MPZ - J150 | 1d | 2027-02-27 | 2027-02-27 | J155-1000 | -107d |
| J155-1620 |  | Electrical Room CRAH Set - J150 | 1d | 2027-02-27 | 2027-02-27 | J155-1000 | -108d |
| J155-1130 |  | Pull Chiller wire - J150 | 1d | 2027-03-01 | 2027-03-01 | J155-1120, J155-1000 | -107d |
| J155-1180 |  | Penetrate MC into MOD-01 - J150 | 1d | 2027-03-01 | 2027-03-01 | J155-1010 | -109d |
| J155-1190 |  | Penetrate MC into MOD-02 - J150 | 1d | 2027-03-01 | 2027-03-01 | J155-1010 | -109d |
| J155-1200 |  | Finish Conduit to Elec Room CRAH - J150 | 1d | 2027-03-01 | 2027-03-01 | J155-1620 | -108d |
| J155-1250 |  | Pull MC from MOD-01 to Mechanical Equipment - J150 | 2d | 2027-03-01 | 2027-03-02 | J155-1010 | -110d |
| J155-1260 |  | Pull MC from MOD-02 to Mechanical Equipment - J150 | 2d | 2027-03-01 | 2027-03-02 | J155-1010 | -110d |
| J155-1400 |  | Conduit from UPS to VFD - J150 | 1d | 2027-03-01 | 2027-03-01 | J155-1390 | -108d |
| J155-1450 |  | Penetrate MC Cable into MPZ - J150 | 1d | 2027-03-01 | 2027-03-01 | J155-1440 | -107d |
| J155-1140 |  | Megger Chiller Cable - J150 | 1d | 2027-03-02 | 2027-03-02 | J155-1130 | -107d |
| J155-1160 |  | Penetrate MC into SWD - J150 | 1d | 2027-03-02 | 2027-03-02 | J155-1110 | -110d |
| J155-1170 |  | Penetrat MC into UPS - J150 | 1d | 2027-03-02 | 2027-03-02 | J155-1110 | -110d |
| J155-1210 |  | Pull Cable to Elec Room CRAH - J150 | 1d | 2027-03-02 | 2027-03-02 | J155-1200 | -108d |
| J155-1360 |  | Pull ATS Cable - J150 | 1d | 2027-03-02 | 2027-03-02 | J155-1350 | -110d |
| J155-1410 |  | Pull Cable from UPS to VFD - J150 | 1d | 2027-03-02 | 2027-03-02 | J155-1400 | -108d |
| J155-1460 |  | Megger MPZ Cable - J150 | 1d | 2027-03-02 | 2027-03-02 | J155-1450 | -107d |
| J155-1490 |  | All Skid Grounding - J150 | 2d | 2027-03-02 | 2027-03-03 | J155-1110 | -107d |
| J155-1520 |  | Megger MC Cable from UPS to MOD - J150 | 1d | 2027-03-02 | 2027-03-02 | J155-1190 | -109d |
| J155-1150 |  | Terminations at Chiller - J150 | 1d | 2027-03-03 | 2027-03-03 | J155-1140 | -107d |
| J155-1220 |  | Megger MC Cable from Skid to Elec Room CRAH - J150 | 1d | 2027-03-03 | 2027-03-03 | J155-1210 | -108d |
| J155-1240 |  | Megger MC Cable from Skid to MOD - J150 | 1d | 2027-03-03 | 2027-03-03 | J155-1180, J155-1170, J155-1160 | -110d |
| J155-1270 |  | Megger MC Cable from MOD-01 to Mechanical Equipment - J150 | 1d | 2027-03-03 | 2027-03-03 | J155-1250 | -110d |
| J155-1280 |  | Megger MC Cable from MOD-02 to Mechanical Equipment - J150 | 1d | 2027-03-03 | 2027-03-03 | J155-1260 | -110d |
| J155-1420 |  | Megger Cable from UPS to VFD - J150 | 1d | 2027-03-03 | 2027-03-03 | J155-1410 | -108d |
| J155-1470 |  | Terminate MC Feed at MPZ - J150 | 1d | 2027-03-03 | 2027-03-03 | J155-1460 | -107d |
| J155-1480 |  | Terminate Cables in VFD - J150 | 1d | 2027-03-03 | 2027-03-03 | J155-1420 SS | -107d |
| J155-1630 |  | Megger Cable at ATS - J150 | 1d | 2027-03-03 | 2027-03-03 | J155-1360 | -110d |

| ID | WBS | Task | Duration | Start | Finish | Predecessors | Total float |
| --- | --- | --- | --- | --- | --- | --- | --- |
| J155-1230 |  | Terminate Elec Room CRAH - J150 | 1d | 2027-03-04 | 2027-03-04 | J155-1220 | -108d |
| J155-1290 |  | Terminate MOD-01 - J150 | 1d | 2027-03-04 | 2027-03-04 | J155-1240, J155-1270 | -110d |
| J155-1300 |  | Terminate MOD-02 - J150 | 1d | 2027-03-04 | 2027-03-04 | J155-1520, J155-1280 | -110d |
| J155-1310 |  | Terminate at Mechanical Equipment - J150 | 1d | 2027-03-04 | 2027-03-04 | J155-1300 SS, J155-1290 SS | -110d |
| J155-1370 |  | Terminate ATS Cable at Busplugs & ATSs - J150 | 2d | 2027-03-04 | 2027-03-05 | J155-1630 | -110d |
| J155-1430 |  | Terminate Cables in UPS - J150 | 1d | 2027-03-04 | 2027-03-04 | J155-1420 | -108d |
| J155-1570 |  | QC 2.2 checklist VFD - J150 | 1d | 2027-03-04 | 2027-03-04 | J155-1480 | -107d |
| J155-1610 |  | QC 2.2 checklist Chiller - J150 | 1d | 2027-03-04 | 2027-03-04 | J155-1150 | -107d |
| J155-1650 |  | QC 2.2 checklist MPZ - J150 | 1d | 2027-03-04 | 2027-03-04 | J155-1470 | -107d |
| J155-1050 |  | Cable bus Install - J150 | 2d | 2027-03-05 | 2027-03-06 | J155-1040, J155-1030 | -114d |
| J155-1320 |  | Mechanical Equipment/Tray Grounding - J150 | 2d | 2027-03-05 | 2027-03-06 | J155-1310 | -110d |
| J155-1540 |  | QC 2.2 checklist UPS - J150 | 1d | 2027-03-05 | 2027-03-05 | J155-1430 | -108d |
| J155-1550 |  | QC 2.2 checklist Elec Room CRAH - J150 | 1d | 2027-03-05 | 2027-03-05 | J155-1230 | -108d |
| J155-1560 |  | QC 2.2 Mechanical Equipment - J150 | 1d | 2027-03-05 | 2027-03-05 | J155-1310 | -108d |
| J155-1380 |  | ATS Lashing - J150 | 1d | 2027-03-06 | 2027-03-06 | J155-1370 | -110d |
| J155-1060 |  | Cable pulled to A & P Xfmrs - J150 | 1d | 2027-03-08 | 2027-03-08 | J155-1050 | -114d |
| J155-1500 |  | QC 2.2 checklist MOD-01 - J150 | 1d | 2027-03-08 | 2027-03-08 | J155-1320 | -110d |
| J155-1510 |  | QC 2.2 checklist MOD-02 - J150 | 1d | 2027-03-08 | 2027-03-08 | J155-1320 | -110d |
| J155-1530 |  | QC 2.2 checklist ATSs - J150 | 1d | 2027-03-08 | 2027-03-08 | J155-1380 | -110d |
| J155-1640 |  | QC 2.2 checklist Busplugs - J150 | 1d | 2027-03-08 | 2027-03-08 | J155-1530 SS | -110d |
| J155-1070 |  | Megger Cable Bus Cable - J150 | 1d | 2027-03-09 | 2027-03-09 | J155-1060 | -114d |
| J155-1080 |  | Cable Bus inspection and covers - J150 | 1d | 2027-03-09 | 2027-03-09 | J155-1070 SS | -112d |
| J155-1090 |  | Terminations at Xfmrs - J150 | 2d | 2027-03-10 | 2027-03-11 | J155-1070 | -114d |
| J155-1100 |  | Terminations at SWD - J150 | 2d | 2027-03-10 | 2027-03-11 | J155-1070 | -114d |
| J155-1580 |  | QC 2.2 checklist SWD - J150 | 1d | 2027-03-12 | 2027-03-12 | J155-1080, J155-1490, J155-1100 | -114d |
| J155-1600 |  | QC 2.2 checklist XFMR - J150 | 1d | 2027-03-12 | 2027-03-12 | J155-1090 | -114d |
| J155-1590 |  | Ready for FTE - J150 | 1d | 2027-03-13 | 2027-03-13 | J155-1650, J155-1640, J155-1610, J155-1600, J155-1580, J155-1570, J155-1560, J155-1550, J155-1540, J155-1530, J155-1510, J155-1500 | -114d |
|  | 10 | **K150** |  | 2027-02-24 | 2027-03-13 |  |  |
| K155-1330 |  | Busduct installed - K150 | 1d | 2027-02-24 | 2027-02-24 | J155-1330 SS | -115d |
| K155-1340 |  | Busplugs/Tap Boxes installed - K150 | 1d | 2027-02-25 | 2027-02-25 | K155-1330 | -115d |
| K155-1000 |  | Set Skid - K150 | 1d | 2027-02-26 | 2027-02-26 | J155-1000 SS, K155-1340, K155-1330 | -115d |
| K155-1010 |  | Set MODs - K150 | 2d | 2027-02-26 | 2027-02-27 | K155-1000 SS | -110d |
| K155-1030 |  | Cable bus Support installed - K150 | 2d | 2027-02-26 | 2027-02-27 | K155-1000 SS | -110d |
| K155-1120 |  | Chiller feed box and conduit complete - K150 | 2d | 2027-02-26 | 2027-02-27 | K155-1010 SS, K155-1000 SS | -107d |
| K155-1040 |  | SWD top covers cut out - K150 | 5d | 2027-02-27 | 2027-03-04 | K155-1000 | -114d |
| K155-1110 |  | Finish Cable Tray to Skid - K150 | 2d | 2027-02-27 | 2027-03-01 | K155-1000 | -110d |
| K155-1350 |  | Install conduit from Busplug to ATSs - K150 | 2d | 2027-02-27 | 2027-03-01 | K155-1000 | -110d |
| K155-1390 |  | Mount VFD Stand and VFD - K150 | 1d | 2027-02-27 | 2027-02-27 | K155-1000 | -108d |
| K155-1440 |  | Mount MPZ - K150 | 1d | 2027-02-27 | 2027-02-27 | K155-1000 | -107d |
| K155-1620 |  | Electrical Room CRAH Set - K150 | 1d | 2027-02-27 | 2027-02-27 | K155-1000 | -108d |
| K155-1130 |  | Pull Chiller wire - K150 | 1d | 2027-03-01 | 2027-03-01 | K155-1120, K155-1000 | -107d |
| K155-1180 |  | Penetrate MC into MOD-01 - K150 | 1d | 2027-03-01 | 2027-03-01 | K155-1010 | -109d |
| K155-1190 |  | Penetrate MC into MOD-02 - K150 | 1d | 2027-03-01 | 2027-03-01 | K155-1010 | -109d |
| K155-1200 |  | Finish Conduit to Elec Room CRAH - K150 | 1d | 2027-03-01 | 2027-03-01 | K155-1620 | -108d |
| K155-1250 |  | Pull MC from MOD-01 to Mechanical Equipment - K150 | 2d | 2027-03-01 | 2027-03-02 | K155-1010 | -110d |
| K155-1260 |  | Pull MC from MOD-02 to Mechanical Equipment - K150 | 2d | 2027-03-01 | 2027-03-02 | K155-1010 | -110d |
| K155-1400 |  | Conduit from UPS to VFD - K150 | 1d | 2027-03-01 | 2027-03-01 | K155-1390 | -108d |
| K155-1450 |  | Penetrate MC Cable into MPZ - K150 | 1d | 2027-03-01 | 2027-03-01 | K155-1440 | -107d |
| K155-1140 |  | Megger Chiller Cable - K150 | 1d | 2027-03-02 | 2027-03-02 | K155-1130 | -107d |
| K155-1160 |  | Penetrate MC into SWD - K150 | 1d | 2027-03-02 | 2027-03-02 | K155-1110 | -110d |
| K155-1170 |  | Penetrat MC into UPS - K150 | 1d | 2027-03-02 | 2027-03-02 | K155-1110 | -110d |
| K155-1210 |  | Pull Cable to Elec Room CRAH - K150 | 1d | 2027-03-02 | 2027-03-02 | K155-1200 | -108d |
| K155-1360 |  | Pull ATS Cable - K150 | 1d | 2027-03-02 | 2027-03-02 | K155-1350 | -110d |
| K155-1410 |  | Pull Cable from UPS to VFD - K150 | 1d | 2027-03-02 | 2027-03-02 | K155-1400 | -108d |
| K155-1460 |  | Megger MPZ Cable - K150 | 1d | 2027-03-02 | 2027-03-02 | K155-1450 | -107d |
| K155-1490 |  | All Skid Grounding - K150 | 2d | 2027-03-02 | 2027-03-03 | K155-1110 | -107d |
| K155-1520 |  | Megger MC Cable from UPS to MOD - K150 | 1d | 2027-03-02 | 2027-03-02 | K155-1190 | -109d |
| K155-1150 |  | Terminations at Chiller - K150 | 1d | 2027-03-03 | 2027-03-03 | K155-1140 | -107d |
| K155-1220 |  | Megger MC Cable from Skid to Elec Room CRAH - K150 | 1d | 2027-03-03 | 2027-03-03 | K155-1210 | -108d |
| K155-1240 |  | Megger MC Cable from Skid to MOD - K150 | 1d | 2027-03-03 | 2027-03-03 | K155-1180, K155-1170, K155-1160 | -110d |
| K155-1270 |  | Megger MC Cable from MOD-01 to Mechanical Equipment - K150 | 1d | 2027-03-03 | 2027-03-03 | K155-1250 | -110d |
| K155-1280 |  | Megger MC Cable from MOD-02 to Mechanical Equipment - K150 | 1d | 2027-03-03 | 2027-03-03 | K155-1260 | -110d |
| K155-1420 |  | Megger Cable from UPS to VFD - K150 | 1d | 2027-03-03 | 2027-03-03 | K155-1410 | -108d |
| K155-1470 |  | Terminate MC Feed at MPZ - K150 | 1d | 2027-03-03 | 2027-03-03 | K155-1460 | -107d |
| K155-1480 |  | Terminate Cables in VFD - K150 | 1d | 2027-03-03 | 2027-03-03 | K155-1420 SS | -107d |
| K155-1630 |  | Megger Cable at ATS - K150 | 1d | 2027-03-03 | 2027-03-03 | K155-1360 | -110d |
| K155-1230 |  | Terminate Elec Room CRAH - K150 | 1d | 2027-03-04 | 2027-03-04 | K155-1220 | -108d |
| K155-1290 |  | Terminate MOD-01 - K150 | 1d | 2027-03-04 | 2027-03-04 | K155-1240, K155-1270 | -110d |
| K155-1300 |  | Terminate MOD-02 - K150 | 1d | 2027-03-04 | 2027-03-04 | K155-1520, K155-1280 | -110d |
| K155-1310 |  | Terminate at Mechanical Equipment - K150 | 1d | 2027-03-04 | 2027-03-04 | K155-1300 SS, K155-1290 SS | -110d |

| ID | WBS | Task | Duration | Start | Finish | Predecessors | Total float |
| --- | --- | --- | --- | --- | --- | --- | --- |
| K155-1370 |  | Terminate ATS Cable at Busplugs & ATSs - K150 | 2d | 2027-03-04 | 2027-03-05 | K155-1630 | -110d |
| K155-1430 |  | Terminate Cables in UPS - K150 | 1d | 2027-03-04 | 2027-03-04 | K155-1420 | -108d |
| K155-1570 |  | QC 2.2 checklist VFD - K150 | 1d | 2027-03-04 | 2027-03-04 | K155-1480 | -107d |
| K155-1610 |  | QC 2.2 checklist Chiller - K150 | 1d | 2027-03-04 | 2027-03-04 | K155-1150 | -107d |
| K155-1650 |  | QC 2.2 checklist MPZ - K150 | 1d | 2027-03-04 | 2027-03-04 | K155-1470 | -107d |
| K155-1050 |  | Cable bus Install - K150 | 2d | 2027-03-05 | 2027-03-06 | K155-1040, K155-1030 | -114d |
| K155-1320 |  | Mechanical Equipment/Tray Grounding - K150 | 2d | 2027-03-05 | 2027-03-06 | K155-1310 | -110d |
| K155-1540 |  | QC 2.2 checklist UPS - K150 | 1d | 2027-03-05 | 2027-03-05 | K155-1430 | -108d |
| K155-1550 |  | QC 2.2 checklist Elec Room CRAH - K150 | 1d | 2027-03-05 | 2027-03-05 | K155-1230 | -108d |
| K155-1560 |  | QC 2.2 Mechanical Equipment - K150 | 1d | 2027-03-05 | 2027-03-05 | K155-1310 | -108d |
| K155-1380 |  | ATS Lashing - K150 | 1d | 2027-03-06 | 2027-03-06 | K155-1370 | -110d |
| K155-1060 |  | Cable pulled to A & P Xfmrs - K150 | 1d | 2027-03-08 | 2027-03-08 | K155-1050 | -114d |
| K155-1500 |  | QC 2.2 checklist MOD-01 - K150 | 1d | 2027-03-08 | 2027-03-08 | K155-1320 | -110d |
| K155-1510 |  | QC 2.2 checklist MOD-02 - K150 | 1d | 2027-03-08 | 2027-03-08 | K155-1320 | -110d |
| K155-1530 |  | QC 2.2 checklist ATSs - K150 | 1d | 2027-03-08 | 2027-03-08 | K155-1380 | -110d |
| K155-1640 |  | QC 2.2 checklist Busplugs - K150 | 1d | 2027-03-08 | 2027-03-08 | K155-1530 SS | -110d |
| K155-1070 |  | Megger Cable Bus Cable - K150 | 1d | 2027-03-09 | 2027-03-09 | K155-1060 | -114d |
| K155-1080 |  | Cable Bus inspection and covers - K150 | 1d | 2027-03-09 | 2027-03-09 | K155-1070 SS | -112d |
| K155-1090 |  | Terminations at Xfmrs - K150 | 2d | 2027-03-10 | 2027-03-11 | K155-1070 | -114d |
| K155-1100 |  | Terminations at SWD - K150 | 2d | 2027-03-10 | 2027-03-11 | K155-1070 | -114d |
| K155-1580 |  | QC 2.2 checklist SWD - K150 | 1d | 2027-03-12 | 2027-03-12 | K155-1080, K155-1490, K155-1100 | -114d |
| K155-1600 |  | QC 2.2 checklist XFMR - K150 | 1d | 2027-03-12 | 2027-03-12 | K155-1090 | -114d |
| K155-1590 |  | Ready for FTE - K150 | 1d | 2027-03-13 | 2027-03-13 | K155-1650, K155-1640, K155-1610, K155-1600, K155-1580, K155-1570, K155-1560, K155-1550, K155-1540, K155-1530, K155-1510, K155-1500 | -114d |
|  | 11 | **R150** |  | 2027-02-24 | 2027-03-15 |  |  |
| R155-1250 |  | Pull MC from MOD-01 to Mechanical Equipment - R150 | 1d | 2027-02-24 | 2027-02-24 | R155-1330 SS | -106d |
| R155-1260 |  | Pull MC from MOD-02 to Mechanical Equipment - R150 | 1d | 2027-02-24 | 2027-02-24 | R155-1330 SS | -106d |
| R155-1330 |  | Busduct installed - R150 | 1d | 2027-02-24 | 2027-02-24 | K155-1330 SS | -115d |
| R155-1340 |  | Busplugs/Tap Boxes installed - R150 | 1d | 2027-02-25 | 2027-02-25 | R155-1330 | -115d |
| R155-1440 |  | Mount MPZ - R150 | 1d | 2027-02-25 | 2027-02-25 | R155-1330 | -110d |
| R155-1010 |  | Set MODs - R150 | 1d | 2027-02-26 | 2027-02-26 | K155-1000 SS, R155-1330, R155-1340 | -108d |
| R155-1020 |  | Set Reserve SWD - R150 | 1d | 2027-02-26 | 2027-02-26 | K155-1000 SS, R155-1330, R155-1340 | -115d |
| R155-1110 |  | Set Reserve UPS - R150 | 1d | 2027-02-26 | 2027-02-26 | R155-1330, R155-1340 | -108d |
| R155-1120 |  | Chiller feed box and conduit complete - R150 | 2d | 2027-02-26 | 2027-02-27 | R155-1010 SS | -107d |
| R155-1170 |  | Set Reserve PDU - R150 | 1d | 2027-02-26 | 2027-02-26 | R155-1330, R155-1340 | -107d |
| R155-1720 |  | Set Reserve Tie - R150 | 1d | 2027-02-26 | 2027-02-26 | R155-1330, R155-1340 | -114d |
| R155-1760 |  | High Pot test Reserve Busduct - R150 | 1d | 2027-02-26 | 2027-02-26 | R155-1340 | -103d |
| R155-1810 |  | Finish Conduit to MPZ - R150 | 5d | 2027-02-26 | 2027-03-03 | R155-1440 | -110d |
| R155-1040 |  | SWD top covers cut out - R150 | 5d | 2027-02-27 | 2027-03-04 | R155-1020 | -115d |
| R155-1180 |  | Penetrate MC into MOD-01 - R150 | 1d | 2027-02-27 | 2027-02-27 | R155-1010, R155-1250 | -108d |
| R155-1190 |  | Penetrate MC into MOD-02 - R150 | 1d | 2027-02-27 | 2027-02-27 | R155-1010, R155-1260 | -108d |
| R155-1200 |  | Finish Conduit to Elec Room CRAH - R150 | 1d | 2027-02-27 | 2027-02-27 | R155-1020 | -107d |
| R155-1350 |  | Install conduit from Reserve Tie to Tap Box - R150 | 2d | 2027-02-27 | 2027-03-01 | R155-1720 | -109d |
| R155-1360 |  | Install conduit from Reserve Tie to Reserve Tie - R150 | 6d | 2027-02-27 | 2027-03-05 | R155-1720 | -114d |
| R155-1370 |  | Install conduit from Busplug to Reserve PDU - R150 | 1d | 2027-02-27 | 2027-02-27 | R155-1170 | -107d |
| R155-1390 |  | Mount VFD Stand and VFD - R150 | 1d | 2027-02-27 | 2027-02-27 | R155-1020 | -107d |
| R155-1710 |  | All Grounding - R150 | 1d | 2027-02-27 | 2027-02-27 | R155-1020 | -104d |
| R155-1730 |  | Finish Cable Tray to Reserve Equipment - R150 | 2d | 2027-02-27 | 2027-03-01 | R155-1020 | -110d |
| R155-1800 |  | Pull MC Cable from SWD to MOD - R150 | 1d | 2027-02-27 | 2027-02-27 | R155-1020 | -108d |
| R155-1130 |  | Pull Chiller wire - R150 | 1d | 2027-03-01 | 2027-03-01 | R155-1120 | -107d |
| R155-1210 |  | Pull Cable to Elec Room CRAH - R150 | 1d | 2027-03-01 | 2027-03-01 | R155-1200 | -107d |
| R155-1270 |  | Megger MC Cable from MOD-01 to Mechanical Equipment - R150 | 1d | 2027-03-01 | 2027-03-01 | R155-1180 | -108d |
| R155-1280 |  | Megger MC Cable from MOD-02 to Mechanical Equipment - R150 | 1d | 2027-03-01 | 2027-03-01 | R155-1190 | -108d |
| R155-1400 |  | Conduit from UPS to VFD - R150 | 1d | 2027-03-01 | 2027-03-01 | R155-1390 | -107d |
| R155-1650 |  | Megger cable from Busplug to Reserve PDU - R150 | 1d | 2027-03-01 | 2027-03-01 | R155-1370 | -107d |
| R155-1140 |  | Megger Chiller Cable - R150 | 1d | 2027-03-02 | 2027-03-02 | R155-1130 | -107d |
| R155-1160 |  | Penetrate MC into Reserve SWD - R150 | 1d | 2027-03-02 | 2027-03-02 | R155-1020, R155-1730 | -110d |
| R155-1220 |  | Megger MC Cable from SWD to Elec Room CRAH - R150 | 1d | 2027-03-02 | 2027-03-02 | R155-1210 | -107d |
| R155-1300 |  | Terminate MOD-02 - R150 | 1d | 2027-03-02 | 2027-03-02 | R155-1280, R155-1280 FF | -108d |
| R155-1410 |  | Pull Cable from UPS to VFD - R150 | 1d | 2027-03-02 | 2027-03-02 | R155-1400 | -107d |
| R155-1490 |  | Pull cable from Reserve Tie to Tap Box - R150 | 1d | 2027-03-02 | 2027-03-02 | R155-1350 | -109d |
| R155-1530 |  | Pull cable from Busplug to Reserve PDU - R150 | 1d | 2027-03-02 | 2027-03-02 | R155-1650 | -107d |
| R155-1150 |  | Terminations at Chiller - R150 | 1d | 2027-03-03 | 2027-03-03 | R155-1140 | -107d |
| R155-1230 |  | Terminate Elec Room CRAH - R150 | 1d | 2027-03-03 | 2027-03-03 | R155-1220 | -107d |
| R155-1240 |  | Megger MC Cable from SWD to MOD - R150 | 1d | 2027-03-03 | 2027-03-03 | R155-1160, R155-1800 | -110d |
| R155-1420 |  | Megger Cable from UPS to VFD - R150 | 1d | 2027-03-03 | 2027-03-03 | R155-1410 | -107d |
| R155-1480 |  | Terminate Cables in VFD - R150 | 1d | 2027-03-03 | 2027-03-03 | R155-1420 SS | -107d |
| R155-1630 |  | Megger cable from Reserve Tie to Tap Box - R150 | 1d | 2027-03-03 | 2027-03-03 | R155-1490 | -109d |
| R155-1700 |  | Terminate Busplug to PDU - R150 | 1d | 2027-03-03 | 2027-03-03 | R155-1530 | -107d |
| R155-1290 |  | Terminate MOD-01 - R150 | 1d | 2027-03-04 | 2027-03-04 | R155-1240, R155-1270 | -110d |
| R155-1310 |  | Terminate at Mechanical Equipment - R150 | 1d | 2027-03-04 | 2027-03-04 | R155-1300 SS, R155-1290 SS, R155-1270, R155-1280 | -110d |

| ID | WBS | Task | Duration | Start | Finish | Predecessors | Total float | Constraint |
| --- | --- | --- | --- | --- | --- | --- | --- | --- |
| R155-1450 |  | Penetrate MC Cable into MPZ - R150 | 1d | 2027-03-04 | 2027-03-04 | R155-1440, R155-1810 | -110d |  |
| R155-1550 |  | QC 2.2 checklist Elec Room CRAH - R150 | 1d | 2027-03-04 | 2027-03-04 | R155-1230 | -107d |  |
| R155-1570 |  | QC 2.2 checklist VFD - R150 | 1d | 2027-03-04 | 2027-03-04 | R155-1480 | -107d |  |
| R155-1640 |  | QC 2.2 checklist Busplug - R150 | 1d | 2027-03-04 | 2027-03-04 | R155-1700, R155-1760 | -107d |  |
| R155-1030 |  | Cable bus Support installed - R150 | 1d | 2027-03-05 | 2027-03-05 | R155-1040 | -114d |  |
| R155-1320 |  | Mechanical Equipment/Tray Grounding - R150 | 2d | 2027-03-05 | 2027-03-06 | R155-1310 | -110d |  |
| R155-1460 |  | Megger MPZ Cable - R150 | 1d | 2027-03-05 | 2027-03-05 | R155-1450 | -110d |  |
| R155-1560 |  | QC 2.2 Mechanical Equipment - R150 | 1d | 2027-03-05 | 2027-03-05 | R155-1150, R155-1310 | -108d |  |
| R155-1750 |  | Install conduit from SWD to Tap Box - R150 | 2d | 2027-03-05 | 2027-03-06 | R155-1040 | -115d |  |
| R155-1770 |  | Install conduit from SWD to Reserve UPS - R150 | 1d | 2027-03-05 | 2027-03-05 | R155-1040, R155-1110 | -113d |  |
| R155-1050 |  | Cable bus Install - R150 | 1d | 2027-03-06 | 2027-03-06 | R155-1030, R155-1040 | -114d |  |
| R155-1430 |  | Pull cable from SWD to Reserve UPS - R150 | 1d | 2027-03-06 | 2027-03-06 | R155-1770 | -113d |  |
| R155-1470 |  | Terminate MC Feed at MPZ - R150 | 1d | 2027-03-06 | 2027-03-06 | R155-1460 | -110d |  |
| R155-1520 |  | Pull cable from Reserve Tie to Reserve Tie - R150 | 2d | 2027-03-06 | 2027-03-08 | R155-1360 | -114d |  |
| R155-1060 |  | Cable pulled to A & P Xfmrs - R150 | 1d | 2027-03-08 | 2027-03-08 | R155-1050 | -114d |  |
| R155-1380 |  | Pull cable from SWD to Tap Box - R150 | 2d | 2027-03-08 | 2027-03-09 | R155-1750 | -115d |  |
| R155-1500 |  | QC 2.2 checklist MOD-01 - R150 | 1d | 2027-03-08 | 2027-03-08 | R155-1320 | -110d |  |
| R155-1510 |  | QC 2.2 checklist MOD-02 - R150 | 1d | 2027-03-08 | 2027-03-08 | R155-1320 | -110d |  |
| R155-1620 |  | Megger cable from SWD to Reserve UPS - R150 | 1d | 2027-03-08 | 2027-03-08 | R155-1430 | -113d |  |
| R155-1820 |  | QC 2.2 checklist MPZ - R150 | 1d | 2027-03-08 | 2027-03-08 | R155-1470 | -110d |  |
| R155-1070 |  | Megger Cable Bus Cable - R150 | 1d | 2027-03-09 | 2027-03-09 | R155-1060 | -114d |  |
| R155-1080 |  | Cable Bus inspection and covers - R150 | 1d | 2027-03-09 | 2027-03-09 | R155-1070 SS | -112d |  |
| R155-1670 |  | Terminate Reserve UPS - R150 | 1d | 2027-03-09 | 2027-03-09 | R155-1620 | -112d |  |
| R155-1780 |  | Megger cable from Reserve Tie to Reserve Tie - R150 | 1d | 2027-03-09 | 2027-03-09 | R155-1520 | -114d |  |
| R155-1090 |  | Terminations at Xfmrs - R150 | 2d | 2027-03-10 | 2027-03-11 | R155-1070 | -114d |  |
| R155-1100 |  | Terminations at SWD - R150 | 2d | 2027-03-10 | 2027-03-11 | R155-1070 | -114d |  |
| R155-1540 |  | QC 2.2 checklist Reserve UPS - R150 | 1d | 2027-03-10 | 2027-03-10 | R155-1670 | -112d |  |
| R155-1610 |  | Megger cable from SWD to Tap Box - R150 | 1d | 2027-03-10 | 2027-03-10 | R155-1380 | -115d |  |
| R155-1690 |  | Terminate Reserve Tie - R150 | 2d | 2027-03-10 | 2027-03-11 | R155-1780 | -114d |  |
| R155-1660 |  | Terminate Reserve SWD - R150 | 2d | 2027-03-11 | 2027-03-12 | R155-1620, R155-1610, R155-1070 | -115d |  |
| R155-1680 |  | Terminate Tap Boxes - R150 | 2d | 2027-03-11 | 2027-03-12 | R155-1630, R155-1610 | -115d |  |
| R155-1600 |  | QC 2.2 checklist XFMR - R150 | 1d | 2027-03-12 | 2027-03-12 | R155-1090, R155-1090 FF | -114d |  |
| R155-1740 |  | QC 2.2 checklist Reserve Tie - R150 | 1d | 2027-03-12 | 2027-03-12 | R155-1690 | -114d |  |
| R155-1580 |  | QC 2.2 checklist SWD - R150 | 1d | 2027-03-13 | 2027-03-13 | R155-1080, R155-1100, R155-1100 FF, R155-1660, R155-1710 | -115d |  |
| R155-1790 |  | QC 2.2 checklist Tap Boxes - R150 | 1d | 2027-03-13 | 2027-03-13 | R155-1680 | -115d |  |
| R155-1590 |  | Ready for FTE - R150 | 1d | 2027-03-15 | 2027-03-15 | R155-1820, R155-1640, R155-1740, R155-1790, R155-1600, R155-1580, R155-1570, R155-1560, R155-1550, R155-1540, R155-1510, R155-1500 | -115d |  |
|  | 12 | **Commissioning** |  | 2027-03-16 | 2027-05-25 |  |  |  |
| 1550-1000 |  | DH1500 - L3 Clean Walk | 3d | 2027-03-16 | 2027-03-18 | R155-1590 | -4d |  |
| 1550-1100 |  | DH1500 - L3 PEI | 3d | 2027-03-19 | 2027-03-22 | CW.1500, 1550-1000 | -4d |  |
| 1550-1200 |  | DH1500 - L3 FTE | 4d | 2027-03-23 | 2027-03-26 | PEI.1500, 1550-1100 | -5d |  |
| 1550-2000 |  | DH1500 - L4 Cx / IST | 60d | 2027-03-27 | 2027-05-25 | 1550-1200 | -5d |  |
|  | 5 | **DH 1600** |  | 2027-03-01 | 2027-05-30 |  |  |  |
|  | 1 | **Electrical** |  | 2027-03-01 | 2027-03-20 |  |  |  |
|  | 11 | **R160** |  | 2027-03-01 | 2027-03-19 |  |  |  |
| R165-1250 |  | Pull MC from MOD-01 to Mechanical Equipment - R160 | 1d | 2027-03-01 | 2027-03-01 | R165-1330 SS | -17d |  |
| R165-1260 |  | Pull MC from MOD-02 to Mechanical Equipment - R160 | 1d | 2027-03-01 | 2027-03-01 | R165-1330 SS | -17d |  |
| R165-1330 |  | Busduct installed - R160 | 1d | 2027-03-01 | 2027-03-01 | R155-1590 | 0d | mandatory start 2027-03-01 |
| R165-1340 |  | Busplugs/Tap Boxes installed - R160 | 1d | 2027-03-02 | 2027-03-02 | R165-1330 | -27d |  |
| R165-1440 |  | Mount MPZ - R160 | 1d | 2027-03-02 | 2027-03-02 | R165-1330 | -21d |  |
| R165-1010 |  | Set MODs - R160 | 1d | 2027-03-03 | 2027-03-03 | R165-1330, R165-1340 | -19d |  |
| R165-1020 |  | Set Reserve SWD - R160 | 1d | 2027-03-03 | 2027-03-03 | R165-1330, R165-1340 | -27d |  |
| R165-1110 |  | Set Reserve UPS - R160 | 1d | 2027-03-03 | 2027-03-03 | R165-1330, R165-1340 | -19d |  |
| R165-1120 |  | Chiller feed box and conduit complete - R160 | 2d | 2027-03-03 | 2027-03-04 | R165-1010 SS | -18d |  |
| R165-1170 |  | Set Reserve PDU - R160 | 1d | 2027-03-03 | 2027-03-03 | R165-1330, R165-1340 | -18d |  |
| R165-1720 |  | Set Reserve Tie - R160 | 1d | 2027-03-03 | 2027-03-03 | R165-1330, R165-1340 | -25d |  |
| R165-1760 |  | High Pot test Reserve Busduct - R160 | 1d | 2027-03-03 | 2027-03-03 | R165-1340 | -14d |  |
| R165-1810 |  | Finish Conduit to MPZ - R160 | 5d | 2027-03-03 | 2027-03-08 | R165-1440 | -21d |  |
| R165-1040 |  | SWD top covers cut out - R160 | 5d | 2027-03-04 | 2027-03-09 | R165-1020 | -26d |  |
| R165-1180 |  | Penetrate MC into MOD-01 - R160 | 1d | 2027-03-04 | 2027-03-04 | R165-1010, R165-1250 | -19d |  |
| R165-1190 |  | Penetrate MC into MOD-02 - R160 | 1d | 2027-03-04 | 2027-03-04 | R165-1010, R165-1260 | -19d |  |
| R165-1200 |  | Finish Conduit to Elec Room CRAH - R160 | 1d | 2027-03-04 | 2027-03-04 | R165-1020 | -18d |  |
| R165-1350 |  | Install conduit from Reserve Tie to Tap Box - R160 | 2d | 2027-03-04 | 2027-03-05 | R165-1720 | -20d |  |
| R165-1360 |  | Install conduit from Reserve Tie to Reserve Tie - R160 | 6d | 2027-03-04 | 2027-03-10 | R165-1720 | -25d |  |
| R165-1370 |  | Install conduit from Busplug to Reserve PDU - R160 | 1d | 2027-03-04 | 2027-03-04 | R165-1170 | -18d |  |
| R165-1390 |  | Mount VFD Stand and VFD - R160 | 1d | 2027-03-04 | 2027-03-04 | R165-1020 | -18d |  |
| R165-1710 |  | All Grounding - R160 | 1d | 2027-03-04 | 2027-03-04 | R165-1020 | -15d |  |
| R165-1730 |  | Finish Cable Tray to Reserve Equipment - R160 | 2d | 2027-03-04 | 2027-03-05 | R165-1020 | -21d |  |
| R165-1800 |  | Pull MC Cable from SWD to MOD - R160 | 1d | 2027-03-04 | 2027-03-04 | R165-1020 | -19d |  |
| R165-1130 |  | Pull Chiller wire - R160 | 1d | 2027-03-05 | 2027-03-05 | R165-1120 | -18d |  |
| R165-1210 |  | Pull Cable to Elec Room CRAH - R160 | 1d | 2027-03-05 | 2027-03-05 | R165-1200 | -18d |  |

| ID | WBS | Task | Duration | Start | Finish | Predecessors | Total float |
| --- | --- | --- | --- | --- | --- | --- | --- |
| R165-1270 |  | Megger MC Cable from MOD-01 to Mechanical Equipment - R160 | 1d | 2027-03-05 | 2027-03-05 | R165-1180 | -19d |
| R165-1280 |  | Megger MC Cable from MOD-02 to Mechanical Equipment - R160 | 1d | 2027-03-05 | 2027-03-05 | R165-1190 | -19d |
| R165-1400 |  | Conduit from UPS to VFD - R160 | 1d | 2027-03-05 | 2027-03-05 | R165-1390 | -18d |
| R165-1650 |  | Megger cable from Busplug to Reserve PDU - R160 | 1d | 2027-03-05 | 2027-03-05 | R165-1370 | -18d |
| R165-1140 |  | Megger Chiller Cable - R160 | 1d | 2027-03-06 | 2027-03-06 | R165-1130 | -18d |
| R165-1160 |  | Penetrate MC into Reserve SWD - R160 | 1d | 2027-03-06 | 2027-03-06 | R165-1020, R165-1730 | -21d |
| R165-1220 |  | Megger MC Cable from SWD to Elec Room CRAH - R160 | 1d | 2027-03-06 | 2027-03-06 | R165-1210 | -18d |
| R165-1300 |  | Terminate MOD-02 - R160 | 1d | 2027-03-06 | 2027-03-06 | R165-1280, R165-1280 FF | -19d |
| R165-1410 |  | Pull Cable from UPS to VFD - R160 | 1d | 2027-03-06 | 2027-03-06 | R165-1400 | -18d |
| R165-1490 |  | Pull cable from Reserve Tie to Tap Box - R160 | 1d | 2027-03-06 | 2027-03-06 | R165-1350 | -20d |
| R165-1530 |  | Pull cable from Busplug to Reserve PDU - R160 | 1d | 2027-03-06 | 2027-03-06 | R165-1650 | -18d |
| R165-1150 |  | Terminations at Chiller - R160 | 1d | 2027-03-08 | 2027-03-08 | R165-1140 | -18d |
| R165-1230 |  | Terminate Elec Room CRAH - R160 | 1d | 2027-03-08 | 2027-03-08 | R165-1220 | -18d |
| R165-1240 |  | Megger MC Cable from SWD to MOD - R160 | 1d | 2027-03-08 | 2027-03-08 | R165-1160, R165-1800 | -21d |
| R165-1420 |  | Megger Cable from UPS to VFD - R160 | 1d | 2027-03-08 | 2027-03-08 | R165-1410 | -18d |
| R165-1480 |  | Terminate Cables in VFD - R160 | 1d | 2027-03-08 | 2027-03-08 | R165-1420 SS | -18d |
| R165-1630 |  | Megger cable from Reserve Tie to Tap Box - R160 | 1d | 2027-03-08 | 2027-03-08 | R165-1490 | -20d |
| R165-1700 |  | Terminate Busplug to PDU - R160 | 1d | 2027-03-08 | 2027-03-08 | R165-1530 | -18d |
| R165-1290 |  | Terminate MOD-01 - R160 | 1d | 2027-03-09 | 2027-03-09 | R165-1240, R165-1270 | -21d |
| R165-1310 |  | Terminate at Mechanical Equipment - R160 | 1d | 2027-03-09 | 2027-03-09 | R165-1300 SS, R165-1290 SS, R165-1270, R165-1280 | -21d |
| R165-1450 |  | Penetrate MC Cable into MPZ - R160 | 1d | 2027-03-09 | 2027-03-09 | R165-1440, R165-1810 | -21d |
| R165-1550 |  | QC 2.2 checklist Elec Room CRAH - R160 | 1d | 2027-03-09 | 2027-03-09 | R165-1230 | -18d |
| R165-1570 |  | QC 2.2 checklist VFD - R160 | 1d | 2027-03-09 | 2027-03-09 | R165-1480 | -18d |
| R165-1640 |  | QC 2.2 checklist Busplug - R160 | 1d | 2027-03-09 | 2027-03-09 | R165-1700, R165-1760 | -18d |
| R165-1030 |  | Cable bus Support installed - R160 | 1d | 2027-03-10 | 2027-03-10 | R165-1040 | -25d |
| R165-1320 |  | Mechanical Equipment/Tray Grounding - R160 | 2d | 2027-03-10 | 2027-03-11 | R165-1310 | -21d |
| R165-1460 |  | Megger MPZ Cable - R160 | 1d | 2027-03-10 | 2027-03-10 | R165-1450 | -21d |
| R165-1560 |  | QC 2.2 Mechanical Equipment - R160 | 1d | 2027-03-10 | 2027-03-10 | R165-1150, R165-1310 | -19d |
| R165-1750 |  | Install conduit from SWD to Tap Box - R160 | 2d | 2027-03-10 | 2027-03-11 | R165-1040 | -26d |
| R165-1770 |  | Install conduit from SWD to Reserve UPS - R160 | 1d | 2027-03-10 | 2027-03-10 | R165-1040, R165-1110 | -24d |
| R165-1050 |  | Cable bus Install - R160 | 1d | 2027-03-11 | 2027-03-11 | R165-1030, R165-1040 | -25d |
| R165-1430 |  | Pull cable from SWD to Reserve UPS - R160 | 1d | 2027-03-11 | 2027-03-11 | R165-1770 | -24d |
| R165-1470 |  | Terminate MC Feed at MPZ - R160 | 1d | 2027-03-11 | 2027-03-11 | R165-1460 | -21d |
| R165-1520 |  | Pull cable from Reserve Tie to Reserve Tie - R160 | 2d | 2027-03-11 | 2027-03-12 | R165-1360 | -25d |
| R165-1060 |  | Cable pulled to A & P Xfmrs - R160 | 1d | 2027-03-12 | 2027-03-12 | R165-1050 | -25d |
| R165-1380 |  | Pull cable from SWD to Tap Box - R160 | 2d | 2027-03-12 | 2027-03-13 | R165-1750 | -26d |
| R165-1500 |  | QC 2.2 checklist MOD-01 - R160 | 1d | 2027-03-12 | 2027-03-12 | R165-1320 | -21d |
| R165-1510 |  | QC 2.2 checklist MOD-02 - R160 | 1d | 2027-03-12 | 2027-03-12 | R165-1320 | -21d |
| R165-1620 |  | Megger cable from SWD to Reserve UPS - R160 | 1d | 2027-03-12 | 2027-03-12 | R165-1430 | -24d |
| R165-1820 |  | QC 2.2 checklist MPZ - R160 | 1d | 2027-03-12 | 2027-03-12 | R165-1470 | -21d |
| R165-1070 |  | Megger Cable Bus Cable - R160 | 1d | 2027-03-13 | 2027-03-13 | R165-1060 | -25d |
| R165-1080 |  | Cable Bus inspection and covers - R160 | 1d | 2027-03-13 | 2027-03-13 | R165-1070 SS | -23d |
| R165-1670 |  | Terminate Reserve UPS - R160 | 1d | 2027-03-13 | 2027-03-13 | R165-1620 | -23d |
| R165-1780 |  | Megger cable from Reserve Tie to Reserve Tie - R160 | 1d | 2027-03-13 | 2027-03-13 | R165-1520 | -25d |
| R165-1090 |  | Terminations at Xfmrs - R160 | 2d | 2027-03-15 | 2027-03-16 | R165-1070 | -25d |
| R165-1100 |  | Terminations at SWD - R160 | 2d | 2027-03-15 | 2027-03-16 | R165-1070 | -25d |
| R165-1540 |  | QC 2.2 checklist Reserve UPS - R160 | 1d | 2027-03-15 | 2027-03-15 | R165-1670 | -23d |
| R165-1610 |  | Megger cable from SWD to Tap Box - R160 | 1d | 2027-03-15 | 2027-03-15 | R165-1380 | -26d |
| R165-1690 |  | Terminate Reserve Tie - R160 | 2d | 2027-03-15 | 2027-03-16 | R165-1780 | -25d |
| R165-1660 |  | Terminate Reserve SWD - R160 | 2d | 2027-03-16 | 2027-03-17 | R165-1620, R165-1610, R165-1070 | -26d |
| R165-1680 |  | Terminate Tap Boxes - R160 | 2d | 2027-03-16 | 2027-03-17 | R165-1630, R165-1610 | -26d |
| R165-1600 |  | QC 2.2 checklist XFMR - R160 | 1d | 2027-03-17 | 2027-03-17 | R165-1090, R165-1090 FF | -25d |
| R165-1740 |  | QC 2.2 checklist Reserve Tie - R160 | 1d | 2027-03-17 | 2027-03-17 | R165-1690 | -25d |
| R165-1580 |  | QC 2.2 checklist SWD - R160 | 1d | 2027-03-18 | 2027-03-18 | R165-1080, R165-1100, R165-1100 FF, R165-1660, R165-1710 | -26d |
| R165-1790 |  | QC 2.2 checklist Tap Boxes - R160 | 1d | 2027-03-18 | 2027-03-18 | R165-1680 | -26d |
| R165-1590 |  | Ready for FTE - R160 | 1d | 2027-03-19 | 2027-03-19 | R165-1820, R165-1640, R165-1740, R165-1790, R165-1600, R165-1580, R165-1570, R165-1560, R165-1550, R165-1540, R165-1510, R165-1500 | -26d |
|  | 2 | **A160** |  | 2027-03-01 | 2027-03-18 |  |  |
| A165-1330 |  | Busduct installed - A160 | 1d | 2027-03-01 | 2027-03-01 | R165-1330 SS | -27d |
| A165-1340 |  | Busplugs/Tap Boxes installed - A160 | 1d | 2027-03-02 | 2027-03-02 | A165-1330 | -27d |
| A165-1000 |  | Set Skid - A160 | 1d | 2027-03-03 | 2027-03-03 | R165-1020 SS, A165-1340, A165-1330 | -27d |
| A165-1010 |  | Set MODs - A160 | 2d | 2027-03-03 | 2027-03-04 | A165-1000 SS | -21d |
| A165-1030 |  | Cable bus Support installed - A160 | 2d | 2027-03-03 | 2027-03-04 | A165-1000 SS | -21d |
| A165-1120 |  | Chiller feed box and conduit complete - A160 | 2d | 2027-03-03 | 2027-03-04 | A165-1010 SS, A165-1000 SS | -18d |
| A165-1040 |  | SWD top covers cut out - A160 | 5d | 2027-03-04 | 2027-03-09 | A165-1000 | -25d |
| A165-1110 |  | Finish Cable Tray to Skid - A160 | 2d | 2027-03-04 | 2027-03-05 | A165-1000 | -21d |
| A165-1350 |  | Install conduit from Busplug to ATSs - A160 | 2d | 2027-03-04 | 2027-03-05 | A165-1000 | -21d |
| A165-1390 |  | Mount VFD Stand and VFD - A160 | 1d | 2027-03-04 | 2027-03-04 | A165-1000 | -19d |
| A165-1440 |  | Mount MPZ - A160 | 1d | 2027-03-04 | 2027-03-04 | A165-1000 | -18d |
| A165-1620 |  | Electrical Room CRAH Set - A160 | 1d | 2027-03-04 | 2027-03-04 | A165-1000 | -19d |
| A165-1130 |  | Pull Chiller wire - A160 | 1d | 2027-03-05 | 2027-03-05 | A165-1120, A165-1000 | -18d |

| ID | WBS | Task | Duration | Start | Finish | Predecessors | Total float |
| --- | --- | --- | --- | --- | --- | --- | --- |
| A165-1180 |  | Penetrate MC into MOD-01 - A160 | 1d | 2027-03-05 | 2027-03-05 | A165-1010 | -20d |
| A165-1190 |  | Penetrate MC into MOD-02 - A160 | 1d | 2027-03-05 | 2027-03-05 | A165-1010 | -20d |
| A165-1200 |  | Finish Conduit to Elec Room CRAH - A160 | 1d | 2027-03-05 | 2027-03-05 | A165-1620 | -19d |
| A165-1250 |  | Pull MC from MOD-01 to Mechanical Equipment - A160 | 2d | 2027-03-05 | 2027-03-06 | A165-1010 | -21d |
| A165-1260 |  | Pull MC from MOD-02 to Mechanical Equipment - A160 | 2d | 2027-03-05 | 2027-03-06 | A165-1010 | -21d |
| A165-1400 |  | Conduit from UPS to VFD - A160 | 1d | 2027-03-05 | 2027-03-05 | A165-1390 | -19d |
| A165-1450 |  | Penetrate MC Cable into MPZ - A160 | 1d | 2027-03-05 | 2027-03-05 | A165-1440 | -18d |
| A165-1140 |  | Megger Chiller Cable - A160 | 1d | 2027-03-06 | 2027-03-06 | A165-1130 | -18d |
| A165-1160 |  | Penetrate MC into SWD - A160 | 1d | 2027-03-06 | 2027-03-06 | A165-1110 | -21d |
| A165-1170 |  | Penetrat MC into UPS - A160 | 1d | 2027-03-06 | 2027-03-06 | A165-1110 | -21d |
| A165-1210 |  | Pull Cable to Elec Room CRAH - A160 | 1d | 2027-03-06 | 2027-03-06 | A165-1200 | -19d |
| A165-1360 |  | Pull ATS Cable - A160 | 1d | 2027-03-06 | 2027-03-06 | A165-1350 | -21d |
| A165-1410 |  | Pull Cable from UPS to VFD - A160 | 1d | 2027-03-06 | 2027-03-06 | A165-1400 | -19d |
| A165-1460 |  | Megger MPZ Cable - A160 | 1d | 2027-03-06 | 2027-03-06 | A165-1450 | -18d |
| A165-1490 |  | All Skid Grounding - A160 | 2d | 2027-03-06 | 2027-03-08 | A165-1110 | -18d |
| A165-1520 |  | Megger MC Cable from UPS to MOD - A160 | 1d | 2027-03-06 | 2027-03-06 | A165-1190 | -20d |
| A165-1150 |  | Terminations at Chiller - A160 | 1d | 2027-03-08 | 2027-03-08 | A165-1140 | -18d |
| A165-1220 |  | Megger MC Cable from Skid to Elec Room CRAH - A160 | 1d | 2027-03-08 | 2027-03-08 | A165-1210 | -19d |
| A165-1240 |  | Megger MC Cable from Skid to MOD - A160 | 1d | 2027-03-08 | 2027-03-08 | A165-1180, A165-1170, A165-1160 | -21d |
| A165-1270 |  | Megger MC Cable from MOD-01 to Mechanical Equipment - A160 | 1d | 2027-03-08 | 2027-03-08 | A165-1250 | -21d |
| A165-1280 |  | Megger MC Cable from MOD-02 to Mechanical Equipment - A160 | 1d | 2027-03-08 | 2027-03-08 | A165-1260 | -21d |
| A165-1420 |  | Megger Cable from UPS to VFD - A160 | 1d | 2027-03-08 | 2027-03-08 | A165-1410 | -19d |
| A165-1470 |  | Terminate MC Feed at MPZ - A160 | 1d | 2027-03-08 | 2027-03-08 | A165-1460 | -18d |
| A165-1480 |  | Terminate Cables in VFD - A160 | 1d | 2027-03-08 | 2027-03-08 | A165-1420 SS | -18d |
| A165-1630 |  | Megger Cable at ATS - A160 | 1d | 2027-03-08 | 2027-03-08 | A165-1360 | -21d |
| A165-1230 |  | Terminate Elec Room CRAH - A160 | 1d | 2027-03-09 | 2027-03-09 | A165-1220 | -19d |
| A165-1290 |  | Terminate MOD-01 - A160 | 1d | 2027-03-09 | 2027-03-09 | A165-1240, A165-1270 | -21d |
| A165-1300 |  | Terminate MOD-02 - A160 | 1d | 2027-03-09 | 2027-03-09 | A165-1520, A165-1280 | -21d |
| A165-1310 |  | Terminate at Mechanical Equipment - A160 | 1d | 2027-03-09 | 2027-03-09 | A165-1300 SS, A165-1290 SS | -21d |
| A165-1370 |  | Terminate ATS Cable at Busplugs & ATSs - A160 | 2d | 2027-03-09 | 2027-03-10 | A165-1630 | -21d |
| A165-1430 |  | Terminate Cables in UPS - A160 | 1d | 2027-03-09 | 2027-03-09 | A165-1420 | -19d |
| A165-1570 |  | QC 2.2 checklist VFD - A160 | 1d | 2027-03-09 | 2027-03-09 | A165-1480 | -18d |
| A165-1610 |  | QC 2.2 checklist Chiller - A160 | 1d | 2027-03-09 | 2027-03-09 | A165-1150 | -18d |
| A165-1650 |  | QC 2.2 checklist MPZ - A160 | 1d | 2027-03-09 | 2027-03-09 | A165-1470 | -18d |
| A165-1050 |  | Cable bus Install - A160 | 2d | 2027-03-10 | 2027-03-11 | A165-1040, A165-1030 | -25d |
| A165-1320 |  | Mechanical Equipment/Tray Grounding - A160 | 2d | 2027-03-10 | 2027-03-11 | A165-1310 | -21d |
| A165-1540 |  | QC 2.2 checklist UPS - A160 | 1d | 2027-03-10 | 2027-03-10 | A165-1430 | -19d |
| A165-1550 |  | QC 2.2 checklist Elec Room CRAH - A160 | 1d | 2027-03-10 | 2027-03-10 | A165-1230 | -19d |
| A165-1560 |  | QC 2.2 Mechanical Equipment - A160 | 1d | 2027-03-10 | 2027-03-10 | A165-1310 | -19d |
| A165-1380 |  | ATS Lashing - A160 | 1d | 2027-03-11 | 2027-03-11 | A165-1370 | -21d |
| A165-1060 |  | Cable pulled to A & P Xfmrs - A160 | 1d | 2027-03-12 | 2027-03-12 | A165-1050 | -25d |
| A165-1500 |  | QC 2.2 checklist MOD-01 - A160 | 1d | 2027-03-12 | 2027-03-12 | A165-1320 | -21d |
| A165-1510 |  | QC 2.2 checklist MOD-02 - A160 | 1d | 2027-03-12 | 2027-03-12 | A165-1320 | -21d |
| A165-1530 |  | QC 2.2 checklist ATSs - A160 | 1d | 2027-03-12 | 2027-03-12 | A165-1380 | -21d |
| A165-1640 |  | QC 2.2 checklist Busplugs - A160 | 1d | 2027-03-12 | 2027-03-12 | A165-1530 SS | -21d |
| A165-1070 |  | Megger Cable Bus Cable - A160 | 1d | 2027-03-13 | 2027-03-13 | A165-1060 | -25d |
| A165-1080 |  | Cable Bus inspection and covers - A160 | 1d | 2027-03-13 | 2027-03-13 | A165-1070 SS | -23d |
| A165-1090 |  | Terminations at Xfmrs - A160 | 2d | 2027-03-15 | 2027-03-16 | A165-1070 | -25d |
| A165-1100 |  | Terminations at SWD - A160 | 2d | 2027-03-15 | 2027-03-16 | A165-1070 | -25d |
| A165-1580 |  | QC 2.2 checklist SWD - A160 | 1d | 2027-03-17 | 2027-03-17 | A165-1080, A165-1490, A165-1100 | -25d |
| A165-1600 |  | QC 2.2 checklist Xfmrs - A160 | 1d | 2027-03-17 | 2027-03-17 | A165-1090 | -25d |
| A165-1590 |  | Ready for FTE - A160 | 1d | 2027-03-18 | 2027-03-18 | A165-1650, A165-1640, A165-1610, A165-1580, A165-1570, A165-1560, A165-1550, A165-1540, A165-1530, A165-1510, A165-1500, A165-1600 | -25d |
|  | 1 | **B160** |  | 2027-03-01 | 2027-03-18 |  |  |
| B165-1330 |  | Busduct installed - B160 | 1d | 2027-03-01 | 2027-03-01 | A165-1330 SS | -27d |
| B165-1340 |  | Busplugs/Tap Boxes installed - B160 | 1d | 2027-03-02 | 2027-03-02 | B165-1330 | -27d |
| B165-1000 |  | Set Skid - B160 | 1d | 2027-03-03 | 2027-03-03 | A165-1000 SS, B165-1340, B165-1330 | -27d |
| B165-1010 |  | Set MODs - B160 | 2d | 2027-03-03 | 2027-03-04 | B165-1000 SS | -21d |
| B165-1030 |  | Cable bus Support installed - B160 | 2d | 2027-03-03 | 2027-03-04 | B165-1000 SS | -21d |
| B165-1120 |  | Chiller feed box and conduit complete - B160 | 2d | 2027-03-03 | 2027-03-04 | B165-1010 SS, B165-1000 SS | -18d |
| B165-1040 |  | SWD top covers cut out - B160 | 5d | 2027-03-04 | 2027-03-09 | B165-1000 | -25d |
| B165-1110 |  | Finish Cable Tray to Skid - B160 | 2d | 2027-03-04 | 2027-03-05 | B165-1000 | -21d |
| B165-1350 |  | Install conduit from Busplug to ATSs - B160 | 2d | 2027-03-04 | 2027-03-05 | B165-1000 | -21d |
| B165-1390 |  | Mount VFD Stand and VFD - B160 | 1d | 2027-03-04 | 2027-03-04 | B165-1000 | -19d |
| B165-1440 |  | Mount MPZ - B160 | 1d | 2027-03-04 | 2027-03-04 | B165-1000 | -18d |
| B165-1620 |  | Electrical Room CRAH Set - B160 | 1d | 2027-03-04 | 2027-03-04 | B165-1000 | -19d |
| B165-1130 |  | Pull Chiller wire - B160 | 1d | 2027-03-05 | 2027-03-05 | B165-1120, B165-1000 | -18d |
| B165-1180 |  | Penetrate MC into MOD-01 - B160 | 1d | 2027-03-05 | 2027-03-05 | B165-1010 | -20d |
| B165-1190 |  | Penetrate MC into MOD-02 - B160 | 1d | 2027-03-05 | 2027-03-05 | B165-1010 | -20d |
| B165-1200 |  | Finish Conduit to Elec Room CRAH - B160 | 1d | 2027-03-05 | 2027-03-05 | B165-1620 | -19d |
| B165-1250 |  | Pull MC from MOD-01 to Mechanical Equipment - B160 | 2d | 2027-03-05 | 2027-03-06 | B165-1010 | -21d |

| ID | WBS | Task | Duration | Start | Finish | Predecessors | Total float |
| --- | --- | --- | --- | --- | --- | --- | --- |
| B165-1260 |  | Pull MC from MOD-02 to Mechanical Equipment - B160 | 2d | 2027-03-05 | 2027-03-06 | B165-1010 | -21d |
| B165-1400 |  | Conduit from UPS to VFD - B160 | 1d | 2027-03-05 | 2027-03-05 | B165-1390 | -19d |
| B165-1450 |  | Penetrate MC Cable into MPZ - B160 | 1d | 2027-03-05 | 2027-03-05 | B165-1440 | -18d |
| B165-1140 |  | Megger Chiller Cable - B160 | 1d | 2027-03-06 | 2027-03-06 | B165-1130 | -18d |
| B165-1160 |  | Penetrate MC into SWD - B160 | 1d | 2027-03-06 | 2027-03-06 | B165-1110 | -21d |
| B165-1170 |  | Penetrat MC into UPS - B160 | 1d | 2027-03-06 | 2027-03-06 | B165-1110 | -21d |
| B165-1210 |  | Pull Cable to Elec Room CRAH - B160 | 1d | 2027-03-06 | 2027-03-06 | B165-1200 | -19d |
| B165-1360 |  | Pull ATS Cable - B160 | 1d | 2027-03-06 | 2027-03-06 | B165-1350 | -21d |
| B165-1410 |  | Pull Cable from UPS to VFD - B160 | 1d | 2027-03-06 | 2027-03-06 | B165-1400 | -19d |
| B165-1460 |  | Megger MPZ Cable - B160 | 1d | 2027-03-06 | 2027-03-06 | B165-1450 | -18d |
| B165-1490 |  | All Skid Grounding - B160 | 2d | 2027-03-06 | 2027-03-08 | B165-1110 | -18d |
| B165-1520 |  | Megger MC Cable from UPS to MOD - B160 | 1d | 2027-03-06 | 2027-03-06 | B165-1190 | -20d |
| B165-1150 |  | Terminations at Chiller - B160 | 1d | 2027-03-08 | 2027-03-08 | B165-1140 | -18d |
| B165-1220 |  | Megger MC Cable from Skid to Elec Room CRAH - B160 | 1d | 2027-03-08 | 2027-03-08 | B165-1210 | -19d |
| B165-1240 |  | Megger MC Cable from Skid to MOD - B160 | 1d | 2027-03-08 | 2027-03-08 | B165-1180, B165-1170, B165-1160 | -21d |
| B165-1270 |  | Megger MC Cable from MOD-01 to Mechanical Equipment - B160 | 1d | 2027-03-08 | 2027-03-08 | B165-1250 | -21d |
| B165-1280 |  | Megger MC Cable from MOD-02 to Mechanical Equipment - B160 | 1d | 2027-03-08 | 2027-03-08 | B165-1260 | -21d |
| B165-1420 |  | Megger Cable from UPS to VFD - B160 | 1d | 2027-03-08 | 2027-03-08 | B165-1410 | -19d |
| B165-1470 |  | Terminate MC Feed at MPZ - B160 | 1d | 2027-03-08 | 2027-03-08 | B165-1460 | -18d |
| B165-1480 |  | Terminate Cables in VFD - B160 | 1d | 2027-03-08 | 2027-03-08 | B165-1420 SS | -18d |
| B165-1630 |  | Megger Cable at ATS - B160 | 1d | 2027-03-08 | 2027-03-08 | B165-1360 | -21d |
| B165-1230 |  | Terminate Elec Room CRAH - B160 | 1d | 2027-03-09 | 2027-03-09 | B165-1220 | -19d |
| B165-1290 |  | Terminate MOD-01 - B160 | 1d | 2027-03-09 | 2027-03-09 | B165-1240, B165-1270 | -21d |
| B165-1300 |  | Terminate MOD-02 - B160 | 1d | 2027-03-09 | 2027-03-09 | B165-1520, B165-1280 | -21d |
| B165-1310 |  | Terminate at Mechanical Equipment - B160 | 1d | 2027-03-09 | 2027-03-09 | B165-1300 SS, B165-1290 SS | -21d |
| B165-1370 |  | Terminate ATS Cable at Busplugs & ATSs - B160 | 2d | 2027-03-09 | 2027-03-10 | B165-1630 | -21d |
| B165-1430 |  | Terminate Cables in UPS - B160 | 1d | 2027-03-09 | 2027-03-09 | B165-1420 | -19d |
| B165-1570 |  | QC 2.2 checklist VFD - B160 | 1d | 2027-03-09 | 2027-03-09 | B165-1480 | -18d |
| B165-1610 |  | QC 2.2 checklist Chiller - B160 | 1d | 2027-03-09 | 2027-03-09 | B165-1150 | -18d |
| B165-1650 |  | QC 2.2 checklist MPZ - B160 | 1d | 2027-03-09 | 2027-03-09 | B165-1470 | -18d |
| B165-1050 |  | Cable bus Install - B160 | 2d | 2027-03-10 | 2027-03-11 | B165-1040, B165-1030 | -25d |
| B165-1320 |  | Mechanical Equipment/Tray Grounding - B160 | 2d | 2027-03-10 | 2027-03-11 | B165-1310 | -21d |
| B165-1540 |  | QC 2.2 checklist UPS - B160 | 1d | 2027-03-10 | 2027-03-10 | B165-1430 | -19d |
| B165-1550 |  | QC 2.2 checklist Elec Room CRAH - B160 | 1d | 2027-03-10 | 2027-03-10 | B165-1230 | -19d |
| B165-1560 |  | QC 2.2 Mechanical Equipment - B160 | 1d | 2027-03-10 | 2027-03-10 | B165-1310 | -19d |
| B165-1380 |  | ATS Lashing - B160 | 1d | 2027-03-11 | 2027-03-11 | B165-1370 | -21d |
| B165-1060 |  | Cable pulled to A & P Xfmrs - B160 | 1d | 2027-03-12 | 2027-03-12 | B165-1050 | -25d |
| B165-1500 |  | QC 2.2 checklist MOD-01 - B160 | 1d | 2027-03-12 | 2027-03-12 | B165-1320 | -21d |
| B165-1510 |  | QC 2.2 checklist MOD-02 - B160 | 1d | 2027-03-12 | 2027-03-12 | B165-1320 | -21d |
| B165-1530 |  | QC 2.2 checklist ATSs - B160 | 1d | 2027-03-12 | 2027-03-12 | B165-1380 | -21d |
| B165-1640 |  | QC 2.2 checklist Busplugs - B160 | 1d | 2027-03-12 | 2027-03-12 | B165-1530 SS | -21d |
| B165-1070 |  | Megger Cable Bus Cable - B160 | 1d | 2027-03-13 | 2027-03-13 | B165-1060 | -25d |
| B165-1080 |  | Cable Bus inspection and covers - B160 | 1d | 2027-03-13 | 2027-03-13 | B165-1070 SS | -23d |
| B165-1090 |  | Terminations at Xfmrs - B160 | 2d | 2027-03-15 | 2027-03-16 | B165-1070 | -25d |
| B165-1100 |  | Terminations at SWD - B160 | 2d | 2027-03-15 | 2027-03-16 | B165-1070 | -25d |
| B165-1580 |  | QC 2.2 checklist SWD - B160 | 1d | 2027-03-17 | 2027-03-17 | B165-1080, B165-1490, B165-1100 | -25d |
| B165-1600 |  | QC 2.2 checklist XFMR - B160 | 1d | 2027-03-17 | 2027-03-17 | B165-1090 | -25d |
| B165-1590 |  | Ready for FTE - B160 | 1d | 2027-03-18 | 2027-03-18 | B165-1650, B165-1640, B165-1610, B165-1600, B165-1580, B165-1570, B165-1560, B165-1550, B165-1540, B165-1530, B165-1510, B165-1500 | -25d |
|  | 3 | **C160** |  | 2027-03-01 | 2027-03-19 |  |  |
| C165-1330 |  | Busduct installed - C160 | 1d | 2027-03-01 | 2027-03-01 | B165-1330 SS | -27d |
| C165-1340 |  | Busplugs/Tap Boxes installed - C160 | 1d | 2027-03-02 | 2027-03-02 | C165-1330 | -26d |
| C165-1000 |  | Set Skid - C160 | 1d | 2027-03-04 | 2027-03-04 | B165-1000, C165-1340, C165-1330 | -27d |
| C165-1010 |  | Set MODs - C160 | 2d | 2027-03-04 | 2027-03-05 | C165-1000 SS | -22d |
| C165-1030 |  | Cable bus Support installed - C160 | 2d | 2027-03-04 | 2027-03-05 | C165-1000 SS | -22d |
| C165-1120 |  | Chiller feed box and conduit complete - C160 | 2d | 2027-03-04 | 2027-03-05 | C165-1010 SS, C165-1000 SS | -19d |
| C165-1040 |  | SWD top covers cut out - C160 | 5d | 2027-03-05 | 2027-03-10 | C165-1000 | -26d |
| C165-1110 |  | Finish Cable Tray to Skid - C160 | 2d | 2027-03-05 | 2027-03-06 | C165-1000 | -22d |
| C165-1350 |  | Install conduit from Busplug to ATSs - C160 | 2d | 2027-03-05 | 2027-03-06 | C165-1000 | -22d |
| C165-1390 |  | Mount VFD Stand and VFD - C160 | 1d | 2027-03-05 | 2027-03-05 | C165-1000 | -20d |
| C165-1440 |  | Mount MPZ - C160 | 1d | 2027-03-05 | 2027-03-05 | C165-1000 | -19d |
| C165-1620 |  | Electrical Room CRAH Set - C160 | 1d | 2027-03-05 | 2027-03-05 | C165-1000 | -20d |
| C165-1130 |  | Pull Chiller wire - C160 | 1d | 2027-03-06 | 2027-03-06 | C165-1120, C165-1000 | -19d |
| C165-1180 |  | Penetrate MC into MOD-01 - C160 | 1d | 2027-03-06 | 2027-03-06 | C165-1010 | -21d |
| C165-1190 |  | Penetrate MC into MOD-02 - C160 | 1d | 2027-03-06 | 2027-03-06 | C165-1010 | -21d |
| C165-1200 |  | Finish Conduit to Elec Room CRAH - C160 | 1d | 2027-03-06 | 2027-03-06 | C165-1620 | -20d |
| C165-1250 |  | Pull MC from MOD-01 to Mechanical Equipment - C160 | 2d | 2027-03-06 | 2027-03-08 | C165-1010 | -22d |
| C165-1260 |  | Pull MC from MOD-02 to Mechanical Equipment - C160 | 2d | 2027-03-06 | 2027-03-08 | C165-1010 | -22d |
| C165-1400 |  | Conduit from UPS to VFD - C160 | 1d | 2027-03-06 | 2027-03-06 | C165-1390 | -20d |
| C165-1450 |  | Penetrate MC Cable into MPZ - C160 | 1d | 2027-03-06 | 2027-03-06 | C165-1440 | -19d |
| C165-1140 |  | Megger Chiller Cable - C160 | 1d | 2027-03-08 | 2027-03-08 | C165-1130 | -19d |

| ID | WBS | Task | Duration | Start | Finish | Predecessors | Total float |
| --- | --- | --- | --- | --- | --- | --- | --- |
| C165-1160 |  | Penetrate MC into SWD - C160 | 1d | 2027-03-08 | 2027-03-08 | C165-1110 | -22d |
| C165-1170 |  | Penetrat MC into UPS - C160 | 1d | 2027-03-08 | 2027-03-08 | C165-1110 | -22d |
| C165-1210 |  | Pull Cable to Elec Room CRAH - C160 | 1d | 2027-03-08 | 2027-03-08 | C165-1200 | -20d |
| C165-1360 |  | Pull ATS Cable - C160 | 1d | 2027-03-08 | 2027-03-08 | C165-1350 | -22d |
| C165-1410 |  | Pull Cable from UPS to VFD - C160 | 1d | 2027-03-08 | 2027-03-08 | C165-1400 | -20d |
| C165-1460 |  | Megger MPZ Cable - C160 | 1d | 2027-03-08 | 2027-03-08 | C165-1450 | -19d |
| C165-1490 |  | All Skid Grounding - C160 | 2d | 2027-03-08 | 2027-03-09 | C165-1110 | -19d |
| C165-1520 |  | Megger MC Cable from UPS to MOD - C160 | 1d | 2027-03-08 | 2027-03-08 | C165-1190 | -21d |
| C165-1150 |  | Terminations at Chiller - C160 | 1d | 2027-03-09 | 2027-03-09 | C165-1140 | -19d |
| C165-1220 |  | Megger MC Cable from Skid to Elec Room CRAH - C160 | 1d | 2027-03-09 | 2027-03-09 | C165-1210 | -20d |
| C165-1240 |  | Megger MC Cable from Skid to MOD - C160 | 1d | 2027-03-09 | 2027-03-09 | C165-1180, C165-1170, C165-1160 | -22d |
| C165-1270 |  | Megger MC Cable from MOD-01 to Mechanical Equipment - C160 | 1d | 2027-03-09 | 2027-03-09 | C165-1250 | -22d |
| C165-1280 |  | Megger MC Cable from MOD-02 to Mechanical Equipment - C160 | 1d | 2027-03-09 | 2027-03-09 | C165-1260 | -22d |
| C165-1420 |  | Megger Cable from UPS to VFD - C160 | 1d | 2027-03-09 | 2027-03-09 | C165-1410 | -20d |
| C165-1470 |  | Terminate MC Feed at MPZ - C160 | 1d | 2027-03-09 | 2027-03-09 | C165-1460 | -19d |
| C165-1480 |  | Terminate Cables in VFD - C160 | 1d | 2027-03-09 | 2027-03-09 | C165-1420 SS | -19d |
| C165-1630 |  | Megger Cable at ATS - C160 | 1d | 2027-03-09 | 2027-03-09 | C165-1360 | -22d |
| C165-1230 |  | Terminate Elec Room CRAH - C160 | 1d | 2027-03-10 | 2027-03-10 | C165-1220 | -20d |
| C165-1290 |  | Terminate MOD-01 - C160 | 1d | 2027-03-10 | 2027-03-10 | C165-1240, C165-1270 | -22d |
| C165-1300 |  | Terminate MOD-02 - C160 | 1d | 2027-03-10 | 2027-03-10 | C165-1520, C165-1280 | -22d |
| C165-1310 |  | Terminate at Mechanical Equipment - C160 | 1d | 2027-03-10 | 2027-03-10 | C165-1300 SS, C165-1290 SS | -22d |
| C165-1370 |  | Terminate ATS Cable at Busplugs & ATSs - C160 | 2d | 2027-03-10 | 2027-03-11 | C165-1630 | -22d |
| C165-1430 |  | Terminate Cables in UPS - C160 | 1d | 2027-03-10 | 2027-03-10 | C165-1420 | -20d |
| C165-1570 |  | QC 2.2 checklist VFD - C160 | 1d | 2027-03-10 | 2027-03-10 | C165-1480 | -19d |
| C165-1610 |  | QC 2.2 checklist Chiller - C160 | 1d | 2027-03-10 | 2027-03-10 | C165-1150 | -19d |
| C165-1650 |  | QC 2.2 checklist MPZ - C160 | 1d | 2027-03-10 | 2027-03-10 | C165-1470 | -19d |
| C165-1050 |  | Cable bus Install - C160 | 2d | 2027-03-11 | 2027-03-12 | C165-1040, C165-1030 | -26d |
| C165-1320 |  | Mechanical Equipment/Tray Grounding - C160 | 2d | 2027-03-11 | 2027-03-12 | C165-1310 | -22d |
| C165-1540 |  | QC 2.2 checklist UPS - C160 | 1d | 2027-03-11 | 2027-03-11 | C165-1430 | -20d |
| C165-1550 |  | QC 2.2 checklist Elec Room CRAH - C160 | 1d | 2027-03-11 | 2027-03-11 | C165-1230 | -20d |
| C165-1560 |  | QC 2.2 Mechanical Equipment - C160 | 1d | 2027-03-11 | 2027-03-11 | C165-1310 | -20d |
| C165-1380 |  | ATS Lashing - C160 | 1d | 2027-03-12 | 2027-03-12 | C165-1370 | -22d |
| C165-1060 |  | Cable pulled to A & P Xfmrs - C160 | 1d | 2027-03-13 | 2027-03-13 | C165-1050 | -26d |
| C165-1500 |  | QC 2.2 checklist MOD-01 - C160 | 1d | 2027-03-13 | 2027-03-13 | C165-1320 | -22d |
| C165-1510 |  | QC 2.2 checklist MOD-02 - C160 | 1d | 2027-03-13 | 2027-03-13 | C165-1320 | -22d |
| C165-1530 |  | QC 2.2 checklist ATSs - C160 | 1d | 2027-03-13 | 2027-03-13 | C165-1380 | -22d |
| C165-1640 |  | QC 2.2 checklist Busplugs - C160 | 1d | 2027-03-13 | 2027-03-13 | C165-1530 SS | -22d |
| C165-1070 |  | Megger Cable Bus Cable - C160 | 1d | 2027-03-15 | 2027-03-15 | C165-1060 | -26d |
| C165-1080 |  | Cable Bus inspection and covers - C160 | 1d | 2027-03-15 | 2027-03-15 | C165-1070 SS | -24d |
| C165-1090 |  | Terminations at Xfmrs - C160 | 2d | 2027-03-16 | 2027-03-17 | C165-1070 | -26d |
| C165-1100 |  | Terminations at SWD - C160 | 2d | 2027-03-16 | 2027-03-17 | C165-1070 | -26d |
| C165-1580 |  | QC 2.2 checklist SWD - C160 | 1d | 2027-03-18 | 2027-03-18 | C165-1080, C165-1490, C165-1100 | -26d |
| C165-1600 |  | QC 2.2 checklist XFMR - C160 | 1d | 2027-03-18 | 2027-03-18 | C165-1090 | -26d |
| C165-1590 |  | Ready for FTE - C160 | 1d | 2027-03-19 | 2027-03-19 | C165-1650, C165-1640, C165-1610, C165-1600, C165-1580, C165-1570, C165-1560, C165-1550, C165-1540, C165-1530, C165-1510, C165-1500 | -26d |
|  | 4 | **D160** |  | 2027-03-02 | 2027-03-19 |  |  |
| D165-1330 |  | Busduct installed - D160 | 1d | 2027-03-02 | 2027-03-02 | C165-1330 | -27d |
| D165-1340 |  | Busplugs/Tap Boxes installed - D160 | 1d | 2027-03-03 | 2027-03-03 | D165-1330 | -27d |
| D165-1000 |  | Set Skid - D160 | 1d | 2027-03-04 | 2027-03-04 | C165-1000 SS, D165-1340, D165-1330 | -27d |
| D165-1010 |  | Set MODs - D160 | 2d | 2027-03-04 | 2027-03-05 | D165-1000 SS | -22d |
| D165-1030 |  | Cable bus Support installed - D160 | 2d | 2027-03-04 | 2027-03-05 | D165-1000 SS | -22d |
| D165-1120 |  | Chiller feed box and conduit complete - D160 | 2d | 2027-03-04 | 2027-03-05 | D165-1010 SS, D165-1000 SS | -19d |
| D165-1040 |  | SWD top covers cut out - D160 | 5d | 2027-03-05 | 2027-03-10 | D165-1000 | -26d |
| D165-1110 |  | Finish Cable Tray to Skid - D160 | 2d | 2027-03-05 | 2027-03-06 | D165-1000 | -22d |
| D165-1350 |  | Install conduit from Busplug to ATSs - D160 | 2d | 2027-03-05 | 2027-03-06 | D165-1000 | -22d |
| D165-1390 |  | Mount VFD Stand and VFD - D160 | 1d | 2027-03-05 | 2027-03-05 | D165-1000 | -20d |
| D165-1440 |  | Mount MPZ - D160 | 1d | 2027-03-05 | 2027-03-05 | D165-1000 | -19d |
| D165-1620 |  | Electrical Room CRAH Set - D160 | 1d | 2027-03-05 | 2027-03-05 | D165-1000 | -20d |
| D165-1130 |  | Pull Chiller wire - D160 | 1d | 2027-03-06 | 2027-03-06 | D165-1120, D165-1000 | -19d |
| D165-1180 |  | Penetrate MC into MOD-01 - D160 | 1d | 2027-03-06 | 2027-03-06 | D165-1010 | -21d |
| D165-1190 |  | Penetrate MC into MOD-02 - D160 | 1d | 2027-03-06 | 2027-03-06 | D165-1010 | -21d |
| D165-1200 |  | Finish Conduit to Elec Room CRAH - D160 | 1d | 2027-03-06 | 2027-03-06 | D165-1620 | -20d |
| D165-1250 |  | Pull MC from MOD-01 to Mechanical Equipment - D160 | 2d | 2027-03-06 | 2027-03-08 | D165-1010 | -22d |
| D165-1260 |  | Pull MC from MOD-02 to Mechanical Equipment - D160 | 2d | 2027-03-06 | 2027-03-08 | D165-1010 | -22d |
| D165-1400 |  | Conduit from UPS to VFD - D160 | 1d | 2027-03-06 | 2027-03-06 | D165-1390 | -20d |
| D165-1450 |  | Penetrate MC Cable into MPZ - D160 | 1d | 2027-03-06 | 2027-03-06 | D165-1440 | -19d |
| D165-1140 |  | Megger Chiller Cable - D160 | 1d | 2027-03-08 | 2027-03-08 | D165-1130 | -19d |
| D165-1160 |  | Penetrate MC into SWD - D160 | 1d | 2027-03-08 | 2027-03-08 | D165-1110 | -22d |
| D165-1170 |  | Penetrat MC into UPS - D160 | 1d | 2027-03-08 | 2027-03-08 | D165-1110 | -22d |
| D165-1210 |  | Pull Cable to Elec Room CRAH - D160 | 1d | 2027-03-08 | 2027-03-08 | D165-1200 | -20d |
| D165-1360 |  | Pull ATS Cable - D160 | 1d | 2027-03-08 | 2027-03-08 | D165-1350 | -22d |

| ID | WBS | Task | Duration | Start | Finish | Predecessors | Total float |
| --- | --- | --- | --- | --- | --- | --- | --- |
| D165-1410 |  | Pull Cable from UPS to VFD - D160 | 1d | 2027-03-08 | 2027-03-08 | D165-1400 | -20d |
| D165-1460 |  | Megger MPZ Cable - D160 | 1d | 2027-03-08 | 2027-03-08 | D165-1450 | -19d |
| D165-1490 |  | All Skid Grounding - D160 | 2d | 2027-03-08 | 2027-03-09 | D165-1110 | -19d |
| D165-1520 |  | Megger MC Cable from UPS to MOD - D160 | 1d | 2027-03-08 | 2027-03-08 | D165-1190 | -21d |
| D165-1150 |  | Terminations at Chiller - D160 | 1d | 2027-03-09 | 2027-03-09 | D165-1140 | -19d |
| D165-1220 |  | Megger MC Cable from Skid to Elec Room CRAH - D160 | 1d | 2027-03-09 | 2027-03-09 | D165-1210 | -20d |
| D165-1240 |  | Megger MC Cable from Skid to MOD - D160 | 1d | 2027-03-09 | 2027-03-09 | D165-1180, D165-1170, D165-1160 | -22d |
| D165-1270 |  | Megger MC Cable from MOD-01 to Mechanical Equipment - D160 | 1d | 2027-03-09 | 2027-03-09 | D165-1250 | -22d |
| D165-1280 |  | Megger MC Cable from MOD-02 to Mechanical Equipment - D160 | 1d | 2027-03-09 | 2027-03-09 | D165-1260 | -22d |
| D165-1420 |  | Megger Cable from UPS to VFD - D160 | 1d | 2027-03-09 | 2027-03-09 | D165-1410 | -20d |
| D165-1470 |  | Terminate MC Feed at MPZ - D160 | 1d | 2027-03-09 | 2027-03-09 | D165-1460 | -19d |
| D165-1480 |  | Terminate Cables in VFD - D160 | 1d | 2027-03-09 | 2027-03-09 | D165-1420 SS | -19d |
| D165-1630 |  | Megger Cable at ATS - D160 | 1d | 2027-03-09 | 2027-03-09 | D165-1360 | -22d |
| D165-1230 |  | Terminate Elec Room CRAH - D160 | 1d | 2027-03-10 | 2027-03-10 | D165-1220 | -20d |
| D165-1290 |  | Terminate MOD-01 - D160 | 1d | 2027-03-10 | 2027-03-10 | D165-1240, D165-1270 | -22d |
| D165-1300 |  | Terminate MOD-02 - D160 | 1d | 2027-03-10 | 2027-03-10 | D165-1520, D165-1280 | -22d |
| D165-1310 |  | Terminate at Mechanical Equipment - D160 | 1d | 2027-03-10 | 2027-03-10 | D165-1300 SS, D165-1290 SS | -22d |
| D165-1370 |  | Terminate ATS Cable at Busplugs & ATSs - D160 | 2d | 2027-03-10 | 2027-03-11 | D165-1630 | -22d |
| D165-1430 |  | Terminate Cables in UPS - D160 | 1d | 2027-03-10 | 2027-03-10 | D165-1420 | -20d |
| D165-1570 |  | QC 2.2 checklist VFD - D160 | 1d | 2027-03-10 | 2027-03-10 | D165-1480 | -19d |
| D165-1610 |  | QC 2.2 checklist Chiller - D160 | 1d | 2027-03-10 | 2027-03-10 | D165-1150 | -19d |
| D165-1650 |  | QC 2.2 checklist MPZ - D160 | 1d | 2027-03-10 | 2027-03-10 | D165-1470 | -19d |
| D165-1050 |  | Cable bus Install - D160 | 2d | 2027-03-11 | 2027-03-12 | D165-1040, D165-1030 | -26d |
| D165-1320 |  | Mechanical Equipment/Tray Grounding - D160 | 2d | 2027-03-11 | 2027-03-12 | D165-1310 | -22d |
| D165-1540 |  | QC 2.2 checklist UPS - D160 | 1d | 2027-03-11 | 2027-03-11 | D165-1430 | -20d |
| D165-1550 |  | QC 2.2 checklist Elec Room CRAH - D160 | 1d | 2027-03-11 | 2027-03-11 | D165-1230 | -20d |
| D165-1560 |  | QC 2.2 Mechanical Equipment - D160 | 1d | 2027-03-11 | 2027-03-11 | D165-1310 | -20d |
| D165-1380 |  | ATS Lashing - D160 | 1d | 2027-03-12 | 2027-03-12 | D165-1370 | -22d |
| D165-1060 |  | Cable pulled to A & P Xfmrs - D160 | 1d | 2027-03-13 | 2027-03-13 | D165-1050 | -26d |
| D165-1500 |  | QC 2.2 checklist MOD-01 - D160 | 1d | 2027-03-13 | 2027-03-13 | D165-1320 | -22d |
| D165-1510 |  | QC 2.2 checklist MOD-02 - D160 | 1d | 2027-03-13 | 2027-03-13 | D165-1320 | -22d |
| D165-1530 |  | QC 2.2 checklist ATSs - D160 | 1d | 2027-03-13 | 2027-03-13 | D165-1380 | -22d |
| D165-1640 |  | QC 2.2 checklist Busplugs - D160 | 1d | 2027-03-13 | 2027-03-13 | D165-1530 SS | -22d |
| D165-1070 |  | Megger Cable Bus Cable - D160 | 1d | 2027-03-15 | 2027-03-15 | D165-1060 | -26d |
| D165-1080 |  | Cable Bus inspection and covers - D160 | 1d | 2027-03-15 | 2027-03-15 | D165-1070 SS | -24d |
| D165-1090 |  | Terminations at Xfmrs - D160 | 2d | 2027-03-16 | 2027-03-17 | D165-1070 | -26d |
| D165-1100 |  | Terminations at SWD - D160 | 2d | 2027-03-16 | 2027-03-17 | D165-1070 | -26d |
| D165-1580 |  | QC 2.2 checklist SWD - D160 | 1d | 2027-03-18 | 2027-03-18 | D165-1080, D165-1490, D165-1100 | -26d |
| D165-1600 |  | QC 2.2 checklist XFMR - D160 | 1d | 2027-03-18 | 2027-03-18 | D165-1090 | -26d |
| D165-1590 |  | Ready for FTE - D160 | 1d | 2027-03-19 | 2027-03-19 | D165-1650, D165-1640, D165-1610, D165-1600, D165-1580, D165-1570, D165-1560, D165-1550, D165-1540, D165-1530, D165-1510, D165-1500 | -26d |
|  | 5 | **E160** |  | 2027-03-02 | 2027-03-19 |  |  |
| E165-1330 |  | Busduct installed - E160 | 1d | 2027-03-02 | 2027-03-02 | D165-1330 SS | -27d |
| E165-1340 |  | Busplugs/Tap Boxes installed - E160 | 1d | 2027-03-03 | 2027-03-03 | E165-1330 | -27d |
| E165-1000 |  | Set Skid - E160 | 1d | 2027-03-04 | 2027-03-04 | D165-1000 SS, E165-1340, E165-1330 | -27d |
| E165-1010 |  | Set MODs - E160 | 2d | 2027-03-04 | 2027-03-05 | E165-1000 SS | -22d |
| E165-1030 |  | Cable bus Support installed - E160 | 2d | 2027-03-04 | 2027-03-05 | E165-1000 SS | -22d |
| E165-1120 |  | Chiller feed box and conduit complete - E160 | 2d | 2027-03-04 | 2027-03-05 | E165-1010 SS, E165-1000 SS | -19d |
| E165-1040 |  | SWD top covers cut out - E160 | 5d | 2027-03-05 | 2027-03-10 | E165-1000 | -26d |
| E165-1110 |  | Finish Cable Tray to Skid - E160 | 2d | 2027-03-05 | 2027-03-06 | E165-1000 | -22d |
| E165-1350 |  | Install conduit from Busplug to ATSs - E160 | 2d | 2027-03-05 | 2027-03-06 | E165-1000 | -22d |
| E165-1390 |  | Mount VFD Stand and VFD - E160 | 1d | 2027-03-05 | 2027-03-05 | E165-1000 | -20d |
| E165-1440 |  | Mount MPZ - E160 | 1d | 2027-03-05 | 2027-03-05 | E165-1000 | -19d |
| E165-1620 |  | Electrical Room CRAH Set - E160 | 1d | 2027-03-05 | 2027-03-05 | E165-1000 | -20d |
| E165-1130 |  | Pull Chiller wire - E160 | 1d | 2027-03-06 | 2027-03-06 | E165-1120, E165-1000 | -19d |
| E165-1180 |  | Penetrate MC into MOD-01 - E160 | 1d | 2027-03-06 | 2027-03-06 | E165-1010 | -21d |
| E165-1190 |  | Penetrate MC into MOD-02 - E160 | 1d | 2027-03-06 | 2027-03-06 | E165-1010 | -21d |
| E165-1200 |  | Finish Conduit to Elec Room CRAH - E160 | 1d | 2027-03-06 | 2027-03-06 | E165-1620 | -20d |
| E165-1250 |  | Pull MC from MOD-01 to Mechanical Equipment - E160 | 2d | 2027-03-06 | 2027-03-08 | E165-1010 | -22d |
| E165-1260 |  | Pull MC from MOD-02 to Mechanical Equipment - E160 | 2d | 2027-03-06 | 2027-03-08 | E165-1010 | -22d |
| E165-1400 |  | Conduit from UPS to VFD - E160 | 1d | 2027-03-06 | 2027-03-06 | E165-1390 | -20d |
| E165-1450 |  | Penetrate MC Cable into MPZ - E160 | 1d | 2027-03-06 | 2027-03-06 | E165-1440 | -19d |
| E165-1140 |  | Megger Chiller Cable - E160 | 1d | 2027-03-08 | 2027-03-08 | E165-1130 | -19d |
| E165-1160 |  | Penetrate MC into SWD - E160 | 1d | 2027-03-08 | 2027-03-08 | E165-1110 | -22d |
| E165-1170 |  | Penetrat MC into UPS - E160 | 1d | 2027-03-08 | 2027-03-08 | E165-1110 | -22d |
| E165-1210 |  | Pull Cable to Elec Room CRAH - E160 | 1d | 2027-03-08 | 2027-03-08 | E165-1200 | -20d |
| E165-1360 |  | Pull ATS Cable - E160 | 1d | 2027-03-08 | 2027-03-08 | E165-1350 | -22d |
| E165-1410 |  | Pull Cable from UPS to VFD - E160 | 1d | 2027-03-08 | 2027-03-08 | E165-1400 | -20d |
| E165-1460 |  | Megger MPZ Cable - E160 | 1d | 2027-03-08 | 2027-03-08 | E165-1450 | -19d |
| E165-1490 |  | All Skid Grounding - E160 | 2d | 2027-03-08 | 2027-03-09 | E165-1110 | -19d |
| E165-1520 |  | Megger MC Cable from UPS to MOD - E160 | 1d | 2027-03-08 | 2027-03-08 | E165-1190 | -21d |

| ID | WBS | Task | Duration | Start | Finish | Predecessors | Total float |
| --- | --- | --- | --- | --- | --- | --- | --- |
| E165-1150 |  | Terminations at Chiller - E160 | 1d | 2027-03-09 | 2027-03-09 | E165-1140 | -19d |
| E165-1220 |  | Megger MC Cable from Skid to Elec Room CRAH - E160 | 1d | 2027-03-09 | 2027-03-09 | E165-1210 | -20d |
| E165-1240 |  | Megger MC Cable from Skid to MOD - E160 | 1d | 2027-03-09 | 2027-03-09 | E165-1180, E165-1170, E165-1160 | -22d |
| E165-1270 |  | Megger MC Cable from MOD-01 to Mechanical Equipment - E160 | 1d | 2027-03-09 | 2027-03-09 | E165-1250 | -22d |
| E165-1280 |  | Megger MC Cable from MOD-02 to Mechanical Equipment - E160 | 1d | 2027-03-09 | 2027-03-09 | E165-1260 | -22d |
| E165-1420 |  | Megger Cable from UPS to VFD - E160 | 1d | 2027-03-09 | 2027-03-09 | E165-1410 | -20d |
| E165-1470 |  | Terminate MC Feed at MPZ - E160 | 1d | 2027-03-09 | 2027-03-09 | E165-1460 | -19d |
| E165-1480 |  | Terminate Cables in VFD - E160 | 1d | 2027-03-09 | 2027-03-09 | E165-1420 SS | -19d |
| E165-1630 |  | Megger Cable at ATS - E160 | 1d | 2027-03-09 | 2027-03-09 | E165-1360 | -22d |
| E165-1230 |  | Terminate Elec Room CRAH - E160 | 1d | 2027-03-10 | 2027-03-10 | E165-1220 | -20d |
| E165-1290 |  | Terminate MOD-01 - E160 | 1d | 2027-03-10 | 2027-03-10 | E165-1240, E165-1270 | -22d |
| E165-1300 |  | Terminate MOD-02 - E160 | 1d | 2027-03-10 | 2027-03-10 | E165-1520, E165-1280 | -22d |
| E165-1310 |  | Terminate at Mechanical Equipment - E160 | 1d | 2027-03-10 | 2027-03-10 | E165-1300 SS, E165-1290 SS | -22d |
| E165-1370 |  | Terminate ATS Cable at Busplugs & ATSs - E160 | 2d | 2027-03-10 | 2027-03-11 | E165-1630 | -22d |
| E165-1430 |  | Terminate Cables in UPS - E160 | 1d | 2027-03-10 | 2027-03-10 | E165-1420 | -20d |
| E165-1570 |  | QC 2.2 checklist VFD - E160 | 1d | 2027-03-10 | 2027-03-10 | E165-1480 | -19d |
| E165-1610 |  | QC 2.2 checklist Chiller - E160 | 1d | 2027-03-10 | 2027-03-10 | E165-1150 | -19d |
| E165-1650 |  | QC 2.2 checklist MPZ - E160 | 1d | 2027-03-10 | 2027-03-10 | E165-1470 | -19d |
| E165-1050 |  | Cable bus Install - E160 | 2d | 2027-03-11 | 2027-03-12 | E165-1040, E165-1030 | -26d |
| E165-1320 |  | Mechanical Equipment/Tray Grounding - E160 | 2d | 2027-03-11 | 2027-03-12 | E165-1310 | -22d |
| E165-1540 |  | QC 2.2 checklist UPS - E160 | 1d | 2027-03-11 | 2027-03-11 | E165-1430 | -20d |
| E165-1550 |  | QC 2.2 checklist Elec Room CRAH - E160 | 1d | 2027-03-11 | 2027-03-11 | E165-1230 | -20d |
| E165-1560 |  | QC 2.2 Mechanical Equipment - E160 | 1d | 2027-03-11 | 2027-03-11 | E165-1310 | -20d |
| E165-1380 |  | ATS Lashing - E160 | 1d | 2027-03-12 | 2027-03-12 | E165-1370 | -22d |
| E165-1060 |  | Cable pulled to A & P Xfmrs - E160 | 1d | 2027-03-13 | 2027-03-13 | E165-1050 | -26d |
| E165-1500 |  | QC 2.2 checklist MOD-01 - E160 | 1d | 2027-03-13 | 2027-03-13 | E165-1320 | -22d |
| E165-1510 |  | QC 2.2 checklist MOD-02 - E160 | 1d | 2027-03-13 | 2027-03-13 | E165-1320 | -22d |
| E165-1530 |  | QC 2.2 checklist ATSs - E160 | 1d | 2027-03-13 | 2027-03-13 | E165-1380 | -22d |
| E165-1640 |  | QC 2.2 checklist Busplugs - E160 | 1d | 2027-03-13 | 2027-03-13 | E165-1530 SS | -22d |
| E165-1070 |  | Megger Cable Bus Cable - E160 | 1d | 2027-03-15 | 2027-03-15 | E165-1060 | -26d |
| E165-1080 |  | Cable Bus inspection and covers - E160 | 1d | 2027-03-15 | 2027-03-15 | E165-1070 SS | -24d |
| E165-1090 |  | Terminations at Xfmrs - E160 | 2d | 2027-03-16 | 2027-03-17 | E165-1070 | -26d |
| E165-1100 |  | Terminations at SWD - E160 | 2d | 2027-03-16 | 2027-03-17 | E165-1070 | -26d |
| E165-1580 |  | QC 2.2 checklist SWD - E160 | 1d | 2027-03-18 | 2027-03-18 | E165-1080, E165-1490, E165-1100 | -26d |
| E165-1600 |  | QC 2.2 checklist XFMR - E160 | 1d | 2027-03-18 | 2027-03-18 | E165-1090 | -26d |
| E165-1590 |  | Ready for FTE - E160 | 1d | 2027-03-19 | 2027-03-19 | E165-1650, E165-1640, E165-1610, E165-1600, E165-1580, E165-1570, E165-1560, E165-1550, E165-1540, E165-1530, E165-1510, E165-1500 | -26d |
|  | 6 | **F160** |  | 2027-03-02 | 2027-03-19 |  |  |
| F165-1330 |  | Busduct installed - F160 | 1d | 2027-03-02 | 2027-03-02 | E165-1330 SS | -27d |
| F165-1340 |  | Busplugs/Tap Boxes installed - F160 | 1d | 2027-03-03 | 2027-03-03 | F165-1330 | -27d |
| F165-1000 |  | Set Skid - F160 | 1d | 2027-03-04 | 2027-03-04 | E165-1000 SS, F165-1340, F165-1330 | -27d |
| F165-1010 |  | Set MODs - F160 | 2d | 2027-03-04 | 2027-03-05 | F165-1000 SS | -22d |
| F165-1030 |  | Cable bus Support installed - F160 | 2d | 2027-03-04 | 2027-03-05 | F165-1000 SS | -22d |
| F165-1120 |  | Chiller feed box and conduit complete - F160 | 2d | 2027-03-04 | 2027-03-05 | F165-1010 SS, F165-1000 SS | -19d |
| F165-1040 |  | SWD top covers cut out - F160 | 5d | 2027-03-05 | 2027-03-10 | F165-1000 | -26d |
| F165-1110 |  | Finish Cable Tray to Skid - F160 | 2d | 2027-03-05 | 2027-03-06 | F165-1000 | -22d |
| F165-1350 |  | Install conduit from Busplug to ATSs - F160 | 2d | 2027-03-05 | 2027-03-06 | F165-1000 | -22d |
| F165-1390 |  | Mount VFD Stand and VFD - F160 | 1d | 2027-03-05 | 2027-03-05 | F165-1000 | -20d |
| F165-1440 |  | Mount MPZ - F160 | 1d | 2027-03-05 | 2027-03-05 | F165-1000 | -19d |
| F165-1620 |  | Electrical Room CRAH Set - F160 | 1d | 2027-03-05 | 2027-03-05 | F165-1000 | -20d |
| F165-1130 |  | Pull Chiller wire - F160 | 1d | 2027-03-06 | 2027-03-06 | F165-1120, F165-1000 | -19d |
| F165-1180 |  | Penetrate MC into MOD-01 - F160 | 1d | 2027-03-06 | 2027-03-06 | F165-1010 | -21d |
| F165-1190 |  | Penetrate MC into MOD-02 - F160 | 1d | 2027-03-06 | 2027-03-06 | F165-1010 | -21d |
| F165-1200 |  | Finish Conduit to Elec Room CRAH - F160 | 1d | 2027-03-06 | 2027-03-06 | F165-1620 | -20d |
| F165-1250 |  | Pull MC from MOD-01 to Mechanical Equipment - F160 | 2d | 2027-03-06 | 2027-03-08 | F165-1010 | -22d |
| F165-1260 |  | Pull MC from MOD-02 to Mechanical Equipment - F160 | 2d | 2027-03-06 | 2027-03-08 | F165-1010 | -22d |
| F165-1400 |  | Conduit from UPS to VFD - F160 | 1d | 2027-03-06 | 2027-03-06 | F165-1390 | -20d |
| F165-1450 |  | Penetrate MC Cable into MPZ - F160 | 1d | 2027-03-06 | 2027-03-06 | F165-1440 | -19d |
| F165-1140 |  | Megger Chiller Cable - F160 | 1d | 2027-03-08 | 2027-03-08 | F165-1130 | -19d |
| F165-1160 |  | Penetrate MC into SWD - F160 | 1d | 2027-03-08 | 2027-03-08 | F165-1110 | -22d |
| F165-1170 |  | Penetrat MC into UPS - F160 | 1d | 2027-03-08 | 2027-03-08 | F165-1110 | -22d |
| F165-1210 |  | Pull Cable to Elec Room CRAH - F160 | 1d | 2027-03-08 | 2027-03-08 | F165-1200 | -20d |
| F165-1360 |  | Pull ATS Cable - F160 | 1d | 2027-03-08 | 2027-03-08 | F165-1350 | -22d |
| F165-1410 |  | Pull Cable from UPS to VFD - F160 | 1d | 2027-03-08 | 2027-03-08 | F165-1400 | -20d |
| F165-1460 |  | Megger MPZ Cable - F160 | 1d | 2027-03-08 | 2027-03-08 | F165-1450 | -19d |
| F165-1490 |  | All Skid Grounding - F160 | 2d | 2027-03-08 | 2027-03-09 | F165-1110 | -19d |
| F165-1520 |  | Megger MC Cable from UPS to MOD - F160 | 1d | 2027-03-08 | 2027-03-08 | F165-1190 | -21d |
| F165-1150 |  | Terminations at Chiller - F160 | 1d | 2027-03-09 | 2027-03-09 | F165-1140 | -19d |
| F165-1220 |  | Megger MC Cable from Skid to Elec Room CRAH - F160 | 1d | 2027-03-09 | 2027-03-09 | F165-1210 | -20d |
| F165-1240 |  | Megger MC Cable from Skid to MOD - F160 | 1d | 2027-03-09 | 2027-03-09 | F165-1180, F165-1170, F165-1160 | -22d |
| F165-1270 |  | Megger MC Cable from MOD-01 to Mechanical Equipment - F160 | 1d | 2027-03-09 | 2027-03-09 | F165-1250 | -22d |

| ID | WBS | Task | Duration | Start | Finish | Predecessors | Total float |
| --- | --- | --- | --- | --- | --- | --- | --- |
| F165-1280 |  | Megger MC Cable from MOD-02 to Mechanical Equipment - F160 | 1d | 2027-03-09 | 2027-03-09 | F165-1260 | -22d |
| F165-1420 |  | Megger Cable from UPS to VFD - F160 | 1d | 2027-03-09 | 2027-03-09 | F165-1410 | -20d |
| F165-1470 |  | Terminate MC Feed at MPZ - F160 | 1d | 2027-03-09 | 2027-03-09 | F165-1460 | -19d |
| F165-1480 |  | Terminate Cables in VFD - F160 | 1d | 2027-03-09 | 2027-03-09 | F165-1420 SS | -19d |
| F165-1630 |  | Megger Cable at ATS - F160 | 1d | 2027-03-09 | 2027-03-09 | F165-1360 | -22d |
| F165-1230 |  | Terminate Elec Room CRAH - F160 | 1d | 2027-03-10 | 2027-03-10 | F165-1220 | -20d |
| F165-1290 |  | Terminate MOD-01 - F160 | 1d | 2027-03-10 | 2027-03-10 | F165-1240, F165-1270 | -22d |
| F165-1300 |  | Terminate MOD-02 - F160 | 1d | 2027-03-10 | 2027-03-10 | F165-1520, F165-1280 | -22d |
| F165-1310 |  | Terminate at Mechanical Equipment - F160 | 1d | 2027-03-10 | 2027-03-10 | F165-1300 SS, F165-1290 SS | -22d |
| F165-1370 |  | Terminate ATS Cable at Busplugs & ATSs - F160 | 2d | 2027-03-10 | 2027-03-11 | F165-1630 | -22d |
| F165-1430 |  | Terminate Cables in UPS - F160 | 1d | 2027-03-10 | 2027-03-10 | F165-1420 | -20d |
| F165-1570 |  | QC 2.2 checklist VFD - F160 | 1d | 2027-03-10 | 2027-03-10 | F165-1480 | -19d |
| F165-1610 |  | QC 2.2 checklist Chiller - F160 | 1d | 2027-03-10 | 2027-03-10 | F165-1150 | -19d |
| F165-1650 |  | QC 2.2 checklist MPZ - F160 | 1d | 2027-03-10 | 2027-03-10 | F165-1470 | -19d |
| F165-1050 |  | Cable bus Install - F160 | 2d | 2027-03-11 | 2027-03-12 | F165-1040, F165-1030 | -26d |
| F165-1320 |  | Mechanical Equipment/Tray Grounding - F160 | 2d | 2027-03-11 | 2027-03-12 | F165-1310 | -22d |
| F165-1540 |  | QC 2.2 checklist UPS - F160 | 1d | 2027-03-11 | 2027-03-11 | F165-1430 | -20d |
| F165-1550 |  | QC 2.2 checklist Elec Room CRAH - F160 | 1d | 2027-03-11 | 2027-03-11 | F165-1230 | -20d |
| F165-1560 |  | QC 2.2 Mechanical Equipment - F160 | 1d | 2027-03-11 | 2027-03-11 | F165-1310 | -20d |
| F165-1380 |  | ATS Lashing - F160 | 1d | 2027-03-12 | 2027-03-12 | F165-1370 | -22d |
| F165-1060 |  | Cable pulled to A & P Xfmrs - F160 | 1d | 2027-03-13 | 2027-03-13 | F165-1050 | -26d |
| F165-1500 |  | QC 2.2 checklist MOD-01 - F160 | 1d | 2027-03-13 | 2027-03-13 | F165-1320 | -22d |
| F165-1510 |  | QC 2.2 checklist MOD-02 - F160 | 1d | 2027-03-13 | 2027-03-13 | F165-1320 | -22d |
| F165-1530 |  | QC 2.2 checklist ATSs - F160 | 1d | 2027-03-13 | 2027-03-13 | F165-1380 | -22d |
| F165-1640 |  | QC 2.2 checklist Busplugs - F160 | 1d | 2027-03-13 | 2027-03-13 | F165-1530 SS | -22d |
| F165-1070 |  | Megger Cable Bus Cable - F160 | 1d | 2027-03-15 | 2027-03-15 | F165-1060 | -26d |
| F165-1080 |  | Cable Bus inspection and covers - F160 | 1d | 2027-03-15 | 2027-03-15 | F165-1070 SS | -24d |
| F165-1090 |  | Terminations at Xfmrs - F160 | 2d | 2027-03-16 | 2027-03-17 | F165-1070 | -26d |
| F165-1100 |  | Terminations at SWD - F160 | 2d | 2027-03-16 | 2027-03-17 | F165-1070 | -26d |
| F165-1580 |  | QC 2.2 checklist SWD - F160 | 1d | 2027-03-18 | 2027-03-18 | F165-1080, F165-1490, F165-1100 | -26d |
| F165-1600 |  | QC 2.2 checklist XFMR - F160 | 1d | 2027-03-18 | 2027-03-18 | F165-1090 | -26d |
| F165-1590 |  | Ready for FTE - F160 | 1d | 2027-03-19 | 2027-03-19 | F165-1650, F165-1640, F165-1610, F165-1600, F165-1580, F165-1570, F165-1560, F165-1550, F165-1540, F165-1530, F165-1510, F165-1500 | -26d |
|  | 7 | **G160** |  | 2027-03-02 | 2027-03-20 |  |  |
| G165-1330 |  | Busduct installed - G160 | 1d | 2027-03-02 | 2027-03-02 | F165-1330 SS | -27d |
| G165-1340 |  | Busplugs/Tap Boxes installed - G160 | 1d | 2027-03-03 | 2027-03-03 | G165-1330 | -26d |
| G165-1000 |  | Set Skid - G160 | 1d | 2027-03-05 | 2027-03-05 | F165-1000, G165-1340, G165-1330 | -27d |
| G165-1010 |  | Set MODs - G160 | 2d | 2027-03-05 | 2027-03-06 | G165-1000 SS | -23d |
| G165-1030 |  | Cable bus Support installed - G160 | 2d | 2027-03-05 | 2027-03-06 | G165-1000 SS | -23d |
| G165-1120 |  | Chiller feed box and conduit complete - G160 | 2d | 2027-03-05 | 2027-03-06 | G165-1010 SS, G165-1000 SS | -20d |
| G165-1040 |  | SWD top covers cut out - G160 | 5d | 2027-03-06 | 2027-03-11 | G165-1000 | -27d |
| G165-1110 |  | Finish Cable Tray to Skid - G160 | 2d | 2027-03-06 | 2027-03-08 | G165-1000 | -23d |
| G165-1350 |  | Install conduit from Busplug to ATSs - G160 | 2d | 2027-03-06 | 2027-03-08 | G165-1000 | -23d |
| G165-1390 |  | Mount VFD Stand and VFD - G160 | 1d | 2027-03-06 | 2027-03-06 | G165-1000 | -21d |
| G165-1440 |  | Mount MPZ - G160 | 1d | 2027-03-06 | 2027-03-06 | G165-1000 | -20d |
| G165-1620 |  | Electrical Room CRAH Set - G160 | 1d | 2027-03-06 | 2027-03-06 | G165-1000 | -21d |
| G165-1130 |  | Pull Chiller wire - G160 | 1d | 2027-03-08 | 2027-03-08 | G165-1120, G165-1000 | -20d |
| G165-1180 |  | Penetrate MC into MOD-01 - G160 | 1d | 2027-03-08 | 2027-03-08 | G165-1010 | -22d |
| G165-1190 |  | Penetrate MC into MOD-02 - G160 | 1d | 2027-03-08 | 2027-03-08 | G165-1010 | -22d |
| G165-1200 |  | Finish Conduit to Elec Room CRAH - G160 | 1d | 2027-03-08 | 2027-03-08 | G165-1620 | -21d |
| G165-1250 |  | Pull MC from MOD-01 to Mechanical Equipment - G160 | 2d | 2027-03-08 | 2027-03-09 | G165-1010 | -23d |
| G165-1260 |  | Pull MC from MOD-02 to Mechanical Equipment - G160 | 2d | 2027-03-08 | 2027-03-09 | G165-1010 | -23d |
| G165-1400 |  | Conduit from UPS to VFD - G160 | 1d | 2027-03-08 | 2027-03-08 | G165-1390 | -21d |
| G165-1450 |  | Penetrate MC Cable into MPZ - G160 | 1d | 2027-03-08 | 2027-03-08 | G165-1440 | -20d |
| G165-1140 |  | Megger Chiller Cable - G160 | 1d | 2027-03-09 | 2027-03-09 | G165-1130 | -20d |
| G165-1160 |  | Penetrate MC into SWD - G160 | 1d | 2027-03-09 | 2027-03-09 | G165-1110 | -23d |
| G165-1170 |  | Penetrat MC into UPS - G160 | 1d | 2027-03-09 | 2027-03-09 | G165-1110 | -23d |
| G165-1210 |  | Pull Cable to Elec Room CRAH - G160 | 1d | 2027-03-09 | 2027-03-09 | G165-1200 | -21d |
| G165-1360 |  | Pull ATS Cable - G160 | 1d | 2027-03-09 | 2027-03-09 | G165-1350 | -23d |
| G165-1410 |  | Pull Cable from UPS to VFD - G160 | 1d | 2027-03-09 | 2027-03-09 | G165-1400 | -21d |
| G165-1460 |  | Megger MPZ Cable - G160 | 1d | 2027-03-09 | 2027-03-09 | G165-1450 | -20d |
| G165-1490 |  | All Skid Grounding - G160 | 2d | 2027-03-09 | 2027-03-10 | G165-1110 | -20d |
| G165-1520 |  | Megger MC Cable from UPS to MOD - G160 | 1d | 2027-03-09 | 2027-03-09 | G165-1190 | -22d |
| G165-1150 |  | Terminations at Chiller - G160 | 1d | 2027-03-10 | 2027-03-10 | G165-1140 | -20d |
| G165-1220 |  | Megger MC Cable from Skid to Elec Room CRAH - G160 | 1d | 2027-03-10 | 2027-03-10 | G165-1210 | -21d |
| G165-1240 |  | Megger MC Cable from Skid to MOD - G160 | 1d | 2027-03-10 | 2027-03-10 | G165-1180, G165-1170, G165-1160 | -23d |
| G165-1270 |  | Megger MC Cable from MOD-01 to Mechanical Equipment - G160 | 1d | 2027-03-10 | 2027-03-10 | G165-1250 | -23d |
| G165-1280 |  | Megger MC Cable from MOD-02 to Mechanical Equipment - G160 | 1d | 2027-03-10 | 2027-03-10 | G165-1260 | -23d |
| G165-1420 |  | Megger Cable from UPS to VFD - G160 | 1d | 2027-03-10 | 2027-03-10 | G165-1410 | -21d |
| G165-1470 |  | Terminate MC Feed at MPZ - G160 | 1d | 2027-03-10 | 2027-03-10 | G165-1460 | -20d |
| G165-1480 |  | Terminate Cables in VFD - G160 | 1d | 2027-03-10 | 2027-03-10 | G165-1420 SS | -20d |

| ID | WBS | Task | Duration | Start | Finish | Predecessors | Total float |
| --- | --- | --- | --- | --- | --- | --- | --- |
| G165-1630 |  | Megger Cable at ATS - G160 | 1d | 2027-03-10 | 2027-03-10 | G165-1360 | -23d |
| G165-1230 |  | Terminate Elec Room CRAH - G160 | 1d | 2027-03-11 | 2027-03-11 | G165-1220 | -21d |
| G165-1290 |  | Terminate MOD-01 - G160 | 1d | 2027-03-11 | 2027-03-11 | G165-1240, G165-1270 | -23d |
| G165-1300 |  | Terminate MOD-02 - G160 | 1d | 2027-03-11 | 2027-03-11 | G165-1520, G165-1280 | -23d |
| G165-1310 |  | Terminate at Mechanical Equipment - G160 | 1d | 2027-03-11 | 2027-03-11 | G165-1300 SS, G165-1290 SS | -23d |
| G165-1370 |  | Terminate ATS Cable at Busplugs & ATSs - G160 | 2d | 2027-03-11 | 2027-03-12 | G165-1630 | -23d |
| G165-1430 |  | Terminate Cables in UPS - G160 | 1d | 2027-03-11 | 2027-03-11 | G165-1420 | -21d |
| G165-1570 |  | QC 2.2 checklist VFD - G160 | 1d | 2027-03-11 | 2027-03-11 | G165-1480 | -20d |
| G165-1610 |  | QC 2.2 checklist Chiller - G160 | 1d | 2027-03-11 | 2027-03-11 | G165-1150 | -20d |
| G165-1650 |  | QC 2.2 checklist MPZ - G160 | 1d | 2027-03-11 | 2027-03-11 | G165-1470 | -20d |
| G165-1050 |  | Cable bus Install - G160 | 2d | 2027-03-12 | 2027-03-13 | G165-1040, G165-1030 | -27d |
| G165-1320 |  | Mechanical Equipment/Tray Grounding - G160 | 2d | 2027-03-12 | 2027-03-13 | G165-1310 | -23d |
| G165-1540 |  | QC 2.2 checklist UPS - G160 | 1d | 2027-03-12 | 2027-03-12 | G165-1430 | -21d |
| G165-1550 |  | QC 2.2 checklist Elec Room CRAH - G160 | 1d | 2027-03-12 | 2027-03-12 | G165-1230 | -21d |
| G165-1560 |  | QC 2.2 Mechanical Equipment - G160 | 1d | 2027-03-12 | 2027-03-12 | G165-1310 | -21d |
| G165-1380 |  | ATS Lashing - G160 | 1d | 2027-03-13 | 2027-03-13 | G165-1370 | -23d |
| G165-1060 |  | Cable pulled to A & P Xfmrs - G160 | 1d | 2027-03-15 | 2027-03-15 | G165-1050 | -27d |
| G165-1500 |  | QC 2.2 checklist MOD-01 - G160 | 1d | 2027-03-15 | 2027-03-15 | G165-1320 | -23d |
| G165-1510 |  | QC 2.2 checklist MOD-02 - G160 | 1d | 2027-03-15 | 2027-03-15 | G165-1320 | -23d |
| G165-1530 |  | QC 2.2 checklist ATSs - G160 | 1d | 2027-03-15 | 2027-03-15 | G165-1380 | -23d |
| G165-1640 |  | QC 2.2 checklist Busplugs - G160 | 1d | 2027-03-15 | 2027-03-15 | G165-1530 SS | -23d |
| G165-1070 |  | Megger Cable Bus Cable - G160 | 1d | 2027-03-16 | 2027-03-16 | G165-1060 | -27d |
| G165-1080 |  | Cable Bus inspection and covers - G160 | 1d | 2027-03-16 | 2027-03-16 | G165-1070 SS | -25d |
| G165-1090 |  | Terminations at Xfmrs - G160 | 2d | 2027-03-17 | 2027-03-18 | G165-1070 | -27d |
| G165-1100 |  | Terminations at SWD - G160 | 2d | 2027-03-17 | 2027-03-18 | G165-1070 | -27d |
| G165-1580 |  | QC 2.2 checklist SWD - G160 | 1d | 2027-03-19 | 2027-03-19 | G165-1080, G165-1490, G165-1100 | -27d |
| G165-1600 |  | QC 2.2 checklist XFMR - G160 | 1d | 2027-03-19 | 2027-03-19 | G165-1090 | -27d |
| G165-1590 |  | Ready for FTE - G160 | 1d | 2027-03-20 | 2027-03-20 | G165-1650, G165-1640, G165-1610, G165-1600, G165-1580, G165-1570, G165-1560, G165-1550, G165-1540, G165-1530, G165-1510, G165-1500 | -27d |
|  | 9 | **H160** |  | 2027-03-03 | 2027-03-20 |  |  |
| H165-1330 |  | Busduct installed - H160 | 1d | 2027-03-03 | 2027-03-03 | G165-1330 | -27d |
| H165-1340 |  | Busplugs/Tap Boxes installed - H160 | 1d | 2027-03-04 | 2027-03-04 | H165-1330 | -27d |
| H165-1000 |  | Set Skid - H160 | 1d | 2027-03-05 | 2027-03-05 | G165-1000 SS, H165-1340, H165-1330 | -27d |
| H165-1010 |  | Set MODs - H160 | 2d | 2027-03-05 | 2027-03-06 | H165-1000 SS | -23d |
| H165-1030 |  | Cable bus Support installed - H160 | 2d | 2027-03-05 | 2027-03-06 | H165-1000 SS | -23d |
| H165-1120 |  | Chiller feed box and conduit complete - H160 | 2d | 2027-03-05 | 2027-03-06 | H165-1010 SS, H165-1000 SS | -20d |
| H165-1040 |  | SWD top covers cut out - H160 | 5d | 2027-03-06 | 2027-03-11 | H165-1000 | -27d |
| H165-1110 |  | Finish Cable Tray to Skid - H160 | 2d | 2027-03-06 | 2027-03-08 | H165-1000 | -23d |
| H165-1350 |  | Install conduit from Busplug to ATSs - H160 | 2d | 2027-03-06 | 2027-03-08 | H165-1000 | -23d |
| H165-1390 |  | Mount VFD Stand and VFD - H160 | 1d | 2027-03-06 | 2027-03-06 | H165-1000 | -21d |
| H165-1440 |  | Mount MPZ - H160 | 1d | 2027-03-06 | 2027-03-06 | H165-1000 | -20d |
| H165-1620 |  | Electrical Room CRAH Set - H160 | 1d | 2027-03-06 | 2027-03-06 | H165-1000 | -21d |
| H165-1130 |  | Pull Chiller wire - H160 | 1d | 2027-03-08 | 2027-03-08 | H165-1120, H165-1000 | -20d |
| H165-1180 |  | Penetrate MC into MOD-01 - H160 | 1d | 2027-03-08 | 2027-03-08 | H165-1010 | -22d |
| H165-1190 |  | Penetrate MC into MOD-02 - H160 | 1d | 2027-03-08 | 2027-03-08 | H165-1010 | -22d |
| H165-1200 |  | Finish Conduit to Elec Room CRAH - H160 | 1d | 2027-03-08 | 2027-03-08 | H165-1620 | -21d |
| H165-1250 |  | Pull MC from MOD-01 to Mechanical Equipment - H160 | 2d | 2027-03-08 | 2027-03-09 | H165-1010 | -23d |
| H165-1260 |  | Pull MC from MOD-02 to Mechanical Equipment - H160 | 2d | 2027-03-08 | 2027-03-09 | H165-1010 | -23d |
| H165-1400 |  | Conduit from UPS to VFD - H160 | 1d | 2027-03-08 | 2027-03-08 | H165-1390 | -21d |
| H165-1450 |  | Penetrate MC Cable into MPZ - H160 | 1d | 2027-03-08 | 2027-03-08 | H165-1440 | -20d |
| H165-1140 |  | Megger Chiller Cable - H160 | 1d | 2027-03-09 | 2027-03-09 | H165-1130 | -20d |
| H165-1160 |  | Penetrate MC into SWD - H160 | 1d | 2027-03-09 | 2027-03-09 | H165-1110 | -23d |
| H165-1170 |  | Penetrat MC into UPS - H160 | 1d | 2027-03-09 | 2027-03-09 | H165-1110 | -23d |
| H165-1210 |  | Pull Cable to Elec Room CRAH - H160 | 1d | 2027-03-09 | 2027-03-09 | H165-1200 | -21d |
| H165-1360 |  | Pull ATS Cable - H160 | 1d | 2027-03-09 | 2027-03-09 | H165-1350 | -23d |
| H165-1410 |  | Pull Cable from UPS to VFD - H160 | 1d | 2027-03-09 | 2027-03-09 | H165-1400 | -21d |
| H165-1460 |  | Megger MPZ Cable - H160 | 1d | 2027-03-09 | 2027-03-09 | H165-1450 | -20d |
| H165-1490 |  | All Skid Grounding - H160 | 2d | 2027-03-09 | 2027-03-10 | H165-1110 | -20d |
| H165-1520 |  | Megger MC Cable from UPS to MOD - H160 | 1d | 2027-03-09 | 2027-03-09 | H165-1190 | -22d |
| H165-1150 |  | Terminations at Chiller - H160 | 1d | 2027-03-10 | 2027-03-10 | H165-1140 | -20d |
| H165-1220 |  | Megger MC Cable from Skid to Elec Room CRAH - H160 | 1d | 2027-03-10 | 2027-03-10 | H165-1210 | -21d |
| H165-1240 |  | Megger MC Cable from Skid to MOD - H160 | 1d | 2027-03-10 | 2027-03-10 | H165-1180, H165-1170, H165-1160 | -23d |
| H165-1270 |  | Megger MC Cable from MOD-01 to Mechanical Equipment - H160 | 1d | 2027-03-10 | 2027-03-10 | H165-1250 | -23d |
| H165-1280 |  | Megger MC Cable from MOD-02 to Mechanical Equipment - H160 | 1d | 2027-03-10 | 2027-03-10 | H165-1260 | -23d |
| H165-1420 |  | Megger Cable from UPS to VFD - H160 | 1d | 2027-03-10 | 2027-03-10 | H165-1410 | -21d |
| H165-1470 |  | Terminate MC Feed at MPZ - H160 | 1d | 2027-03-10 | 2027-03-10 | H165-1460 | -20d |
| H165-1480 |  | Terminate Cables in VFD - H160 | 1d | 2027-03-10 | 2027-03-10 | H165-1420 SS | -20d |
| H165-1630 |  | Megger Cable at ATS - H160 | 1d | 2027-03-10 | 2027-03-10 | H165-1360 | -23d |
| H165-1230 |  | Terminate Elec Room CRAH - H160 | 1d | 2027-03-11 | 2027-03-11 | H165-1220 | -21d |
| H165-1290 |  | Terminate MOD-01 - H160 | 1d | 2027-03-11 | 2027-03-11 | H165-1240, H165-1270 | -23d |
| H165-1300 |  | Terminate MOD-02 - H160 | 1d | 2027-03-11 | 2027-03-11 | H165-1520, H165-1280 | -23d |

| ID | WBS | Task | Duration | Start | Finish | Predecessors | Total float |
| --- | --- | --- | --- | --- | --- | --- | --- |
| H165-1310 |  | Terminate at Mechanical Equipment - H160 | 1d | 2027-03-11 | 2027-03-11 | H165-1300 SS, H165-1290 SS | -23d |
| H165-1370 |  | Terminate ATS Cable at Busplugs & ATSs - H160 | 2d | 2027-03-11 | 2027-03-12 | H165-1630 | -23d |
| H165-1430 |  | Terminate Cables in UPS - H160 | 1d | 2027-03-11 | 2027-03-11 | H165-1420 | -21d |
| H165-1570 |  | QC 2.2 checklist VFD - H160 | 1d | 2027-03-11 | 2027-03-11 | H165-1480 | -20d |
| H165-1610 |  | QC 2.2 checklist Chiller - H160 | 1d | 2027-03-11 | 2027-03-11 | H165-1150 | -20d |
| H165-1650 |  | QC 2.2 checklist MPZ - H160 | 1d | 2027-03-11 | 2027-03-11 | H165-1470 | -20d |
| H165-1050 |  | Cable bus Install - H160 | 2d | 2027-03-12 | 2027-03-13 | H165-1040, H165-1030 | -27d |
| H165-1320 |  | Mechanical Equipment/Tray Grounding - H160 | 2d | 2027-03-12 | 2027-03-13 | H165-1310 | -23d |
| H165-1540 |  | QC 2.2 checklist UPS - H160 | 1d | 2027-03-12 | 2027-03-12 | H165-1430 | -21d |
| H165-1550 |  | QC 2.2 checklist Elec Room CRAH - H160 | 1d | 2027-03-12 | 2027-03-12 | H165-1230 | -21d |
| H165-1560 |  | QC 2.2 Mechanical Equipment - H160 | 1d | 2027-03-12 | 2027-03-12 | H165-1310 | -21d |
| H165-1380 |  | ATS Lashing - H160 | 1d | 2027-03-13 | 2027-03-13 | H165-1370 | -23d |
| H165-1060 |  | Cable pulled to A & P Xfmrs - H160 | 1d | 2027-03-15 | 2027-03-15 | H165-1050 | -27d |
| H165-1500 |  | QC 2.2 checklist MOD-01 - H160 | 1d | 2027-03-15 | 2027-03-15 | H165-1320 | -23d |
| H165-1510 |  | QC 2.2 checklist MOD-02 - H160 | 1d | 2027-03-15 | 2027-03-15 | H165-1320 | -23d |
| H165-1530 |  | QC 2.2 checklist ATSs - H160 | 1d | 2027-03-15 | 2027-03-15 | H165-1380 | -23d |
| H165-1640 |  | QC 2.2 checklist Busplugs - H160 | 1d | 2027-03-15 | 2027-03-15 | H165-1530 SS | -23d |
| H165-1070 |  | Megger Cable Bus Cable - H160 | 1d | 2027-03-16 | 2027-03-16 | H165-1060 | -27d |
| H165-1080 |  | Cable Bus inspection and covers - H160 | 1d | 2027-03-16 | 2027-03-16 | H165-1070 SS | -25d |
| H165-1090 |  | Terminations at Xfmrs - H160 | 2d | 2027-03-17 | 2027-03-18 | H165-1070 | -27d |
| H165-1100 |  | Terminations at SWD - H160 | 2d | 2027-03-17 | 2027-03-18 | H165-1070 | -27d |
| H165-1580 |  | QC 2.2 checklist SWD - H160 | 1d | 2027-03-19 | 2027-03-19 | H165-1080, H165-1490, H165-1100 | -27d |
| H165-1600 |  | QC 2.2 checklist XFMR - H160 | 1d | 2027-03-19 | 2027-03-19 | H165-1090 | -27d |
| H165-1590 |  | Ready for FTE - H160 | 1d | 2027-03-20 | 2027-03-20 | H165-1650, H165-1640, H165-1610, H165-1600, H165-1580, H165-1570, H165-1560, H165-1550, H165-1540, H165-1530, H165-1510, H165-1500 | -27d |
|  | 8 | **J160** |  | 2027-03-03 | 2027-03-20 |  |  |
| J165-1330 |  | Busduct installed - J160 | 1d | 2027-03-03 | 2027-03-03 | H165-1330 SS | -27d |
| J165-1340 |  | Busplugs/Tap Boxes installed - J160 | 1d | 2027-03-04 | 2027-03-04 | J165-1330 | -27d |
| J165-1000 |  | Set Skid - J160 | 1d | 2027-03-05 | 2027-03-05 | H165-1000 SS, J165-1340, J165-1330 | -27d |
| J165-1010 |  | Set MODs - J160 | 2d | 2027-03-05 | 2027-03-06 | J165-1000 SS | -23d |
| J165-1030 |  | Cable bus Support installed - J160 | 2d | 2027-03-05 | 2027-03-06 | J165-1000 SS | -23d |
| J165-1120 |  | Chiller feed box and conduit complete - J160 | 2d | 2027-03-05 | 2027-03-06 | J165-1010 SS, J165-1000 SS | -20d |
| J165-1040 |  | SWD top covers cut out - J160 | 5d | 2027-03-06 | 2027-03-11 | J165-1000 | -27d |
| J165-1110 |  | Finish Cable Tray to Skid - J160 | 2d | 2027-03-06 | 2027-03-08 | J165-1000 | -23d |
| J165-1350 |  | Install conduit from Busplug to ATSs - J160 | 2d | 2027-03-06 | 2027-03-08 | J165-1000 | -23d |
| J165-1390 |  | Mount VFD Stand and VFD - J160 | 1d | 2027-03-06 | 2027-03-06 | J165-1000 | -21d |
| J165-1440 |  | Mount MPZ - J160 | 1d | 2027-03-06 | 2027-03-06 | J165-1000 | -20d |
| J165-1620 |  | Electrical Room CRAH Set - J160 | 1d | 2027-03-06 | 2027-03-06 | J165-1000 | -21d |
| J165-1130 |  | Pull Chiller wire - J160 | 1d | 2027-03-08 | 2027-03-08 | J165-1120, J165-1000 | -20d |
| J165-1180 |  | Penetrate MC into MOD-01 - J160 | 1d | 2027-03-08 | 2027-03-08 | J165-1010 | -22d |
| J165-1190 |  | Penetrate MC into MOD-02 - J160 | 1d | 2027-03-08 | 2027-03-08 | J165-1010 | -22d |
| J165-1200 |  | Finish Conduit to Elec Room CRAH - J160 | 1d | 2027-03-08 | 2027-03-08 | J165-1620 | -21d |
| J165-1250 |  | Pull MC from MOD-01 to Mechanical Equipment - J160 | 2d | 2027-03-08 | 2027-03-09 | J165-1010 | -23d |
| J165-1260 |  | Pull MC from MOD-02 to Mechanical Equipment - J160 | 2d | 2027-03-08 | 2027-03-09 | J165-1010 | -23d |
| J165-1400 |  | Conduit from UPS to VFD - J160 | 1d | 2027-03-08 | 2027-03-08 | J165-1390 | -21d |
| J165-1450 |  | Penetrate MC Cable into MPZ - J160 | 1d | 2027-03-08 | 2027-03-08 | J165-1440 | -20d |
| J165-1140 |  | Megger Chiller Cable - J160 | 1d | 2027-03-09 | 2027-03-09 | J165-1130 | -20d |
| J165-1160 |  | Penetrate MC into SWD - J160 | 1d | 2027-03-09 | 2027-03-09 | J165-1110 | -23d |
| J165-1170 |  | Penetrat MC into UPS - J160 | 1d | 2027-03-09 | 2027-03-09 | J165-1110 | -23d |
| J165-1210 |  | Pull Cable to Elec Room CRAH - J160 | 1d | 2027-03-09 | 2027-03-09 | J165-1200 | -21d |
| J165-1360 |  | Pull ATS Cable - J160 | 1d | 2027-03-09 | 2027-03-09 | J165-1350 | -23d |
| J165-1410 |  | Pull Cable from UPS to VFD - J160 | 1d | 2027-03-09 | 2027-03-09 | J165-1400 | -21d |
| J165-1460 |  | Megger MPZ Cable - J160 | 1d | 2027-03-09 | 2027-03-09 | J165-1450 | -20d |
| J165-1490 |  | All Skid Grounding - J160 | 2d | 2027-03-09 | 2027-03-10 | J165-1110 | -20d |
| J165-1520 |  | Megger MC Cable from UPS to MOD - J160 | 1d | 2027-03-09 | 2027-03-09 | J165-1190 | -22d |
| J165-1150 |  | Terminations at Chiller - J160 | 1d | 2027-03-10 | 2027-03-10 | J165-1140 | -20d |
| J165-1220 |  | Megger MC Cable from Skid to Elec Room CRAH - J160 | 1d | 2027-03-10 | 2027-03-10 | J165-1210 | -21d |
| J165-1240 |  | Megger MC Cable from Skid to MOD - J160 | 1d | 2027-03-10 | 2027-03-10 | J165-1180, J165-1170, J165-1160 | -23d |
| J165-1270 |  | Megger MC Cable from MOD-01 to Mechanical Equipment - J160 | 1d | 2027-03-10 | 2027-03-10 | J165-1250 | -23d |
| J165-1280 |  | Megger MC Cable from MOD-02 to Mechanical Equipment - J160 | 1d | 2027-03-10 | 2027-03-10 | J165-1260 | -23d |
| J165-1420 |  | Megger Cable from UPS to VFD - J160 | 1d | 2027-03-10 | 2027-03-10 | J165-1410 | -21d |
| J165-1470 |  | Terminate MC Feed at MPZ - J160 | 1d | 2027-03-10 | 2027-03-10 | J165-1460 | -20d |
| J165-1480 |  | Terminate Cables in VFD - J160 | 1d | 2027-03-10 | 2027-03-10 | J165-1420 SS | -20d |
| J165-1630 |  | Megger Cable at ATS - J160 | 1d | 2027-03-10 | 2027-03-10 | J165-1360 | -23d |
| J165-1230 |  | Terminate Elec Room CRAH - J160 | 1d | 2027-03-11 | 2027-03-11 | J165-1220 | -21d |
| J165-1290 |  | Terminate MOD-01 - J160 | 1d | 2027-03-11 | 2027-03-11 | J165-1240, J165-1270 | -23d |
| J165-1300 |  | Terminate MOD-02 - J160 | 1d | 2027-03-11 | 2027-03-11 | J165-1520, J165-1280 | -23d |
| J165-1310 |  | Terminate at Mechanical Equipment - J160 | 1d | 2027-03-11 | 2027-03-11 | J165-1300 SS, J165-1290 SS | -23d |
| J165-1370 |  | Terminate ATS Cable at Busplugs & ATSs - J160 | 2d | 2027-03-11 | 2027-03-12 | J165-1630 | -23d |
| J165-1430 |  | Terminate Cables in UPS - J160 | 1d | 2027-03-11 | 2027-03-11 | J165-1420 | -21d |
| J165-1570 |  | QC 2.2 checklist VFD - J160 | 1d | 2027-03-11 | 2027-03-11 | J165-1480 | -20d |

| ID | WBS | Task | Duration | Start | Finish | Predecessors | Total float |
| --- | --- | --- | --- | --- | --- | --- | --- |
| J165-1610 |  | QC 2.2 checklist Chiller - J160 | 1d | 2027-03-11 | 2027-03-11 | J165-1150 | -20d |
| J165-1650 |  | QC 2.2 checklist MPZ - J160 | 1d | 2027-03-11 | 2027-03-11 | J165-1470 | -20d |
| J165-1050 |  | Cable bus Install - J160 | 2d | 2027-03-12 | 2027-03-13 | J165-1040, J165-1030 | -27d |
| J165-1320 |  | Mechanical Equipment/Tray Grounding - J160 | 2d | 2027-03-12 | 2027-03-13 | J165-1310 | -23d |
| J165-1540 |  | QC 2.2 checklist UPS - J160 | 1d | 2027-03-12 | 2027-03-12 | J165-1430 | -21d |
| J165-1550 |  | QC 2.2 checklist Elec Room CRAH - J160 | 1d | 2027-03-12 | 2027-03-12 | J165-1230 | -21d |
| J165-1560 |  | QC 2.2 Mechanical Equipment - J160 | 1d | 2027-03-12 | 2027-03-12 | J165-1310 | -21d |
| J165-1380 |  | ATS Lashing - J160 | 1d | 2027-03-13 | 2027-03-13 | J165-1370 | -23d |
| J165-1060 |  | Cable pulled to A & P Xfmrs - J160 | 1d | 2027-03-15 | 2027-03-15 | J165-1050 | -27d |
| J165-1500 |  | QC 2.2 checklist MOD-01 - J160 | 1d | 2027-03-15 | 2027-03-15 | J165-1320 | -23d |
| J165-1510 |  | QC 2.2 checklist MOD-02 - J160 | 1d | 2027-03-15 | 2027-03-15 | J165-1320 | -23d |
| J165-1530 |  | QC 2.2 checklist ATSs - J160 | 1d | 2027-03-15 | 2027-03-15 | J165-1380 | -23d |
| J165-1640 |  | QC 2.2 checklist Busplugs - J160 | 1d | 2027-03-15 | 2027-03-15 | J165-1530 SS | -23d |
| J165-1070 |  | Megger Cable Bus Cable - J160 | 1d | 2027-03-16 | 2027-03-16 | J165-1060 | -27d |
| J165-1080 |  | Cable Bus inspection and covers - J160 | 1d | 2027-03-16 | 2027-03-16 | J165-1070 SS | -25d |
| J165-1090 |  | Terminations at Xfmrs - J160 | 2d | 2027-03-17 | 2027-03-18 | J165-1070 | -27d |
| J165-1100 |  | Terminations at SWD - J160 | 2d | 2027-03-17 | 2027-03-18 | J165-1070 | -27d |
| J165-1580 |  | QC 2.2 checklist SWD - J160 | 1d | 2027-03-19 | 2027-03-19 | J165-1080, J165-1490, J165-1100 | -27d |
| J165-1600 |  | QC 2.2 checklist XFMR - J160 | 1d | 2027-03-19 | 2027-03-19 | J165-1090 | -27d |
| J165-1590 |  | Ready for FTE - J160 | 1d | 2027-03-20 | 2027-03-20 | J165-1650, J165-1640, J165-1610, J165-1600, J165-1580, J165-1570, J165-1560, J165-1550, J165-1540, J165-1530, J165-1510, J165-1500 | -27d |
|  | 10 | **K160** |  | 2027-03-03 | 2027-03-20 |  |  |
| K165-1330 |  | Busduct installed - K160 | 1d | 2027-03-03 | 2027-03-03 | J165-1330 SS | -27d |
| K165-1340 |  | Busplugs/Tap Boxes installed - K160 | 1d | 2027-03-04 | 2027-03-04 | K165-1330 | -27d |
| K165-1000 |  | Set Skid - K160 | 1d | 2027-03-05 | 2027-03-05 | J165-1000 SS, K165-1340, K165-1330 | -27d |
| K165-1010 |  | Set MODs - K160 | 2d | 2027-03-05 | 2027-03-06 | K165-1000 SS | -23d |
| K165-1030 |  | Cable bus Support installed - K160 | 2d | 2027-03-05 | 2027-03-06 | K165-1000 SS | -23d |
| K165-1120 |  | Chiller feed box and conduit complete - K160 | 2d | 2027-03-05 | 2027-03-06 | K165-1010 SS, K165-1000 SS | -20d |
| K165-1040 |  | SWD top covers cut out - K160 | 5d | 2027-03-06 | 2027-03-11 | K165-1000 | -27d |
| K165-1110 |  | Finish Cable Tray to Skid - K160 | 2d | 2027-03-06 | 2027-03-08 | K165-1000 | -23d |
| K165-1350 |  | Install conduit from Busplug to ATSs - K160 | 2d | 2027-03-06 | 2027-03-08 | K165-1000 | -23d |
| K165-1390 |  | Mount VFD Stand and VFD - K160 | 1d | 2027-03-06 | 2027-03-06 | K165-1000 | -21d |
| K165-1440 |  | Mount MPZ - K160 | 1d | 2027-03-06 | 2027-03-06 | K165-1000 | -20d |
| K165-1620 |  | Electrical Room CRAH Set - K160 | 1d | 2027-03-06 | 2027-03-06 | K165-1000 | -21d |
| K165-1130 |  | Pull Chiller wire - K160 | 1d | 2027-03-08 | 2027-03-08 | K165-1120, K165-1000 | -20d |
| K165-1180 |  | Penetrate MC into MOD-01 - K160 | 1d | 2027-03-08 | 2027-03-08 | K165-1010 | -22d |
| K165-1190 |  | Penetrate MC into MOD-02 - K160 | 1d | 2027-03-08 | 2027-03-08 | K165-1010 | -22d |
| K165-1200 |  | Finish Conduit to Elec Room CRAH - K160 | 1d | 2027-03-08 | 2027-03-08 | K165-1620 | -21d |
| K165-1250 |  | Pull MC from MOD-01 to Mechanical Equipment - K160 | 2d | 2027-03-08 | 2027-03-09 | K165-1010 | -23d |
| K165-1260 |  | Pull MC from MOD-02 to Mechanical Equipment - K160 | 2d | 2027-03-08 | 2027-03-09 | K165-1010 | -23d |
| K165-1400 |  | Conduit from UPS to VFD - K160 | 1d | 2027-03-08 | 2027-03-08 | K165-1390 | -21d |
| K165-1450 |  | Penetrate MC Cable into MPZ - K160 | 1d | 2027-03-08 | 2027-03-08 | K165-1440 | -20d |
| K165-1140 |  | Megger Chiller Cable - K160 | 1d | 2027-03-09 | 2027-03-09 | K165-1130 | -20d |
| K165-1160 |  | Penetrate MC into SWD - K160 | 1d | 2027-03-09 | 2027-03-09 | K165-1110 | -23d |
| K165-1170 |  | Penetrat MC into UPS - K160 | 1d | 2027-03-09 | 2027-03-09 | K165-1110 | -23d |
| K165-1210 |  | Pull Cable to Elec Room CRAH - K160 | 1d | 2027-03-09 | 2027-03-09 | K165-1200 | -21d |
| K165-1360 |  | Pull ATS Cable - K160 | 1d | 2027-03-09 | 2027-03-09 | K165-1350 | -23d |
| K165-1410 |  | Pull Cable from UPS to VFD - K160 | 1d | 2027-03-09 | 2027-03-09 | K165-1400 | -21d |
| K165-1460 |  | Megger MPZ Cable - K160 | 1d | 2027-03-09 | 2027-03-09 | K165-1450 | -20d |
| K165-1490 |  | All Skid Grounding - K160 | 2d | 2027-03-09 | 2027-03-10 | K165-1110 | -20d |
| K165-1520 |  | Megger MC Cable from UPS to MOD - K160 | 1d | 2027-03-09 | 2027-03-09 | K165-1190 | -22d |
| K165-1150 |  | Terminations at Chiller - K160 | 1d | 2027-03-10 | 2027-03-10 | K165-1140 | -20d |
| K165-1220 |  | Megger MC Cable from Skid to Elec Room CRAH - K160 | 1d | 2027-03-10 | 2027-03-10 | K165-1210 | -21d |
| K165-1240 |  | Megger MC Cable from Skid to MOD - K160 | 1d | 2027-03-10 | 2027-03-10 | K165-1180, K165-1170, K165-1160 | -23d |
| K165-1270 |  | Megger MC Cable from MOD-01 to Mechanical Equipment - K160 | 1d | 2027-03-10 | 2027-03-10 | K165-1250 | -23d |
| K165-1280 |  | Megger MC Cable from MOD-02 to Mechanical Equipment - K160 | 1d | 2027-03-10 | 2027-03-10 | K165-1260 | -23d |
| K165-1420 |  | Megger Cable from UPS to VFD - K160 | 1d | 2027-03-10 | 2027-03-10 | K165-1410 | -21d |
| K165-1470 |  | Terminate MC Feed at MPZ - K160 | 1d | 2027-03-10 | 2027-03-10 | K165-1460 | -20d |
| K165-1480 |  | Terminate Cables in VFD - K160 | 1d | 2027-03-10 | 2027-03-10 | K165-1420 SS | -20d |
| K165-1630 |  | Megger Cable at ATS - K160 | 1d | 2027-03-10 | 2027-03-10 | K165-1360 | -23d |
| K165-1230 |  | Terminate Elec Room CRAH - K160 | 1d | 2027-03-11 | 2027-03-11 | K165-1220 | -21d |
| K165-1290 |  | Terminate MOD-01 - K160 | 1d | 2027-03-11 | 2027-03-11 | K165-1240, K165-1270 | -23d |
| K165-1300 |  | Terminate MOD-02 - K160 | 1d | 2027-03-11 | 2027-03-11 | K165-1520, K165-1280 | -23d |
| K165-1310 |  | Terminate at Mechanical Equipment - K160 | 1d | 2027-03-11 | 2027-03-11 | K165-1300 SS, K165-1290 SS | -23d |
| K165-1370 |  | Terminate ATS Cable at Busplugs & ATSs - K160 | 2d | 2027-03-11 | 2027-03-12 | K165-1630 | -23d |
| K165-1430 |  | Terminate Cables in UPS - K160 | 1d | 2027-03-11 | 2027-03-11 | K165-1420 | -21d |
| K165-1570 |  | QC 2.2 checklist VFD - K160 | 1d | 2027-03-11 | 2027-03-11 | K165-1480 | -20d |
| K165-1610 |  | QC 2.2 checklist Chiller - K160 | 1d | 2027-03-11 | 2027-03-11 | K165-1150 | -20d |
| K165-1650 |  | QC 2.2 checklist MPZ - K160 | 1d | 2027-03-11 | 2027-03-11 | K165-1470 | -20d |
| K165-1050 |  | Cable bus Install - K160 | 2d | 2027-03-12 | 2027-03-13 | K165-1040, K165-1030 | -27d |
| K165-1320 |  | Mechanical Equipment/Tray Grounding - K160 | 2d | 2027-03-12 | 2027-03-13 | K165-1310 | -23d |

| ID | WBS | Task | Duration | Start | Finish | Predecessors | Total float |
| --- | --- | --- | --- | --- | --- | --- | --- |
| K165-1540 |  | QC 2.2 checklist UPS - K160 | 1d | 2027-03-12 | 2027-03-12 | K165-1430 | -21d |
| K165-1550 |  | QC 2.2 checklist Elec Room CRAH - K160 | 1d | 2027-03-12 | 2027-03-12 | K165-1230 | -21d |
| K165-1560 |  | QC 2.2 Mechanical Equipment - K160 | 1d | 2027-03-12 | 2027-03-12 | K165-1310 | -21d |
| K165-1380 |  | ATS Lashing - K160 | 1d | 2027-03-13 | 2027-03-13 | K165-1370 | -23d |
| K165-1060 |  | Cable pulled to A & P Xfmrs - K160 | 1d | 2027-03-15 | 2027-03-15 | K165-1050 | -27d |
| K165-1500 |  | QC 2.2 checklist MOD-01 - K160 | 1d | 2027-03-15 | 2027-03-15 | K165-1320 | -23d |
| K165-1510 |  | QC 2.2 checklist MOD-02 - K160 | 1d | 2027-03-15 | 2027-03-15 | K165-1320 | -23d |
| K165-1530 |  | QC 2.2 checklist ATSs - K160 | 1d | 2027-03-15 | 2027-03-15 | K165-1380 | -23d |
| K165-1640 |  | QC 2.2 checklist Busplugs - K160 | 1d | 2027-03-15 | 2027-03-15 | K165-1530 SS | -23d |
| K165-1070 |  | Megger Cable Bus Cable - K160 | 1d | 2027-03-16 | 2027-03-16 | K165-1060 | -27d |
| K165-1080 |  | Cable Bus inspection and covers - K160 | 1d | 2027-03-16 | 2027-03-16 | K165-1070 SS | -25d |
| K165-1090 |  | Terminations at Xfmrs - K160 | 2d | 2027-03-17 | 2027-03-18 | K165-1070 | -27d |
| K165-1100 |  | Terminations at SWD - K160 | 2d | 2027-03-17 | 2027-03-18 | K165-1070 | -27d |
| K165-1580 |  | QC 2.2 checklist SWD - K160 | 1d | 2027-03-19 | 2027-03-19 | K165-1080, K165-1490, K165-1100 | -27d |
| K165-1600 |  | QC 2.2 checklist XFMR - K160 | 1d | 2027-03-19 | 2027-03-19 | K165-1090 | -27d |
| K165-1590 |  | Ready for FTE - K160 | 1d | 2027-03-20 | 2027-03-20 | 2880, 2930, 2980, 3030, 3080, 2830, 2250, 2450, 5830, 6110, 2330, 2090, 2180, 2390, 2570, 2510, 2100, 2110, 3820, 3890, 4090, 4220, 4360, 4290, 4490, 3220, 3290, 3360, 2780, 5480, 2640, 5180, 3620, 4020, 4420, 4820, K165-1650, K165-1640, K165-1610, K165-1600, K165-1580, K165-1570, K165-1560, K165-1550, K165-1540, K165-1530, K165-1510, K165-1500 | -27d |
|  | 12 | **Commissioning** |  | 2027-03-22 | 2027-05-30 |  |  |
| 1650-1000 |  | DH1600 - L3 Clean Walk | 3d | 2027-03-22 | 2027-03-24 | K165-1590 | 18d |
| 1650-1100 |  | DH1600 - L3 PEI | 3d | 2027-03-25 | 2027-03-27 | CW.1600, 1650-1000 | 18d |
| 1650-1200 |  | DH1600 - L3 FTE | 4d | 2027-03-28 | 2027-03-31 | PEI.160, 1650-1100 | 22d |
| 1650-2000 |  | DH1600 - L4 Cx / IST | 60d | 2027-04-01 | 2027-05-30 | 1650-1200 | 22d |

## Version 2 (data date 2026-10-19, saved 2026-10-27, file 226021-HE.U02.xer)

Last finish stays 2027-05-30. Complete tasks 52 → 77.

Changed:

| ID | Task | Start | Finish | Complete | Total float |
| --- | --- | --- | --- | --- | --- |
| 2 | **Milestones** | 2026-11-02 → 2026-11-05 (+3d) |  |  |  |
| 1 | **QC 2.2** | 2026-11-02 → 2026-11-05 (+3d) |  |  |  |
| M.1100 | DH1100 - QC 2.2 Complete (10/06/2026) | 2026-11-02 → 2026-11-05 (+3d) | 2026-11-02 → 2026-11-05 (+3d) |  | -19d → -22d |
| M.1200 | DH1200 - QC 2.2 Complete (10/13/26) | 2026-11-06 → 2026-11-11 (+5d) | 2026-11-06 → 2026-11-11 (+5d) |  | -21d → -25d |
| 8 | **L3 Cx** | 2026-11-05 → 2026-11-09 (+4d) |  |  |  |
| 1 | **Clean Walk** | 2026-11-05 → 2026-11-09 (+4d) |  |  |  |
| CW.1100 | DH1100 - Clean Walk Complete | 2026-11-05 → 2026-11-09 (+4d) | 2026-11-05 → 2026-11-09 (+4d) |  | 8d → 6d |
| CW.1200 | DH1200 - Clean Walk Complete | 2026-11-10 → 2026-11-14 (+4d) | 2026-11-10 → 2026-11-14 (+4d) |  | 29d → 25d |
| 2 | **PEI** | 2026-11-09 → 2026-11-12 (+3d) |  |  |  |
| PEI.1100 | DH1100 - PEI Complete | 2026-11-09 → 2026-11-12 (+3d) | 2026-11-09 → 2026-11-12 (+3d) |  | 9d → 6d |
| PEI.1200 | DH1200 - PEI Complete | 2026-11-13 → 2026-11-18 (+5d) | 2026-11-13 → 2026-11-18 (+5d) |  | 29d → 25d |
| 2 | **L4 Cx** | 2027-01-12 → 2027-01-15 (+3d) |  |  |  |
| IST.1100 | DH1100 - IST Complete (1/25/27) (Substantial Completion) | 2027-01-12 → 2027-01-15 (+3d) | 2027-01-12 → 2027-01-15 (+3d) |  | 9d → 6d |
| IST.1200 | DH1200 - IST Complete (2/23/27) (Substantial Completion) | 2027-01-16 → 2027-01-21 (+5d) | 2027-01-16 → 2027-01-21 (+5d) |  | 38d → 33d |
| 8 | **DH 1100** |  | 2027-01-12 → 2027-01-15 (+3d) |  |  |
| 1 | **Electrical** |  | 2026-11-02 → 2026-11-05 (+3d) |  |  |
| 1 | **A110** |  | 2026-10-28 → 2026-11-02 (+5d) |  |  |
| A135-1750 | Chiller feed box and conduit complete - A110 |  | 2026-10-15 → 2026-10-20 (+5d) |  | -13d → -17d |
| A135-1670 | Set MODs - A110 | 2026-10-14 → 2026-10-15 A (+1d) | 2026-10-15 → 2026-10-18 A (+3d) | 0% → 100% | -16d → none |
| A135-1790 | Penetrate MC into SWD - A110 | 2026-10-16 A | 2026-10-16 → 2026-10-21 (+5d) |  | -15d → -19d |
| A135-1800 | Penetrat MC into UPS - A110 | 2026-10-16 A | 2026-10-16 → 2026-10-21 (+5d) |  | -15d → -19d |
| A135-1840 | Pull Cable to Elec Room CRAH - A110 | 2026-10-16 A | 2026-10-16 → 2026-10-21 (+5d) |  | -13d → -17d |
| A135-1880 | Pull MC from MOD-01 to Mechanical Equipment - A110 | 2026-10-16 A | 2026-10-17 → 2026-10-20 (+3d) |  | -16d → -18d |
| A135-1890 | Pull MC from MOD-02 to Mechanical Equipment - A110 | 2026-10-16 A | 2026-10-17 → 2026-10-20 (+3d) |  | -16d → -18d |
| A135-1990 | Pull ATS Cable - A110 | 2026-10-16 A | 2026-10-16 → 2026-10-21 (+5d) |  | -15d → -19d |
| A135-1980 | Install conduit from Busplug to ATSs - A110 | 2026-10-14 → 2026-10-19 A (+5d) | 2026-10-15 → 2026-10-20 (+5d) |  | -15d → -19d |
| A135-1680 | Cable bus Support installed - A110 | 2026-10-14 → 2026-10-19 (+5d) | 2026-10-15 → 2026-10-20 (+5d) |  | -16d → -20d |
| A135-1690 | SWD top covers cut out - A110 | 2026-10-14 → 2026-10-19 (+5d) | 2026-10-19 → 2026-10-23 (+4d) |  | -19d → -23d |
| A135-1740 | Finish Cable Tray to Skid - A110 | 2026-10-14 → 2026-10-19 (+5d) | 2026-10-15 → 2026-10-20 (+5d) |  | -15d → -19d |
| A135-1810 | Penetrate MC into MOD-01 - A110 | 2026-10-16 → 2026-10-19 (+3d) | 2026-10-16 → 2026-10-19 (+3d) |  | -15d → -17d |
| A135-1820 | Penetrate MC into MOD-02 - A110 | 2026-10-16 → 2026-10-19 (+3d) | 2026-10-16 → 2026-10-19 (+3d) |  | -15d → -17d |
| A135-2040 | Pull Cable from UPS to VFD - A110 | 2026-10-14 → 2026-10-19 (+5d) | 2026-10-14 → 2026-10-19 (+5d) |  | -11d → -15d |
| A135-2070 | Mount MPZ - A110 | 2026-10-14 → 2026-10-19 (+5d) | 2026-10-14 → 2026-10-19 (+5d) |  | -12d → -16d |
| A135-2230 | Electrical Room CRAH Set - A110 | 2026-10-14 → 2026-10-19 (+5d) | 2026-10-14 → 2026-10-19 (+5d) |  | -13d → -17d |
| A135-1830 | Finish Conduit to Elec Room CRAH - A110 | 2026-10-15 → 2026-10-20 (+5d) | 2026-10-15 → 2026-10-20 (+5d) |  | -13d → -17d |
| A135-2050 | Megger Cable from UPS to VFD - A110 | 2026-10-15 → 2026-10-20 (+5d) | 2026-10-15 → 2026-10-20 (+5d) |  | -11d → -15d |
| A135-2080 | Penetrate MC Cable into MPZ - A110 | 2026-10-15 → 2026-10-20 (+5d) | 2026-10-15 → 2026-10-20 (+5d) |  | -12d → -16d |
| A135-2110 | Terminate Cables in VFD - A110 | 2026-10-15 → 2026-10-20 (+5d) | 2026-10-15 → 2026-10-20 (+5d) |  | -10d → -14d |
| A135-2270 | Megger MC Cable from UPS to MOD - A110 | 2026-10-17 → 2026-10-20 (+3d) | 2026-10-17 → 2026-10-20 (+3d) |  | -15d → -17d |
| A135-1760 | Pull Chiller wire - A110 | 2026-10-16 → 2026-10-21 (+5d) | 2026-10-16 → 2026-10-21 (+5d) |  | -13d → -17d |
| A135-1900 | Megger MC Cable from MOD-01 to Mechanical Equipment - A110 | 2026-10-19 → 2026-10-21 (+2d) | 2026-10-19 → 2026-10-21 (+2d) |  | -16d → -18d |
| A135-1910 | Megger MC Cable from MOD-02 to Mechanical Equipment - A110 | 2026-10-19 → 2026-10-21 (+2d) | 2026-10-19 → 2026-10-21 (+2d) |  | -16d → -18d |
| A135-2060 | Terminate Cables in UPS - A110 | 2026-10-16 → 2026-10-21 (+5d) | 2026-10-16 → 2026-10-21 (+5d) |  | -11d → -15d |
| A135-2090 | Megger MPZ Cable - A110 | 2026-10-16 → 2026-10-21 (+5d) | 2026-10-16 → 2026-10-21 (+5d) |  | -12d → -16d |
| A135-2120 | All Skid Grounding - A110 | 2026-10-16 → 2026-10-21 (+5d) | 2026-10-17 → 2026-10-22 (+5d) |  | -12d → -16d |
| A135-2190 | QC 2.2 checklist VFD - A110 | 2026-10-16 → 2026-10-21 (+5d) | 2026-10-16 → 2026-10-21 (+5d) |  | -10d → -14d |
| A135-1770 | Megger Chiller Cable - A110 | 2026-10-17 → 2026-10-22 (+5d) | 2026-10-17 → 2026-10-22 (+5d) |  | -13d → -17d |
| A135-1850 | Megger MC Cable from Skid to Elec Room CRAH - A110 | 2026-10-17 → 2026-10-22 (+5d) | 2026-10-17 → 2026-10-22 (+5d) |  | -13d → -17d |
| A135-1870 | Megger MC Cable from Skid to MOD - A110 | 2026-10-17 → 2026-10-22 (+5d) | 2026-10-17 → 2026-10-22 (+5d) |  | -15d → -19d |
| A135-1930 | Terminate MOD-02 - A110 | 2026-10-20 → 2026-10-22 (+2d) | 2026-10-20 → 2026-10-22 (+2d) |  | -16d → -18d |
| A135-2100 | Terminate MC Feed at MPZ - A110 | 2026-10-17 → 2026-10-22 (+5d) | 2026-10-17 → 2026-10-22 (+5d) |  | -12d → -16d |
| A135-2160 | QC 2.2 checklist UPS - A110 | 2026-10-17 → 2026-10-22 (+5d) | 2026-10-17 → 2026-10-22 (+5d) |  | -11d → -15d |
| A135-2240 | Megger Cable at ATS - A110 | 2026-10-17 → 2026-10-22 (+5d) | 2026-10-17 → 2026-10-22 (+5d) |  | -15d → -19d |
| A135-1780 | Terminations at Chiller - A110 | 2026-10-19 → 2026-10-23 (+4d) | 2026-10-19 → 2026-10-23 (+4d) |  | -13d → -17d |
| A135-1860 | Terminate Elec Room CRAH - A110 | 2026-10-19 → 2026-10-23 (+4d) | 2026-10-19 → 2026-10-23 (+4d) |  | -13d → -17d |
| A135-1920 | Terminate MOD-01 - A110 | 2026-10-20 → 2026-10-23 (+3d) | 2026-10-20 → 2026-10-23 (+3d) |  | -16d → -19d |
| A135-1940 | Terminate at Mechanical Equipment - A110 | 2026-10-20 → 2026-10-23 (+3d) | 2026-10-20 → 2026-10-23 (+3d) |  | -16d → -19d |
| A135-2000 | Terminate ATS Cable at Busplugs & ATSs - A110 | 2026-10-19 → 2026-10-23 (+4d) | 2026-10-20 → 2026-10-24 (+4d) |  | -15d → -19d |
| A135-2260 | QC 2.2 checklist MPZ - A110 | 2026-10-19 → 2026-10-23 (+4d) | 2026-10-19 → 2026-10-23 (+4d) |  | -12d → -16d |
| A135-1700 | Cable bus Install - A110 | 2026-10-20 → 2026-10-24 (+4d) | 2026-10-21 → 2026-10-26 (+5d) |  | -19d → -23d |
| A135-1950 | Mechanical Equipment/Tray Grounding - A110 | 2026-10-21 → 2026-10-24 (+3d) | 2026-10-22 → 2026-10-26 (+4d) |  | -16d → -19d |
| A135-2170 | QC 2.2 checklist Elec Room CRAH - A110 | 2026-10-20 → 2026-10-24 (+4d) | 2026-10-20 → 2026-10-24 (+4d) |  | -13d → -17d |
| A135-2180 | QC 2.2 Mechanical Equipment - A110 | 2026-10-21 → 2026-10-24 (+3d) | 2026-10-21 → 2026-10-24 (+3d) |  | -14d → -17d |
| A135-2220 | QC 2.2 checklist Chiller - A110 | 2026-10-20 → 2026-10-24 (+4d) | 2026-10-20 → 2026-10-24 (+4d) |  | -13d → -17d |
| A135-2010 | ATS Lashing - A110 | 2026-10-21 → 2026-10-26 (+5d) | 2026-10-21 → 2026-10-26 (+5d) |  | -15d → -19d |
| A135-1710 | Cable pulled to A & P Xfmrs - A110 | 2026-10-22 → 2026-10-27 (+5d) | 2026-10-22 → 2026-10-27 (+5d) |  | -19d → -23d |
| A135-2130 | QC 2.2 checklist MOD-01 - A110 | 2026-10-23 → 2026-10-27 (+4d) | 2026-10-23 → 2026-10-27 (+4d) |  | -16d → -19d |
| A135-2140 | QC 2.2 checklist MOD-02 - A110 | 2026-10-23 → 2026-10-27 (+4d) | 2026-10-23 → 2026-10-27 (+4d) |  | -16d → -19d |
| A135-2150 | QC 2.2 checklist ATSs - A110 | 2026-10-22 → 2026-10-27 (+5d) | 2026-10-22 → 2026-10-27 (+5d) |  | -15d → -19d |
| A135-2250 | QC 2.2 checklist Busplugs - A110 | 2026-10-22 → 2026-10-27 (+5d) | 2026-10-22 → 2026-10-27 (+5d) |  | -15d → -19d |

| ID | Task | Start | Finish | Complete | Total float |
| --- | --- | --- | --- | --- | --- |
| A135-1720 | Megger Cable Bus Cable - A110 | 2026-10-23 → 2026-10-28 (+5d) | 2026-10-23 → 2026-10-28 (+5d) |  | -19d → -23d |
| A135-1730 | Cable Bus inspection and covers - A110 | 2026-10-23 → 2026-10-28 (+5d) | 2026-10-23 → 2026-10-28 (+5d) |  | -17d → -21d |
| A135-2280 | Terminations at Xfmrs - A110 | 2026-10-24 → 2026-10-29 (+5d) | 2026-10-26 → 2026-10-30 (+4d) |  | -19d → -23d |
| A135-2290 | Terminations at SWD - A110 | 2026-10-24 → 2026-10-29 (+5d) | 2026-10-26 → 2026-10-30 (+4d) |  | -19d → -23d |
| A135-2200 | QC 2.2 checklist SWD - A110 | 2026-10-27 → 2026-10-31 (+4d) | 2026-10-27 → 2026-10-31 (+4d) |  | -19d → -23d |
| A135-2300 | QC 2.2 checklist Xfmrs - A110 | 2026-10-27 → 2026-10-31 (+4d) | 2026-10-27 → 2026-10-31 (+4d) |  | -19d → -23d |
| A135-2210 | Ready for FTE - A110 | 2026-10-28 → 2026-11-02 (+5d) | 2026-10-28 → 2026-11-02 (+5d) |  | -19d → -23d |
| 2 | **B110** |  | 2026-10-28 → 2026-11-02 (+5d) |  |  |
| B135-1770 | Chiller feed box and conduit complete - B110 |  | 2026-10-15 → 2026-10-20 (+5d) |  | -13d → -17d |
| B135-1670 | Set MODs - B110 | 2026-10-14 → 2026-10-15 A (+1d) | 2026-10-15 → 2026-10-18 A (+3d) | 0% → 100% | -16d → none |
| B135-1860 | Pull Cable to Elec Room CRAH - B110 | 2026-10-16 A | 2026-10-16 → 2026-10-21 (+5d) |  | -13d → -17d |
| B135-1900 | Pull MC from MOD-01 to Mechanical Equipment - B110 | 2026-10-16 A | 2026-10-17 → 2026-10-20 (+3d) |  | -16d → -18d |
| B135-1910 | Pull MC from MOD-02 to Mechanical Equipment - B110 | 2026-10-16 A | 2026-10-17 → 2026-10-20 (+3d) |  | -16d → -18d |
| B135-1680 | Cable bus Support installed - B110 | 2026-10-14 → 2026-10-19 (+5d) | 2026-10-15 → 2026-10-20 (+5d) |  | -16d → -20d |
| B135-1690 | SWD top covers cut out - B110 | 2026-10-14 → 2026-10-19 (+5d) | 2026-10-19 → 2026-10-23 (+4d) |  | -19d → -23d |
| B135-1760 | Finish Cable Tray to Skid - B110 | 2026-10-14 → 2026-10-19 (+5d) | 2026-10-15 → 2026-10-20 (+5d) |  | -15d → -19d |
| B135-1830 | Penetrate MC into MOD-01 - B110 | 2026-10-16 → 2026-10-19 (+3d) | 2026-10-16 → 2026-10-19 (+3d) |  | -15d → -17d |
| B135-1840 | Penetrate MC into MOD-02 - B110 | 2026-10-16 → 2026-10-19 (+3d) | 2026-10-16 → 2026-10-19 (+3d) |  | -15d → -17d |
| B135-2000 | Install conduit from Busplug to ATSs - B110 | 2026-10-14 → 2026-10-19 (+5d) | 2026-10-15 → 2026-10-20 (+5d) |  | -15d → -19d |
| B135-2060 | Pull Cable from UPS to VFD - B110 | 2026-10-14 → 2026-10-19 (+5d) | 2026-10-14 → 2026-10-19 (+5d) |  | -11d → -15d |
| B135-2090 | Mount MPZ - B110 | 2026-10-14 → 2026-10-19 (+5d) | 2026-10-14 → 2026-10-19 (+5d) |  | -12d → -16d |
| B135-2260 | Electrical Room CRAH Set - B110 | 2026-10-14 → 2026-10-19 (+5d) | 2026-10-14 → 2026-10-19 (+5d) |  | -13d → -17d |
| B135-1850 | Finish Conduit to Elec Room CRAH - B110 | 2026-10-15 → 2026-10-20 (+5d) | 2026-10-15 → 2026-10-20 (+5d) |  | -13d → -17d |
| B135-2070 | Megger Cable from UPS to VFD - B110 | 2026-10-15 → 2026-10-20 (+5d) | 2026-10-15 → 2026-10-20 (+5d) |  | -11d → -15d |
| B135-2100 | Penetrate MC Cable into MPZ - B110 | 2026-10-15 → 2026-10-20 (+5d) | 2026-10-15 → 2026-10-20 (+5d) |  | -12d → -16d |
| B135-2130 | Terminate Cables in VFD - B110 | 2026-10-15 → 2026-10-20 (+5d) | 2026-10-15 → 2026-10-20 (+5d) |  | -10d → -14d |
| B135-2300 | Megger MC Cable from UPS to MOD - B110 | 2026-10-17 → 2026-10-20 (+3d) | 2026-10-17 → 2026-10-20 (+3d) |  | -15d → -17d |
| B135-1780 | Pull Chiller wire - B110 | 2026-10-16 → 2026-10-21 (+5d) | 2026-10-16 → 2026-10-21 (+5d) |  | -13d → -17d |
| B135-1810 | Penetrate MC into SWD - B110 | 2026-10-16 → 2026-10-21 (+5d) | 2026-10-16 → 2026-10-21 (+5d) |  | -15d → -19d |
| B135-1820 | Penetrat MC into UPS - B110 | 2026-10-16 → 2026-10-21 (+5d) | 2026-10-16 → 2026-10-21 (+5d) |  | -15d → -19d |
| B135-1920 | Megger MC Cable from MOD-01 to Mechanical Equipment - B110 | 2026-10-19 → 2026-10-21 (+2d) | 2026-10-19 → 2026-10-21 (+2d) |  | -16d → -18d |
| B135-1930 | Megger MC Cable from MOD-02 to Mechanical Equipment - B110 | 2026-10-19 → 2026-10-21 (+2d) | 2026-10-19 → 2026-10-21 (+2d) |  | -16d → -18d |
| B135-2010 | Pull ATS Cable - B110 | 2026-10-16 → 2026-10-21 (+5d) | 2026-10-16 → 2026-10-21 (+5d) |  | -15d → -19d |
| B135-2080 | Terminate Cables in UPS - B110 | 2026-10-16 → 2026-10-21 (+5d) | 2026-10-16 → 2026-10-21 (+5d) |  | -11d → -15d |
| B135-2110 | Megger MPZ Cable - B110 | 2026-10-16 → 2026-10-21 (+5d) | 2026-10-16 → 2026-10-21 (+5d) |  | -12d → -16d |
| B135-2140 | All Skid Grounding - B110 | 2026-10-16 → 2026-10-21 (+5d) | 2026-10-17 → 2026-10-22 (+5d) |  | -12d → -16d |
| B135-2210 | QC 2.2 checklist VFD - B110 | 2026-10-16 → 2026-10-21 (+5d) | 2026-10-16 → 2026-10-21 (+5d) |  | -10d → -14d |
| B135-1790 | Megger Chiller Cable - B110 | 2026-10-17 → 2026-10-22 (+5d) | 2026-10-17 → 2026-10-22 (+5d) |  | -13d → -17d |
| B135-1870 | Megger MC Cable from Skid to Elec Room CRAH - B110 | 2026-10-17 → 2026-10-22 (+5d) | 2026-10-17 → 2026-10-22 (+5d) |  | -13d → -17d |
| B135-1890 | Megger MC Cable from Skid to MOD - B110 | 2026-10-17 → 2026-10-22 (+5d) | 2026-10-17 → 2026-10-22 (+5d) |  | -15d → -19d |
| B135-1950 | Terminate MOD-02 - B110 | 2026-10-20 → 2026-10-22 (+2d) | 2026-10-20 → 2026-10-22 (+2d) |  | -16d → -18d |
| B135-2120 | Terminate MC Feed at MPZ - B110 | 2026-10-17 → 2026-10-22 (+5d) | 2026-10-17 → 2026-10-22 (+5d) |  | -12d → -16d |
| B135-2180 | QC 2.2 checklist UPS - B110 | 2026-10-17 → 2026-10-22 (+5d) | 2026-10-17 → 2026-10-22 (+5d) |  | -11d → -15d |
| B135-2270 | Megger Cable at ATS - B110 | 2026-10-17 → 2026-10-22 (+5d) | 2026-10-17 → 2026-10-22 (+5d) |  | -15d → -19d |
| B135-1800 | Terminations at Chiller - B110 | 2026-10-19 → 2026-10-23 (+4d) | 2026-10-19 → 2026-10-23 (+4d) |  | -13d → -17d |
| B135-1880 | Terminate Elec Room CRAH - B110 | 2026-10-19 → 2026-10-23 (+4d) | 2026-10-19 → 2026-10-23 (+4d) |  | -13d → -17d |
| B135-1940 | Terminate MOD-01 - B110 | 2026-10-20 → 2026-10-23 (+3d) | 2026-10-20 → 2026-10-23 (+3d) |  | -16d → -19d |
| B135-1960 | Terminate at Mechanical Equipment - B110 | 2026-10-20 → 2026-10-23 (+3d) | 2026-10-20 → 2026-10-23 (+3d) |  | -16d → -19d |
| B135-2020 | Terminate ATS Cable at Busplugs & ATSs - B110 | 2026-10-19 → 2026-10-23 (+4d) | 2026-10-20 → 2026-10-24 (+4d) |  | -15d → -19d |
| B135-2290 | QC 2.2 checklist MPZ - B110 | 2026-10-19 → 2026-10-23 (+4d) | 2026-10-19 → 2026-10-23 (+4d) |  | -12d → -16d |
| B135-1700 | Cable bus Install - B110 | 2026-10-20 → 2026-10-24 (+4d) | 2026-10-21 → 2026-10-26 (+5d) |  | -19d → -23d |
| B135-1970 | Mechanical Equipment/Tray Grounding - B110 | 2026-10-21 → 2026-10-24 (+3d) | 2026-10-22 → 2026-10-26 (+4d) |  | -16d → -19d |
| B135-2190 | QC 2.2 checklist Elec Room CRAH - B110 | 2026-10-20 → 2026-10-24 (+4d) | 2026-10-20 → 2026-10-24 (+4d) |  | -13d → -17d |
| B135-2200 | QC 2.2 Mechanical Equipment - B110 | 2026-10-21 → 2026-10-24 (+3d) | 2026-10-21 → 2026-10-24 (+3d) |  | -14d → -17d |
| B135-2250 | QC 2.2 checklist Chiller - B110 | 2026-10-20 → 2026-10-24 (+4d) | 2026-10-20 → 2026-10-24 (+4d) |  | -13d → -17d |
| B135-2030 | ATS Lashing - B110 | 2026-10-21 → 2026-10-26 (+5d) | 2026-10-21 → 2026-10-26 (+5d) |  | -15d → -19d |
| B135-1710 | Cable pulled to A & P Xfmrs - B110 | 2026-10-22 → 2026-10-27 (+5d) | 2026-10-22 → 2026-10-27 (+5d) |  | -19d → -23d |
| B135-2150 | QC 2.2 checklist MOD-01 - B110 | 2026-10-23 → 2026-10-27 (+4d) | 2026-10-23 → 2026-10-27 (+4d) |  | -16d → -19d |
| B135-2160 | QC 2.2 checklist MOD-02 - B110 | 2026-10-23 → 2026-10-27 (+4d) | 2026-10-23 → 2026-10-27 (+4d) |  | -16d → -19d |
| B135-2170 | QC 2.2 checklist ATSs - B110 | 2026-10-22 → 2026-10-27 (+5d) | 2026-10-22 → 2026-10-27 (+5d) |  | -15d → -19d |
| B135-2280 | QC 2.2 checklist Busplugs - B110 | 2026-10-22 → 2026-10-27 (+5d) | 2026-10-22 → 2026-10-27 (+5d) |  | -15d → -19d |
| B135-1720 | Megger Cable Bus Cable - B110 | 2026-10-23 → 2026-10-28 (+5d) | 2026-10-23 → 2026-10-28 (+5d) |  | -19d → -23d |
| B135-1730 | Cable Bus inspection and covers - B110 | 2026-10-23 → 2026-10-28 (+5d) | 2026-10-23 → 2026-10-28 (+5d) |  | -17d → -21d |
| B135-1740 | Terminations at Xfmrs - B110 | 2026-10-24 → 2026-10-29 (+5d) | 2026-10-26 → 2026-10-30 (+4d) |  | -19d → -23d |
| B135-1750 | Terminations at SWD - B110 | 2026-10-24 → 2026-10-29 (+5d) | 2026-10-26 → 2026-10-30 (+4d) |  | -19d → -23d |
| B135-2220 | QC 2.2 checklist SWD - B110 | 2026-10-27 → 2026-10-31 (+4d) | 2026-10-27 → 2026-10-31 (+4d) |  | -19d → -23d |
| B135-2240 | QC 2.2 checklist XFMR - B110 | 2026-10-27 → 2026-10-31 (+4d) | 2026-10-27 → 2026-10-31 (+4d) |  | -19d → -23d |
| B135-2230 | Ready for FTE - B110 | 2026-10-28 → 2026-11-02 (+5d) | 2026-10-28 → 2026-11-02 (+5d) |  | -19d → -23d |
| 3 | **C110** |  | 2026-10-28 → 2026-11-02 (+5d) |  |  |
| C135-1770 | Chiller feed box and conduit complete - C110 |  | 2026-10-15 → 2026-10-20 (+5d) |  | -13d → -17d |

| ID | Task | Start | Finish | Complete | Total float |
| --- | --- | --- | --- | --- | --- |
| C135-1670 | Set MODs - C110 | 2026-10-14 → 2026-10-15 A (+1d) | 2026-10-15 → 2026-10-18 A (+3d) | 0% → 100% | -16d → none |
| C135-1860 | Pull Cable to Elec Room CRAH - C110 | 2026-10-16 A | 2026-10-16 → 2026-10-21 (+5d) |  | -13d → -17d |
| C135-1900 | Pull MC from MOD-01 to Mechanical Equipment - C110 | 2026-10-16 A | 2026-10-17 → 2026-10-20 (+3d) |  | -16d → -18d |
| C135-1910 | Pull MC from MOD-02 to Mechanical Equipment - C110 | 2026-10-16 A | 2026-10-17 → 2026-10-20 (+3d) |  | -16d → -18d |
| C135-1680 | Cable bus Support installed - C110 | 2026-10-14 → 2026-10-19 (+5d) | 2026-10-15 → 2026-10-20 (+5d) |  | -16d → -20d |
| C135-1690 | SWD top covers cut out - C110 | 2026-10-14 → 2026-10-19 (+5d) | 2026-10-19 → 2026-10-23 (+4d) |  | -19d → -23d |
| C135-1760 | Finish Cable Tray to Skid - C110 | 2026-10-14 → 2026-10-19 (+5d) | 2026-10-15 → 2026-10-20 (+5d) |  | -15d → -19d |
| C135-1830 | Penetrate MC into MOD-01 - C110 | 2026-10-16 → 2026-10-19 (+3d) | 2026-10-16 → 2026-10-19 (+3d) |  | -15d → -17d |
| C135-1840 | Penetrate MC into MOD-02 - C110 | 2026-10-16 → 2026-10-19 (+3d) | 2026-10-16 → 2026-10-19 (+3d) |  | -15d → -17d |
| C135-2000 | Install conduit from Busplug to ATSs - C110 | 2026-10-14 → 2026-10-19 (+5d) | 2026-10-15 → 2026-10-20 (+5d) |  | -15d → -19d |
| C135-2060 | Pull Cable from UPS to VFD - C110 | 2026-10-14 → 2026-10-19 (+5d) | 2026-10-14 → 2026-10-19 (+5d) |  | -11d → -15d |
| C135-2090 | Mount MPZ - C110 | 2026-10-14 → 2026-10-19 (+5d) | 2026-10-14 → 2026-10-19 (+5d) |  | -12d → -16d |
| C135-2260 | Electrical Room CRAH Set - C110 | 2026-10-14 → 2026-10-19 (+5d) | 2026-10-14 → 2026-10-19 (+5d) |  | -13d → -17d |
| C135-1850 | Finish Conduit to Elec Room CRAH - C110 | 2026-10-15 → 2026-10-20 (+5d) | 2026-10-15 → 2026-10-20 (+5d) |  | -13d → -17d |
| C135-2070 | Megger Cable from UPS to VFD - C110 | 2026-10-15 → 2026-10-20 (+5d) | 2026-10-15 → 2026-10-20 (+5d) |  | -11d → -15d |
| C135-2100 | Penetrate MC Cable into MPZ - C110 | 2026-10-15 → 2026-10-20 (+5d) | 2026-10-15 → 2026-10-20 (+5d) |  | -12d → -16d |
| C135-2130 | Terminate Cables in VFD - C110 | 2026-10-15 → 2026-10-20 (+5d) | 2026-10-15 → 2026-10-20 (+5d) |  | -10d → -14d |
| C135-2300 | Megger MC Cable from UPS to MOD - C110 | 2026-10-17 → 2026-10-20 (+3d) | 2026-10-17 → 2026-10-20 (+3d) |  | -15d → -17d |
| C135-1780 | Pull Chiller wire - C110 | 2026-10-16 → 2026-10-21 (+5d) | 2026-10-16 → 2026-10-21 (+5d) |  | -13d → -17d |
| C135-1810 | Penetrate MC into SWD - C110 | 2026-10-16 → 2026-10-21 (+5d) | 2026-10-16 → 2026-10-21 (+5d) |  | -15d → -19d |
| C135-1820 | Penetrat MC into UPS - C110 | 2026-10-16 → 2026-10-21 (+5d) | 2026-10-16 → 2026-10-21 (+5d) |  | -15d → -19d |
| C135-1920 | Megger MC Cable from MOD-01 to Mechanical Equipment - C110 | 2026-10-19 → 2026-10-21 (+2d) | 2026-10-19 → 2026-10-21 (+2d) |  | -16d → -18d |
| C135-1930 | Megger MC Cable from MOD-02 to Mechanical Equipment - C110 | 2026-10-19 → 2026-10-21 (+2d) | 2026-10-19 → 2026-10-21 (+2d) |  | -16d → -18d |
| C135-2010 | Pull ATS Cable - C110 | 2026-10-16 → 2026-10-21 (+5d) | 2026-10-16 → 2026-10-21 (+5d) |  | -15d → -19d |
| C135-2080 | Terminate Cables in UPS - C110 | 2026-10-16 → 2026-10-21 (+5d) | 2026-10-16 → 2026-10-21 (+5d) |  | -11d → -15d |
| C135-2110 | Megger MPZ Cable - C110 | 2026-10-16 → 2026-10-21 (+5d) | 2026-10-16 → 2026-10-21 (+5d) |  | -12d → -16d |
| C135-2140 | All Skid Grounding - C110 | 2026-10-16 → 2026-10-21 (+5d) | 2026-10-17 → 2026-10-22 (+5d) |  | -12d → -16d |
| C135-2210 | QC 2.2 checklist VFD - C110 | 2026-10-16 → 2026-10-21 (+5d) | 2026-10-16 → 2026-10-21 (+5d) |  | -10d → -14d |
| C135-1790 | Megger Chiller Cable - C110 | 2026-10-17 → 2026-10-22 (+5d) | 2026-10-17 → 2026-10-22 (+5d) |  | -13d → -17d |
| C135-1870 | Megger MC Cable from Skid to Elec Room CRAH - C110 | 2026-10-17 → 2026-10-22 (+5d) | 2026-10-17 → 2026-10-22 (+5d) |  | -13d → -17d |
| C135-1890 | Megger MC Cable from Skid to MOD - C110 | 2026-10-17 → 2026-10-22 (+5d) | 2026-10-17 → 2026-10-22 (+5d) |  | -15d → -19d |
| C135-1950 | Terminate MOD-02 - C110 | 2026-10-20 → 2026-10-22 (+2d) | 2026-10-20 → 2026-10-22 (+2d) |  | -16d → -18d |
| C135-2120 | Terminate MC Feed at MPZ - C110 | 2026-10-17 → 2026-10-22 (+5d) | 2026-10-17 → 2026-10-22 (+5d) |  | -12d → -16d |
| C135-2180 | QC 2.2 checklist UPS - C110 | 2026-10-17 → 2026-10-22 (+5d) | 2026-10-17 → 2026-10-22 (+5d) |  | -11d → -15d |
| C135-2270 | Megger Cable at ATS - C110 | 2026-10-17 → 2026-10-22 (+5d) | 2026-10-17 → 2026-10-22 (+5d) |  | -15d → -19d |
| C135-1800 | Terminations at Chiller - C110 | 2026-10-19 → 2026-10-23 (+4d) | 2026-10-19 → 2026-10-23 (+4d) |  | -13d → -17d |
| C135-1880 | Terminate Elec Room CRAH - C110 | 2026-10-19 → 2026-10-23 (+4d) | 2026-10-19 → 2026-10-23 (+4d) |  | -13d → -17d |
| C135-1940 | Terminate MOD-01 - C110 | 2026-10-20 → 2026-10-23 (+3d) | 2026-10-20 → 2026-10-23 (+3d) |  | -16d → -19d |
| C135-1960 | Terminate at Mechanical Equipment - C110 | 2026-10-20 → 2026-10-23 (+3d) | 2026-10-20 → 2026-10-23 (+3d) |  | -16d → -19d |
| C135-2020 | Terminate ATS Cable at Busplugs & ATSs - C110 | 2026-10-19 → 2026-10-23 (+4d) | 2026-10-20 → 2026-10-24 (+4d) |  | -15d → -19d |
| C135-2290 | QC 2.2 checklist MPZ - C110 | 2026-10-19 → 2026-10-23 (+4d) | 2026-10-19 → 2026-10-23 (+4d) |  | -12d → -16d |
| C135-1700 | Cable bus Install - C110 | 2026-10-20 → 2026-10-24 (+4d) | 2026-10-21 → 2026-10-26 (+5d) |  | -19d → -23d |
| C135-1970 | Mechanical Equipment/Tray Grounding - C110 | 2026-10-21 → 2026-10-24 (+3d) | 2026-10-22 → 2026-10-26 (+4d) |  | -16d → -19d |
| C135-2190 | QC 2.2 checklist Elec Room CRAH - C110 | 2026-10-20 → 2026-10-24 (+4d) | 2026-10-20 → 2026-10-24 (+4d) |  | -13d → -17d |
| C135-2200 | QC 2.2 Mechanical Equipment - C110 | 2026-10-21 → 2026-10-24 (+3d) | 2026-10-21 → 2026-10-24 (+3d) |  | -14d → -17d |
| C135-2250 | QC 2.2 checklist Chiller - C110 | 2026-10-20 → 2026-10-24 (+4d) | 2026-10-20 → 2026-10-24 (+4d) |  | -13d → -17d |
| C135-2030 | ATS Lashing - C110 | 2026-10-21 → 2026-10-26 (+5d) | 2026-10-21 → 2026-10-26 (+5d) |  | -15d → -19d |
| C135-1710 | Cable pulled to A & P Xfmrs - C110 | 2026-10-22 → 2026-10-27 (+5d) | 2026-10-22 → 2026-10-27 (+5d) |  | -19d → -23d |
| C135-2150 | QC 2.2 checklist MOD-01 - C110 | 2026-10-23 → 2026-10-27 (+4d) | 2026-10-23 → 2026-10-27 (+4d) |  | -16d → -19d |
| C135-2160 | QC 2.2 checklist MOD-02 - C110 | 2026-10-23 → 2026-10-27 (+4d) | 2026-10-23 → 2026-10-27 (+4d) |  | -16d → -19d |
| C135-2170 | QC 2.2 checklist ATSs - C110 | 2026-10-22 → 2026-10-27 (+5d) | 2026-10-22 → 2026-10-27 (+5d) |  | -15d → -19d |
| C135-2280 | QC 2.2 checklist Busplugs - C110 | 2026-10-22 → 2026-10-27 (+5d) | 2026-10-22 → 2026-10-27 (+5d) |  | -15d → -19d |
| C135-1720 | Megger Cable Bus Cable - C110 | 2026-10-23 → 2026-10-28 (+5d) | 2026-10-23 → 2026-10-28 (+5d) |  | -19d → -23d |
| C135-1730 | Cable Bus inspection and covers - C110 | 2026-10-23 → 2026-10-28 (+5d) | 2026-10-23 → 2026-10-28 (+5d) |  | -17d → -21d |
| C135-1740 | Terminations at Xfmrs - C110 | 2026-10-24 → 2026-10-29 (+5d) | 2026-10-26 → 2026-10-30 (+4d) |  | -19d → -23d |
| C135-1750 | Terminations at SWD - C110 | 2026-10-24 → 2026-10-29 (+5d) | 2026-10-26 → 2026-10-30 (+4d) |  | -19d → -23d |
| C135-2220 | QC 2.2 checklist SWD - C110 | 2026-10-27 → 2026-10-31 (+4d) | 2026-10-27 → 2026-10-31 (+4d) |  | -19d → -23d |
| C135-2240 | QC 2.2 checklist XFMR - C110 | 2026-10-27 → 2026-10-31 (+4d) | 2026-10-27 → 2026-10-31 (+4d) |  | -19d → -23d |
| C135-2230 | Ready for FTE - C110 | 2026-10-28 → 2026-11-02 (+5d) | 2026-10-28 → 2026-11-02 (+5d) |  | -19d → -23d |
| 4 | **D110** |  | 2026-10-28 → 2026-11-02 (+5d) |  |  |
| D135-1770 | Chiller feed box and conduit complete - D110 |  | 2026-10-15 → 2026-10-20 (+5d) |  | -13d → -17d |
| D135-1670 | Set MODs - D110 | 2026-10-14 → 2026-10-15 A (+1d) | 2026-10-15 → 2026-10-18 A (+3d) | 0% → 100% | -16d → none |
| D135-1860 | Pull Cable to Elec Room CRAH - D110 | 2026-10-16 A | 2026-10-16 → 2026-10-21 (+5d) |  | -13d → -17d |
| D135-1900 | Pull MC from MOD-01 to Mechanical Equipment - D110 | 2026-10-16 A | 2026-10-17 → 2026-10-20 (+3d) |  | -16d → -18d |
| D135-1910 | Pull MC from MOD-02 to Mechanical Equipment - D110 | 2026-10-16 A | 2026-10-17 → 2026-10-20 (+3d) |  | -16d → -18d |
| D135-1680 | Cable bus Support installed - D110 | 2026-10-14 → 2026-10-19 (+5d) | 2026-10-15 → 2026-10-20 (+5d) |  | -16d → -20d |
| D135-1690 | SWD top covers cut out - D110 | 2026-10-14 → 2026-10-19 (+5d) | 2026-10-19 → 2026-10-23 (+4d) |  | -19d → -23d |
| D135-1760 | Finish Cable Tray to Skid - D110 | 2026-10-14 → 2026-10-19 (+5d) | 2026-10-15 → 2026-10-20 (+5d) |  | -15d → -19d |
| D135-1830 | Penetrate MC into MOD-01 - D110 | 2026-10-16 → 2026-10-19 (+3d) | 2026-10-16 → 2026-10-19 (+3d) |  | -15d → -17d |
| D135-1840 | Penetrate MC into MOD-02 - D110 | 2026-10-16 → 2026-10-19 (+3d) | 2026-10-16 → 2026-10-19 (+3d) |  | -15d → -17d |

| ID | Task | Start | Finish | Complete | Total float |
| --- | --- | --- | --- | --- | --- |
| D135-2000 | Install conduit from Busplug to ATSs - D110 | 2026-10-14 → 2026-10-19 (+5d) | 2026-10-15 → 2026-10-20 (+5d) |  | -15d → -19d |
| D135-2060 | Pull Cable from UPS to VFD - D110 | 2026-10-14 → 2026-10-19 (+5d) | 2026-10-14 → 2026-10-19 (+5d) |  | -11d → -15d |
| D135-2090 | Mount MPZ - D110 | 2026-10-14 → 2026-10-19 (+5d) | 2026-10-14 → 2026-10-19 (+5d) |  | -12d → -16d |
| D135-2260 | Electrical Room CRAH Set - D110 | 2026-10-14 → 2026-10-19 (+5d) | 2026-10-14 → 2026-10-19 (+5d) |  | -13d → -17d |
| D135-1850 | Finish Conduit to Elec Room CRAH - D110 | 2026-10-15 → 2026-10-20 (+5d) | 2026-10-15 → 2026-10-20 (+5d) |  | -13d → -17d |
| D135-2070 | Megger Cable from UPS to VFD - D110 | 2026-10-15 → 2026-10-20 (+5d) | 2026-10-15 → 2026-10-20 (+5d) |  | -11d → -15d |
| D135-2100 | Penetrate MC Cable into MPZ - D110 | 2026-10-15 → 2026-10-20 (+5d) | 2026-10-15 → 2026-10-20 (+5d) |  | -12d → -16d |
| D135-2130 | Terminate Cables in VFD - D110 | 2026-10-15 → 2026-10-20 (+5d) | 2026-10-15 → 2026-10-20 (+5d) |  | -10d → -14d |
| D135-2300 | Megger MC Cable from UPS to MOD - D110 | 2026-10-17 → 2026-10-20 (+3d) | 2026-10-17 → 2026-10-20 (+3d) |  | -15d → -17d |
| D135-1780 | Pull Chiller wire - D110 | 2026-10-16 → 2026-10-21 (+5d) | 2026-10-16 → 2026-10-21 (+5d) |  | -13d → -17d |
| D135-1810 | Penetrate MC into SWD - D110 | 2026-10-16 → 2026-10-21 (+5d) | 2026-10-16 → 2026-10-21 (+5d) |  | -15d → -19d |
| D135-1820 | Penetrat MC into UPS - D110 | 2026-10-16 → 2026-10-21 (+5d) | 2026-10-16 → 2026-10-21 (+5d) |  | -15d → -19d |
| D135-1920 | Megger MC Cable from MOD-01 to Mechanical Equipment - D110 | 2026-10-19 → 2026-10-21 (+2d) | 2026-10-19 → 2026-10-21 (+2d) |  | -16d → -18d |
| D135-1930 | Megger MC Cable from MOD-02 to Mechanical Equipment - D110 | 2026-10-19 → 2026-10-21 (+2d) | 2026-10-19 → 2026-10-21 (+2d) |  | -16d → -18d |
| D135-2010 | Pull ATS Cable - D110 | 2026-10-16 → 2026-10-21 (+5d) | 2026-10-16 → 2026-10-21 (+5d) |  | -15d → -19d |
| D135-2080 | Terminate Cables in UPS - D110 | 2026-10-16 → 2026-10-21 (+5d) | 2026-10-16 → 2026-10-21 (+5d) |  | -11d → -15d |
| D135-2110 | Megger MPZ Cable - D110 | 2026-10-16 → 2026-10-21 (+5d) | 2026-10-16 → 2026-10-21 (+5d) |  | -12d → -16d |
| D135-2140 | All Skid Grounding - D110 | 2026-10-16 → 2026-10-21 (+5d) | 2026-10-17 → 2026-10-22 (+5d) |  | -12d → -16d |
| D135-2210 | QC 2.2 checklist VFD - D110 | 2026-10-16 → 2026-10-21 (+5d) | 2026-10-16 → 2026-10-21 (+5d) |  | -10d → -14d |
| D135-1790 | Megger Chiller Cable - D110 | 2026-10-17 → 2026-10-22 (+5d) | 2026-10-17 → 2026-10-22 (+5d) |  | -13d → -17d |
| D135-1870 | Megger MC Cable from Skid to Elec Room CRAH - D110 | 2026-10-17 → 2026-10-22 (+5d) | 2026-10-17 → 2026-10-22 (+5d) |  | -13d → -17d |
| D135-1890 | Megger MC Cable from Skid to MOD - D110 | 2026-10-17 → 2026-10-22 (+5d) | 2026-10-17 → 2026-10-22 (+5d) |  | -15d → -19d |
| D135-1950 | Terminate MOD-02 - D110 | 2026-10-20 → 2026-10-22 (+2d) | 2026-10-20 → 2026-10-22 (+2d) |  | -16d → -18d |
| D135-2120 | Terminate MC Feed at MPZ - D110 | 2026-10-17 → 2026-10-22 (+5d) | 2026-10-17 → 2026-10-22 (+5d) |  | -12d → -16d |
| D135-2180 | QC 2.2 checklist UPS - D110 | 2026-10-17 → 2026-10-22 (+5d) | 2026-10-17 → 2026-10-22 (+5d) |  | -11d → -15d |
| D135-2270 | Megger Cable at ATS - D110 | 2026-10-17 → 2026-10-22 (+5d) | 2026-10-17 → 2026-10-22 (+5d) |  | -15d → -19d |
| D135-1800 | Terminations at Chiller - D110 | 2026-10-19 → 2026-10-23 (+4d) | 2026-10-19 → 2026-10-23 (+4d) |  | -13d → -17d |
| D135-1880 | Terminate Elec Room CRAH - D110 | 2026-10-19 → 2026-10-23 (+4d) | 2026-10-19 → 2026-10-23 (+4d) |  | -13d → -17d |
| D135-1940 | Terminate MOD-01 - D110 | 2026-10-20 → 2026-10-23 (+3d) | 2026-10-20 → 2026-10-23 (+3d) |  | -16d → -19d |
| D135-1960 | Terminate at Mechanical Equipment - D110 | 2026-10-20 → 2026-10-23 (+3d) | 2026-10-20 → 2026-10-23 (+3d) |  | -16d → -19d |
| D135-2020 | Terminate ATS Cable at Busplugs & ATSs - D110 | 2026-10-19 → 2026-10-23 (+4d) | 2026-10-20 → 2026-10-24 (+4d) |  | -15d → -19d |
| D135-2290 | QC 2.2 checklist MPZ - D110 | 2026-10-19 → 2026-10-23 (+4d) | 2026-10-19 → 2026-10-23 (+4d) |  | -12d → -16d |
| D135-1700 | Cable bus Install - D110 | 2026-10-20 → 2026-10-24 (+4d) | 2026-10-21 → 2026-10-26 (+5d) |  | -19d → -23d |
| D135-1970 | Mechanical Equipment/Tray Grounding - D110 | 2026-10-21 → 2026-10-24 (+3d) | 2026-10-22 → 2026-10-26 (+4d) |  | -16d → -19d |
| D135-2190 | QC 2.2 checklist Elec Room CRAH - D110 | 2026-10-20 → 2026-10-24 (+4d) | 2026-10-20 → 2026-10-24 (+4d) |  | -13d → -17d |
| D135-2200 | QC 2.2 Mechanical Equipment - D110 | 2026-10-21 → 2026-10-24 (+3d) | 2026-10-21 → 2026-10-24 (+3d) |  | -14d → -17d |
| D135-2250 | QC 2.2 checklist Chiller - D110 | 2026-10-20 → 2026-10-24 (+4d) | 2026-10-20 → 2026-10-24 (+4d) |  | -13d → -17d |
| D135-2030 | ATS Lashing - D110 | 2026-10-21 → 2026-10-26 (+5d) | 2026-10-21 → 2026-10-26 (+5d) |  | -15d → -19d |
| D135-1710 | Cable pulled to A & P Xfmrs - D110 | 2026-10-22 → 2026-10-27 (+5d) | 2026-10-22 → 2026-10-27 (+5d) |  | -19d → -23d |
| D135-2150 | QC 2.2 checklist MOD-01 - D110 | 2026-10-23 → 2026-10-27 (+4d) | 2026-10-23 → 2026-10-27 (+4d) |  | -16d → -19d |
| D135-2160 | QC 2.2 checklist MOD-02 - D110 | 2026-10-23 → 2026-10-27 (+4d) | 2026-10-23 → 2026-10-27 (+4d) |  | -16d → -19d |
| D135-2170 | QC 2.2 checklist ATSs - D110 | 2026-10-22 → 2026-10-27 (+5d) | 2026-10-22 → 2026-10-27 (+5d) |  | -15d → -19d |
| D135-2280 | QC 2.2 checklist Busplugs - D110 | 2026-10-22 → 2026-10-27 (+5d) | 2026-10-22 → 2026-10-27 (+5d) |  | -15d → -19d |
| D135-1720 | Megger Cable Bus Cable - D110 | 2026-10-23 → 2026-10-28 (+5d) | 2026-10-23 → 2026-10-28 (+5d) |  | -19d → -23d |
| D135-1730 | Cable Bus inspection and covers - D110 | 2026-10-23 → 2026-10-28 (+5d) | 2026-10-23 → 2026-10-28 (+5d) |  | -17d → -21d |
| D135-1740 | Terminations at Xfmrs - D110 | 2026-10-24 → 2026-10-29 (+5d) | 2026-10-26 → 2026-10-30 (+4d) |  | -19d → -23d |
| D135-1750 | Terminations at SWD - D110 | 2026-10-24 → 2026-10-29 (+5d) | 2026-10-26 → 2026-10-30 (+4d) |  | -19d → -23d |
| D135-2220 | QC 2.2 checklist SWD - D110 | 2026-10-27 → 2026-10-31 (+4d) | 2026-10-27 → 2026-10-31 (+4d) |  | -19d → -23d |
| D135-2240 | QC 2.2 checklist XFMR - D110 | 2026-10-27 → 2026-10-31 (+4d) | 2026-10-27 → 2026-10-31 (+4d) |  | -19d → -23d |
| D135-2230 | Ready for FTE - D110 | 2026-10-28 → 2026-11-02 (+5d) | 2026-10-28 → 2026-11-02 (+5d) |  | -19d → -23d |
| 5 | **E110** |  | 2026-10-28 → 2026-11-02 (+5d) |  |  |
| E135-1770 | Chiller feed box and conduit complete - E110 |  | 2026-10-15 → 2026-10-20 (+5d) |  | -13d → -17d |
| E135-1670 | Set MODs - E110 | 2026-10-14 → 2026-10-15 A (+1d) | 2026-10-15 → 2026-10-18 A (+3d) | 0% → 100% | -16d → none |
| E135-1860 | Pull Cable to Elec Room CRAH - E110 | 2026-10-16 A | 2026-10-16 → 2026-10-21 (+5d) |  | -13d → -17d |
| E135-1900 | Pull MC from MOD-01 to Mechanical Equipment - E110 | 2026-10-16 A | 2026-10-17 → 2026-10-20 (+3d) |  | -16d → -18d |
| E135-1910 | Pull MC from MOD-02 to Mechanical Equipment - E110 | 2026-10-16 A | 2026-10-17 → 2026-10-20 (+3d) |  | -16d → -18d |
| E135-1680 | Cable bus Support installed - E110 | 2026-10-14 → 2026-10-19 (+5d) | 2026-10-15 → 2026-10-20 (+5d) |  | -16d → -20d |
| E135-1690 | SWD top covers cut out - E110 | 2026-10-14 → 2026-10-19 (+5d) | 2026-10-19 → 2026-10-23 (+4d) |  | -19d → -23d |
| E135-1760 | Finish Cable Tray to Skid - E110 | 2026-10-14 → 2026-10-19 (+5d) | 2026-10-15 → 2026-10-20 (+5d) |  | -15d → -19d |
| E135-1830 | Penetrate MC into MOD-01 - E110 | 2026-10-16 → 2026-10-19 (+3d) | 2026-10-16 → 2026-10-19 (+3d) |  | -15d → -17d |
| E135-1840 | Penetrate MC into MOD-02 - E110 | 2026-10-16 → 2026-10-19 (+3d) | 2026-10-16 → 2026-10-19 (+3d) |  | -15d → -17d |
| E135-2000 | Install conduit from Busplug to ATSs - E110 | 2026-10-14 → 2026-10-19 (+5d) | 2026-10-15 → 2026-10-20 (+5d) |  | -15d → -19d |
| E135-2060 | Pull Cable from UPS to VFD - E110 | 2026-10-14 → 2026-10-19 (+5d) | 2026-10-14 → 2026-10-19 (+5d) |  | -11d → -15d |
| E135-2090 | Mount MPZ - E110 | 2026-10-14 → 2026-10-19 (+5d) | 2026-10-14 → 2026-10-19 (+5d) |  | -12d → -16d |
| E135-2260 | Electrical Room CRAH Set - E110 | 2026-10-14 → 2026-10-19 (+5d) | 2026-10-14 → 2026-10-19 (+5d) |  | -13d → -17d |
| E135-1850 | Finish Conduit to Elec Room CRAH - E110 | 2026-10-15 → 2026-10-20 (+5d) | 2026-10-15 → 2026-10-20 (+5d) |  | -13d → -17d |
| E135-2070 | Megger Cable from UPS to VFD - E110 | 2026-10-15 → 2026-10-20 (+5d) | 2026-10-15 → 2026-10-20 (+5d) |  | -11d → -15d |
| E135-2100 | Penetrate MC Cable into MPZ - E110 | 2026-10-15 → 2026-10-20 (+5d) | 2026-10-15 → 2026-10-20 (+5d) |  | -12d → -16d |
| E135-2130 | Terminate Cables in VFD - E110 | 2026-10-15 → 2026-10-20 (+5d) | 2026-10-15 → 2026-10-20 (+5d) |  | -10d → -14d |
| E135-2300 | Megger MC Cable from UPS to MOD - E110 | 2026-10-17 → 2026-10-20 (+3d) | 2026-10-17 → 2026-10-20 (+3d) |  | -15d → -17d |

| ID | Task | Start | Finish | Complete | Total float |
| --- | --- | --- | --- | --- | --- |
| E135-1780 | Pull Chiller wire - E110 | 2026-10-16 → 2026-10-21 (+5d) | 2026-10-16 → 2026-10-21 (+5d) |  | -13d → -17d |
| E135-1810 | Penetrate MC into SWD - E110 | 2026-10-16 → 2026-10-21 (+5d) | 2026-10-16 → 2026-10-21 (+5d) |  | -15d → -19d |
| E135-1820 | Penetrat MC into UPS - E110 | 2026-10-16 → 2026-10-21 (+5d) | 2026-10-16 → 2026-10-21 (+5d) |  | -15d → -19d |
| E135-1920 | Megger MC Cable from MOD-01 to Mechanical Equipment - E110 | 2026-10-19 → 2026-10-21 (+2d) | 2026-10-19 → 2026-10-21 (+2d) |  | -16d → -18d |
| E135-1930 | Megger MC Cable from MOD-02 to Mechanical Equipment - E110 | 2026-10-19 → 2026-10-21 (+2d) | 2026-10-19 → 2026-10-21 (+2d) |  | -16d → -18d |
| E135-2010 | Pull ATS Cable - E110 | 2026-10-16 → 2026-10-21 (+5d) | 2026-10-16 → 2026-10-21 (+5d) |  | -15d → -19d |
| E135-2080 | Terminate Cables in UPS - E110 | 2026-10-16 → 2026-10-21 (+5d) | 2026-10-16 → 2026-10-21 (+5d) |  | -11d → -15d |
| E135-2110 | Megger MPZ Cable - E110 | 2026-10-16 → 2026-10-21 (+5d) | 2026-10-16 → 2026-10-21 (+5d) |  | -12d → -16d |
| E135-2140 | All Skid Grounding - E110 | 2026-10-16 → 2026-10-21 (+5d) | 2026-10-17 → 2026-10-22 (+5d) |  | -12d → -16d |
| E135-2210 | QC 2.2 checklist VFD - E110 | 2026-10-16 → 2026-10-21 (+5d) | 2026-10-16 → 2026-10-21 (+5d) |  | -10d → -14d |
| E135-1790 | Megger Chiller Cable - E110 | 2026-10-17 → 2026-10-22 (+5d) | 2026-10-17 → 2026-10-22 (+5d) |  | -13d → -17d |
| E135-1870 | Megger MC Cable from Skid to Elec Room CRAH - E110 | 2026-10-17 → 2026-10-22 (+5d) | 2026-10-17 → 2026-10-22 (+5d) |  | -13d → -17d |
| E135-1890 | Megger MC Cable from Skid to MOD - E110 | 2026-10-17 → 2026-10-22 (+5d) | 2026-10-17 → 2026-10-22 (+5d) |  | -15d → -19d |
| E135-1950 | Terminate MOD-02 - E110 | 2026-10-20 → 2026-10-22 (+2d) | 2026-10-20 → 2026-10-22 (+2d) |  | -16d → -18d |
| E135-2120 | Terminate MC Feed at MPZ - E110 | 2026-10-17 → 2026-10-22 (+5d) | 2026-10-17 → 2026-10-22 (+5d) |  | -12d → -16d |
| E135-2180 | QC 2.2 checklist UPS - E110 | 2026-10-17 → 2026-10-22 (+5d) | 2026-10-17 → 2026-10-22 (+5d) |  | -11d → -15d |
| E135-2270 | Megger Cable at ATS - E110 | 2026-10-17 → 2026-10-22 (+5d) | 2026-10-17 → 2026-10-22 (+5d) |  | -15d → -19d |
| E135-1800 | Terminations at Chiller - E110 | 2026-10-19 → 2026-10-23 (+4d) | 2026-10-19 → 2026-10-23 (+4d) |  | -13d → -17d |
| E135-1880 | Terminate Elec Room CRAH - E110 | 2026-10-19 → 2026-10-23 (+4d) | 2026-10-19 → 2026-10-23 (+4d) |  | -13d → -17d |
| E135-1940 | Terminate MOD-01 - E110 | 2026-10-20 → 2026-10-23 (+3d) | 2026-10-20 → 2026-10-23 (+3d) |  | -16d → -19d |
| E135-1960 | Terminate at Mechanical Equipment - E110 | 2026-10-20 → 2026-10-23 (+3d) | 2026-10-20 → 2026-10-23 (+3d) |  | -16d → -19d |
| E135-2020 | Terminate ATS Cable at Busplugs & ATSs - E110 | 2026-10-19 → 2026-10-23 (+4d) | 2026-10-20 → 2026-10-24 (+4d) |  | -15d → -19d |
| E135-2290 | QC 2.2 checklist MPZ - E110 | 2026-10-19 → 2026-10-23 (+4d) | 2026-10-19 → 2026-10-23 (+4d) |  | -12d → -16d |
| E135-1700 | Cable bus Install - E110 | 2026-10-20 → 2026-10-24 (+4d) | 2026-10-21 → 2026-10-26 (+5d) |  | -19d → -23d |
| E135-1970 | Mechanical Equipment/Tray Grounding - E110 | 2026-10-21 → 2026-10-24 (+3d) | 2026-10-22 → 2026-10-26 (+4d) |  | -16d → -19d |
| E135-2190 | QC 2.2 checklist Elec Room CRAH - E110 | 2026-10-20 → 2026-10-24 (+4d) | 2026-10-20 → 2026-10-24 (+4d) |  | -13d → -17d |
| E135-2200 | QC 2.2 Mechanical Equipment - E110 | 2026-10-21 → 2026-10-24 (+3d) | 2026-10-21 → 2026-10-24 (+3d) |  | -14d → -17d |
| E135-2250 | QC 2.2 checklist Chiller - E110 | 2026-10-20 → 2026-10-24 (+4d) | 2026-10-20 → 2026-10-24 (+4d) |  | -13d → -17d |
| E135-2030 | ATS Lashing - E110 | 2026-10-21 → 2026-10-26 (+5d) | 2026-10-21 → 2026-10-26 (+5d) |  | -15d → -19d |
| E135-1710 | Cable pulled to A & P Xfmrs - E110 | 2026-10-22 → 2026-10-27 (+5d) | 2026-10-22 → 2026-10-27 (+5d) |  | -19d → -23d |
| E135-2150 | QC 2.2 checklist MOD-01 - E110 | 2026-10-23 → 2026-10-27 (+4d) | 2026-10-23 → 2026-10-27 (+4d) |  | -16d → -19d |
| E135-2160 | QC 2.2 checklist MOD-02 - E110 | 2026-10-23 → 2026-10-27 (+4d) | 2026-10-23 → 2026-10-27 (+4d) |  | -16d → -19d |
| E135-2170 | QC 2.2 checklist ATSs - E110 | 2026-10-22 → 2026-10-27 (+5d) | 2026-10-22 → 2026-10-27 (+5d) |  | -15d → -19d |
| E135-2280 | QC 2.2 checklist Busplugs - E110 | 2026-10-22 → 2026-10-27 (+5d) | 2026-10-22 → 2026-10-27 (+5d) |  | -15d → -19d |
| E135-1720 | Megger Cable Bus Cable - E110 | 2026-10-23 → 2026-10-28 (+5d) | 2026-10-23 → 2026-10-28 (+5d) |  | -19d → -23d |
| E135-1730 | Cable Bus inspection and covers - E110 | 2026-10-23 → 2026-10-28 (+5d) | 2026-10-23 → 2026-10-28 (+5d) |  | -17d → -21d |
| E135-1740 | Terminations at Xfmrs - E110 | 2026-10-24 → 2026-10-29 (+5d) | 2026-10-26 → 2026-10-30 (+4d) |  | -19d → -23d |
| E135-1750 | Terminations at SWD - E110 | 2026-10-24 → 2026-10-29 (+5d) | 2026-10-26 → 2026-10-30 (+4d) |  | -19d → -23d |
| E135-2220 | QC 2.2 checklist SWD - E110 | 2026-10-27 → 2026-10-31 (+4d) | 2026-10-27 → 2026-10-31 (+4d) |  | -19d → -23d |
| E135-2240 | QC 2.2 checklist XFMR - E110 | 2026-10-27 → 2026-10-31 (+4d) | 2026-10-27 → 2026-10-31 (+4d) |  | -19d → -23d |
| E135-2230 | Ready for FTE - E110 | 2026-10-28 → 2026-11-02 (+5d) | 2026-10-28 → 2026-11-02 (+5d) |  | -19d → -23d |
| 6 | **F110** |  | 2026-10-28 → 2026-11-02 (+5d) |  |  |
| F135-1770 | Chiller feed box and conduit complete - F110 |  | 2026-10-15 → 2026-10-20 (+5d) |  | -13d → -17d |
| F135-1670 | Set MODs - F110 | 2026-10-14 → 2026-10-15 A (+1d) | 2026-10-15 → 2026-10-18 A (+3d) | 0% → 100% | -16d → none |
| F135-1860 | Pull Cable to Elec Room CRAH - F110 | 2026-10-16 A | 2026-10-16 → 2026-10-21 (+5d) |  | -13d → -17d |
| F135-1900 | Pull MC from MOD-01 to Mechanical Equipment - F110 | 2026-10-16 A | 2026-10-17 → 2026-10-20 (+3d) |  | -16d → -18d |
| F135-1910 | Pull MC from MOD-02 to Mechanical Equipment - F110 | 2026-10-16 A | 2026-10-17 → 2026-10-20 (+3d) |  | -16d → -18d |
| F135-1680 | Cable bus Support installed - F110 | 2026-10-14 → 2026-10-19 (+5d) | 2026-10-15 → 2026-10-20 (+5d) |  | -16d → -20d |
| F135-1690 | SWD top covers cut out - F110 | 2026-10-14 → 2026-10-19 (+5d) | 2026-10-19 → 2026-10-23 (+4d) |  | -19d → -23d |
| F135-1760 | Finish Cable Tray to Skid - F110 | 2026-10-14 → 2026-10-19 (+5d) | 2026-10-15 → 2026-10-20 (+5d) |  | -15d → -19d |
| F135-1830 | Penetrate MC into MOD-01 - F110 | 2026-10-16 → 2026-10-19 (+3d) | 2026-10-16 → 2026-10-19 (+3d) |  | -15d → -17d |
| F135-1840 | Penetrate MC into MOD-02 - F110 | 2026-10-16 → 2026-10-19 (+3d) | 2026-10-16 → 2026-10-19 (+3d) |  | -15d → -17d |
| F135-2000 | Install conduit from Busplug to ATSs - F110 | 2026-10-14 → 2026-10-19 (+5d) | 2026-10-15 → 2026-10-20 (+5d) |  | -15d → -19d |
| F135-2060 | Pull Cable from UPS to VFD - F110 | 2026-10-14 → 2026-10-19 (+5d) | 2026-10-14 → 2026-10-19 (+5d) |  | -11d → -15d |
| F135-2090 | Mount MPZ - F110 | 2026-10-14 → 2026-10-19 (+5d) | 2026-10-14 → 2026-10-19 (+5d) |  | -12d → -16d |
| F135-2260 | Electrical Room CRAH Set - F110 | 2026-10-14 → 2026-10-19 (+5d) | 2026-10-14 → 2026-10-19 (+5d) |  | -13d → -17d |
| F135-1850 | Finish Conduit to Elec Room CRAH - F110 | 2026-10-15 → 2026-10-20 (+5d) | 2026-10-15 → 2026-10-20 (+5d) |  | -13d → -17d |
| F135-2070 | Megger Cable from UPS to VFD - F110 | 2026-10-15 → 2026-10-20 (+5d) | 2026-10-15 → 2026-10-20 (+5d) |  | -11d → -15d |
| F135-2100 | Penetrate MC Cable into MPZ - F110 | 2026-10-15 → 2026-10-20 (+5d) | 2026-10-15 → 2026-10-20 (+5d) |  | -12d → -16d |
| F135-2130 | Terminate Cables in VFD - F110 | 2026-10-15 → 2026-10-20 (+5d) | 2026-10-15 → 2026-10-20 (+5d) |  | -10d → -14d |
| F135-2300 | Megger MC Cable from UPS to MOD - F110 | 2026-10-17 → 2026-10-20 (+3d) | 2026-10-17 → 2026-10-20 (+3d) |  | -15d → -17d |
| F135-1780 | Pull Chiller wire - F110 | 2026-10-16 → 2026-10-21 (+5d) | 2026-10-16 → 2026-10-21 (+5d) |  | -13d → -17d |
| F135-1810 | Penetrate MC into SWD - F110 | 2026-10-16 → 2026-10-21 (+5d) | 2026-10-16 → 2026-10-21 (+5d) |  | -15d → -19d |
| F135-1820 | Penetrat MC into UPS - F110 | 2026-10-16 → 2026-10-21 (+5d) | 2026-10-16 → 2026-10-21 (+5d) |  | -15d → -19d |
| F135-1920 | Megger MC Cable from MOD-01 to Mechanical Equipment - F110 | 2026-10-19 → 2026-10-21 (+2d) | 2026-10-19 → 2026-10-21 (+2d) |  | -16d → -18d |
| F135-1930 | Megger MC Cable from MOD-02 to Mechanical Equipment - F110 | 2026-10-19 → 2026-10-21 (+2d) | 2026-10-19 → 2026-10-21 (+2d) |  | -16d → -18d |
| F135-2010 | Pull ATS Cable - F110 | 2026-10-16 → 2026-10-21 (+5d) | 2026-10-16 → 2026-10-21 (+5d) |  | -15d → -19d |
| F135-2080 | Terminate Cables in UPS - F110 | 2026-10-16 → 2026-10-21 (+5d) | 2026-10-16 → 2026-10-21 (+5d) |  | -11d → -15d |
| F135-2110 | Megger MPZ Cable - F110 | 2026-10-16 → 2026-10-21 (+5d) | 2026-10-16 → 2026-10-21 (+5d) |  | -12d → -16d |
| F135-2140 | All Skid Grounding - F110 | 2026-10-16 → 2026-10-21 (+5d) | 2026-10-17 → 2026-10-22 (+5d) |  | -12d → -16d |

| ID | Task | Start | Finish | Complete | Total float |
| --- | --- | --- | --- | --- | --- |
| F135-2210 | QC 2.2 checklist VFD - F110 | 2026-10-16 → 2026-10-21 (+5d) | 2026-10-16 → 2026-10-21 (+5d) |  | -10d → -14d |
| F135-1790 | Megger Chiller Cable - F110 | 2026-10-17 → 2026-10-22 (+5d) | 2026-10-17 → 2026-10-22 (+5d) |  | -13d → -17d |
| F135-1870 | Megger MC Cable from Skid to Elec Room CRAH - F110 | 2026-10-17 → 2026-10-22 (+5d) | 2026-10-17 → 2026-10-22 (+5d) |  | -13d → -17d |
| F135-1890 | Megger MC Cable from Skid to MOD - F110 | 2026-10-17 → 2026-10-22 (+5d) | 2026-10-17 → 2026-10-22 (+5d) |  | -15d → -19d |
| F135-1950 | Terminate MOD-02 - F110 | 2026-10-20 → 2026-10-22 (+2d) | 2026-10-20 → 2026-10-22 (+2d) |  | -16d → -18d |
| F135-2120 | Terminate MC Feed at MPZ - F110 | 2026-10-17 → 2026-10-22 (+5d) | 2026-10-17 → 2026-10-22 (+5d) |  | -12d → -16d |
| F135-2180 | QC 2.2 checklist UPS - F110 | 2026-10-17 → 2026-10-22 (+5d) | 2026-10-17 → 2026-10-22 (+5d) |  | -11d → -15d |
| F135-2270 | Megger Cable at ATS - F110 | 2026-10-17 → 2026-10-22 (+5d) | 2026-10-17 → 2026-10-22 (+5d) |  | -15d → -19d |
| F135-1800 | Terminations at Chiller - F110 | 2026-10-19 → 2026-10-23 (+4d) | 2026-10-19 → 2026-10-23 (+4d) |  | -13d → -17d |
| F135-1880 | Terminate Elec Room CRAH - F110 | 2026-10-19 → 2026-10-23 (+4d) | 2026-10-19 → 2026-10-23 (+4d) |  | -13d → -17d |
| F135-1940 | Terminate MOD-01 - F110 | 2026-10-20 → 2026-10-23 (+3d) | 2026-10-20 → 2026-10-23 (+3d) |  | -16d → -19d |
| F135-1960 | Terminate at Mechanical Equipment - F110 | 2026-10-20 → 2026-10-23 (+3d) | 2026-10-20 → 2026-10-23 (+3d) |  | -16d → -19d |
| F135-2020 | Terminate ATS Cable at Busplugs & ATSs - F110 | 2026-10-19 → 2026-10-23 (+4d) | 2026-10-20 → 2026-10-24 (+4d) |  | -15d → -19d |
| F135-2290 | QC 2.2 checklist MPZ - F110 | 2026-10-19 → 2026-10-23 (+4d) | 2026-10-19 → 2026-10-23 (+4d) |  | -12d → -16d |
| F135-1700 | Cable bus Install - F110 | 2026-10-20 → 2026-10-24 (+4d) | 2026-10-21 → 2026-10-26 (+5d) |  | -19d → -23d |
| F135-1970 | Mechanical Equipment/Tray Grounding - F110 | 2026-10-21 → 2026-10-24 (+3d) | 2026-10-22 → 2026-10-26 (+4d) |  | -16d → -19d |
| F135-2190 | QC 2.2 checklist Elec Room CRAH - F110 | 2026-10-20 → 2026-10-24 (+4d) | 2026-10-20 → 2026-10-24 (+4d) |  | -13d → -17d |
| F135-2200 | QC 2.2 Mechanical Equipment - F110 | 2026-10-21 → 2026-10-24 (+3d) | 2026-10-21 → 2026-10-24 (+3d) |  | -14d → -17d |
| F135-2250 | QC 2.2 checklist Chiller - F110 | 2026-10-20 → 2026-10-24 (+4d) | 2026-10-20 → 2026-10-24 (+4d) |  | -13d → -17d |
| F135-2030 | ATS Lashing - F110 | 2026-10-21 → 2026-10-26 (+5d) | 2026-10-21 → 2026-10-26 (+5d) |  | -15d → -19d |
| F135-1710 | Cable pulled to A & P Xfmrs - F110 | 2026-10-22 → 2026-10-27 (+5d) | 2026-10-22 → 2026-10-27 (+5d) |  | -19d → -23d |
| F135-2150 | QC 2.2 checklist MOD-01 - F110 | 2026-10-23 → 2026-10-27 (+4d) | 2026-10-23 → 2026-10-27 (+4d) |  | -16d → -19d |
| F135-2160 | QC 2.2 checklist MOD-02 - F110 | 2026-10-23 → 2026-10-27 (+4d) | 2026-10-23 → 2026-10-27 (+4d) |  | -16d → -19d |
| F135-2170 | QC 2.2 checklist ATSs - F110 | 2026-10-22 → 2026-10-27 (+5d) | 2026-10-22 → 2026-10-27 (+5d) |  | -15d → -19d |
| F135-2280 | QC 2.2 checklist Busplugs - F110 | 2026-10-22 → 2026-10-27 (+5d) | 2026-10-22 → 2026-10-27 (+5d) |  | -15d → -19d |
| F135-1720 | Megger Cable Bus Cable - F110 | 2026-10-23 → 2026-10-28 (+5d) | 2026-10-23 → 2026-10-28 (+5d) |  | -19d → -23d |
| F135-1730 | Cable Bus inspection and covers - F110 | 2026-10-23 → 2026-10-28 (+5d) | 2026-10-23 → 2026-10-28 (+5d) |  | -17d → -21d |
| F135-1740 | Terminations at Xfmrs - F110 | 2026-10-24 → 2026-10-29 (+5d) | 2026-10-26 → 2026-10-30 (+4d) |  | -19d → -23d |
| F135-1750 | Terminations at SWD - F110 | 2026-10-24 → 2026-10-29 (+5d) | 2026-10-26 → 2026-10-30 (+4d) |  | -19d → -23d |
| F135-2220 | QC 2.2 checklist SWD - F110 | 2026-10-27 → 2026-10-31 (+4d) | 2026-10-27 → 2026-10-31 (+4d) |  | -19d → -23d |
| F135-2240 | QC 2.2 checklist XFMR - F110 | 2026-10-27 → 2026-10-31 (+4d) | 2026-10-27 → 2026-10-31 (+4d) |  | -19d → -23d |
| F135-2230 | Ready for FTE - F110 | 2026-10-28 → 2026-11-02 (+5d) | 2026-10-28 → 2026-11-02 (+5d) |  | -19d → -23d |
| 7 | **G110** |  | 2026-10-28 → 2026-11-02 (+5d) |  |  |
| G135-1770 | Chiller feed box and conduit complete - G110 |  | 2026-10-15 → 2026-10-20 (+5d) |  | -13d → -17d |
| G135-1670 | Set MODs - G110 | 2026-10-14 → 2026-10-15 A (+1d) | 2026-10-15 → 2026-10-18 A (+3d) | 0% → 100% | -16d → none |
| G135-1860 | Pull Cable to Elec Room CRAH - G110 | 2026-10-16 A | 2026-10-16 → 2026-10-21 (+5d) |  | -13d → -17d |
| G135-1900 | Pull MC from MOD-01 to Mechanical Equipment - G110 | 2026-10-16 A | 2026-10-17 → 2026-10-20 (+3d) |  | -16d → -18d |
| G135-1910 | Pull MC from MOD-02 to Mechanical Equipment - G110 | 2026-10-16 A | 2026-10-17 → 2026-10-20 (+3d) |  | -16d → -18d |
| G135-1680 | Cable bus Support installed - G110 | 2026-10-14 → 2026-10-19 (+5d) | 2026-10-15 → 2026-10-20 (+5d) |  | -16d → -20d |
| G135-1690 | SWD top covers cut out - G110 | 2026-10-14 → 2026-10-19 (+5d) | 2026-10-19 → 2026-10-23 (+4d) |  | -19d → -23d |
| G135-1760 | Finish Cable Tray to Skid - G110 | 2026-10-14 → 2026-10-19 (+5d) | 2026-10-15 → 2026-10-20 (+5d) |  | -15d → -19d |
| G135-1830 | Penetrate MC into MOD-01 - G110 | 2026-10-16 → 2026-10-19 (+3d) | 2026-10-16 → 2026-10-19 (+3d) |  | -15d → -17d |
| G135-1840 | Penetrate MC into MOD-02 - G110 | 2026-10-16 → 2026-10-19 (+3d) | 2026-10-16 → 2026-10-19 (+3d) |  | -15d → -17d |
| G135-2000 | Install conduit from Busplug to ATSs - G110 | 2026-10-14 → 2026-10-19 (+5d) | 2026-10-15 → 2026-10-20 (+5d) |  | -15d → -19d |
| G135-2060 | Pull Cable from UPS to VFD - G110 | 2026-10-14 → 2026-10-19 (+5d) | 2026-10-14 → 2026-10-19 (+5d) |  | -11d → -15d |
| G135-2090 | Mount MPZ - G110 | 2026-10-14 → 2026-10-19 (+5d) | 2026-10-14 → 2026-10-19 (+5d) |  | -12d → -16d |
| G135-2260 | Electrical Room CRAH Set - G110 | 2026-10-14 → 2026-10-19 (+5d) | 2026-10-14 → 2026-10-19 (+5d) |  | -13d → -17d |
| G135-1850 | Finish Conduit to Elec Room CRAH - G110 | 2026-10-15 → 2026-10-20 (+5d) | 2026-10-15 → 2026-10-20 (+5d) |  | -13d → -17d |
| G135-2070 | Megger Cable from UPS to VFD - G110 | 2026-10-15 → 2026-10-20 (+5d) | 2026-10-15 → 2026-10-20 (+5d) |  | -11d → -15d |
| G135-2100 | Penetrate MC Cable into MPZ - G110 | 2026-10-15 → 2026-10-20 (+5d) | 2026-10-15 → 2026-10-20 (+5d) |  | -12d → -16d |
| G135-2130 | Terminate Cables in VFD - G110 | 2026-10-15 → 2026-10-20 (+5d) | 2026-10-15 → 2026-10-20 (+5d) |  | -10d → -14d |
| G135-2300 | Megger MC Cable from UPS to MOD - G110 | 2026-10-17 → 2026-10-20 (+3d) | 2026-10-17 → 2026-10-20 (+3d) |  | -15d → -17d |
| G135-1780 | Pull Chiller wire - G110 | 2026-10-16 → 2026-10-21 (+5d) | 2026-10-16 → 2026-10-21 (+5d) |  | -13d → -17d |
| G135-1810 | Penetrate MC into SWD - G110 | 2026-10-16 → 2026-10-21 (+5d) | 2026-10-16 → 2026-10-21 (+5d) |  | -15d → -19d |
| G135-1820 | Penetrat MC into UPS - G110 | 2026-10-16 → 2026-10-21 (+5d) | 2026-10-16 → 2026-10-21 (+5d) |  | -15d → -19d |
| G135-1920 | Megger MC Cable from MOD-01 to Mechanical Equipment - G110 | 2026-10-19 → 2026-10-21 (+2d) | 2026-10-19 → 2026-10-21 (+2d) |  | -16d → -18d |
| G135-1930 | Megger MC Cable from MOD-02 to Mechanical Equipment - G110 | 2026-10-19 → 2026-10-21 (+2d) | 2026-10-19 → 2026-10-21 (+2d) |  | -16d → -18d |
| G135-2010 | Pull ATS Cable - G110 | 2026-10-16 → 2026-10-21 (+5d) | 2026-10-16 → 2026-10-21 (+5d) |  | -15d → -19d |
| G135-2080 | Terminate Cables in UPS - G110 | 2026-10-16 → 2026-10-21 (+5d) | 2026-10-16 → 2026-10-21 (+5d) |  | -11d → -15d |
| G135-2110 | Megger MPZ Cable - G110 | 2026-10-16 → 2026-10-21 (+5d) | 2026-10-16 → 2026-10-21 (+5d) |  | -12d → -16d |
| G135-2140 | All Skid Grounding - G110 | 2026-10-16 → 2026-10-21 (+5d) | 2026-10-17 → 2026-10-22 (+5d) |  | -12d → -16d |
| G135-2210 | QC 2.2 checklist VFD - G110 | 2026-10-16 → 2026-10-21 (+5d) | 2026-10-16 → 2026-10-21 (+5d) |  | -10d → -14d |
| G135-1790 | Megger Chiller Cable - G110 | 2026-10-17 → 2026-10-22 (+5d) | 2026-10-17 → 2026-10-22 (+5d) |  | -13d → -17d |
| G135-1870 | Megger MC Cable from Skid to Elec Room CRAH - G110 | 2026-10-17 → 2026-10-22 (+5d) | 2026-10-17 → 2026-10-22 (+5d) |  | -13d → -17d |
| G135-1890 | Megger MC Cable from Skid to MOD - G110 | 2026-10-17 → 2026-10-22 (+5d) | 2026-10-17 → 2026-10-22 (+5d) |  | -15d → -19d |
| G135-1950 | Terminate MOD-02 - G110 | 2026-10-20 → 2026-10-22 (+2d) | 2026-10-20 → 2026-10-22 (+2d) |  | -16d → -18d |
| G135-2120 | Terminate MC Feed at MPZ - G110 | 2026-10-17 → 2026-10-22 (+5d) | 2026-10-17 → 2026-10-22 (+5d) |  | -12d → -16d |
| G135-2180 | QC 2.2 checklist UPS - G110 | 2026-10-17 → 2026-10-22 (+5d) | 2026-10-17 → 2026-10-22 (+5d) |  | -11d → -15d |
| G135-2270 | Megger Cable at ATS - G110 | 2026-10-17 → 2026-10-22 (+5d) | 2026-10-17 → 2026-10-22 (+5d) |  | -15d → -19d |
| G135-1800 | Terminations at Chiller - G110 | 2026-10-19 → 2026-10-23 (+4d) | 2026-10-19 → 2026-10-23 (+4d) |  | -13d → -17d |

| ID | Task | Start | Finish | Complete | Total float |
| --- | --- | --- | --- | --- | --- |
| G135-1880 | Terminate Elec Room CRAH - G110 | 2026-10-19 → 2026-10-23 (+4d) | 2026-10-19 → 2026-10-23 (+4d) |  | -13d → -17d |
| G135-1940 | Terminate MOD-01 - G110 | 2026-10-20 → 2026-10-23 (+3d) | 2026-10-20 → 2026-10-23 (+3d) |  | -16d → -19d |
| G135-1960 | Terminate at Mechanical Equipment - G110 | 2026-10-20 → 2026-10-23 (+3d) | 2026-10-20 → 2026-10-23 (+3d) |  | -16d → -19d |
| G135-2020 | Terminate ATS Cable at Busplugs & ATSs - G110 | 2026-10-19 → 2026-10-23 (+4d) | 2026-10-20 → 2026-10-24 (+4d) |  | -15d → -19d |
| G135-2290 | QC 2.2 checklist MPZ - G110 | 2026-10-19 → 2026-10-23 (+4d) | 2026-10-19 → 2026-10-23 (+4d) |  | -12d → -16d |
| G135-1700 | Cable bus Install - G110 | 2026-10-20 → 2026-10-24 (+4d) | 2026-10-21 → 2026-10-26 (+5d) |  | -19d → -23d |
| G135-1970 | Mechanical Equipment/Tray Grounding - G110 | 2026-10-21 → 2026-10-24 (+3d) | 2026-10-22 → 2026-10-26 (+4d) |  | -16d → -19d |
| G135-2190 | QC 2.2 checklist Elec Room CRAH - G110 | 2026-10-20 → 2026-10-24 (+4d) | 2026-10-20 → 2026-10-24 (+4d) |  | -13d → -17d |
| G135-2200 | QC 2.2 Mechanical Equipment - G110 | 2026-10-21 → 2026-10-24 (+3d) | 2026-10-21 → 2026-10-24 (+3d) |  | -14d → -17d |
| G135-2250 | QC 2.2 checklist Chiller - G110 | 2026-10-20 → 2026-10-24 (+4d) | 2026-10-20 → 2026-10-24 (+4d) |  | -13d → -17d |
| G135-2030 | ATS Lashing - G110 | 2026-10-21 → 2026-10-26 (+5d) | 2026-10-21 → 2026-10-26 (+5d) |  | -15d → -19d |
| G135-1710 | Cable pulled to A & P Xfmrs - G110 | 2026-10-22 → 2026-10-27 (+5d) | 2026-10-22 → 2026-10-27 (+5d) |  | -19d → -23d |
| G135-2150 | QC 2.2 checklist MOD-01 - G110 | 2026-10-23 → 2026-10-27 (+4d) | 2026-10-23 → 2026-10-27 (+4d) |  | -16d → -19d |
| G135-2160 | QC 2.2 checklist MOD-02 - G110 | 2026-10-23 → 2026-10-27 (+4d) | 2026-10-23 → 2026-10-27 (+4d) |  | -16d → -19d |
| G135-2170 | QC 2.2 checklist ATSs - G110 | 2026-10-22 → 2026-10-27 (+5d) | 2026-10-22 → 2026-10-27 (+5d) |  | -15d → -19d |
| G135-2280 | QC 2.2 checklist Busplugs - G110 | 2026-10-22 → 2026-10-27 (+5d) | 2026-10-22 → 2026-10-27 (+5d) |  | -15d → -19d |
| G135-1720 | Megger Cable Bus Cable - G110 | 2026-10-23 → 2026-10-28 (+5d) | 2026-10-23 → 2026-10-28 (+5d) |  | -19d → -23d |
| G135-1730 | Cable Bus inspection and covers - G110 | 2026-10-23 → 2026-10-28 (+5d) | 2026-10-23 → 2026-10-28 (+5d) |  | -17d → -21d |
| G135-1740 | Terminations at Xfmrs - G110 | 2026-10-24 → 2026-10-29 (+5d) | 2026-10-26 → 2026-10-30 (+4d) |  | -19d → -23d |
| G135-1750 | Terminations at SWD - G110 | 2026-10-24 → 2026-10-29 (+5d) | 2026-10-26 → 2026-10-30 (+4d) |  | -19d → -23d |
| G135-2220 | QC 2.2 checklist SWD - G110 | 2026-10-27 → 2026-10-31 (+4d) | 2026-10-27 → 2026-10-31 (+4d) |  | -19d → -23d |
| G135-2240 | QC 2.2 checklist XFMR - G110 | 2026-10-27 → 2026-10-31 (+4d) | 2026-10-27 → 2026-10-31 (+4d) |  | -19d → -23d |
| G135-2230 | Ready for FTE - G110 | 2026-10-28 → 2026-11-02 (+5d) | 2026-10-28 → 2026-11-02 (+5d) |  | -19d → -23d |
| 9 | **H110** |  | 2026-10-28 → 2026-11-02 (+5d) |  |  |
| H135-1770 | Chiller feed box and conduit complete - H110 |  | 2026-10-15 → 2026-10-20 (+5d) |  | -13d → -17d |
| H135-1670 | Set MODs - H110 | 2026-10-14 → 2026-10-15 A (+1d) | 2026-10-15 → 2026-10-18 A (+3d) | 0% → 100% | -16d → none |
| H135-1860 | Pull Cable to Elec Room CRAH - H110 | 2026-10-16 A | 2026-10-16 → 2026-10-21 (+5d) |  | -13d → -17d |
| H135-1900 | Pull MC from MOD-01 to Mechanical Equipment - H110 | 2026-10-16 A | 2026-10-17 → 2026-10-20 (+3d) |  | -16d → -18d |
| H135-1910 | Pull MC from MOD-02 to Mechanical Equipment - H110 | 2026-10-16 A | 2026-10-17 → 2026-10-20 (+3d) |  | -16d → -18d |
| H135-1680 | Cable bus Support installed - H110 | 2026-10-14 → 2026-10-19 (+5d) | 2026-10-15 → 2026-10-20 (+5d) |  | -16d → -20d |
| H135-1690 | SWD top covers cut out - H110 | 2026-10-14 → 2026-10-19 (+5d) | 2026-10-19 → 2026-10-23 (+4d) |  | -19d → -23d |
| H135-1760 | Finish Cable Tray to Skid - H110 | 2026-10-14 → 2026-10-19 (+5d) | 2026-10-15 → 2026-10-20 (+5d) |  | -15d → -19d |
| H135-1830 | Penetrate MC into MOD-01 - H110 | 2026-10-16 → 2026-10-19 (+3d) | 2026-10-16 → 2026-10-19 (+3d) |  | -15d → -17d |
| H135-1840 | Penetrate MC into MOD-02 - H110 | 2026-10-16 → 2026-10-19 (+3d) | 2026-10-16 → 2026-10-19 (+3d) |  | -15d → -17d |
| H135-2000 | Install conduit from Busplug to ATSs - H110 | 2026-10-14 → 2026-10-19 (+5d) | 2026-10-15 → 2026-10-20 (+5d) |  | -15d → -19d |
| H135-2060 | Pull Cable from UPS to VFD - H110 | 2026-10-14 → 2026-10-19 (+5d) | 2026-10-14 → 2026-10-19 (+5d) |  | -11d → -15d |
| H135-2090 | Mount MPZ - H110 | 2026-10-14 → 2026-10-19 (+5d) | 2026-10-14 → 2026-10-19 (+5d) |  | -12d → -16d |
| H135-2260 | Electrical Room CRAH Set - H110 | 2026-10-14 → 2026-10-19 (+5d) | 2026-10-14 → 2026-10-19 (+5d) |  | -13d → -17d |
| H135-1850 | Finish Conduit to Elec Room CRAH - H110 | 2026-10-15 → 2026-10-20 (+5d) | 2026-10-15 → 2026-10-20 (+5d) |  | -13d → -17d |
| H135-2070 | Megger Cable from UPS to VFD - H110 | 2026-10-15 → 2026-10-20 (+5d) | 2026-10-15 → 2026-10-20 (+5d) |  | -11d → -15d |
| H135-2100 | Penetrate MC Cable into MPZ - H110 | 2026-10-15 → 2026-10-20 (+5d) | 2026-10-15 → 2026-10-20 (+5d) |  | -12d → -16d |
| H135-2130 | Terminate Cables in VFD - H110 | 2026-10-15 → 2026-10-20 (+5d) | 2026-10-15 → 2026-10-20 (+5d) |  | -10d → -14d |
| H135-2300 | Megger MC Cable from UPS to MOD - H110 | 2026-10-17 → 2026-10-20 (+3d) | 2026-10-17 → 2026-10-20 (+3d) |  | -15d → -17d |
| H135-1780 | Pull Chiller wire - H110 | 2026-10-16 → 2026-10-21 (+5d) | 2026-10-16 → 2026-10-21 (+5d) |  | -13d → -17d |
| H135-1810 | Penetrate MC into SWD - H110 | 2026-10-16 → 2026-10-21 (+5d) | 2026-10-16 → 2026-10-21 (+5d) |  | -15d → -19d |
| H135-1820 | Penetrat MC into UPS - H110 | 2026-10-16 → 2026-10-21 (+5d) | 2026-10-16 → 2026-10-21 (+5d) |  | -15d → -19d |
| H135-1920 | Megger MC Cable from MOD-01 to Mechanical Equipment - H110 | 2026-10-19 → 2026-10-21 (+2d) | 2026-10-19 → 2026-10-21 (+2d) |  | -16d → -18d |
| H135-1930 | Megger MC Cable from MOD-02 to Mechanical Equipment - H110 | 2026-10-19 → 2026-10-21 (+2d) | 2026-10-19 → 2026-10-21 (+2d) |  | -16d → -18d |
| H135-2010 | Pull ATS Cable - H110 | 2026-10-16 → 2026-10-21 (+5d) | 2026-10-16 → 2026-10-21 (+5d) |  | -15d → -19d |
| H135-2080 | Terminate Cables in UPS - H110 | 2026-10-16 → 2026-10-21 (+5d) | 2026-10-16 → 2026-10-21 (+5d) |  | -11d → -15d |
| H135-2110 | Megger MPZ Cable - H110 | 2026-10-16 → 2026-10-21 (+5d) | 2026-10-16 → 2026-10-21 (+5d) |  | -12d → -16d |
| H135-2140 | All Skid Grounding - H110 | 2026-10-16 → 2026-10-21 (+5d) | 2026-10-17 → 2026-10-22 (+5d) |  | -12d → -16d |
| H135-2210 | QC 2.2 checklist VFD - H110 | 2026-10-16 → 2026-10-21 (+5d) | 2026-10-16 → 2026-10-21 (+5d) |  | -10d → -14d |
| H135-1790 | Megger Chiller Cable - H110 | 2026-10-17 → 2026-10-22 (+5d) | 2026-10-17 → 2026-10-22 (+5d) |  | -13d → -17d |
| H135-1870 | Megger MC Cable from Skid to Elec Room CRAH - H110 | 2026-10-17 → 2026-10-22 (+5d) | 2026-10-17 → 2026-10-22 (+5d) |  | -13d → -17d |
| H135-1890 | Megger MC Cable from Skid to MOD - H110 | 2026-10-17 → 2026-10-22 (+5d) | 2026-10-17 → 2026-10-22 (+5d) |  | -15d → -19d |
| H135-1950 | Terminate MOD-02 - H110 | 2026-10-20 → 2026-10-22 (+2d) | 2026-10-20 → 2026-10-22 (+2d) |  | -16d → -18d |
| H135-2120 | Terminate MC Feed at MPZ - H110 | 2026-10-17 → 2026-10-22 (+5d) | 2026-10-17 → 2026-10-22 (+5d) |  | -12d → -16d |
| H135-2180 | QC 2.2 checklist UPS - H110 | 2026-10-17 → 2026-10-22 (+5d) | 2026-10-17 → 2026-10-22 (+5d) |  | -11d → -15d |
| H135-2270 | Megger Cable at ATS - H110 | 2026-10-17 → 2026-10-22 (+5d) | 2026-10-17 → 2026-10-22 (+5d) |  | -15d → -19d |
| H135-1800 | Terminations at Chiller - H110 | 2026-10-19 → 2026-10-23 (+4d) | 2026-10-19 → 2026-10-23 (+4d) |  | -13d → -17d |
| H135-1880 | Terminate Elec Room CRAH - H110 | 2026-10-19 → 2026-10-23 (+4d) | 2026-10-19 → 2026-10-23 (+4d) |  | -13d → -17d |
| H135-1940 | Terminate MOD-01 - H110 | 2026-10-20 → 2026-10-23 (+3d) | 2026-10-20 → 2026-10-23 (+3d) |  | -16d → -19d |
| H135-1960 | Terminate at Mechanical Equipment - H110 | 2026-10-20 → 2026-10-23 (+3d) | 2026-10-20 → 2026-10-23 (+3d) |  | -16d → -19d |
| H135-2020 | Terminate ATS Cable at Busplugs & ATSs - H110 | 2026-10-19 → 2026-10-23 (+4d) | 2026-10-20 → 2026-10-24 (+4d) |  | -15d → -19d |
| H135-2290 | QC 2.2 checklist MPZ - H110 | 2026-10-19 → 2026-10-23 (+4d) | 2026-10-19 → 2026-10-23 (+4d) |  | -12d → -16d |
| H135-1700 | Cable bus Install - H110 | 2026-10-20 → 2026-10-24 (+4d) | 2026-10-21 → 2026-10-26 (+5d) |  | -19d → -23d |
| H135-1970 | Mechanical Equipment/Tray Grounding - H110 | 2026-10-21 → 2026-10-24 (+3d) | 2026-10-22 → 2026-10-26 (+4d) |  | -16d → -19d |
| H135-2190 | QC 2.2 checklist Elec Room CRAH - H110 | 2026-10-20 → 2026-10-24 (+4d) | 2026-10-20 → 2026-10-24 (+4d) |  | -13d → -17d |
| H135-2200 | QC 2.2 Mechanical Equipment - H110 | 2026-10-21 → 2026-10-24 (+3d) | 2026-10-21 → 2026-10-24 (+3d) |  | -14d → -17d |

| ID | Task | Start | Finish | Complete | Total float |
| --- | --- | --- | --- | --- | --- |
| H135-2250 | QC 2.2 checklist Chiller - H110 | 2026-10-20 → 2026-10-24 (+4d) | 2026-10-20 → 2026-10-24 (+4d) |  | -13d → -17d |
| H135-2030 | ATS Lashing - H110 | 2026-10-21 → 2026-10-26 (+5d) | 2026-10-21 → 2026-10-26 (+5d) |  | -15d → -19d |
| H135-1710 | Cable pulled to A & P Xfmrs - H110 | 2026-10-22 → 2026-10-27 (+5d) | 2026-10-22 → 2026-10-27 (+5d) |  | -19d → -23d |
| H135-2150 | QC 2.2 checklist MOD-01 - H110 | 2026-10-23 → 2026-10-27 (+4d) | 2026-10-23 → 2026-10-27 (+4d) |  | -16d → -19d |
| H135-2160 | QC 2.2 checklist MOD-02 - H110 | 2026-10-23 → 2026-10-27 (+4d) | 2026-10-23 → 2026-10-27 (+4d) |  | -16d → -19d |
| H135-2170 | QC 2.2 checklist ATSs - H110 | 2026-10-22 → 2026-10-27 (+5d) | 2026-10-22 → 2026-10-27 (+5d) |  | -15d → -19d |
| H135-2280 | QC 2.2 checklist Busplugs - H110 | 2026-10-22 → 2026-10-27 (+5d) | 2026-10-22 → 2026-10-27 (+5d) |  | -15d → -19d |
| H135-1720 | Megger Cable Bus Cable - H110 | 2026-10-23 → 2026-10-28 (+5d) | 2026-10-23 → 2026-10-28 (+5d) |  | -19d → -23d |
| H135-1730 | Cable Bus inspection and covers - H110 | 2026-10-23 → 2026-10-28 (+5d) | 2026-10-23 → 2026-10-28 (+5d) |  | -17d → -21d |
| H135-1740 | Terminations at Xfmrs - H110 | 2026-10-24 → 2026-10-29 (+5d) | 2026-10-26 → 2026-10-30 (+4d) |  | -19d → -23d |
| H135-1750 | Terminations at SWD - H110 | 2026-10-24 → 2026-10-29 (+5d) | 2026-10-26 → 2026-10-30 (+4d) |  | -19d → -23d |
| H135-2220 | QC 2.2 checklist SWD - H110 | 2026-10-27 → 2026-10-31 (+4d) | 2026-10-27 → 2026-10-31 (+4d) |  | -19d → -23d |
| H135-2240 | QC 2.2 checklist XFMR - H110 | 2026-10-27 → 2026-10-31 (+4d) | 2026-10-27 → 2026-10-31 (+4d) |  | -19d → -23d |
| H135-2230 | Ready for FTE - H110 | 2026-10-28 → 2026-11-02 (+5d) | 2026-10-28 → 2026-11-02 (+5d) |  | -19d → -23d |
| 8 | **J110** |  | 2026-10-28 → 2026-11-02 (+5d) |  |  |
| J135-1770 | Chiller feed box and conduit complete - J110 |  | 2026-10-15 → 2026-10-20 (+5d) |  | -13d → -17d |
| J135-1670 | Set MODs - J110 | 2026-10-14 → 2026-10-15 A (+1d) | 2026-10-15 → 2026-10-18 A (+3d) | 0% → 100% | -16d → none |
| J135-1860 | Pull Cable to Elec Room CRAH - J110 | 2026-10-16 A | 2026-10-16 → 2026-10-21 (+5d) |  | -13d → -17d |
| J135-1900 | Pull MC from MOD-01 to Mechanical Equipment - J110 | 2026-10-16 A | 2026-10-17 → 2026-10-20 (+3d) |  | -16d → -18d |
| J135-1910 | Pull MC from MOD-02 to Mechanical Equipment - J110 | 2026-10-16 A | 2026-10-17 → 2026-10-20 (+3d) |  | -16d → -18d |
| J135-1680 | Cable bus Support installed - J110 | 2026-10-14 → 2026-10-19 (+5d) | 2026-10-15 → 2026-10-20 (+5d) |  | -16d → -20d |
| J135-1690 | SWD top covers cut out - J110 | 2026-10-14 → 2026-10-19 (+5d) | 2026-10-19 → 2026-10-23 (+4d) |  | -19d → -23d |
| J135-1760 | Finish Cable Tray to Skid - J110 | 2026-10-14 → 2026-10-19 (+5d) | 2026-10-15 → 2026-10-20 (+5d) |  | -15d → -19d |
| J135-1830 | Penetrate MC into MOD-01 - J110 | 2026-10-16 → 2026-10-19 (+3d) | 2026-10-16 → 2026-10-19 (+3d) |  | -15d → -17d |
| J135-1840 | Penetrate MC into MOD-02 - J110 | 2026-10-16 → 2026-10-19 (+3d) | 2026-10-16 → 2026-10-19 (+3d) |  | -15d → -17d |
| J135-2000 | Install conduit from Busplug to ATSs - J110 | 2026-10-14 → 2026-10-19 (+5d) | 2026-10-15 → 2026-10-20 (+5d) |  | -15d → -19d |
| J135-2060 | Pull Cable from UPS to VFD - J110 | 2026-10-14 → 2026-10-19 (+5d) | 2026-10-14 → 2026-10-19 (+5d) |  | -11d → -15d |
| J135-2090 | Mount MPZ - J110 | 2026-10-14 → 2026-10-19 (+5d) | 2026-10-14 → 2026-10-19 (+5d) |  | -12d → -16d |
| J135-2260 | Electrical Room CRAH Set - J110 | 2026-10-14 → 2026-10-19 (+5d) | 2026-10-14 → 2026-10-19 (+5d) |  | -13d → -17d |
| J135-1850 | Finish Conduit to Elec Room CRAH - J110 | 2026-10-15 → 2026-10-20 (+5d) | 2026-10-15 → 2026-10-20 (+5d) |  | -13d → -17d |
| J135-2070 | Megger Cable from UPS to VFD - J110 | 2026-10-15 → 2026-10-20 (+5d) | 2026-10-15 → 2026-10-20 (+5d) |  | -11d → -15d |
| J135-2100 | Penetrate MC Cable into MPZ - J110 | 2026-10-15 → 2026-10-20 (+5d) | 2026-10-15 → 2026-10-20 (+5d) |  | -12d → -16d |
| J135-2130 | Terminate Cables in VFD - J110 | 2026-10-15 → 2026-10-20 (+5d) | 2026-10-15 → 2026-10-20 (+5d) |  | -10d → -14d |
| J135-2300 | Megger MC Cable from UPS to MOD - J110 | 2026-10-17 → 2026-10-20 (+3d) | 2026-10-17 → 2026-10-20 (+3d) |  | -15d → -17d |
| J135-1780 | Pull Chiller wire - J110 | 2026-10-16 → 2026-10-21 (+5d) | 2026-10-16 → 2026-10-21 (+5d) |  | -13d → -17d |
| J135-1810 | Penetrate MC into SWD - J110 | 2026-10-16 → 2026-10-21 (+5d) | 2026-10-16 → 2026-10-21 (+5d) |  | -15d → -19d |
| J135-1820 | Penetrat MC into UPS - J110 | 2026-10-16 → 2026-10-21 (+5d) | 2026-10-16 → 2026-10-21 (+5d) |  | -15d → -19d |
| J135-1920 | Megger MC Cable from MOD-01 to Mechanical Equipment - J110 | 2026-10-19 → 2026-10-21 (+2d) | 2026-10-19 → 2026-10-21 (+2d) |  | -16d → -18d |
| J135-1930 | Megger MC Cable from MOD-02 to Mechanical Equipment - J110 | 2026-10-19 → 2026-10-21 (+2d) | 2026-10-19 → 2026-10-21 (+2d) |  | -16d → -18d |
| J135-2010 | Pull ATS Cable - J110 | 2026-10-16 → 2026-10-21 (+5d) | 2026-10-16 → 2026-10-21 (+5d) |  | -15d → -19d |
| J135-2080 | Terminate Cables in UPS - J110 | 2026-10-16 → 2026-10-21 (+5d) | 2026-10-16 → 2026-10-21 (+5d) |  | -11d → -15d |
| J135-2110 | Megger MPZ Cable - J110 | 2026-10-16 → 2026-10-21 (+5d) | 2026-10-16 → 2026-10-21 (+5d) |  | -12d → -16d |
| J135-2140 | All Skid Grounding - J110 | 2026-10-16 → 2026-10-21 (+5d) | 2026-10-17 → 2026-10-22 (+5d) |  | -12d → -16d |
| J135-2210 | QC 2.2 checklist VFD - J110 | 2026-10-16 → 2026-10-21 (+5d) | 2026-10-16 → 2026-10-21 (+5d) |  | -10d → -14d |
| J135-1790 | Megger Chiller Cable - J110 | 2026-10-17 → 2026-10-22 (+5d) | 2026-10-17 → 2026-10-22 (+5d) |  | -13d → -17d |
| J135-1870 | Megger MC Cable from Skid to Elec Room CRAH - J110 | 2026-10-17 → 2026-10-22 (+5d) | 2026-10-17 → 2026-10-22 (+5d) |  | -13d → -17d |
| J135-1890 | Megger MC Cable from Skid to MOD - J110 | 2026-10-17 → 2026-10-22 (+5d) | 2026-10-17 → 2026-10-22 (+5d) |  | -15d → -19d |
| J135-1950 | Terminate MOD-02 - J110 | 2026-10-20 → 2026-10-22 (+2d) | 2026-10-20 → 2026-10-22 (+2d) |  | -16d → -18d |
| J135-2120 | Terminate MC Feed at MPZ - J110 | 2026-10-17 → 2026-10-22 (+5d) | 2026-10-17 → 2026-10-22 (+5d) |  | -12d → -16d |
| J135-2180 | QC 2.2 checklist UPS - J110 | 2026-10-17 → 2026-10-22 (+5d) | 2026-10-17 → 2026-10-22 (+5d) |  | -11d → -15d |
| J135-2270 | Megger Cable at ATS - J110 | 2026-10-17 → 2026-10-22 (+5d) | 2026-10-17 → 2026-10-22 (+5d) |  | -15d → -19d |
| J135-1800 | Terminations at Chiller - J110 | 2026-10-19 → 2026-10-23 (+4d) | 2026-10-19 → 2026-10-23 (+4d) |  | -13d → -17d |
| J135-1880 | Terminate Elec Room CRAH - J110 | 2026-10-19 → 2026-10-23 (+4d) | 2026-10-19 → 2026-10-23 (+4d) |  | -13d → -17d |
| J135-1940 | Terminate MOD-01 - J110 | 2026-10-20 → 2026-10-23 (+3d) | 2026-10-20 → 2026-10-23 (+3d) |  | -16d → -19d |
| J135-1960 | Terminate at Mechanical Equipment - J110 | 2026-10-20 → 2026-10-23 (+3d) | 2026-10-20 → 2026-10-23 (+3d) |  | -16d → -19d |
| J135-2020 | Terminate ATS Cable at Busplugs & ATSs - J110 | 2026-10-19 → 2026-10-23 (+4d) | 2026-10-20 → 2026-10-24 (+4d) |  | -15d → -19d |
| J135-2290 | QC 2.2 checklist MPZ - J110 | 2026-10-19 → 2026-10-23 (+4d) | 2026-10-19 → 2026-10-23 (+4d) |  | -12d → -16d |
| J135-1700 | Cable bus Install - J110 | 2026-10-20 → 2026-10-24 (+4d) | 2026-10-21 → 2026-10-26 (+5d) |  | -19d → -23d |
| J135-1970 | Mechanical Equipment/Tray Grounding - J110 | 2026-10-21 → 2026-10-24 (+3d) | 2026-10-22 → 2026-10-26 (+4d) |  | -16d → -19d |
| J135-2190 | QC 2.2 checklist Elec Room CRAH - J110 | 2026-10-20 → 2026-10-24 (+4d) | 2026-10-20 → 2026-10-24 (+4d) |  | -13d → -17d |
| J135-2200 | QC 2.2 Mechanical Equipment - J110 | 2026-10-21 → 2026-10-24 (+3d) | 2026-10-21 → 2026-10-24 (+3d) |  | -14d → -17d |
| J135-2250 | QC 2.2 checklist Chiller - J110 | 2026-10-20 → 2026-10-24 (+4d) | 2026-10-20 → 2026-10-24 (+4d) |  | -13d → -17d |
| J135-2030 | ATS Lashing - J110 | 2026-10-21 → 2026-10-26 (+5d) | 2026-10-21 → 2026-10-26 (+5d) |  | -15d → -19d |
| J135-1710 | Cable pulled to A & P Xfmrs - J110 | 2026-10-22 → 2026-10-27 (+5d) | 2026-10-22 → 2026-10-27 (+5d) |  | -19d → -23d |
| J135-2150 | QC 2.2 checklist MOD-01 - J110 | 2026-10-23 → 2026-10-27 (+4d) | 2026-10-23 → 2026-10-27 (+4d) |  | -16d → -19d |
| J135-2160 | QC 2.2 checklist MOD-02 - J110 | 2026-10-23 → 2026-10-27 (+4d) | 2026-10-23 → 2026-10-27 (+4d) |  | -16d → -19d |
| J135-2170 | QC 2.2 checklist ATSs - J110 | 2026-10-22 → 2026-10-27 (+5d) | 2026-10-22 → 2026-10-27 (+5d) |  | -15d → -19d |
| J135-2280 | QC 2.2 checklist Busplugs - J110 | 2026-10-22 → 2026-10-27 (+5d) | 2026-10-22 → 2026-10-27 (+5d) |  | -15d → -19d |
| J135-1720 | Megger Cable Bus Cable - J110 | 2026-10-23 → 2026-10-28 (+5d) | 2026-10-23 → 2026-10-28 (+5d) |  | -19d → -23d |
| J135-1730 | Cable Bus inspection and covers - J110 | 2026-10-23 → 2026-10-28 (+5d) | 2026-10-23 → 2026-10-28 (+5d) |  | -17d → -21d |

| ID | Task | Start | Finish | Complete | Total float |
| --- | --- | --- | --- | --- | --- |
| J135-1740 | Terminations at Xfmrs - J110 | 2026-10-24 → 2026-10-29 (+5d) | 2026-10-26 → 2026-10-30 (+4d) |  | -19d → -23d |
| J135-1750 | Terminations at SWD - J110 | 2026-10-24 → 2026-10-29 (+5d) | 2026-10-26 → 2026-10-30 (+4d) |  | -19d → -23d |
| J135-2220 | QC 2.2 checklist SWD - J110 | 2026-10-27 → 2026-10-31 (+4d) | 2026-10-27 → 2026-10-31 (+4d) |  | -19d → -23d |
| J135-2240 | QC 2.2 checklist XFMR - J110 | 2026-10-27 → 2026-10-31 (+4d) | 2026-10-27 → 2026-10-31 (+4d) |  | -19d → -23d |
| J135-2230 | Ready for FTE - J110 | 2026-10-28 → 2026-11-02 (+5d) | 2026-10-28 → 2026-11-02 (+5d) |  | -19d → -23d |
| 10 | **K110** |  | 2026-10-28 → 2026-11-02 (+5d) |  |  |
| K135-1770 | Chiller feed box and conduit complete - K110 |  | 2026-10-15 → 2026-10-20 (+5d) |  | -13d → -17d |
| K135-1670 | Set MODs - K110 | 2026-10-14 → 2026-10-15 A (+1d) | 2026-10-15 → 2026-10-18 A (+3d) | 0% → 100% | -16d → none |
| K135-1860 | Pull Cable to Elec Room CRAH - K110 | 2026-10-16 A | 2026-10-16 → 2026-10-21 (+5d) |  | -13d → -17d |
| K135-1900 | Pull MC from MOD-01 to Mechanical Equipment - K110 | 2026-10-16 A | 2026-10-17 → 2026-10-20 (+3d) |  | -16d → -18d |
| K135-1910 | Pull MC from MOD-02 to Mechanical Equipment - K110 | 2026-10-16 A | 2026-10-17 → 2026-10-20 (+3d) |  | -16d → -18d |
| K135-1680 | Cable bus Support installed - K110 | 2026-10-14 → 2026-10-19 (+5d) | 2026-10-15 → 2026-10-20 (+5d) |  | -16d → -20d |
| K135-1690 | SWD top covers cut out - K110 | 2026-10-14 → 2026-10-19 (+5d) | 2026-10-19 → 2026-10-23 (+4d) |  | -19d → -23d |
| K135-1760 | Finish Cable Tray to Skid - K110 | 2026-10-14 → 2026-10-19 (+5d) | 2026-10-15 → 2026-10-20 (+5d) |  | -15d → -19d |
| K135-1830 | Penetrate MC into MOD-01 - K110 | 2026-10-16 → 2026-10-19 (+3d) | 2026-10-16 → 2026-10-19 (+3d) |  | -15d → -17d |
| K135-1840 | Penetrate MC into MOD-02 - K110 | 2026-10-16 → 2026-10-19 (+3d) | 2026-10-16 → 2026-10-19 (+3d) |  | -15d → -17d |
| K135-2000 | Install conduit from Busplug to ATSs - K110 | 2026-10-14 → 2026-10-19 (+5d) | 2026-10-15 → 2026-10-20 (+5d) |  | -15d → -19d |
| K135-2060 | Pull Cable from UPS to VFD - K110 | 2026-10-14 → 2026-10-19 (+5d) | 2026-10-14 → 2026-10-19 (+5d) |  | -11d → -15d |
| K135-2090 | Mount MPZ - K110 | 2026-10-14 → 2026-10-19 (+5d) | 2026-10-14 → 2026-10-19 (+5d) |  | -12d → -16d |
| K135-2260 | Electrical Room CRAH Set - K110 | 2026-10-14 → 2026-10-19 (+5d) | 2026-10-14 → 2026-10-19 (+5d) |  | -13d → -17d |
| K135-1850 | Finish Conduit to Elec Room CRAH - K110 | 2026-10-15 → 2026-10-20 (+5d) | 2026-10-15 → 2026-10-20 (+5d) |  | -13d → -17d |
| K135-2070 | Megger Cable from UPS to VFD - K110 | 2026-10-15 → 2026-10-20 (+5d) | 2026-10-15 → 2026-10-20 (+5d) |  | -11d → -15d |
| K135-2100 | Penetrate MC Cable into MPZ - K110 | 2026-10-15 → 2026-10-20 (+5d) | 2026-10-15 → 2026-10-20 (+5d) |  | -12d → -16d |
| K135-2130 | Terminate Cables in VFD - K110 | 2026-10-15 → 2026-10-20 (+5d) | 2026-10-15 → 2026-10-20 (+5d) |  | -10d → -14d |
| K135-2300 | Megger MC Cable from UPS to MOD - K110 | 2026-10-17 → 2026-10-20 (+3d) | 2026-10-17 → 2026-10-20 (+3d) |  | -15d → -17d |
| K135-1780 | Pull Chiller wire - K110 | 2026-10-16 → 2026-10-21 (+5d) | 2026-10-16 → 2026-10-21 (+5d) |  | -13d → -17d |
| K135-1810 | Penetrate MC into SWD - K110 | 2026-10-16 → 2026-10-21 (+5d) | 2026-10-16 → 2026-10-21 (+5d) |  | -15d → -19d |
| K135-1820 | Penetrat MC into UPS - K110 | 2026-10-16 → 2026-10-21 (+5d) | 2026-10-16 → 2026-10-21 (+5d) |  | -15d → -19d |
| K135-1920 | Megger MC Cable from MOD-01 to Mechanical Equipment - K110 | 2026-10-19 → 2026-10-21 (+2d) | 2026-10-19 → 2026-10-21 (+2d) |  | -16d → -18d |
| K135-1930 | Megger MC Cable from MOD-02 to Mechanical Equipment - K110 | 2026-10-19 → 2026-10-21 (+2d) | 2026-10-19 → 2026-10-21 (+2d) |  | -16d → -18d |
| K135-2010 | Pull ATS Cable - K110 | 2026-10-16 → 2026-10-21 (+5d) | 2026-10-16 → 2026-10-21 (+5d) |  | -15d → -19d |
| K135-2080 | Terminate Cables in UPS - K110 | 2026-10-16 → 2026-10-21 (+5d) | 2026-10-16 → 2026-10-21 (+5d) |  | -11d → -15d |
| K135-2110 | Megger MPZ Cable - K110 | 2026-10-16 → 2026-10-21 (+5d) | 2026-10-16 → 2026-10-21 (+5d) |  | -12d → -16d |
| K135-2140 | All Skid Grounding - K110 | 2026-10-16 → 2026-10-21 (+5d) | 2026-10-17 → 2026-10-22 (+5d) |  | -12d → -16d |
| K135-2210 | QC 2.2 checklist VFD - K110 | 2026-10-16 → 2026-10-21 (+5d) | 2026-10-16 → 2026-10-21 (+5d) |  | -10d → -14d |
| K135-1790 | Megger Chiller Cable - K110 | 2026-10-17 → 2026-10-22 (+5d) | 2026-10-17 → 2026-10-22 (+5d) |  | -13d → -17d |
| K135-1870 | Megger MC Cable from Skid to Elec Room CRAH - K110 | 2026-10-17 → 2026-10-22 (+5d) | 2026-10-17 → 2026-10-22 (+5d) |  | -13d → -17d |
| K135-1890 | Megger MC Cable from Skid to MOD - K110 | 2026-10-17 → 2026-10-22 (+5d) | 2026-10-17 → 2026-10-22 (+5d) |  | -15d → -19d |
| K135-1950 | Terminate MOD-02 - K110 | 2026-10-20 → 2026-10-22 (+2d) | 2026-10-20 → 2026-10-22 (+2d) |  | -16d → -18d |
| K135-2120 | Terminate MC Feed at MPZ - K110 | 2026-10-17 → 2026-10-22 (+5d) | 2026-10-17 → 2026-10-22 (+5d) |  | -12d → -16d |
| K135-2180 | QC 2.2 checklist UPS - K110 | 2026-10-17 → 2026-10-22 (+5d) | 2026-10-17 → 2026-10-22 (+5d) |  | -11d → -15d |
| K135-2270 | Megger Cable at ATS - K110 | 2026-10-17 → 2026-10-22 (+5d) | 2026-10-17 → 2026-10-22 (+5d) |  | -15d → -19d |
| K135-1800 | Terminations at Chiller - K110 | 2026-10-19 → 2026-10-23 (+4d) | 2026-10-19 → 2026-10-23 (+4d) |  | -13d → -17d |
| K135-1880 | Terminate Elec Room CRAH - K110 | 2026-10-19 → 2026-10-23 (+4d) | 2026-10-19 → 2026-10-23 (+4d) |  | -13d → -17d |
| K135-1940 | Terminate MOD-01 - K110 | 2026-10-20 → 2026-10-23 (+3d) | 2026-10-20 → 2026-10-23 (+3d) |  | -16d → -19d |
| K135-1960 | Terminate at Mechanical Equipment - K110 | 2026-10-20 → 2026-10-23 (+3d) | 2026-10-20 → 2026-10-23 (+3d) |  | -16d → -19d |
| K135-2020 | Terminate ATS Cable at Busplugs & ATSs - K110 | 2026-10-19 → 2026-10-23 (+4d) | 2026-10-20 → 2026-10-24 (+4d) |  | -15d → -19d |
| K135-2290 | QC 2.2 checklist MPZ - K110 | 2026-10-19 → 2026-10-23 (+4d) | 2026-10-19 → 2026-10-23 (+4d) |  | -12d → -16d |
| K135-1700 | Cable bus Install - K110 | 2026-10-20 → 2026-10-24 (+4d) | 2026-10-21 → 2026-10-26 (+5d) |  | -19d → -23d |
| K135-1970 | Mechanical Equipment/Tray Grounding - K110 | 2026-10-21 → 2026-10-24 (+3d) | 2026-10-22 → 2026-10-26 (+4d) |  | -16d → -19d |
| K135-2190 | QC 2.2 checklist Elec Room CRAH - K110 | 2026-10-20 → 2026-10-24 (+4d) | 2026-10-20 → 2026-10-24 (+4d) |  | -13d → -17d |
| K135-2200 | QC 2.2 Mechanical Equipment - K110 | 2026-10-21 → 2026-10-24 (+3d) | 2026-10-21 → 2026-10-24 (+3d) |  | -14d → -17d |
| K135-2250 | QC 2.2 checklist Chiller - K110 | 2026-10-20 → 2026-10-24 (+4d) | 2026-10-20 → 2026-10-24 (+4d) |  | -13d → -17d |
| K135-2030 | ATS Lashing - K110 | 2026-10-21 → 2026-10-26 (+5d) | 2026-10-21 → 2026-10-26 (+5d) |  | -15d → -19d |
| K135-1710 | Cable pulled to A & P Xfmrs - K110 | 2026-10-22 → 2026-10-27 (+5d) | 2026-10-22 → 2026-10-27 (+5d) |  | -19d → -23d |
| K135-2150 | QC 2.2 checklist MOD-01 - K110 | 2026-10-23 → 2026-10-27 (+4d) | 2026-10-23 → 2026-10-27 (+4d) |  | -16d → -19d |
| K135-2160 | QC 2.2 checklist MOD-02 - K110 | 2026-10-23 → 2026-10-27 (+4d) | 2026-10-23 → 2026-10-27 (+4d) |  | -16d → -19d |
| K135-2170 | QC 2.2 checklist ATSs - K110 | 2026-10-22 → 2026-10-27 (+5d) | 2026-10-22 → 2026-10-27 (+5d) |  | -15d → -19d |
| K135-2280 | QC 2.2 checklist Busplugs - K110 | 2026-10-22 → 2026-10-27 (+5d) | 2026-10-22 → 2026-10-27 (+5d) |  | -15d → -19d |
| K135-1720 | Megger Cable Bus Cable - K110 | 2026-10-23 → 2026-10-28 (+5d) | 2026-10-23 → 2026-10-28 (+5d) |  | -19d → -23d |
| K135-1730 | Cable Bus inspection and covers - K110 | 2026-10-23 → 2026-10-28 (+5d) | 2026-10-23 → 2026-10-28 (+5d) |  | -17d → -21d |
| K135-1740 | Terminations at Xfmrs - K110 | 2026-10-24 → 2026-10-29 (+5d) | 2026-10-26 → 2026-10-30 (+4d) |  | -19d → -23d |
| K135-1750 | Terminations at SWD - K110 | 2026-10-24 → 2026-10-29 (+5d) | 2026-10-26 → 2026-10-30 (+4d) |  | -19d → -23d |
| K135-2220 | QC 2.2 checklist SWD - K110 | 2026-10-27 → 2026-10-31 (+4d) | 2026-10-27 → 2026-10-31 (+4d) |  | -19d → -23d |
| K135-2240 | QC 2.2 checklist XFMR - K110 | 2026-10-27 → 2026-10-31 (+4d) | 2026-10-27 → 2026-10-31 (+4d) |  | -19d → -23d |
| K135-2230 | Ready for FTE - K110 | 2026-10-28 → 2026-11-02 (+5d) | 2026-10-28 → 2026-11-02 (+5d) |  | -19d → -23d |
| 11 | **R110** |  | 2026-11-02 → 2026-11-05 (+3d) |  |  |
| R135-1910 | Chiller feed box and conduit complete - R110 |  | 2026-10-17 → 2026-10-22 (+5d) |  | -15d → -19d |
| R135-1830 | Set MODs - R110 | 2026-10-16 A | 2026-10-16 → 2026-10-18 A (+2d) | 0% → 100% | -16d → none |
| R135-1990 | Pull Cable to Elec Room CRAH - R110 | 2026-10-19 → 2026-10-16 A (-3d) | 2026-10-19 → 2026-10-22 (+3d) |  | -15d → -18d |

| ID | Task | Start | Finish | Complete | Total float |
| --- | --- | --- | --- | --- | --- |
| R135-2030 | Pull MC from MOD-01 to Mechanical Equipment - R110 | 2026-10-14 → 2026-10-16 A (+2d) | 2026-10-14 → 2026-10-19 (+5d) |  | -14d → -18d |
| R135-2290 | Set Reserve SWD - R110 | 2026-10-16 A | 2026-10-16 → 2026-10-18 A (+2d) | 0% → 100% | -23d → none |
| R135-2300 | Set Reserve Tie - R110 | 2026-10-16 A | 2026-10-16 → 2026-10-18 A (+2d) | 0% → 100% | -22d → none |
| R135-2310 | Set Reserve UPS - R110 | 2026-10-16 A | 2026-10-16 → 2026-10-18 A (+2d) | 0% → 100% | -16d → none |
| R135-2320 | Set Reserve PDU - R110 | 2026-10-16 A | 2026-10-16 → 2026-10-18 A (+2d) | 0% → 100% | -15d → none |
| R135-2550 | Pull MC from MOD-02 to Mechanical Equipment - R110 | 2026-10-14 → 2026-10-16 A (+2d) | 2026-10-14 → 2026-10-19 (+5d) |  | -14d → -18d |
| R135-2090 | Busduct installed - R110 | 2026-10-14 → 2026-10-19 (+5d) | 2026-10-14 → 2026-10-19 (+5d) |  | -23d → -26d |
| R135-2100 | Busplugs/Tap Boxes installed - R110 | 2026-10-15 → 2026-10-20 (+5d) | 2026-10-15 → 2026-10-20 (+5d) |  | -23d → -26d |
| R135-2150 | Mount MPZ - R110 | 2026-10-15 → 2026-10-20 (+5d) | 2026-10-15 → 2026-10-20 (+5d) |  | -18d → -22d |
| R135-1850 | SWD top covers cut out - R110 | 2026-10-17 → 2026-10-21 (+4d) | 2026-10-22 → 2026-10-26 (+4d) |  | -23d → -26d |
| R135-1960 | Penetrate MC into MOD-01 - R110 | 2026-10-17 → 2026-10-21 (+4d) | 2026-10-17 → 2026-10-21 (+4d) |  | -16d → -19d |
| R135-1970 | Penetrate MC into MOD-02 - R110 | 2026-10-17 → 2026-10-21 (+4d) | 2026-10-17 → 2026-10-21 (+4d) |  | -16d → -19d |
| R135-1980 | Finish Conduit to Elec Room CRAH - R110 | 2026-10-17 → 2026-10-21 (+4d) | 2026-10-17 → 2026-10-21 (+4d) |  | -15d → -18d |
| R135-2110 | Mount VFD Stand and VFD - R110 | 2026-10-17 → 2026-10-21 (+4d) | 2026-10-17 → 2026-10-21 (+4d) |  | -13d → -16d |
| R135-2350 | Install conduit from Reserve Tie to Tap Box - R110 | 2026-10-17 → 2026-10-21 (+4d) | 2026-10-19 → 2026-10-22 (+3d) |  | -17d → -20d |
| R135-2360 | Install conduit from Reserve Tie to Reserve Tie - R110 | 2026-10-17 → 2026-10-21 (+4d) | 2026-10-23 → 2026-10-27 (+4d) |  | -22d → -25d |
| R135-2370 | Install conduit from Busplug to Reserve PDU - R110 | 2026-10-17 → 2026-10-21 (+4d) | 2026-10-17 → 2026-10-21 (+4d) |  | -15d → -18d |
| R135-2540 | Finish Cable Tray to Reserve Equipment - R110 | 2026-10-17 → 2026-10-21 (+4d) | 2026-10-19 → 2026-10-22 (+3d) |  | -18d → -21d |
| R135-2570 | All Grounding - R110 | 2026-10-17 → 2026-10-21 (+4d) | 2026-10-17 → 2026-10-21 (+4d) |  | -12d → -15d |
| R135-2600 | High Pot test Reserve Busduct - R110 | 2026-10-16 → 2026-10-21 (+5d) | 2026-10-16 → 2026-10-21 (+5d) |  | -11d → -15d |
| R135-2620 | Pull MC Cable from SWD to MOD - R110 | 2026-10-17 → 2026-10-21 (+4d) | 2026-10-17 → 2026-10-21 (+4d) |  | -16d → -19d |
| R135-2630 | Finish Conduit to MPZ - R110 | 2026-10-16 → 2026-10-21 (+5d) | 2026-10-21 → 2026-10-26 (+5d) |  | -18d → -22d |
| R135-2040 | Megger MC Cable from MOD-02 to Mechanical Equipment - R110 | 2026-10-19 → 2026-10-22 (+3d) | 2026-10-19 → 2026-10-22 (+3d) |  | -16d → -19d |
| R135-2140 | Megger Cable from UPS to VFD - R110 | 2026-10-19 → 2026-10-22 (+3d) | 2026-10-19 → 2026-10-22 (+3d) |  | -13d → -16d |
| R135-2190 | Terminate Cables in VFD - R110 | 2026-10-19 → 2026-10-22 (+3d) | 2026-10-19 → 2026-10-22 (+3d) |  | -13d → -16d |
| R135-2470 | Megger cable from Busplug to Reserve PDU - R110 | 2026-10-19 → 2026-10-22 (+3d) | 2026-10-19 → 2026-10-22 (+3d) |  | -15d → -18d |
| R135-2560 | Megger MC Cable from MOD-01 to Mechanical Equipment - R110 | 2026-10-19 → 2026-10-22 (+3d) | 2026-10-19 → 2026-10-22 (+3d) |  | -16d → -19d |
| R135-1920 | Pull Chiller wire - R110 | 2026-10-19 → 2026-10-23 (+4d) | 2026-10-19 → 2026-10-23 (+4d) |  | -15d → -19d |
| R135-1950 | Penetrate MC into Reserve SWD - R110 | 2026-10-20 → 2026-10-23 (+3d) | 2026-10-20 → 2026-10-23 (+3d) |  | -18d → -21d |
| R135-2000 | Megger MC Cable from SWD to Elec Room CRAH - R110 | 2026-10-20 → 2026-10-23 (+3d) | 2026-10-20 → 2026-10-23 (+3d) |  | -15d → -18d |
| R135-2060 | Terminate MOD-02 - R110 | 2026-10-20 → 2026-10-23 (+3d) | 2026-10-20 → 2026-10-23 (+3d) |  | -16d → -19d |
| R135-2250 | QC 2.2 checklist VFD - R110 | 2026-10-20 → 2026-10-23 (+3d) | 2026-10-20 → 2026-10-23 (+3d) |  | -13d → -16d |
| R135-2400 | Pull cable from Reserve Tie to Tap Box - R110 | 2026-10-20 → 2026-10-23 (+3d) | 2026-10-20 → 2026-10-23 (+3d) |  | -17d → -20d |
| R135-2420 | Pull cable from Busplug to Reserve PDU - R110 | 2026-10-20 → 2026-10-23 (+3d) | 2026-10-20 → 2026-10-23 (+3d) |  | -15d → -18d |
| R135-1930 | Megger Chiller Cable - R110 | 2026-10-20 → 2026-10-24 (+4d) | 2026-10-20 → 2026-10-24 (+4d) |  | -15d → -19d |
| R135-2010 | Terminate Elec Room CRAH - R110 | 2026-10-21 → 2026-10-24 (+3d) | 2026-10-21 → 2026-10-24 (+3d) |  | -15d → -18d |
| R135-2020 | Megger MC Cable from SWD to MOD - R110 | 2026-10-21 → 2026-10-24 (+3d) | 2026-10-21 → 2026-10-24 (+3d) |  | -18d → -21d |
| R135-2450 | Megger cable from Reserve Tie to Tap Box - R110 | 2026-10-21 → 2026-10-24 (+3d) | 2026-10-21 → 2026-10-24 (+3d) |  | -17d → -20d |
| R135-2520 | Terminate Busplug to PDU - R110 | 2026-10-21 → 2026-10-24 (+3d) | 2026-10-21 → 2026-10-24 (+3d) |  | -15d → -18d |
| R135-1940 | Terminations at Chiller - R110 | 2026-10-21 → 2026-10-26 (+5d) | 2026-10-21 → 2026-10-26 (+5d) |  | -15d → -19d |
| R135-2050 | Terminate MOD-01 - R110 | 2026-10-22 → 2026-10-26 (+4d) | 2026-10-22 → 2026-10-26 (+4d) |  | -18d → -21d |
| R135-2070 | Terminate at Mechanical Equipment - R110 | 2026-10-22 → 2026-10-26 (+4d) | 2026-10-22 → 2026-10-26 (+4d) |  | -18d → -21d |
| R135-2230 | QC 2.2 checklist Elec Room CRAH - R110 | 2026-10-22 → 2026-10-26 (+4d) | 2026-10-22 → 2026-10-26 (+4d) |  | -15d → -18d |
| R135-2460 | QC 2.2 checklist Busplug - R110 | 2026-10-22 → 2026-10-26 (+4d) | 2026-10-22 → 2026-10-26 (+4d) |  | -15d → -18d |
| R135-1840 | Cable bus Support installed - R110 | 2026-10-23 → 2026-10-27 (+4d) | 2026-10-23 → 2026-10-27 (+4d) |  | -22d → -25d |
| R135-2080 | Mechanical Equipment/Tray Grounding - R110 | 2026-10-23 → 2026-10-27 (+4d) | 2026-10-24 → 2026-10-28 (+4d) |  | -18d → -21d |
| R135-2160 | Penetrate MC Cable into MPZ - R110 | 2026-10-22 → 2026-10-27 (+5d) | 2026-10-22 → 2026-10-27 (+5d) |  | -18d → -22d |
| R135-2240 | QC 2.2 Mechanical Equipment - R110 | 2026-10-23 → 2026-10-27 (+4d) | 2026-10-23 → 2026-10-27 (+4d) |  | -16d → -19d |
| R135-2330 | Install conduit from SWD to Tap Box - R110 | 2026-10-23 → 2026-10-27 (+4d) | 2026-10-24 → 2026-10-28 (+4d) |  | -23d → -26d |
| R135-2340 | Install conduit from SWD to Reserve UPS - R110 | 2026-10-23 → 2026-10-27 (+4d) | 2026-10-23 → 2026-10-27 (+4d) |  | -21d → -24d |
| R135-2170 | Megger MPZ Cable - R110 | 2026-10-23 → 2026-10-28 (+5d) | 2026-10-23 → 2026-10-28 (+5d) |  | -18d → -22d |
| R135-2390 | Pull cable from SWD to Reserve UPS - R110 | 2026-10-24 → 2026-10-28 (+4d) | 2026-10-24 → 2026-10-28 (+4d) |  | -21d → -24d |
| R135-2410 | Pull cable from Reserve Tie to Reserve Tie - R110 | 2026-10-24 → 2026-10-28 (+4d) | 2026-10-26 → 2026-10-29 (+3d) |  | -22d → -25d |
| R135-2530 | Cable bus Install - R110 | 2026-10-24 → 2026-10-28 (+4d) | 2026-10-24 → 2026-10-28 (+4d) |  | -22d → -25d |
| R135-1860 | Cable pulled to A & P Xfmrs - R110 | 2026-10-26 → 2026-10-29 (+3d) | 2026-10-26 → 2026-10-29 (+3d) |  | -22d → -25d |
| R135-2180 | Terminate MC Feed at MPZ - R110 | 2026-10-24 → 2026-10-29 (+5d) | 2026-10-24 → 2026-10-29 (+5d) |  | -18d → -22d |
| R135-2200 | QC 2.2 checklist MOD-01 - R110 | 2026-10-26 → 2026-10-29 (+3d) | 2026-10-26 → 2026-10-29 (+3d) |  | -18d → -21d |
| R135-2210 | QC 2.2 checklist MOD-02 - R110 | 2026-10-26 → 2026-10-29 (+3d) | 2026-10-26 → 2026-10-29 (+3d) |  | -18d → -21d |
| R135-2380 | Pull cable from SWD to Tap Box - R110 | 2026-10-26 → 2026-10-29 (+3d) | 2026-10-27 → 2026-10-30 (+3d) |  | -23d → -26d |
| R135-2440 | Megger cable from SWD to Reserve UPS - R110 | 2026-10-26 → 2026-10-29 (+3d) | 2026-10-26 → 2026-10-29 (+3d) |  | -21d → -24d |
| R135-1870 | Megger Cable Bus Cable - R110 | 2026-10-27 → 2026-10-30 (+3d) | 2026-10-27 → 2026-10-30 (+3d) |  | -22d → -25d |
| R135-1880 | Cable Bus inspection and covers - R110 | 2026-10-27 → 2026-10-30 (+3d) | 2026-10-27 → 2026-10-30 (+3d) |  | -20d → -23d |
| R135-2490 | Terminate Reserve UPS - R110 | 2026-10-27 → 2026-10-30 (+3d) | 2026-10-27 → 2026-10-30 (+3d) |  | -20d → -23d |
| R135-2580 | Megger cable from Reserve Tie to Reserve Tie - R110 | 2026-10-27 → 2026-10-30 (+3d) | 2026-10-27 → 2026-10-30 (+3d) |  | -22d → -25d |
| R135-2640 | QC 2.2 checklist MPZ - R110 | 2026-10-26 → 2026-10-30 (+4d) | 2026-10-26 → 2026-10-30 (+4d) |  | -18d → -22d |
| R135-1890 | Terminations at Xfmrs - R110 | 2026-10-28 → 2026-10-31 (+3d) | 2026-10-29 → 2026-11-02 (+4d) |  | -22d → -25d |
| R135-1900 | Terminations at SWD - R110 | 2026-10-28 → 2026-10-31 (+3d) | 2026-10-29 → 2026-11-02 (+4d) |  | -22d → -25d |
| R135-2220 | QC 2.2 checklist Reserve UPS - R110 | 2026-10-28 → 2026-10-31 (+3d) | 2026-10-28 → 2026-10-31 (+3d) |  | -20d → -23d |
| R135-2430 | Megger cable from SWD to Tap Box - R110 | 2026-10-28 → 2026-10-31 (+3d) | 2026-10-28 → 2026-10-31 (+3d) |  | -23d → -26d |
| R135-2510 | Terminate Reserve Tie - R110 | 2026-10-28 → 2026-10-31 (+3d) | 2026-10-29 → 2026-11-02 (+4d) |  | -22d → -25d |

| ID | Task | Start | Finish | Complete | Total float |
| --- | --- | --- | --- | --- | --- |
| R135-2480 | Terminate Reserve SWD - R110 | 2026-10-29 → 2026-11-02 (+4d) | 2026-10-30 → 2026-11-03 (+4d) |  | -23d → -26d |
| R135-2500 | Terminate Tap Boxes - R110 | 2026-10-29 → 2026-11-02 (+4d) | 2026-10-30 → 2026-11-03 (+4d) |  | -23d → -26d |
| R135-2280 | QC 2.2 checklist XFMR - R110 | 2026-10-30 → 2026-11-03 (+4d) | 2026-10-30 → 2026-11-03 (+4d) |  | -22d → -25d |
| R135-2590 | QC 2.2 checklist Reserve Tie - R110 | 2026-10-30 → 2026-11-03 (+4d) | 2026-10-30 → 2026-11-03 (+4d) |  | -22d → -25d |
| R135-2260 | QC 2.2 checklist SWD - R110 | 2026-10-31 → 2026-11-04 (+4d) | 2026-10-31 → 2026-11-04 (+4d) |  | -23d → -26d |
| R135-2610 | QC 2.2 checklist Tap Boxes - R110 | 2026-10-31 → 2026-11-04 (+4d) | 2026-10-31 → 2026-11-04 (+4d) |  | -23d → -26d |
| R135-2270 | Ready for FTE - R110 | 2026-11-02 → 2026-11-05 (+3d) | 2026-11-02 → 2026-11-05 (+3d) |  | -23d → -26d |
| 12 | **Commissioning** | 2026-11-03 → 2026-11-06 (+3d) | 2027-01-12 → 2027-01-15 (+3d) |  |  |
| 1350-2030 | DH1100 - L3 Clean Walk | 2026-11-03 → 2026-11-06 (+3d) | 2026-11-05 → 2026-11-09 (+4d) |  | 10d → 7d |
| 1350-2040 | DH1100 - L3 PEI | 2026-11-06 → 2026-11-10 (+4d) | 2026-11-09 → 2026-11-12 (+3d) |  | 10d → 7d |
| 1350-2010 | DH1100 - L3 FTE | 2026-11-10 → 2026-11-13 (+3d) | 2026-11-13 → 2026-11-16 (+3d) |  | 13d → 10d |
| 1350-2020 | DH1100 - L4 Cx / IST | 2026-11-14 → 2026-11-17 (+3d) | 2027-01-12 → 2027-01-15 (+3d) |  | 13d → 10d |
| 1 | **DH 1200** | 2026-10-14 → 2026-10-15 (+1d) | 2027-01-16 → 2027-01-21 (+5d) |  |  |
| 1 | **Electrical** | 2026-10-14 → 2026-10-15 (+1d) | 2026-11-06 → 2026-11-11 (+5d) |  |  |
| 11 | **R120** | 2026-10-14 → 2026-10-16 (+2d) | 2026-11-05 → 2026-11-10 (+5d) |  |  |
| R125-1010 | Set MODs - R120 | 2026-10-16 A | 2026-10-16 → 2026-10-17 A (+1d) | 0% → 100% | -10d → none |
| R125-1250 | Pull MC from MOD-01 to Mechanical Equipment - R120 | 2026-10-14 → 2026-10-19 (+5d) | 2026-10-14 → 2026-10-19 (+5d) |  | -8d → -11d |
| R125-1260 | Pull MC from MOD-02 to Mechanical Equipment - R120 | 2026-10-14 → 2026-10-19 (+5d) | 2026-10-14 → 2026-10-19 (+5d) |  | -8d → -11d |
| R125-1330 | Busduct installed - R120 | 2026-10-14 → 2026-10-19 (+5d) | 2026-10-14 → 2026-10-19 (+5d) |  | -2d → -5d |
| R125-1340 | Busplugs/Tap Boxes installed - R120 | 2026-10-15 → 2026-10-20 (+5d) | 2026-10-15 → 2026-10-20 (+5d) |  | -18d → -21d |
| R125-1440 | Mount MPZ - R120 | 2026-10-15 → 2026-10-20 (+5d) | 2026-10-15 → 2026-10-20 (+5d) |  | -12d → -15d |
| R125-1020 | Set Reserve SWD - R120 | 2026-10-16 → 2026-10-21 (+5d) | 2026-10-16 → 2026-10-21 (+5d) |  | -18d → -21d |
| R125-1110 | Set Reserve UPS - R120 | 2026-10-16 → 2026-10-21 (+5d) | 2026-10-16 → 2026-10-21 (+5d) |  | -10d → -13d |
| R125-1120 | Chiller feed box and conduit complete - R120 | 2026-10-16 → 2026-10-21 (+5d) | 2026-10-19 → 2026-10-22 (+3d) |  | -9d → -12d |
| R125-1170 | Set Reserve PDU - R120 | 2026-10-16 → 2026-10-21 (+5d) | 2026-10-16 → 2026-10-21 (+5d) |  | -9d → -12d |
| R125-1180 | Penetrate MC into MOD-01 - R120 | 2026-10-19 → 2026-10-21 (+2d) | 2026-10-19 → 2026-10-21 (+2d) |  | -10d → -12d |
| R125-1190 | Penetrate MC into MOD-02 - R120 | 2026-10-19 → 2026-10-21 (+2d) | 2026-10-19 → 2026-10-21 (+2d) |  | -10d → -12d |
| R125-1720 | Set Reserve Tie - R120 | 2026-10-16 → 2026-10-21 (+5d) | 2026-10-16 → 2026-10-21 (+5d) |  | -16d → -19d |
| R125-1760 | High Pot test Reserve Busduct - R120 | 2026-10-16 → 2026-10-21 (+5d) | 2026-10-16 → 2026-10-21 (+5d) |  | -5d → -8d |
| R125-1810 | Finish Conduit to MPZ - R120 | 2026-10-16 → 2026-10-21 (+5d) | 2026-10-22 → 2026-10-27 (+5d) |  | -12d → -15d |
| R125-1040 | SWD top covers cut out - R120 | 2026-10-19 → 2026-10-22 (+3d) | 2026-10-23 → 2026-10-28 (+5d) |  | -17d → -20d |
| R125-1200 | Finish Conduit to Elec Room CRAH - R120 | 2026-10-19 → 2026-10-22 (+3d) | 2026-10-19 → 2026-10-22 (+3d) |  | -9d → -12d |
| R125-1270 | Megger MC Cable from MOD-01 to Mechanical Equipment - R120 | 2026-10-20 → 2026-10-22 (+2d) | 2026-10-20 → 2026-10-22 (+2d) |  | -10d → -12d |
| R125-1280 | Megger MC Cable from MOD-02 to Mechanical Equipment - R120 | 2026-10-20 → 2026-10-22 (+2d) | 2026-10-20 → 2026-10-22 (+2d) |  | -10d → -12d |
| R125-1350 | Install conduit from Reserve Tie to Tap Box - R120 | 2026-10-19 → 2026-10-22 (+3d) | 2026-10-20 → 2026-10-23 (+3d) |  | -11d → -14d |
| R125-1360 | Install conduit from Reserve Tie to Reserve Tie - R120 | 2026-10-19 → 2026-10-22 (+3d) | 2026-10-26 → 2026-10-29 (+3d) |  | -16d → -19d |
| R125-1370 | Install conduit from Busplug to Reserve PDU - R120 | 2026-10-19 → 2026-10-22 (+3d) | 2026-10-19 → 2026-10-22 (+3d) |  | -9d → -12d |
| R125-1390 | Mount VFD Stand and VFD - R120 | 2026-10-19 → 2026-10-22 (+3d) | 2026-10-19 → 2026-10-22 (+3d) |  | -9d → -12d |
| R125-1710 | All Grounding - R120 | 2026-10-19 → 2026-10-22 (+3d) | 2026-10-19 → 2026-10-22 (+3d) |  | -6d → -9d |
| R125-1730 | Finish Cable Tray to Reserve Equipment - R120 | 2026-10-19 → 2026-10-22 (+3d) | 2026-10-20 → 2026-10-23 (+3d) |  | -12d → -15d |
| R125-1800 | Pull MC Cable from SWD to MOD - R120 | 2026-10-19 → 2026-10-22 (+3d) | 2026-10-19 → 2026-10-22 (+3d) |  | -10d → -13d |
| R125-1130 | Pull Chiller wire - R120 | 2026-10-20 → 2026-10-23 (+3d) | 2026-10-20 → 2026-10-23 (+3d) |  | -9d → -12d |
| R125-1210 | Pull Cable to Elec Room CRAH - R120 | 2026-10-20 → 2026-10-23 (+3d) | 2026-10-20 → 2026-10-23 (+3d) |  | -9d → -12d |
| R125-1300 | Terminate MOD-02 - R120 | 2026-10-21 → 2026-10-23 (+2d) | 2026-10-21 → 2026-10-23 (+2d) |  | -10d → -12d |
| R125-1400 | Conduit from UPS to VFD - R120 | 2026-10-20 → 2026-10-23 (+3d) | 2026-10-20 → 2026-10-23 (+3d) |  | -9d → -12d |
| R125-1650 | Megger cable from Busplug to Reserve PDU - R120 | 2026-10-20 → 2026-10-23 (+3d) | 2026-10-20 → 2026-10-23 (+3d) |  | -9d → -12d |
| R125-1140 | Megger Chiller Cable - R120 | 2026-10-21 → 2026-10-26 (+5d) | 2026-10-21 → 2026-10-26 (+5d) |  | -9d → -12d |
| R125-1160 | Penetrate MC into Reserve SWD - R120 | 2026-10-21 → 2026-10-26 (+5d) | 2026-10-21 → 2026-10-26 (+5d) |  | -12d → -15d |
| R125-1220 | Megger MC Cable from SWD to Elec Room CRAH - R120 | 2026-10-21 → 2026-10-26 (+5d) | 2026-10-21 → 2026-10-26 (+5d) |  | -9d → -12d |
| R125-1410 | Pull Cable from UPS to VFD - R120 | 2026-10-21 → 2026-10-26 (+5d) | 2026-10-21 → 2026-10-26 (+5d) |  | -9d → -12d |
| R125-1490 | Pull cable from Reserve Tie to Tap Box - R120 | 2026-10-21 → 2026-10-26 (+5d) | 2026-10-21 → 2026-10-26 (+5d) |  | -11d → -14d |
| R125-1530 | Pull cable from Busplug to Reserve PDU - R120 | 2026-10-21 → 2026-10-26 (+5d) | 2026-10-21 → 2026-10-26 (+5d) |  | -9d → -12d |
| R125-1150 | Terminations at Chiller - R120 | 2026-10-22 → 2026-10-27 (+5d) | 2026-10-22 → 2026-10-27 (+5d) |  | -9d → -12d |
| R125-1230 | Terminate Elec Room CRAH - R120 | 2026-10-22 → 2026-10-27 (+5d) | 2026-10-22 → 2026-10-27 (+5d) |  | -9d → -12d |
| R125-1240 | Megger MC Cable from SWD to MOD - R120 | 2026-10-22 → 2026-10-27 (+5d) | 2026-10-22 → 2026-10-27 (+5d) |  | -12d → -15d |
| R125-1420 | Megger Cable from UPS to VFD - R120 | 2026-10-22 → 2026-10-27 (+5d) | 2026-10-22 → 2026-10-27 (+5d) |  | -9d → -12d |
| R125-1480 | Terminate Cables in VFD - R120 | 2026-10-22 → 2026-10-27 (+5d) | 2026-10-22 → 2026-10-27 (+5d) |  | -9d → -12d |
| R125-1630 | Megger cable from Reserve Tie to Tap Box - R120 | 2026-10-22 → 2026-10-27 (+5d) | 2026-10-22 → 2026-10-27 (+5d) |  | -11d → -14d |
| R125-1700 | Terminate Busplug to PDU - R120 | 2026-10-22 → 2026-10-27 (+5d) | 2026-10-22 → 2026-10-27 (+5d) |  | -9d → -12d |
| R125-1290 | Terminate MOD-01 - R120 | 2026-10-23 → 2026-10-28 (+5d) | 2026-10-23 → 2026-10-28 (+5d) |  | -12d → -15d |
| R125-1310 | Terminate at Mechanical Equipment - R120 | 2026-10-23 → 2026-10-28 (+5d) | 2026-10-23 → 2026-10-28 (+5d) |  | -12d → -15d |
| R125-1450 | Penetrate MC Cable into MPZ - R120 | 2026-10-23 → 2026-10-28 (+5d) | 2026-10-23 → 2026-10-28 (+5d) |  | -12d → -15d |
| R125-1550 | QC 2.2 checklist Elec Room CRAH - R120 | 2026-10-23 → 2026-10-28 (+5d) | 2026-10-23 → 2026-10-28 (+5d) |  | -9d → -12d |
| R125-1570 | QC 2.2 checklist VFD - R120 | 2026-10-23 → 2026-10-28 (+5d) | 2026-10-23 → 2026-10-28 (+5d) |  | -9d → -12d |
| R125-1640 | QC 2.2 checklist Busplug - R120 | 2026-10-23 → 2026-10-28 (+5d) | 2026-10-23 → 2026-10-28 (+5d) |  | -9d → -12d |
| R125-1030 | Cable bus Support installed - R120 | 2026-10-26 → 2026-10-29 (+3d) | 2026-10-26 → 2026-10-29 (+3d) |  | -16d → -19d |
| R125-1320 | Mechanical Equipment/Tray Grounding - R120 | 2026-10-26 → 2026-10-29 (+3d) | 2026-10-27 → 2026-10-30 (+3d) |  | -12d → -15d |
| R125-1460 | Megger MPZ Cable - R120 | 2026-10-26 → 2026-10-29 (+3d) | 2026-10-26 → 2026-10-29 (+3d) |  | -12d → -15d |
| R125-1560 | QC 2.2 Mechanical Equipment - R120 | 2026-10-26 → 2026-10-29 (+3d) | 2026-10-26 → 2026-10-29 (+3d) |  | -10d → -13d |
| R125-1750 | Install conduit from SWD to Tap Box - R120 | 2026-10-26 → 2026-10-29 (+3d) | 2026-10-27 → 2026-10-30 (+3d) |  | -17d → -20d |

| ID | Task | Start | Finish | Complete | Total float |
| --- | --- | --- | --- | --- | --- |
| R125-1770 | Install conduit from SWD to Reserve UPS - R120 | 2026-10-26 → 2026-10-29 (+3d) | 2026-10-26 → 2026-10-29 (+3d) |  | -15d → -18d |
| R125-1050 | Cable bus Install - R120 | 2026-10-27 → 2026-10-30 (+3d) | 2026-10-27 → 2026-10-30 (+3d) |  | -16d → -19d |
| R125-1430 | Pull cable from SWD to Reserve UPS - R120 | 2026-10-27 → 2026-10-30 (+3d) | 2026-10-27 → 2026-10-30 (+3d) |  | -15d → -18d |
| R125-1470 | Terminate MC Feed at MPZ - R120 | 2026-10-27 → 2026-10-30 (+3d) | 2026-10-27 → 2026-10-30 (+3d) |  | -12d → -15d |
| R125-1520 | Pull cable from Reserve Tie to Reserve Tie - R120 | 2026-10-27 → 2026-10-30 (+3d) | 2026-10-28 → 2026-11-02 (+5d) |  | -16d → -19d |
| R125-1060 | Cable pulled to A & P Xfmrs - R120 | 2026-10-28 → 2026-11-02 (+5d) | 2026-10-28 → 2026-11-02 (+5d) |  | -16d → -19d |
| R125-1380 | Pull cable from SWD to Tap Box - R120 | 2026-10-28 → 2026-11-02 (+5d) | 2026-10-29 → 2026-11-03 (+5d) |  | -17d → -20d |
| R125-1500 | QC 2.2 checklist MOD-01 - R120 | 2026-10-28 → 2026-11-02 (+5d) | 2026-10-28 → 2026-11-02 (+5d) |  | -12d → -15d |
| R125-1510 | QC 2.2 checklist MOD-02 - R120 | 2026-10-28 → 2026-11-02 (+5d) | 2026-10-28 → 2026-11-02 (+5d) |  | -12d → -15d |
| R125-1620 | Megger cable from SWD to Reserve UPS - R120 | 2026-10-28 → 2026-11-02 (+5d) | 2026-10-28 → 2026-11-02 (+5d) |  | -15d → -18d |
| R125-1820 | QC 2.2 checklist MPZ - R120 | 2026-10-28 → 2026-11-02 (+5d) | 2026-10-28 → 2026-11-02 (+5d) |  | -12d → -15d |
| R125-1070 | Megger Cable Bus Cable - R120 | 2026-10-29 → 2026-11-03 (+5d) | 2026-10-29 → 2026-11-03 (+5d) |  | -16d → -19d |
| R125-1080 | Cable Bus inspection and covers - R120 | 2026-10-29 → 2026-11-03 (+5d) | 2026-10-29 → 2026-11-03 (+5d) |  | -14d → -17d |
| R125-1670 | Terminate Reserve UPS - R120 | 2026-10-29 → 2026-11-03 (+5d) | 2026-10-29 → 2026-11-03 (+5d) |  | -14d → -17d |
| R125-1780 | Megger cable from Reserve Tie to Reserve Tie - R120 | 2026-10-29 → 2026-11-03 (+5d) | 2026-10-29 → 2026-11-03 (+5d) |  | -16d → -19d |
| R125-1090 | Terminations at Xfmrs - R120 | 2026-10-30 → 2026-11-04 (+5d) | 2026-11-02 → 2026-11-05 (+3d) |  | -16d → -19d |
| R125-1100 | Terminations at SWD - R120 | 2026-10-30 → 2026-11-04 (+5d) | 2026-11-02 → 2026-11-05 (+3d) |  | -16d → -19d |
| R125-1540 | QC 2.2 checklist Reserve UPS - R120 | 2026-10-30 → 2026-11-04 (+5d) | 2026-10-30 → 2026-11-04 (+5d) |  | -14d → -17d |
| R125-1610 | Megger cable from SWD to Tap Box - R120 | 2026-10-30 → 2026-11-04 (+5d) | 2026-10-30 → 2026-11-04 (+5d) |  | -17d → -20d |
| R125-1690 | Terminate Reserve Tie - R120 | 2026-10-30 → 2026-11-04 (+5d) | 2026-11-02 → 2026-11-05 (+3d) |  | -16d → -19d |
| R125-1660 | Terminate Reserve SWD - R120 | 2026-11-02 → 2026-11-05 (+3d) | 2026-11-03 → 2026-11-06 (+3d) |  | -17d → -20d |
| R125-1680 | Terminate Tap Boxes - R120 | 2026-11-02 → 2026-11-05 (+3d) | 2026-11-03 → 2026-11-06 (+3d) |  | -17d → -20d |
| R125-1600 | QC 2.2 checklist XFMR - R120 | 2026-11-03 → 2026-11-06 (+3d) | 2026-11-03 → 2026-11-06 (+3d) |  | -16d → -19d |
| R125-1740 | QC 2.2 checklist Reserve Tie - R120 | 2026-11-03 → 2026-11-06 (+3d) | 2026-11-03 → 2026-11-06 (+3d) |  | -16d → -19d |
| R125-1580 | QC 2.2 checklist SWD - R120 | 2026-11-04 → 2026-11-09 (+5d) | 2026-11-04 → 2026-11-09 (+5d) |  | -17d → -20d |
| R125-1790 | QC 2.2 checklist Tap Boxes - R120 | 2026-11-04 → 2026-11-09 (+5d) | 2026-11-04 → 2026-11-09 (+5d) |  | -17d → -20d |
| R125-1590 | Ready for FTE - R120 | 2026-11-05 → 2026-11-10 (+5d) | 2026-11-05 → 2026-11-10 (+5d) |  | -17d → -20d |
| 1 | **A120** | 2026-10-14 → 2026-10-16 (+2d) | 2026-11-04 → 2026-11-09 (+5d) |  |  |
| A125-1010 | Set MODs - A120 | 2026-10-16 A | 2026-10-19 → 2026-10-17 A (-2d) | 0% → 100% | -12d → none |
| A125-1330 | Busduct installed - A120 | 2026-10-14 → 2026-10-19 (+5d) | 2026-10-14 → 2026-10-19 (+5d) |  | -18d → -21d |
| A125-1340 | Busplugs/Tap Boxes installed - A120 | 2026-10-15 → 2026-10-20 (+5d) | 2026-10-15 → 2026-10-20 (+5d) |  | -18d → -21d |
| A125-1000 | Set Skid - A120 | 2026-10-16 → 2026-10-21 (+5d) | 2026-10-16 → 2026-10-21 (+5d) |  | -18d → -21d |
| A125-1030 | Cable bus Support installed - A120 | 2026-10-16 → 2026-10-21 (+5d) | 2026-10-19 → 2026-10-22 (+3d) |  | -12d → -15d |
| A125-1120 | Chiller feed box and conduit complete - A120 | 2026-10-16 → 2026-10-21 (+5d) | 2026-10-19 → 2026-10-22 (+3d) |  | -9d → -12d |
| A125-1180 | Penetrate MC into MOD-01 - A120 | 2026-10-20 → 2026-10-21 (+1d) | 2026-10-20 → 2026-10-21 (+1d) |  | -11d → -12d |
| A125-1190 | Penetrate MC into MOD-02 - A120 | 2026-10-20 → 2026-10-21 (+1d) | 2026-10-20 → 2026-10-21 (+1d) |  | -11d → -12d |
| A125-1250 | Pull MC from MOD-01 to Mechanical Equipment - A120 | 2026-10-20 → 2026-10-21 (+1d) | 2026-10-21 → 2026-10-22 (+1d) |  | -12d → -13d |
| A125-1260 | Pull MC from MOD-02 to Mechanical Equipment - A120 | 2026-10-20 → 2026-10-21 (+1d) | 2026-10-21 → 2026-10-22 (+1d) |  | -12d → -13d |
| A125-1040 | SWD top covers cut out - A120 | 2026-10-19 → 2026-10-22 (+3d) | 2026-10-23 → 2026-10-28 (+5d) |  | -16d → -19d |
| A125-1110 | Finish Cable Tray to Skid - A120 | 2026-10-19 → 2026-10-22 (+3d) | 2026-10-20 → 2026-10-23 (+3d) |  | -12d → -15d |
| A125-1350 | Install conduit from Busplug to ATSs - A120 | 2026-10-19 → 2026-10-22 (+3d) | 2026-10-20 → 2026-10-23 (+3d) |  | -12d → -15d |
| A125-1390 | Mount VFD Stand and VFD - A120 | 2026-10-19 → 2026-10-22 (+3d) | 2026-10-19 → 2026-10-22 (+3d) |  | -10d → -13d |
| A125-1440 | Mount MPZ - A120 | 2026-10-19 → 2026-10-22 (+3d) | 2026-10-19 → 2026-10-22 (+3d) |  | -9d → -12d |
| A125-1520 | Megger MC Cable from UPS to MOD - A120 | 2026-10-21 → 2026-10-22 (+1d) | 2026-10-21 → 2026-10-22 (+1d) |  | -11d → -12d |
| A125-1620 | Electrical Room CRAH Set - A120 | 2026-10-19 → 2026-10-22 (+3d) | 2026-10-19 → 2026-10-22 (+3d) |  | -10d → -13d |
| A125-1130 | Pull Chiller wire - A120 | 2026-10-20 → 2026-10-23 (+3d) | 2026-10-20 → 2026-10-23 (+3d) |  | -9d → -12d |
| A125-1200 | Finish Conduit to Elec Room CRAH - A120 | 2026-10-20 → 2026-10-23 (+3d) | 2026-10-20 → 2026-10-23 (+3d) |  | -10d → -13d |
| A125-1270 | Megger MC Cable from MOD-01 to Mechanical Equipment - A120 | 2026-10-22 → 2026-10-23 (+1d) | 2026-10-22 → 2026-10-23 (+1d) |  | -12d → -13d |
| A125-1280 | Megger MC Cable from MOD-02 to Mechanical Equipment - A120 | 2026-10-22 → 2026-10-23 (+1d) | 2026-10-22 → 2026-10-23 (+1d) |  | -12d → -13d |
| A125-1400 | Conduit from UPS to VFD - A120 | 2026-10-20 → 2026-10-23 (+3d) | 2026-10-20 → 2026-10-23 (+3d) |  | -10d → -13d |
| A125-1450 | Penetrate MC Cable into MPZ - A120 | 2026-10-20 → 2026-10-23 (+3d) | 2026-10-20 → 2026-10-23 (+3d) |  | -9d → -12d |
| A125-1140 | Megger Chiller Cable - A120 | 2026-10-21 → 2026-10-26 (+5d) | 2026-10-21 → 2026-10-26 (+5d) |  | -9d → -12d |
| A125-1160 | Penetrate MC into SWD - A120 | 2026-10-21 → 2026-10-26 (+5d) | 2026-10-21 → 2026-10-26 (+5d) |  | -12d → -15d |
| A125-1170 | Penetrat MC into UPS - A120 | 2026-10-21 → 2026-10-26 (+5d) | 2026-10-21 → 2026-10-26 (+5d) |  | -12d → -15d |
| A125-1210 | Pull Cable to Elec Room CRAH - A120 | 2026-10-21 → 2026-10-26 (+5d) | 2026-10-21 → 2026-10-26 (+5d) |  | -10d → -13d |
| A125-1300 | Terminate MOD-02 - A120 | 2026-10-23 → 2026-10-26 (+3d) | 2026-10-23 → 2026-10-26 (+3d) |  | -12d → -13d |
| A125-1360 | Pull ATS Cable - A120 | 2026-10-21 → 2026-10-26 (+5d) | 2026-10-21 → 2026-10-26 (+5d) |  | -12d → -15d |
| A125-1410 | Pull Cable from UPS to VFD - A120 | 2026-10-21 → 2026-10-26 (+5d) | 2026-10-21 → 2026-10-26 (+5d) |  | -10d → -13d |
| A125-1460 | Megger MPZ Cable - A120 | 2026-10-21 → 2026-10-26 (+5d) | 2026-10-21 → 2026-10-26 (+5d) |  | -9d → -12d |
| A125-1490 | All Skid Grounding - A120 | 2026-10-21 → 2026-10-26 (+5d) | 2026-10-22 → 2026-10-27 (+5d) |  | -9d → -12d |
| A125-1150 | Terminations at Chiller - A120 | 2026-10-22 → 2026-10-27 (+5d) | 2026-10-22 → 2026-10-27 (+5d) |  | -9d → -12d |
| A125-1220 | Megger MC Cable from Skid to Elec Room CRAH - A120 | 2026-10-22 → 2026-10-27 (+5d) | 2026-10-22 → 2026-10-27 (+5d) |  | -10d → -13d |
| A125-1240 | Megger MC Cable from Skid to MOD - A120 | 2026-10-22 → 2026-10-27 (+5d) | 2026-10-22 → 2026-10-27 (+5d) |  | -12d → -15d |
| A125-1420 | Megger Cable from UPS to VFD - A120 | 2026-10-22 → 2026-10-27 (+5d) | 2026-10-22 → 2026-10-27 (+5d) |  | -10d → -13d |
| A125-1470 | Terminate MC Feed at MPZ - A120 | 2026-10-22 → 2026-10-27 (+5d) | 2026-10-22 → 2026-10-27 (+5d) |  | -9d → -12d |
| A125-1480 | Terminate Cables in VFD - A120 | 2026-10-22 → 2026-10-27 (+5d) | 2026-10-22 → 2026-10-27 (+5d) |  | -9d → -12d |
| A125-1630 | Megger Cable at ATS - A120 | 2026-10-22 → 2026-10-27 (+5d) | 2026-10-22 → 2026-10-27 (+5d) |  | -12d → -15d |
| A125-1230 | Terminate Elec Room CRAH - A120 | 2026-10-23 → 2026-10-28 (+5d) | 2026-10-23 → 2026-10-28 (+5d) |  | -10d → -13d |
| A125-1290 | Terminate MOD-01 - A120 | 2026-10-23 → 2026-10-28 (+5d) | 2026-10-23 → 2026-10-28 (+5d) |  | -12d → -15d |
| A125-1310 | Terminate at Mechanical Equipment - A120 | 2026-10-23 → 2026-10-28 (+5d) | 2026-10-23 → 2026-10-28 (+5d) |  | -12d → -15d |

| ID | Task | Start | Finish | Complete | Total float |
| --- | --- | --- | --- | --- | --- |
| A125-1370 | Terminate ATS Cable at Busplugs & ATSs - A120 | 2026-10-23 → 2026-10-28 (+5d) | 2026-10-26 → 2026-10-29 (+3d) |  | -12d → -15d |
| A125-1430 | Terminate Cables in UPS - A120 | 2026-10-23 → 2026-10-28 (+5d) | 2026-10-23 → 2026-10-28 (+5d) |  | -10d → -13d |
| A125-1570 | QC 2.2 checklist VFD - A120 | 2026-10-23 → 2026-10-28 (+5d) | 2026-10-23 → 2026-10-28 (+5d) |  | -9d → -12d |
| A125-1610 | QC 2.2 checklist Chiller - A120 | 2026-10-23 → 2026-10-28 (+5d) | 2026-10-23 → 2026-10-28 (+5d) |  | -9d → -12d |
| A125-1650 | QC 2.2 checklist MPZ - A120 | 2026-10-23 → 2026-10-28 (+5d) | 2026-10-23 → 2026-10-28 (+5d) |  | -9d → -12d |
| A125-1050 | Cable bus Install - A120 | 2026-10-26 → 2026-10-29 (+3d) | 2026-10-27 → 2026-10-30 (+3d) |  | -16d → -19d |
| A125-1320 | Mechanical Equipment/Tray Grounding - A120 | 2026-10-26 → 2026-10-29 (+3d) | 2026-10-27 → 2026-10-30 (+3d) |  | -12d → -15d |
| A125-1540 | QC 2.2 checklist UPS - A120 | 2026-10-26 → 2026-10-29 (+3d) | 2026-10-26 → 2026-10-29 (+3d) |  | -10d → -13d |
| A125-1550 | QC 2.2 checklist Elec Room CRAH - A120 | 2026-10-26 → 2026-10-29 (+3d) | 2026-10-26 → 2026-10-29 (+3d) |  | -10d → -13d |
| A125-1560 | QC 2.2 Mechanical Equipment - A120 | 2026-10-26 → 2026-10-29 (+3d) | 2026-10-26 → 2026-10-29 (+3d) |  | -10d → -13d |
| A125-1380 | ATS Lashing - A120 | 2026-10-27 → 2026-10-30 (+3d) | 2026-10-27 → 2026-10-30 (+3d) |  | -12d → -15d |
| A125-1060 | Cable pulled to A & P Xfmrs - A120 | 2026-10-28 → 2026-11-02 (+5d) | 2026-10-28 → 2026-11-02 (+5d) |  | -16d → -19d |
| A125-1500 | QC 2.2 checklist MOD-01 - A120 | 2026-10-28 → 2026-11-02 (+5d) | 2026-10-28 → 2026-11-02 (+5d) |  | -12d → -15d |
| A125-1510 | QC 2.2 checklist MOD-02 - A120 | 2026-10-28 → 2026-11-02 (+5d) | 2026-10-28 → 2026-11-02 (+5d) |  | -12d → -15d |
| A125-1530 | QC 2.2 checklist ATSs - A120 | 2026-10-28 → 2026-11-02 (+5d) | 2026-10-28 → 2026-11-02 (+5d) |  | -12d → -15d |
| A125-1640 | QC 2.2 checklist Busplugs - A120 | 2026-10-28 → 2026-11-02 (+5d) | 2026-10-28 → 2026-11-02 (+5d) |  | -12d → -15d |
| A125-1070 | Megger Cable Bus Cable - A120 | 2026-10-29 → 2026-11-03 (+5d) | 2026-10-29 → 2026-11-03 (+5d) |  | -16d → -19d |
| A125-1080 | Cable Bus inspection and covers - A120 | 2026-10-29 → 2026-11-03 (+5d) | 2026-10-29 → 2026-11-03 (+5d) |  | -14d → -17d |
| A125-1090 | Terminations at Xfmrs - A120 | 2026-10-30 → 2026-11-04 (+5d) | 2026-11-02 → 2026-11-05 (+3d) |  | -16d → -19d |
| A125-1100 | Terminations at SWD - A120 | 2026-10-30 → 2026-11-04 (+5d) | 2026-11-02 → 2026-11-05 (+3d) |  | -16d → -19d |
| A125-1580 | QC 2.2 checklist SWD - A120 | 2026-11-03 → 2026-11-06 (+3d) | 2026-11-03 → 2026-11-06 (+3d) |  | -16d → -19d |
| A125-1600 | QC 2.2 checklist Xfmrs - A120 | 2026-11-03 → 2026-11-06 (+3d) | 2026-11-03 → 2026-11-06 (+3d) |  | -16d → -19d |
| A125-1590 | Ready for FTE - A120 | 2026-11-04 → 2026-11-09 (+5d) | 2026-11-04 → 2026-11-09 (+5d) |  | -16d → -19d |
| 2 | **B120** | 2026-10-14 → 2026-10-16 (+2d) | 2026-11-04 → 2026-11-09 (+5d) |  |  |
| B125-1010 | Set MODs - B120 | 2026-10-16 A | 2026-10-19 → 2026-10-17 A (-2d) | 0% → 100% | -12d → none |
| B125-1330 | Busduct installed - B120 | 2026-10-14 → 2026-10-19 (+5d) | 2026-10-14 → 2026-10-19 (+5d) |  | -18d → -21d |
| B125-1340 | Busplugs/Tap Boxes installed - B120 | 2026-10-15 → 2026-10-20 (+5d) | 2026-10-15 → 2026-10-20 (+5d) |  | -18d → -21d |
| B125-1000 | Set Skid - B120 | 2026-10-16 → 2026-10-21 (+5d) | 2026-10-16 → 2026-10-21 (+5d) |  | -18d → -21d |
| B125-1030 | Cable bus Support installed - B120 | 2026-10-16 → 2026-10-21 (+5d) | 2026-10-19 → 2026-10-22 (+3d) |  | -12d → -15d |
| B125-1120 | Chiller feed box and conduit complete - B120 | 2026-10-16 → 2026-10-21 (+5d) | 2026-10-19 → 2026-10-22 (+3d) |  | -9d → -12d |
| B125-1180 | Penetrate MC into MOD-01 - B120 | 2026-10-20 → 2026-10-21 (+1d) | 2026-10-20 → 2026-10-21 (+1d) |  | -11d → -12d |
| B125-1190 | Penetrate MC into MOD-02 - B120 | 2026-10-20 → 2026-10-21 (+1d) | 2026-10-20 → 2026-10-21 (+1d) |  | -11d → -12d |
| B125-1250 | Pull MC from MOD-01 to Mechanical Equipment - B120 | 2026-10-20 → 2026-10-21 (+1d) | 2026-10-21 → 2026-10-22 (+1d) |  | -12d → -13d |
| B125-1260 | Pull MC from MOD-02 to Mechanical Equipment - B120 | 2026-10-20 → 2026-10-21 (+1d) | 2026-10-21 → 2026-10-22 (+1d) |  | -12d → -13d |
| B125-1040 | SWD top covers cut out - B120 | 2026-10-19 → 2026-10-22 (+3d) | 2026-10-23 → 2026-10-28 (+5d) |  | -16d → -19d |
| B125-1110 | Finish Cable Tray to Skid - B120 | 2026-10-19 → 2026-10-22 (+3d) | 2026-10-20 → 2026-10-23 (+3d) |  | -12d → -15d |
| B125-1350 | Install conduit from Busplug to ATSs - B120 | 2026-10-19 → 2026-10-22 (+3d) | 2026-10-20 → 2026-10-23 (+3d) |  | -12d → -15d |
| B125-1390 | Mount VFD Stand and VFD - B120 | 2026-10-19 → 2026-10-22 (+3d) | 2026-10-19 → 2026-10-22 (+3d) |  | -10d → -13d |
| B125-1440 | Mount MPZ - B120 | 2026-10-19 → 2026-10-22 (+3d) | 2026-10-19 → 2026-10-22 (+3d) |  | -9d → -12d |
| B125-1520 | Megger MC Cable from UPS to MOD - B120 | 2026-10-21 → 2026-10-22 (+1d) | 2026-10-21 → 2026-10-22 (+1d) |  | -11d → -12d |
| B125-1620 | Electrical Room CRAH Set - B120 | 2026-10-19 → 2026-10-22 (+3d) | 2026-10-19 → 2026-10-22 (+3d) |  | -10d → -13d |
| B125-1130 | Pull Chiller wire - B120 | 2026-10-20 → 2026-10-23 (+3d) | 2026-10-20 → 2026-10-23 (+3d) |  | -9d → -12d |
| B125-1200 | Finish Conduit to Elec Room CRAH - B120 | 2026-10-20 → 2026-10-23 (+3d) | 2026-10-20 → 2026-10-23 (+3d) |  | -10d → -13d |
| B125-1270 | Megger MC Cable from MOD-01 to Mechanical Equipment - B120 | 2026-10-22 → 2026-10-23 (+1d) | 2026-10-22 → 2026-10-23 (+1d) |  | -12d → -13d |
| B125-1280 | Megger MC Cable from MOD-02 to Mechanical Equipment - B120 | 2026-10-22 → 2026-10-23 (+1d) | 2026-10-22 → 2026-10-23 (+1d) |  | -12d → -13d |
| B125-1400 | Conduit from UPS to VFD - B120 | 2026-10-20 → 2026-10-23 (+3d) | 2026-10-20 → 2026-10-23 (+3d) |  | -10d → -13d |
| B125-1450 | Penetrate MC Cable into MPZ - B120 | 2026-10-20 → 2026-10-23 (+3d) | 2026-10-20 → 2026-10-23 (+3d) |  | -9d → -12d |
| B125-1140 | Megger Chiller Cable - B120 | 2026-10-21 → 2026-10-26 (+5d) | 2026-10-21 → 2026-10-26 (+5d) |  | -9d → -12d |
| B125-1160 | Penetrate MC into SWD - B120 | 2026-10-21 → 2026-10-26 (+5d) | 2026-10-21 → 2026-10-26 (+5d) |  | -12d → -15d |
| B125-1170 | Penetrat MC into UPS - B120 | 2026-10-21 → 2026-10-26 (+5d) | 2026-10-21 → 2026-10-26 (+5d) |  | -12d → -15d |
| B125-1210 | Pull Cable to Elec Room CRAH - B120 | 2026-10-21 → 2026-10-26 (+5d) | 2026-10-21 → 2026-10-26 (+5d) |  | -10d → -13d |
| B125-1300 | Terminate MOD-02 - B120 | 2026-10-23 → 2026-10-26 (+3d) | 2026-10-23 → 2026-10-26 (+3d) |  | -12d → -13d |
| B125-1360 | Pull ATS Cable - B120 | 2026-10-21 → 2026-10-26 (+5d) | 2026-10-21 → 2026-10-26 (+5d) |  | -12d → -15d |
| B125-1410 | Pull Cable from UPS to VFD - B120 | 2026-10-21 → 2026-10-26 (+5d) | 2026-10-21 → 2026-10-26 (+5d) |  | -10d → -13d |
| B125-1460 | Megger MPZ Cable - B120 | 2026-10-21 → 2026-10-26 (+5d) | 2026-10-21 → 2026-10-26 (+5d) |  | -9d → -12d |
| B125-1490 | All Skid Grounding - B120 | 2026-10-21 → 2026-10-26 (+5d) | 2026-10-22 → 2026-10-27 (+5d) |  | -9d → -12d |
| B125-1150 | Terminations at Chiller - B120 | 2026-10-22 → 2026-10-27 (+5d) | 2026-10-22 → 2026-10-27 (+5d) |  | -9d → -12d |
| B125-1220 | Megger MC Cable from Skid to Elec Room CRAH - B120 | 2026-10-22 → 2026-10-27 (+5d) | 2026-10-22 → 2026-10-27 (+5d) |  | -10d → -13d |
| B125-1240 | Megger MC Cable from Skid to MOD - B120 | 2026-10-22 → 2026-10-27 (+5d) | 2026-10-22 → 2026-10-27 (+5d) |  | -12d → -15d |
| B125-1420 | Megger Cable from UPS to VFD - B120 | 2026-10-22 → 2026-10-27 (+5d) | 2026-10-22 → 2026-10-27 (+5d) |  | -10d → -13d |
| B125-1470 | Terminate MC Feed at MPZ - B120 | 2026-10-22 → 2026-10-27 (+5d) | 2026-10-22 → 2026-10-27 (+5d) |  | -9d → -12d |
| B125-1480 | Terminate Cables in VFD - B120 | 2026-10-22 → 2026-10-27 (+5d) | 2026-10-22 → 2026-10-27 (+5d) |  | -9d → -12d |
| B125-1630 | Megger Cable at ATS - B120 | 2026-10-22 → 2026-10-27 (+5d) | 2026-10-22 → 2026-10-27 (+5d) |  | -12d → -15d |
| B125-1230 | Terminate Elec Room CRAH - B120 | 2026-10-23 → 2026-10-28 (+5d) | 2026-10-23 → 2026-10-28 (+5d) |  | -10d → -13d |
| B125-1290 | Terminate MOD-01 - B120 | 2026-10-23 → 2026-10-28 (+5d) | 2026-10-23 → 2026-10-28 (+5d) |  | -12d → -15d |
| B125-1310 | Terminate at Mechanical Equipment - B120 | 2026-10-23 → 2026-10-28 (+5d) | 2026-10-23 → 2026-10-28 (+5d) |  | -12d → -15d |
| B125-1370 | Terminate ATS Cable at Busplugs & ATSs - B120 | 2026-10-23 → 2026-10-28 (+5d) | 2026-10-26 → 2026-10-29 (+3d) |  | -12d → -15d |
| B125-1430 | Terminate Cables in UPS - B120 | 2026-10-23 → 2026-10-28 (+5d) | 2026-10-23 → 2026-10-28 (+5d) |  | -10d → -13d |
| B125-1570 | QC 2.2 checklist VFD - B120 | 2026-10-23 → 2026-10-28 (+5d) | 2026-10-23 → 2026-10-28 (+5d) |  | -9d → -12d |
| B125-1610 | QC 2.2 checklist Chiller - B120 | 2026-10-23 → 2026-10-28 (+5d) | 2026-10-23 → 2026-10-28 (+5d) |  | -9d → -12d |

| ID | Task | Start | Finish | Complete | Total float |
| --- | --- | --- | --- | --- | --- |
| B125-1650 | QC 2.2 checklist MPZ - B120 | 2026-10-23 → 2026-10-28 (+5d) | 2026-10-23 → 2026-10-28 (+5d) |  | -9d → -12d |
| B125-1050 | Cable bus Install - B120 | 2026-10-26 → 2026-10-29 (+3d) | 2026-10-27 → 2026-10-30 (+3d) |  | -16d → -19d |
| B125-1320 | Mechanical Equipment/Tray Grounding - B120 | 2026-10-26 → 2026-10-29 (+3d) | 2026-10-27 → 2026-10-30 (+3d) |  | -12d → -15d |
| B125-1540 | QC 2.2 checklist UPS - B120 | 2026-10-26 → 2026-10-29 (+3d) | 2026-10-26 → 2026-10-29 (+3d) |  | -10d → -13d |
| B125-1550 | QC 2.2 checklist Elec Room CRAH - B120 | 2026-10-26 → 2026-10-29 (+3d) | 2026-10-26 → 2026-10-29 (+3d) |  | -10d → -13d |
| B125-1560 | QC 2.2 Mechanical Equipment - B120 | 2026-10-26 → 2026-10-29 (+3d) | 2026-10-26 → 2026-10-29 (+3d) |  | -10d → -13d |
| B125-1380 | ATS Lashing - B120 | 2026-10-27 → 2026-10-30 (+3d) | 2026-10-27 → 2026-10-30 (+3d) |  | -12d → -15d |
| B125-1060 | Cable pulled to A & P Xfmrs - B120 | 2026-10-28 → 2026-11-02 (+5d) | 2026-10-28 → 2026-11-02 (+5d) |  | -16d → -19d |
| B125-1500 | QC 2.2 checklist MOD-01 - B120 | 2026-10-28 → 2026-11-02 (+5d) | 2026-10-28 → 2026-11-02 (+5d) |  | -12d → -15d |
| B125-1510 | QC 2.2 checklist MOD-02 - B120 | 2026-10-28 → 2026-11-02 (+5d) | 2026-10-28 → 2026-11-02 (+5d) |  | -12d → -15d |
| B125-1530 | QC 2.2 checklist ATSs - B120 | 2026-10-28 → 2026-11-02 (+5d) | 2026-10-28 → 2026-11-02 (+5d) |  | -12d → -15d |
| B125-1640 | QC 2.2 checklist Busplugs - B120 | 2026-10-28 → 2026-11-02 (+5d) | 2026-10-28 → 2026-11-02 (+5d) |  | -12d → -15d |
| B125-1070 | Megger Cable Bus Cable - B120 | 2026-10-29 → 2026-11-03 (+5d) | 2026-10-29 → 2026-11-03 (+5d) |  | -16d → -19d |
| B125-1080 | Cable Bus inspection and covers - B120 | 2026-10-29 → 2026-11-03 (+5d) | 2026-10-29 → 2026-11-03 (+5d) |  | -14d → -17d |
| B125-1090 | Terminations at Xfmrs - B120 | 2026-10-30 → 2026-11-04 (+5d) | 2026-11-02 → 2026-11-05 (+3d) |  | -16d → -19d |
| B125-1100 | Terminations at SWD - B120 | 2026-10-30 → 2026-11-04 (+5d) | 2026-11-02 → 2026-11-05 (+3d) |  | -16d → -19d |
| B125-1580 | QC 2.2 checklist SWD - B120 | 2026-11-03 → 2026-11-06 (+3d) | 2026-11-03 → 2026-11-06 (+3d) |  | -16d → -19d |
| B125-1600 | QC 2.2 checklist XFMR - B120 | 2026-11-03 → 2026-11-06 (+3d) | 2026-11-03 → 2026-11-06 (+3d) |  | -16d → -19d |
| B125-1590 | Ready for FTE - B120 | 2026-11-04 → 2026-11-09 (+5d) | 2026-11-04 → 2026-11-09 (+5d) |  | -16d → -19d |
| 3 | **C120** | 2026-10-15 → 2026-10-16 (+1d) | 2026-11-05 → 2026-11-10 (+5d) |  |  |
| C125-1010 | Set MODs - C120 | 2026-10-19 → 2026-10-16 A (-3d) | 2026-10-20 → 2026-10-17 A (-3d) | 0% → 100% | -13d → none |
| C125-1330 | Busduct installed - C120 | 2026-10-15 → 2026-10-20 (+5d) | 2026-10-15 → 2026-10-20 (+5d) |  | -18d → -21d |
| C125-1340 | Busplugs/Tap Boxes installed - C120 | 2026-10-16 → 2026-10-21 (+5d) | 2026-10-16 → 2026-10-21 (+5d) |  | -18d → -21d |
| C125-1000 | Set Skid - C120 | 2026-10-19 → 2026-10-22 (+3d) | 2026-10-19 → 2026-10-22 (+3d) |  | -18d → -21d |
| C125-1030 | Cable bus Support installed - C120 | 2026-10-19 → 2026-10-22 (+3d) | 2026-10-20 → 2026-10-23 (+3d) |  | -13d → -16d |
| C125-1120 | Chiller feed box and conduit complete - C120 | 2026-10-19 → 2026-10-22 (+3d) | 2026-10-20 → 2026-10-23 (+3d) |  | -10d → -13d |
| C125-1180 | Penetrate MC into MOD-01 - C120 | 2026-10-21 → 2026-10-22 (+1d) | 2026-10-21 → 2026-10-22 (+1d) |  | -12d → -13d |
| C125-1190 | Penetrate MC into MOD-02 - C120 | 2026-10-21 → 2026-10-22 (+1d) | 2026-10-21 → 2026-10-22 (+1d) |  | -12d → -13d |
| C125-1250 | Pull MC from MOD-01 to Mechanical Equipment - C120 | 2026-10-21 → 2026-10-22 (+1d) | 2026-10-22 → 2026-10-23 (+1d) |  | -13d → -14d |
| C125-1260 | Pull MC from MOD-02 to Mechanical Equipment - C120 | 2026-10-21 → 2026-10-22 (+1d) | 2026-10-22 → 2026-10-23 (+1d) |  | -13d → -14d |
| C125-1040 | SWD top covers cut out - C120 | 2026-10-20 → 2026-10-23 (+3d) | 2026-10-26 → 2026-10-29 (+3d) |  | -17d → -20d |
| C125-1110 | Finish Cable Tray to Skid - C120 | 2026-10-20 → 2026-10-23 (+3d) | 2026-10-21 → 2026-10-26 (+5d) |  | -13d → -16d |
| C125-1350 | Install conduit from Busplug to ATSs - C120 | 2026-10-20 → 2026-10-23 (+3d) | 2026-10-21 → 2026-10-26 (+5d) |  | -13d → -16d |
| C125-1390 | Mount VFD Stand and VFD - C120 | 2026-10-20 → 2026-10-23 (+3d) | 2026-10-20 → 2026-10-23 (+3d) |  | -11d → -14d |
| C125-1440 | Mount MPZ - C120 | 2026-10-20 → 2026-10-23 (+3d) | 2026-10-20 → 2026-10-23 (+3d) |  | -10d → -13d |
| C125-1520 | Megger MC Cable from UPS to MOD - C120 | 2026-10-22 → 2026-10-23 (+1d) | 2026-10-22 → 2026-10-23 (+1d) |  | -12d → -13d |
| C125-1620 | Electrical Room CRAH Set - C120 | 2026-10-20 → 2026-10-23 (+3d) | 2026-10-20 → 2026-10-23 (+3d) |  | -11d → -14d |
| C125-1130 | Pull Chiller wire - C120 | 2026-10-21 → 2026-10-26 (+5d) | 2026-10-21 → 2026-10-26 (+5d) |  | -10d → -13d |
| C125-1200 | Finish Conduit to Elec Room CRAH - C120 | 2026-10-21 → 2026-10-26 (+5d) | 2026-10-21 → 2026-10-26 (+5d) |  | -11d → -14d |
| C125-1270 | Megger MC Cable from MOD-01 to Mechanical Equipment - C120 | 2026-10-23 → 2026-10-26 (+3d) | 2026-10-23 → 2026-10-26 (+3d) |  | -13d → -14d |
| C125-1280 | Megger MC Cable from MOD-02 to Mechanical Equipment - C120 | 2026-10-23 → 2026-10-26 (+3d) | 2026-10-23 → 2026-10-26 (+3d) |  | -13d → -14d |
| C125-1400 | Conduit from UPS to VFD - C120 | 2026-10-21 → 2026-10-26 (+5d) | 2026-10-21 → 2026-10-26 (+5d) |  | -11d → -14d |
| C125-1450 | Penetrate MC Cable into MPZ - C120 | 2026-10-21 → 2026-10-26 (+5d) | 2026-10-21 → 2026-10-26 (+5d) |  | -10d → -13d |
| C125-1140 | Megger Chiller Cable - C120 | 2026-10-22 → 2026-10-27 (+5d) | 2026-10-22 → 2026-10-27 (+5d) |  | -10d → -13d |
| C125-1160 | Penetrate MC into SWD - C120 | 2026-10-22 → 2026-10-27 (+5d) | 2026-10-22 → 2026-10-27 (+5d) |  | -13d → -16d |
| C125-1170 | Penetrat MC into UPS - C120 | 2026-10-22 → 2026-10-27 (+5d) | 2026-10-22 → 2026-10-27 (+5d) |  | -13d → -16d |
| C125-1210 | Pull Cable to Elec Room CRAH - C120 | 2026-10-22 → 2026-10-27 (+5d) | 2026-10-22 → 2026-10-27 (+5d) |  | -11d → -14d |
| C125-1300 | Terminate MOD-02 - C120 | 2026-10-26 → 2026-10-27 (+1d) | 2026-10-26 → 2026-10-27 (+1d) |  | -13d → -14d |
| C125-1360 | Pull ATS Cable - C120 | 2026-10-22 → 2026-10-27 (+5d) | 2026-10-22 → 2026-10-27 (+5d) |  | -13d → -16d |
| C125-1410 | Pull Cable from UPS to VFD - C120 | 2026-10-22 → 2026-10-27 (+5d) | 2026-10-22 → 2026-10-27 (+5d) |  | -11d → -14d |
| C125-1460 | Megger MPZ Cable - C120 | 2026-10-22 → 2026-10-27 (+5d) | 2026-10-22 → 2026-10-27 (+5d) |  | -10d → -13d |
| C125-1490 | All Skid Grounding - C120 | 2026-10-22 → 2026-10-27 (+5d) | 2026-10-23 → 2026-10-28 (+5d) |  | -10d → -13d |
| C125-1150 | Terminations at Chiller - C120 | 2026-10-23 → 2026-10-28 (+5d) | 2026-10-23 → 2026-10-28 (+5d) |  | -10d → -13d |
| C125-1220 | Megger MC Cable from Skid to Elec Room CRAH - C120 | 2026-10-23 → 2026-10-28 (+5d) | 2026-10-23 → 2026-10-28 (+5d) |  | -11d → -14d |
| C125-1240 | Megger MC Cable from Skid to MOD - C120 | 2026-10-23 → 2026-10-28 (+5d) | 2026-10-23 → 2026-10-28 (+5d) |  | -13d → -16d |
| C125-1420 | Megger Cable from UPS to VFD - C120 | 2026-10-23 → 2026-10-28 (+5d) | 2026-10-23 → 2026-10-28 (+5d) |  | -11d → -14d |
| C125-1470 | Terminate MC Feed at MPZ - C120 | 2026-10-23 → 2026-10-28 (+5d) | 2026-10-23 → 2026-10-28 (+5d) |  | -10d → -13d |
| C125-1480 | Terminate Cables in VFD - C120 | 2026-10-23 → 2026-10-28 (+5d) | 2026-10-23 → 2026-10-28 (+5d) |  | -10d → -13d |
| C125-1630 | Megger Cable at ATS - C120 | 2026-10-23 → 2026-10-28 (+5d) | 2026-10-23 → 2026-10-28 (+5d) |  | -13d → -16d |
| C125-1230 | Terminate Elec Room CRAH - C120 | 2026-10-26 → 2026-10-29 (+3d) | 2026-10-26 → 2026-10-29 (+3d) |  | -11d → -14d |
| C125-1290 | Terminate MOD-01 - C120 | 2026-10-26 → 2026-10-29 (+3d) | 2026-10-26 → 2026-10-29 (+3d) |  | -13d → -16d |
| C125-1310 | Terminate at Mechanical Equipment - C120 | 2026-10-26 → 2026-10-29 (+3d) | 2026-10-26 → 2026-10-29 (+3d) |  | -13d → -16d |
| C125-1370 | Terminate ATS Cable at Busplugs & ATSs - C120 | 2026-10-26 → 2026-10-29 (+3d) | 2026-10-27 → 2026-10-30 (+3d) |  | -13d → -16d |
| C125-1430 | Terminate Cables in UPS - C120 | 2026-10-26 → 2026-10-29 (+3d) | 2026-10-26 → 2026-10-29 (+3d) |  | -11d → -14d |
| C125-1570 | QC 2.2 checklist VFD - C120 | 2026-10-26 → 2026-10-29 (+3d) | 2026-10-26 → 2026-10-29 (+3d) |  | -10d → -13d |
| C125-1610 | QC 2.2 checklist Chiller - C120 | 2026-10-26 → 2026-10-29 (+3d) | 2026-10-26 → 2026-10-29 (+3d) |  | -10d → -13d |
| C125-1650 | QC 2.2 checklist MPZ - C120 | 2026-10-26 → 2026-10-29 (+3d) | 2026-10-26 → 2026-10-29 (+3d) |  | -10d → -13d |
| C125-1050 | Cable bus Install - C120 | 2026-10-27 → 2026-10-30 (+3d) | 2026-10-28 → 2026-11-02 (+5d) |  | -17d → -20d |
| C125-1320 | Mechanical Equipment/Tray Grounding - C120 | 2026-10-27 → 2026-10-30 (+3d) | 2026-10-28 → 2026-11-02 (+5d) |  | -13d → -16d |
| C125-1540 | QC 2.2 checklist UPS - C120 | 2026-10-27 → 2026-10-30 (+3d) | 2026-10-27 → 2026-10-30 (+3d) |  | -11d → -14d |

| ID | Task | Start | Finish | Complete | Total float |
| --- | --- | --- | --- | --- | --- |
| C125-1550 | QC 2.2 checklist Elec Room CRAH - C120 | 2026-10-27 → 2026-10-30 (+3d) | 2026-10-27 → 2026-10-30 (+3d) |  | -11d → -14d |
| C125-1560 | QC 2.2 Mechanical Equipment - C120 | 2026-10-27 → 2026-10-30 (+3d) | 2026-10-27 → 2026-10-30 (+3d) |  | -11d → -14d |
| C125-1380 | ATS Lashing - C120 | 2026-10-28 → 2026-11-02 (+5d) | 2026-10-28 → 2026-11-02 (+5d) |  | -13d → -16d |
| C125-1060 | Cable pulled to A & P Xfmrs - C120 | 2026-10-29 → 2026-11-03 (+5d) | 2026-10-29 → 2026-11-03 (+5d) |  | -17d → -20d |
| C125-1500 | QC 2.2 checklist MOD-01 - C120 | 2026-10-29 → 2026-11-03 (+5d) | 2026-10-29 → 2026-11-03 (+5d) |  | -13d → -16d |
| C125-1510 | QC 2.2 checklist MOD-02 - C120 | 2026-10-29 → 2026-11-03 (+5d) | 2026-10-29 → 2026-11-03 (+5d) |  | -13d → -16d |
| C125-1530 | QC 2.2 checklist ATSs - C120 | 2026-10-29 → 2026-11-03 (+5d) | 2026-10-29 → 2026-11-03 (+5d) |  | -13d → -16d |
| C125-1640 | QC 2.2 checklist Busplugs - C120 | 2026-10-29 → 2026-11-03 (+5d) | 2026-10-29 → 2026-11-03 (+5d) |  | -13d → -16d |
| C125-1070 | Megger Cable Bus Cable - C120 | 2026-10-30 → 2026-11-04 (+5d) | 2026-10-30 → 2026-11-04 (+5d) |  | -17d → -20d |
| C125-1080 | Cable Bus inspection and covers - C120 | 2026-10-30 → 2026-11-04 (+5d) | 2026-10-30 → 2026-11-04 (+5d) |  | -15d → -18d |
| C125-1090 | Terminations at Xfmrs - C120 | 2026-11-02 → 2026-11-05 (+3d) | 2026-11-03 → 2026-11-06 (+3d) |  | -17d → -20d |
| C125-1100 | Terminations at SWD - C120 | 2026-11-02 → 2026-11-05 (+3d) | 2026-11-03 → 2026-11-06 (+3d) |  | -17d → -20d |
| C125-1580 | QC 2.2 checklist SWD - C120 | 2026-11-04 → 2026-11-09 (+5d) | 2026-11-04 → 2026-11-09 (+5d) |  | -17d → -20d |
| C125-1600 | QC 2.2 checklist XFMR - C120 | 2026-11-04 → 2026-11-09 (+5d) | 2026-11-04 → 2026-11-09 (+5d) |  | -17d → -20d |
| C125-1590 | Ready for FTE - C120 | 2026-11-05 → 2026-11-10 (+5d) | 2026-11-05 → 2026-11-10 (+5d) |  | -17d → -20d |
| 4 | **D120** | 2026-10-15 → 2026-10-16 (+1d) | 2026-11-05 → 2026-11-10 (+5d) |  |  |
| D125-1010 | Set MODs - D120 | 2026-10-19 → 2026-10-16 A (-3d) | 2026-10-20 → 2026-10-17 A (-3d) | 0% → 100% | -13d → none |
| D125-1330 | Busduct installed - D120 | 2026-10-15 → 2026-10-20 (+5d) | 2026-10-15 → 2026-10-20 (+5d) |  | -18d → -21d |
| D125-1340 | Busplugs/Tap Boxes installed - D120 | 2026-10-16 → 2026-10-21 (+5d) | 2026-10-16 → 2026-10-21 (+5d) |  | -18d → -21d |
| D125-1000 | Set Skid - D120 | 2026-10-19 → 2026-10-22 (+3d) | 2026-10-19 → 2026-10-22 (+3d) |  | -18d → -21d |
| D125-1030 | Cable bus Support installed - D120 | 2026-10-19 → 2026-10-22 (+3d) | 2026-10-20 → 2026-10-23 (+3d) |  | -13d → -16d |
| D125-1120 | Chiller feed box and conduit complete - D120 | 2026-10-19 → 2026-10-22 (+3d) | 2026-10-20 → 2026-10-23 (+3d) |  | -10d → -13d |
| D125-1180 | Penetrate MC into MOD-01 - D120 | 2026-10-21 → 2026-10-22 (+1d) | 2026-10-21 → 2026-10-22 (+1d) |  | -12d → -13d |
| D125-1190 | Penetrate MC into MOD-02 - D120 | 2026-10-21 → 2026-10-22 (+1d) | 2026-10-21 → 2026-10-22 (+1d) |  | -12d → -13d |
| D125-1250 | Pull MC from MOD-01 to Mechanical Equipment - D120 | 2026-10-21 → 2026-10-22 (+1d) | 2026-10-22 → 2026-10-23 (+1d) |  | -13d → -14d |
| D125-1260 | Pull MC from MOD-02 to Mechanical Equipment - D120 | 2026-10-21 → 2026-10-22 (+1d) | 2026-10-22 → 2026-10-23 (+1d) |  | -13d → -14d |
| D125-1040 | SWD top covers cut out - D120 | 2026-10-20 → 2026-10-23 (+3d) | 2026-10-26 → 2026-10-29 (+3d) |  | -17d → -20d |
| D125-1110 | Finish Cable Tray to Skid - D120 | 2026-10-20 → 2026-10-23 (+3d) | 2026-10-21 → 2026-10-26 (+5d) |  | -13d → -16d |
| D125-1350 | Install conduit from Busplug to ATSs - D120 | 2026-10-20 → 2026-10-23 (+3d) | 2026-10-21 → 2026-10-26 (+5d) |  | -13d → -16d |
| D125-1390 | Mount VFD Stand and VFD - D120 | 2026-10-20 → 2026-10-23 (+3d) | 2026-10-20 → 2026-10-23 (+3d) |  | -11d → -14d |
| D125-1440 | Mount MPZ - D120 | 2026-10-20 → 2026-10-23 (+3d) | 2026-10-20 → 2026-10-23 (+3d) |  | -10d → -13d |
| D125-1520 | Megger MC Cable from UPS to MOD - D120 | 2026-10-22 → 2026-10-23 (+1d) | 2026-10-22 → 2026-10-23 (+1d) |  | -12d → -13d |
| D125-1620 | Electrical Room CRAH Set - D120 | 2026-10-20 → 2026-10-23 (+3d) | 2026-10-20 → 2026-10-23 (+3d) |  | -11d → -14d |
| D125-1130 | Pull Chiller wire - D120 | 2026-10-21 → 2026-10-26 (+5d) | 2026-10-21 → 2026-10-26 (+5d) |  | -10d → -13d |
| D125-1200 | Finish Conduit to Elec Room CRAH - D120 | 2026-10-21 → 2026-10-26 (+5d) | 2026-10-21 → 2026-10-26 (+5d) |  | -11d → -14d |
| D125-1270 | Megger MC Cable from MOD-01 to Mechanical Equipment - D120 | 2026-10-23 → 2026-10-26 (+3d) | 2026-10-23 → 2026-10-26 (+3d) |  | -13d → -14d |
| D125-1280 | Megger MC Cable from MOD-02 to Mechanical Equipment - D120 | 2026-10-23 → 2026-10-26 (+3d) | 2026-10-23 → 2026-10-26 (+3d) |  | -13d → -14d |
| D125-1400 | Conduit from UPS to VFD - D120 | 2026-10-21 → 2026-10-26 (+5d) | 2026-10-21 → 2026-10-26 (+5d) |  | -11d → -14d |
| D125-1450 | Penetrate MC Cable into MPZ - D120 | 2026-10-21 → 2026-10-26 (+5d) | 2026-10-21 → 2026-10-26 (+5d) |  | -10d → -13d |
| D125-1140 | Megger Chiller Cable - D120 | 2026-10-22 → 2026-10-27 (+5d) | 2026-10-22 → 2026-10-27 (+5d) |  | -10d → -13d |
| D125-1160 | Penetrate MC into SWD - D120 | 2026-10-22 → 2026-10-27 (+5d) | 2026-10-22 → 2026-10-27 (+5d) |  | -13d → -16d |
| D125-1170 | Penetrat MC into UPS - D120 | 2026-10-22 → 2026-10-27 (+5d) | 2026-10-22 → 2026-10-27 (+5d) |  | -13d → -16d |
| D125-1210 | Pull Cable to Elec Room CRAH - D120 | 2026-10-22 → 2026-10-27 (+5d) | 2026-10-22 → 2026-10-27 (+5d) |  | -11d → -14d |
| D125-1300 | Terminate MOD-02 - D120 | 2026-10-26 → 2026-10-27 (+1d) | 2026-10-26 → 2026-10-27 (+1d) |  | -13d → -14d |
| D125-1360 | Pull ATS Cable - D120 | 2026-10-22 → 2026-10-27 (+5d) | 2026-10-22 → 2026-10-27 (+5d) |  | -13d → -16d |
| D125-1410 | Pull Cable from UPS to VFD - D120 | 2026-10-22 → 2026-10-27 (+5d) | 2026-10-22 → 2026-10-27 (+5d) |  | -11d → -14d |
| D125-1460 | Megger MPZ Cable - D120 | 2026-10-22 → 2026-10-27 (+5d) | 2026-10-22 → 2026-10-27 (+5d) |  | -10d → -13d |
| D125-1490 | All Skid Grounding - D120 | 2026-10-22 → 2026-10-27 (+5d) | 2026-10-23 → 2026-10-28 (+5d) |  | -10d → -13d |
| D125-1150 | Terminations at Chiller - D120 | 2026-10-23 → 2026-10-28 (+5d) | 2026-10-23 → 2026-10-28 (+5d) |  | -10d → -13d |
| D125-1220 | Megger MC Cable from Skid to Elec Room CRAH - D120 | 2026-10-23 → 2026-10-28 (+5d) | 2026-10-23 → 2026-10-28 (+5d) |  | -11d → -14d |
| D125-1240 | Megger MC Cable from Skid to MOD - D120 | 2026-10-23 → 2026-10-28 (+5d) | 2026-10-23 → 2026-10-28 (+5d) |  | -13d → -16d |
| D125-1420 | Megger Cable from UPS to VFD - D120 | 2026-10-23 → 2026-10-28 (+5d) | 2026-10-23 → 2026-10-28 (+5d) |  | -11d → -14d |
| D125-1470 | Terminate MC Feed at MPZ - D120 | 2026-10-23 → 2026-10-28 (+5d) | 2026-10-23 → 2026-10-28 (+5d) |  | -10d → -13d |
| D125-1480 | Terminate Cables in VFD - D120 | 2026-10-23 → 2026-10-28 (+5d) | 2026-10-23 → 2026-10-28 (+5d) |  | -10d → -13d |
| D125-1630 | Megger Cable at ATS - D120 | 2026-10-23 → 2026-10-28 (+5d) | 2026-10-23 → 2026-10-28 (+5d) |  | -13d → -16d |
| D125-1230 | Terminate Elec Room CRAH - D120 | 2026-10-26 → 2026-10-29 (+3d) | 2026-10-26 → 2026-10-29 (+3d) |  | -11d → -14d |
| D125-1290 | Terminate MOD-01 - D120 | 2026-10-26 → 2026-10-29 (+3d) | 2026-10-26 → 2026-10-29 (+3d) |  | -13d → -16d |
| D125-1310 | Terminate at Mechanical Equipment - D120 | 2026-10-26 → 2026-10-29 (+3d) | 2026-10-26 → 2026-10-29 (+3d) |  | -13d → -16d |
| D125-1370 | Terminate ATS Cable at Busplugs & ATSs - D120 | 2026-10-26 → 2026-10-29 (+3d) | 2026-10-27 → 2026-10-30 (+3d) |  | -13d → -16d |
| D125-1430 | Terminate Cables in UPS - D120 | 2026-10-26 → 2026-10-29 (+3d) | 2026-10-26 → 2026-10-29 (+3d) |  | -11d → -14d |
| D125-1570 | QC 2.2 checklist VFD - D120 | 2026-10-26 → 2026-10-29 (+3d) | 2026-10-26 → 2026-10-29 (+3d) |  | -10d → -13d |
| D125-1610 | QC 2.2 checklist Chiller - D120 | 2026-10-26 → 2026-10-29 (+3d) | 2026-10-26 → 2026-10-29 (+3d) |  | -10d → -13d |
| D125-1650 | QC 2.2 checklist MPZ - D120 | 2026-10-26 → 2026-10-29 (+3d) | 2026-10-26 → 2026-10-29 (+3d) |  | -10d → -13d |
| D125-1050 | Cable bus Install - D120 | 2026-10-27 → 2026-10-30 (+3d) | 2026-10-28 → 2026-11-02 (+5d) |  | -17d → -20d |
| D125-1320 | Mechanical Equipment/Tray Grounding - D120 | 2026-10-27 → 2026-10-30 (+3d) | 2026-10-28 → 2026-11-02 (+5d) |  | -13d → -16d |
| D125-1540 | QC 2.2 checklist UPS - D120 | 2026-10-27 → 2026-10-30 (+3d) | 2026-10-27 → 2026-10-30 (+3d) |  | -11d → -14d |
| D125-1550 | QC 2.2 checklist Elec Room CRAH - D120 | 2026-10-27 → 2026-10-30 (+3d) | 2026-10-27 → 2026-10-30 (+3d) |  | -11d → -14d |
| D125-1560 | QC 2.2 Mechanical Equipment - D120 | 2026-10-27 → 2026-10-30 (+3d) | 2026-10-27 → 2026-10-30 (+3d) |  | -11d → -14d |
| D125-1380 | ATS Lashing - D120 | 2026-10-28 → 2026-11-02 (+5d) | 2026-10-28 → 2026-11-02 (+5d) |  | -13d → -16d |
| D125-1060 | Cable pulled to A & P Xfmrs - D120 | 2026-10-29 → 2026-11-03 (+5d) | 2026-10-29 → 2026-11-03 (+5d) |  | -17d → -20d |

| ID | Task | Start | Finish | Complete | Total float |
| --- | --- | --- | --- | --- | --- |
| D125-1500 | QC 2.2 checklist MOD-01 - D120 | 2026-10-29 → 2026-11-03 (+5d) | 2026-10-29 → 2026-11-03 (+5d) |  | -13d → -16d |
| D125-1510 | QC 2.2 checklist MOD-02 - D120 | 2026-10-29 → 2026-11-03 (+5d) | 2026-10-29 → 2026-11-03 (+5d) |  | -13d → -16d |
| D125-1530 | QC 2.2 checklist ATSs - D120 | 2026-10-29 → 2026-11-03 (+5d) | 2026-10-29 → 2026-11-03 (+5d) |  | -13d → -16d |
| D125-1640 | QC 2.2 checklist Busplugs - D120 | 2026-10-29 → 2026-11-03 (+5d) | 2026-10-29 → 2026-11-03 (+5d) |  | -13d → -16d |
| D125-1070 | Megger Cable Bus Cable - D120 | 2026-10-30 → 2026-11-04 (+5d) | 2026-10-30 → 2026-11-04 (+5d) |  | -17d → -20d |
| D125-1080 | Cable Bus inspection and covers - D120 | 2026-10-30 → 2026-11-04 (+5d) | 2026-10-30 → 2026-11-04 (+5d) |  | -15d → -18d |
| D125-1090 | Terminations at Xfmrs - D120 | 2026-11-02 → 2026-11-05 (+3d) | 2026-11-03 → 2026-11-06 (+3d) |  | -17d → -20d |
| D125-1100 | Terminations at SWD - D120 | 2026-11-02 → 2026-11-05 (+3d) | 2026-11-03 → 2026-11-06 (+3d) |  | -17d → -20d |
| D125-1580 | QC 2.2 checklist SWD - D120 | 2026-11-04 → 2026-11-09 (+5d) | 2026-11-04 → 2026-11-09 (+5d) |  | -17d → -20d |
| D125-1600 | QC 2.2 checklist XFMR - D120 | 2026-11-04 → 2026-11-09 (+5d) | 2026-11-04 → 2026-11-09 (+5d) |  | -17d → -20d |
| D125-1590 | Ready for FTE - D120 | 2026-11-05 → 2026-11-10 (+5d) | 2026-11-05 → 2026-11-10 (+5d) |  | -17d → -20d |
| 5 | **E120** |  | 2026-11-05 → 2026-11-10 (+5d) |  |  |
| E125-1010 | Set MODs - E120 | 2026-10-19 → 2026-10-15 A (-4d) | 2026-10-20 → 2026-10-18 A (-2d) | 0% → 100% | -13d → none |
| E125-1330 | Busduct installed - E120 | 2026-10-15 → 2026-10-20 (+5d) | 2026-10-15 → 2026-10-20 (+5d) |  | -18d → -21d |
| E125-1340 | Busplugs/Tap Boxes installed - E120 | 2026-10-16 → 2026-10-21 (+5d) | 2026-10-16 → 2026-10-21 (+5d) |  | -18d → -21d |
| E125-1000 | Set Skid - E120 | 2026-10-19 → 2026-10-22 (+3d) | 2026-10-19 → 2026-10-22 (+3d) |  | -18d → -21d |
| E125-1030 | Cable bus Support installed - E120 | 2026-10-19 → 2026-10-22 (+3d) | 2026-10-20 → 2026-10-23 (+3d) |  | -13d → -16d |
| E125-1120 | Chiller feed box and conduit complete - E120 | 2026-10-19 → 2026-10-22 (+3d) | 2026-10-20 → 2026-10-23 (+3d) |  | -10d → -13d |
| E125-1180 | Penetrate MC into MOD-01 - E120 | 2026-10-21 → 2026-10-22 (+1d) | 2026-10-21 → 2026-10-22 (+1d) |  | -12d → -13d |
| E125-1190 | Penetrate MC into MOD-02 - E120 | 2026-10-21 → 2026-10-22 (+1d) | 2026-10-21 → 2026-10-22 (+1d) |  | -12d → -13d |
| E125-1250 | Pull MC from MOD-01 to Mechanical Equipment - E120 | 2026-10-21 → 2026-10-22 (+1d) | 2026-10-22 → 2026-10-23 (+1d) |  | -13d → -14d |
| E125-1260 | Pull MC from MOD-02 to Mechanical Equipment - E120 | 2026-10-21 → 2026-10-22 (+1d) | 2026-10-22 → 2026-10-23 (+1d) |  | -13d → -14d |
| E125-1040 | SWD top covers cut out - E120 | 2026-10-20 → 2026-10-23 (+3d) | 2026-10-26 → 2026-10-29 (+3d) |  | -17d → -20d |
| E125-1110 | Finish Cable Tray to Skid - E120 | 2026-10-20 → 2026-10-23 (+3d) | 2026-10-21 → 2026-10-26 (+5d) |  | -13d → -16d |
| E125-1350 | Install conduit from Busplug to ATSs - E120 | 2026-10-20 → 2026-10-23 (+3d) | 2026-10-21 → 2026-10-26 (+5d) |  | -13d → -16d |
| E125-1390 | Mount VFD Stand and VFD - E120 | 2026-10-20 → 2026-10-23 (+3d) | 2026-10-20 → 2026-10-23 (+3d) |  | -11d → -14d |
| E125-1440 | Mount MPZ - E120 | 2026-10-20 → 2026-10-23 (+3d) | 2026-10-20 → 2026-10-23 (+3d) |  | -10d → -13d |
| E125-1520 | Megger MC Cable from UPS to MOD - E120 | 2026-10-22 → 2026-10-23 (+1d) | 2026-10-22 → 2026-10-23 (+1d) |  | -12d → -13d |
| E125-1620 | Electrical Room CRAH Set - E120 | 2026-10-20 → 2026-10-23 (+3d) | 2026-10-20 → 2026-10-23 (+3d) |  | -11d → -14d |
| E125-1130 | Pull Chiller wire - E120 | 2026-10-21 → 2026-10-26 (+5d) | 2026-10-21 → 2026-10-26 (+5d) |  | -10d → -13d |
| E125-1200 | Finish Conduit to Elec Room CRAH - E120 | 2026-10-21 → 2026-10-26 (+5d) | 2026-10-21 → 2026-10-26 (+5d) |  | -11d → -14d |
| E125-1270 | Megger MC Cable from MOD-01 to Mechanical Equipment - E120 | 2026-10-23 → 2026-10-26 (+3d) | 2026-10-23 → 2026-10-26 (+3d) |  | -13d → -14d |
| E125-1280 | Megger MC Cable from MOD-02 to Mechanical Equipment - E120 | 2026-10-23 → 2026-10-26 (+3d) | 2026-10-23 → 2026-10-26 (+3d) |  | -13d → -14d |
| E125-1400 | Conduit from UPS to VFD - E120 | 2026-10-21 → 2026-10-26 (+5d) | 2026-10-21 → 2026-10-26 (+5d) |  | -11d → -14d |
| E125-1450 | Penetrate MC Cable into MPZ - E120 | 2026-10-21 → 2026-10-26 (+5d) | 2026-10-21 → 2026-10-26 (+5d) |  | -10d → -13d |
| E125-1140 | Megger Chiller Cable - E120 | 2026-10-22 → 2026-10-27 (+5d) | 2026-10-22 → 2026-10-27 (+5d) |  | -10d → -13d |
| E125-1160 | Penetrate MC into SWD - E120 | 2026-10-22 → 2026-10-27 (+5d) | 2026-10-22 → 2026-10-27 (+5d) |  | -13d → -16d |
| E125-1170 | Penetrat MC into UPS - E120 | 2026-10-22 → 2026-10-27 (+5d) | 2026-10-22 → 2026-10-27 (+5d) |  | -13d → -16d |
| E125-1210 | Pull Cable to Elec Room CRAH - E120 | 2026-10-22 → 2026-10-27 (+5d) | 2026-10-22 → 2026-10-27 (+5d) |  | -11d → -14d |
| E125-1300 | Terminate MOD-02 - E120 | 2026-10-26 → 2026-10-27 (+1d) | 2026-10-26 → 2026-10-27 (+1d) |  | -13d → -14d |
| E125-1360 | Pull ATS Cable - E120 | 2026-10-22 → 2026-10-27 (+5d) | 2026-10-22 → 2026-10-27 (+5d) |  | -13d → -16d |
| E125-1410 | Pull Cable from UPS to VFD - E120 | 2026-10-22 → 2026-10-27 (+5d) | 2026-10-22 → 2026-10-27 (+5d) |  | -11d → -14d |
| E125-1460 | Megger MPZ Cable - E120 | 2026-10-22 → 2026-10-27 (+5d) | 2026-10-22 → 2026-10-27 (+5d) |  | -10d → -13d |
| E125-1490 | All Skid Grounding - E120 | 2026-10-22 → 2026-10-27 (+5d) | 2026-10-23 → 2026-10-28 (+5d) |  | -10d → -13d |
| E125-1150 | Terminations at Chiller - E120 | 2026-10-23 → 2026-10-28 (+5d) | 2026-10-23 → 2026-10-28 (+5d) |  | -10d → -13d |
| E125-1220 | Megger MC Cable from Skid to Elec Room CRAH - E120 | 2026-10-23 → 2026-10-28 (+5d) | 2026-10-23 → 2026-10-28 (+5d) |  | -11d → -14d |
| E125-1240 | Megger MC Cable from Skid to MOD - E120 | 2026-10-23 → 2026-10-28 (+5d) | 2026-10-23 → 2026-10-28 (+5d) |  | -13d → -16d |
| E125-1420 | Megger Cable from UPS to VFD - E120 | 2026-10-23 → 2026-10-28 (+5d) | 2026-10-23 → 2026-10-28 (+5d) |  | -11d → -14d |
| E125-1470 | Terminate MC Feed at MPZ - E120 | 2026-10-23 → 2026-10-28 (+5d) | 2026-10-23 → 2026-10-28 (+5d) |  | -10d → -13d |
| E125-1480 | Terminate Cables in VFD - E120 | 2026-10-23 → 2026-10-28 (+5d) | 2026-10-23 → 2026-10-28 (+5d) |  | -10d → -13d |
| E125-1630 | Megger Cable at ATS - E120 | 2026-10-23 → 2026-10-28 (+5d) | 2026-10-23 → 2026-10-28 (+5d) |  | -13d → -16d |
| E125-1230 | Terminate Elec Room CRAH - E120 | 2026-10-26 → 2026-10-29 (+3d) | 2026-10-26 → 2026-10-29 (+3d) |  | -11d → -14d |
| E125-1290 | Terminate MOD-01 - E120 | 2026-10-26 → 2026-10-29 (+3d) | 2026-10-26 → 2026-10-29 (+3d) |  | -13d → -16d |
| E125-1310 | Terminate at Mechanical Equipment - E120 | 2026-10-26 → 2026-10-29 (+3d) | 2026-10-26 → 2026-10-29 (+3d) |  | -13d → -16d |
| E125-1370 | Terminate ATS Cable at Busplugs & ATSs - E120 | 2026-10-26 → 2026-10-29 (+3d) | 2026-10-27 → 2026-10-30 (+3d) |  | -13d → -16d |
| E125-1430 | Terminate Cables in UPS - E120 | 2026-10-26 → 2026-10-29 (+3d) | 2026-10-26 → 2026-10-29 (+3d) |  | -11d → -14d |
| E125-1570 | QC 2.2 checklist VFD - E120 | 2026-10-26 → 2026-10-29 (+3d) | 2026-10-26 → 2026-10-29 (+3d) |  | -10d → -13d |
| E125-1610 | QC 2.2 checklist Chiller - E120 | 2026-10-26 → 2026-10-29 (+3d) | 2026-10-26 → 2026-10-29 (+3d) |  | -10d → -13d |
| E125-1650 | QC 2.2 checklist MPZ - E120 | 2026-10-26 → 2026-10-29 (+3d) | 2026-10-26 → 2026-10-29 (+3d) |  | -10d → -13d |
| E125-1050 | Cable bus Install - E120 | 2026-10-27 → 2026-10-30 (+3d) | 2026-10-28 → 2026-11-02 (+5d) |  | -17d → -20d |
| E125-1320 | Mechanical Equipment/Tray Grounding - E120 | 2026-10-27 → 2026-10-30 (+3d) | 2026-10-28 → 2026-11-02 (+5d) |  | -13d → -16d |
| E125-1540 | QC 2.2 checklist UPS - E120 | 2026-10-27 → 2026-10-30 (+3d) | 2026-10-27 → 2026-10-30 (+3d) |  | -11d → -14d |
| E125-1550 | QC 2.2 checklist Elec Room CRAH - E120 | 2026-10-27 → 2026-10-30 (+3d) | 2026-10-27 → 2026-10-30 (+3d) |  | -11d → -14d |
| E125-1560 | QC 2.2 Mechanical Equipment - E120 | 2026-10-27 → 2026-10-30 (+3d) | 2026-10-27 → 2026-10-30 (+3d) |  | -11d → -14d |
| E125-1380 | ATS Lashing - E120 | 2026-10-28 → 2026-11-02 (+5d) | 2026-10-28 → 2026-11-02 (+5d) |  | -13d → -16d |
| E125-1060 | Cable pulled to A & P Xfmrs - E120 | 2026-10-29 → 2026-11-03 (+5d) | 2026-10-29 → 2026-11-03 (+5d) |  | -17d → -20d |
| E125-1500 | QC 2.2 checklist MOD-01 - E120 | 2026-10-29 → 2026-11-03 (+5d) | 2026-10-29 → 2026-11-03 (+5d) |  | -13d → -16d |
| E125-1510 | QC 2.2 checklist MOD-02 - E120 | 2026-10-29 → 2026-11-03 (+5d) | 2026-10-29 → 2026-11-03 (+5d) |  | -13d → -16d |
| E125-1530 | QC 2.2 checklist ATSs - E120 | 2026-10-29 → 2026-11-03 (+5d) | 2026-10-29 → 2026-11-03 (+5d) |  | -13d → -16d |
| E125-1640 | QC 2.2 checklist Busplugs - E120 | 2026-10-29 → 2026-11-03 (+5d) | 2026-10-29 → 2026-11-03 (+5d) |  | -13d → -16d |

| ID | Task | Start | Finish | Complete | Total float |
| --- | --- | --- | --- | --- | --- |
| E125-1070 | Megger Cable Bus Cable - E120 | 2026-10-30 → 2026-11-04 (+5d) | 2026-10-30 → 2026-11-04 (+5d) |  | -17d → -20d |
| E125-1080 | Cable Bus inspection and covers - E120 | 2026-10-30 → 2026-11-04 (+5d) | 2026-10-30 → 2026-11-04 (+5d) |  | -15d → -18d |
| E125-1090 | Terminations at Xfmrs - E120 | 2026-11-02 → 2026-11-05 (+3d) | 2026-11-03 → 2026-11-06 (+3d) |  | -17d → -20d |
| E125-1100 | Terminations at SWD - E120 | 2026-11-02 → 2026-11-05 (+3d) | 2026-11-03 → 2026-11-06 (+3d) |  | -17d → -20d |
| E125-1580 | QC 2.2 checklist SWD - E120 | 2026-11-04 → 2026-11-09 (+5d) | 2026-11-04 → 2026-11-09 (+5d) |  | -17d → -20d |
| E125-1600 | QC 2.2 checklist XFMR - E120 | 2026-11-04 → 2026-11-09 (+5d) | 2026-11-04 → 2026-11-09 (+5d) |  | -17d → -20d |
| E125-1590 | Ready for FTE - E120 | 2026-11-05 → 2026-11-10 (+5d) | 2026-11-05 → 2026-11-10 (+5d) |  | -17d → -20d |
| 6 | **F120** |  | 2026-11-05 → 2026-11-10 (+5d) |  |  |
| F125-1010 | Set MODs - F120 | 2026-10-19 → 2026-10-15 A (-4d) | 2026-10-20 → 2026-10-18 A (-2d) | 0% → 100% | -13d → none |
| F125-1330 | Busduct installed - F120 | 2026-10-15 → 2026-10-20 (+5d) | 2026-10-15 → 2026-10-20 (+5d) |  | -18d → -21d |
| F125-1340 | Busplugs/Tap Boxes installed - F120 | 2026-10-16 → 2026-10-21 (+5d) | 2026-10-16 → 2026-10-21 (+5d) |  | -18d → -21d |
| F125-1000 | Set Skid - F120 | 2026-10-19 → 2026-10-22 (+3d) | 2026-10-19 → 2026-10-22 (+3d) |  | -18d → -21d |
| F125-1030 | Cable bus Support installed - F120 | 2026-10-19 → 2026-10-22 (+3d) | 2026-10-20 → 2026-10-23 (+3d) |  | -13d → -16d |
| F125-1120 | Chiller feed box and conduit complete - F120 | 2026-10-19 → 2026-10-22 (+3d) | 2026-10-20 → 2026-10-23 (+3d) |  | -10d → -13d |
| F125-1180 | Penetrate MC into MOD-01 - F120 | 2026-10-21 → 2026-10-22 (+1d) | 2026-10-21 → 2026-10-22 (+1d) |  | -12d → -13d |
| F125-1190 | Penetrate MC into MOD-02 - F120 | 2026-10-21 → 2026-10-22 (+1d) | 2026-10-21 → 2026-10-22 (+1d) |  | -12d → -13d |
| F125-1250 | Pull MC from MOD-01 to Mechanical Equipment - F120 | 2026-10-21 → 2026-10-22 (+1d) | 2026-10-22 → 2026-10-23 (+1d) |  | -13d → -14d |
| F125-1260 | Pull MC from MOD-02 to Mechanical Equipment - F120 | 2026-10-21 → 2026-10-22 (+1d) | 2026-10-22 → 2026-10-23 (+1d) |  | -13d → -14d |
| F125-1040 | SWD top covers cut out - F120 | 2026-10-20 → 2026-10-23 (+3d) | 2026-10-26 → 2026-10-29 (+3d) |  | -17d → -20d |
| F125-1110 | Finish Cable Tray to Skid - F120 | 2026-10-20 → 2026-10-23 (+3d) | 2026-10-21 → 2026-10-26 (+5d) |  | -13d → -16d |
| F125-1350 | Install conduit from Busplug to ATSs - F120 | 2026-10-20 → 2026-10-23 (+3d) | 2026-10-21 → 2026-10-26 (+5d) |  | -13d → -16d |
| F125-1390 | Mount VFD Stand and VFD - F120 | 2026-10-20 → 2026-10-23 (+3d) | 2026-10-20 → 2026-10-23 (+3d) |  | -11d → -14d |
| F125-1440 | Mount MPZ - F120 | 2026-10-20 → 2026-10-23 (+3d) | 2026-10-20 → 2026-10-23 (+3d) |  | -10d → -13d |
| F125-1520 | Megger MC Cable from UPS to MOD - F120 | 2026-10-22 → 2026-10-23 (+1d) | 2026-10-22 → 2026-10-23 (+1d) |  | -12d → -13d |
| F125-1620 | Electrical Room CRAH Set - F120 | 2026-10-20 → 2026-10-23 (+3d) | 2026-10-20 → 2026-10-23 (+3d) |  | -11d → -14d |
| F125-1130 | Pull Chiller wire - F120 | 2026-10-21 → 2026-10-26 (+5d) | 2026-10-21 → 2026-10-26 (+5d) |  | -10d → -13d |
| F125-1200 | Finish Conduit to Elec Room CRAH - F120 | 2026-10-21 → 2026-10-26 (+5d) | 2026-10-21 → 2026-10-26 (+5d) |  | -11d → -14d |
| F125-1270 | Megger MC Cable from MOD-01 to Mechanical Equipment - F120 | 2026-10-23 → 2026-10-26 (+3d) | 2026-10-23 → 2026-10-26 (+3d) |  | -13d → -14d |
| F125-1280 | Megger MC Cable from MOD-02 to Mechanical Equipment - F120 | 2026-10-23 → 2026-10-26 (+3d) | 2026-10-23 → 2026-10-26 (+3d) |  | -13d → -14d |
| F125-1400 | Conduit from UPS to VFD - F120 | 2026-10-21 → 2026-10-26 (+5d) | 2026-10-21 → 2026-10-26 (+5d) |  | -11d → -14d |
| F125-1450 | Penetrate MC Cable into MPZ - F120 | 2026-10-21 → 2026-10-26 (+5d) | 2026-10-21 → 2026-10-26 (+5d) |  | -10d → -13d |
| F125-1140 | Megger Chiller Cable - F120 | 2026-10-22 → 2026-10-27 (+5d) | 2026-10-22 → 2026-10-27 (+5d) |  | -10d → -13d |
| F125-1160 | Penetrate MC into SWD - F120 | 2026-10-22 → 2026-10-27 (+5d) | 2026-10-22 → 2026-10-27 (+5d) |  | -13d → -16d |
| F125-1170 | Penetrat MC into UPS - F120 | 2026-10-22 → 2026-10-27 (+5d) | 2026-10-22 → 2026-10-27 (+5d) |  | -13d → -16d |
| F125-1210 | Pull Cable to Elec Room CRAH - F120 | 2026-10-22 → 2026-10-27 (+5d) | 2026-10-22 → 2026-10-27 (+5d) |  | -11d → -14d |
| F125-1300 | Terminate MOD-02 - F120 | 2026-10-26 → 2026-10-27 (+1d) | 2026-10-26 → 2026-10-27 (+1d) |  | -13d → -14d |
| F125-1360 | Pull ATS Cable - F120 | 2026-10-22 → 2026-10-27 (+5d) | 2026-10-22 → 2026-10-27 (+5d) |  | -13d → -16d |
| F125-1410 | Pull Cable from UPS to VFD - F120 | 2026-10-22 → 2026-10-27 (+5d) | 2026-10-22 → 2026-10-27 (+5d) |  | -11d → -14d |
| F125-1460 | Megger MPZ Cable - F120 | 2026-10-22 → 2026-10-27 (+5d) | 2026-10-22 → 2026-10-27 (+5d) |  | -10d → -13d |
| F125-1490 | All Skid Grounding - F120 | 2026-10-22 → 2026-10-27 (+5d) | 2026-10-23 → 2026-10-28 (+5d) |  | -10d → -13d |
| F125-1150 | Terminations at Chiller - F120 | 2026-10-23 → 2026-10-28 (+5d) | 2026-10-23 → 2026-10-28 (+5d) |  | -10d → -13d |
| F125-1220 | Megger MC Cable from Skid to Elec Room CRAH - F120 | 2026-10-23 → 2026-10-28 (+5d) | 2026-10-23 → 2026-10-28 (+5d) |  | -11d → -14d |
| F125-1240 | Megger MC Cable from Skid to MOD - F120 | 2026-10-23 → 2026-10-28 (+5d) | 2026-10-23 → 2026-10-28 (+5d) |  | -13d → -16d |
| F125-1420 | Megger Cable from UPS to VFD - F120 | 2026-10-23 → 2026-10-28 (+5d) | 2026-10-23 → 2026-10-28 (+5d) |  | -11d → -14d |
| F125-1470 | Terminate MC Feed at MPZ - F120 | 2026-10-23 → 2026-10-28 (+5d) | 2026-10-23 → 2026-10-28 (+5d) |  | -10d → -13d |
| F125-1480 | Terminate Cables in VFD - F120 | 2026-10-23 → 2026-10-28 (+5d) | 2026-10-23 → 2026-10-28 (+5d) |  | -10d → -13d |
| F125-1630 | Megger Cable at ATS - F120 | 2026-10-23 → 2026-10-28 (+5d) | 2026-10-23 → 2026-10-28 (+5d) |  | -13d → -16d |
| F125-1230 | Terminate Elec Room CRAH - F120 | 2026-10-26 → 2026-10-29 (+3d) | 2026-10-26 → 2026-10-29 (+3d) |  | -11d → -14d |
| F125-1290 | Terminate MOD-01 - F120 | 2026-10-26 → 2026-10-29 (+3d) | 2026-10-26 → 2026-10-29 (+3d) |  | -13d → -16d |
| F125-1310 | Terminate at Mechanical Equipment - F120 | 2026-10-26 → 2026-10-29 (+3d) | 2026-10-26 → 2026-10-29 (+3d) |  | -13d → -16d |
| F125-1370 | Terminate ATS Cable at Busplugs & ATSs - F120 | 2026-10-26 → 2026-10-29 (+3d) | 2026-10-27 → 2026-10-30 (+3d) |  | -13d → -16d |
| F125-1430 | Terminate Cables in UPS - F120 | 2026-10-26 → 2026-10-29 (+3d) | 2026-10-26 → 2026-10-29 (+3d) |  | -11d → -14d |
| F125-1570 | QC 2.2 checklist VFD - F120 | 2026-10-26 → 2026-10-29 (+3d) | 2026-10-26 → 2026-10-29 (+3d) |  | -10d → -13d |
| F125-1610 | QC 2.2 checklist Chiller - F120 | 2026-10-26 → 2026-10-29 (+3d) | 2026-10-26 → 2026-10-29 (+3d) |  | -10d → -13d |
| F125-1650 | QC 2.2 checklist MPZ - F120 | 2026-10-26 → 2026-10-29 (+3d) | 2026-10-26 → 2026-10-29 (+3d) |  | -10d → -13d |
| F125-1050 | Cable bus Install - F120 | 2026-10-27 → 2026-10-30 (+3d) | 2026-10-28 → 2026-11-02 (+5d) |  | -17d → -20d |
| F125-1320 | Mechanical Equipment/Tray Grounding - F120 | 2026-10-27 → 2026-10-30 (+3d) | 2026-10-28 → 2026-11-02 (+5d) |  | -13d → -16d |
| F125-1540 | QC 2.2 checklist UPS - F120 | 2026-10-27 → 2026-10-30 (+3d) | 2026-10-27 → 2026-10-30 (+3d) |  | -11d → -14d |
| F125-1550 | QC 2.2 checklist Elec Room CRAH - F120 | 2026-10-27 → 2026-10-30 (+3d) | 2026-10-27 → 2026-10-30 (+3d) |  | -11d → -14d |
| F125-1560 | QC 2.2 Mechanical Equipment - F120 | 2026-10-27 → 2026-10-30 (+3d) | 2026-10-27 → 2026-10-30 (+3d) |  | -11d → -14d |
| F125-1380 | ATS Lashing - F120 | 2026-10-28 → 2026-11-02 (+5d) | 2026-10-28 → 2026-11-02 (+5d) |  | -13d → -16d |
| F125-1060 | Cable pulled to A & P Xfmrs - F120 | 2026-10-29 → 2026-11-03 (+5d) | 2026-10-29 → 2026-11-03 (+5d) |  | -17d → -20d |
| F125-1500 | QC 2.2 checklist MOD-01 - F120 | 2026-10-29 → 2026-11-03 (+5d) | 2026-10-29 → 2026-11-03 (+5d) |  | -13d → -16d |
| F125-1510 | QC 2.2 checklist MOD-02 - F120 | 2026-10-29 → 2026-11-03 (+5d) | 2026-10-29 → 2026-11-03 (+5d) |  | -13d → -16d |
| F125-1530 | QC 2.2 checklist ATSs - F120 | 2026-10-29 → 2026-11-03 (+5d) | 2026-10-29 → 2026-11-03 (+5d) |  | -13d → -16d |
| F125-1640 | QC 2.2 checklist Busplugs - F120 | 2026-10-29 → 2026-11-03 (+5d) | 2026-10-29 → 2026-11-03 (+5d) |  | -13d → -16d |
| F125-1070 | Megger Cable Bus Cable - F120 | 2026-10-30 → 2026-11-04 (+5d) | 2026-10-30 → 2026-11-04 (+5d) |  | -17d → -20d |
| F125-1080 | Cable Bus inspection and covers - F120 | 2026-10-30 → 2026-11-04 (+5d) | 2026-10-30 → 2026-11-04 (+5d) |  | -15d → -18d |
| F125-1090 | Terminations at Xfmrs - F120 | 2026-11-02 → 2026-11-05 (+3d) | 2026-11-03 → 2026-11-06 (+3d) |  | -17d → -20d |
| F125-1100 | Terminations at SWD - F120 | 2026-11-02 → 2026-11-05 (+3d) | 2026-11-03 → 2026-11-06 (+3d) |  | -17d → -20d |

| ID | Task | Start | Finish | Complete | Total float |
| --- | --- | --- | --- | --- | --- |
| F125-1580 | QC 2.2 checklist SWD - F120 | 2026-11-04 → 2026-11-09 (+5d) | 2026-11-04 → 2026-11-09 (+5d) |  | -17d → -20d |
| F125-1600 | QC 2.2 checklist XFMR - F120 | 2026-11-04 → 2026-11-09 (+5d) | 2026-11-04 → 2026-11-09 (+5d) |  | -17d → -20d |
| F125-1590 | Ready for FTE - F120 | 2026-11-05 → 2026-11-10 (+5d) | 2026-11-05 → 2026-11-10 (+5d) |  | -17d → -20d |
| 7 | **G120** | 2026-10-16 → 2026-10-15 (-1d) | 2026-11-06 → 2026-11-11 (+5d) |  |  |
| G125-1010 | Set MODs - G120 | 2026-10-20 → 2026-10-15 A (-5d) | 2026-10-21 → 2026-10-18 A (-3d) | 0% → 100% | -14d → none |
| G125-1330 | Busduct installed - G120 | 2026-10-16 → 2026-10-21 (+5d) | 2026-10-16 → 2026-10-21 (+5d) |  | -18d → -21d |
| G125-1340 | Busplugs/Tap Boxes installed - G120 | 2026-10-19 → 2026-10-22 (+3d) | 2026-10-19 → 2026-10-22 (+3d) |  | -18d → -21d |
| G125-1000 | Set Skid - G120 | 2026-10-20 → 2026-10-23 (+3d) | 2026-10-20 → 2026-10-23 (+3d) |  | -18d → -21d |
| G125-1030 | Cable bus Support installed - G120 | 2026-10-20 → 2026-10-23 (+3d) | 2026-10-21 → 2026-10-26 (+5d) |  | -14d → -17d |
| G125-1120 | Chiller feed box and conduit complete - G120 | 2026-10-20 → 2026-10-23 (+3d) | 2026-10-21 → 2026-10-26 (+5d) |  | -11d → -14d |
| G125-1180 | Penetrate MC into MOD-01 - G120 | 2026-10-22 → 2026-10-23 (+1d) | 2026-10-22 → 2026-10-23 (+1d) |  | -13d → -14d |
| G125-1190 | Penetrate MC into MOD-02 - G120 | 2026-10-22 → 2026-10-23 (+1d) | 2026-10-22 → 2026-10-23 (+1d) |  | -13d → -14d |
| G125-1250 | Pull MC from MOD-01 to Mechanical Equipment - G120 | 2026-10-22 → 2026-10-23 (+1d) | 2026-10-23 → 2026-10-26 (+3d) |  | -14d → -15d |
| G125-1260 | Pull MC from MOD-02 to Mechanical Equipment - G120 | 2026-10-22 → 2026-10-23 (+1d) | 2026-10-23 → 2026-10-26 (+3d) |  | -14d → -15d |
| G125-1040 | SWD top covers cut out - G120 | 2026-10-21 → 2026-10-26 (+5d) | 2026-10-27 → 2026-10-30 (+3d) |  | -18d → -21d |
| G125-1110 | Finish Cable Tray to Skid - G120 | 2026-10-21 → 2026-10-26 (+5d) | 2026-10-22 → 2026-10-27 (+5d) |  | -14d → -17d |
| G125-1350 | Install conduit from Busplug to ATSs - G120 | 2026-10-21 → 2026-10-26 (+5d) | 2026-10-22 → 2026-10-27 (+5d) |  | -14d → -17d |
| G125-1390 | Mount VFD Stand and VFD - G120 | 2026-10-21 → 2026-10-26 (+5d) | 2026-10-21 → 2026-10-26 (+5d) |  | -12d → -15d |
| G125-1440 | Mount MPZ - G120 | 2026-10-21 → 2026-10-26 (+5d) | 2026-10-21 → 2026-10-26 (+5d) |  | -11d → -14d |
| G125-1520 | Megger MC Cable from UPS to MOD - G120 | 2026-10-23 → 2026-10-26 (+3d) | 2026-10-23 → 2026-10-26 (+3d) |  | -13d → -14d |
| G125-1620 | Electrical Room CRAH Set - G120 | 2026-10-21 → 2026-10-26 (+5d) | 2026-10-21 → 2026-10-26 (+5d) |  | -12d → -15d |
| G125-1130 | Pull Chiller wire - G120 | 2026-10-22 → 2026-10-27 (+5d) | 2026-10-22 → 2026-10-27 (+5d) |  | -11d → -14d |
| G125-1200 | Finish Conduit to Elec Room CRAH - G120 | 2026-10-22 → 2026-10-27 (+5d) | 2026-10-22 → 2026-10-27 (+5d) |  | -12d → -15d |
| G125-1270 | Megger MC Cable from MOD-01 to Mechanical Equipment - G120 | 2026-10-26 → 2026-10-27 (+1d) | 2026-10-26 → 2026-10-27 (+1d) |  | -14d → -15d |
| G125-1280 | Megger MC Cable from MOD-02 to Mechanical Equipment - G120 | 2026-10-26 → 2026-10-27 (+1d) | 2026-10-26 → 2026-10-27 (+1d) |  | -14d → -15d |
| G125-1400 | Conduit from UPS to VFD - G120 | 2026-10-22 → 2026-10-27 (+5d) | 2026-10-22 → 2026-10-27 (+5d) |  | -12d → -15d |
| G125-1450 | Penetrate MC Cable into MPZ - G120 | 2026-10-22 → 2026-10-27 (+5d) | 2026-10-22 → 2026-10-27 (+5d) |  | -11d → -14d |
| G125-1140 | Megger Chiller Cable - G120 | 2026-10-23 → 2026-10-28 (+5d) | 2026-10-23 → 2026-10-28 (+5d) |  | -11d → -14d |
| G125-1160 | Penetrate MC into SWD - G120 | 2026-10-23 → 2026-10-28 (+5d) | 2026-10-23 → 2026-10-28 (+5d) |  | -14d → -17d |
| G125-1170 | Penetrat MC into UPS - G120 | 2026-10-23 → 2026-10-28 (+5d) | 2026-10-23 → 2026-10-28 (+5d) |  | -14d → -17d |
| G125-1210 | Pull Cable to Elec Room CRAH - G120 | 2026-10-23 → 2026-10-28 (+5d) | 2026-10-23 → 2026-10-28 (+5d) |  | -12d → -15d |
| G125-1300 | Terminate MOD-02 - G120 | 2026-10-27 → 2026-10-28 (+1d) | 2026-10-27 → 2026-10-28 (+1d) |  | -14d → -15d |
| G125-1360 | Pull ATS Cable - G120 | 2026-10-23 → 2026-10-28 (+5d) | 2026-10-23 → 2026-10-28 (+5d) |  | -14d → -17d |
| G125-1410 | Pull Cable from UPS to VFD - G120 | 2026-10-23 → 2026-10-28 (+5d) | 2026-10-23 → 2026-10-28 (+5d) |  | -12d → -15d |
| G125-1460 | Megger MPZ Cable - G120 | 2026-10-23 → 2026-10-28 (+5d) | 2026-10-23 → 2026-10-28 (+5d) |  | -11d → -14d |
| G125-1490 | All Skid Grounding - G120 | 2026-10-23 → 2026-10-28 (+5d) | 2026-10-26 → 2026-10-29 (+3d) |  | -11d → -14d |
| G125-1150 | Terminations at Chiller - G120 | 2026-10-26 → 2026-10-29 (+3d) | 2026-10-26 → 2026-10-29 (+3d) |  | -11d → -14d |
| G125-1220 | Megger MC Cable from Skid to Elec Room CRAH - G120 | 2026-10-26 → 2026-10-29 (+3d) | 2026-10-26 → 2026-10-29 (+3d) |  | -12d → -15d |
| G125-1240 | Megger MC Cable from Skid to MOD - G120 | 2026-10-26 → 2026-10-29 (+3d) | 2026-10-26 → 2026-10-29 (+3d) |  | -14d → -17d |
| G125-1420 | Megger Cable from UPS to VFD - G120 | 2026-10-26 → 2026-10-29 (+3d) | 2026-10-26 → 2026-10-29 (+3d) |  | -12d → -15d |
| G125-1470 | Terminate MC Feed at MPZ - G120 | 2026-10-26 → 2026-10-29 (+3d) | 2026-10-26 → 2026-10-29 (+3d) |  | -11d → -14d |
| G125-1480 | Terminate Cables in VFD - G120 | 2026-10-26 → 2026-10-29 (+3d) | 2026-10-26 → 2026-10-29 (+3d) |  | -11d → -14d |
| G125-1630 | Megger Cable at ATS - G120 | 2026-10-26 → 2026-10-29 (+3d) | 2026-10-26 → 2026-10-29 (+3d) |  | -14d → -17d |
| G125-1230 | Terminate Elec Room CRAH - G120 | 2026-10-27 → 2026-10-30 (+3d) | 2026-10-27 → 2026-10-30 (+3d) |  | -12d → -15d |
| G125-1290 | Terminate MOD-01 - G120 | 2026-10-27 → 2026-10-30 (+3d) | 2026-10-27 → 2026-10-30 (+3d) |  | -14d → -17d |
| G125-1310 | Terminate at Mechanical Equipment - G120 | 2026-10-27 → 2026-10-30 (+3d) | 2026-10-27 → 2026-10-30 (+3d) |  | -14d → -17d |
| G125-1370 | Terminate ATS Cable at Busplugs & ATSs - G120 | 2026-10-27 → 2026-10-30 (+3d) | 2026-10-28 → 2026-11-02 (+5d) |  | -14d → -17d |
| G125-1430 | Terminate Cables in UPS - G120 | 2026-10-27 → 2026-10-30 (+3d) | 2026-10-27 → 2026-10-30 (+3d) |  | -12d → -15d |
| G125-1570 | QC 2.2 checklist VFD - G120 | 2026-10-27 → 2026-10-30 (+3d) | 2026-10-27 → 2026-10-30 (+3d) |  | -11d → -14d |
| G125-1610 | QC 2.2 checklist Chiller - G120 | 2026-10-27 → 2026-10-30 (+3d) | 2026-10-27 → 2026-10-30 (+3d) |  | -11d → -14d |
| G125-1650 | QC 2.2 checklist MPZ - G120 | 2026-10-27 → 2026-10-30 (+3d) | 2026-10-27 → 2026-10-30 (+3d) |  | -11d → -14d |
| G125-1050 | Cable bus Install - G120 | 2026-10-28 → 2026-11-02 (+5d) | 2026-10-29 → 2026-11-03 (+5d) |  | -18d → -21d |
| G125-1320 | Mechanical Equipment/Tray Grounding - G120 | 2026-10-28 → 2026-11-02 (+5d) | 2026-10-29 → 2026-11-03 (+5d) |  | -14d → -17d |
| G125-1540 | QC 2.2 checklist UPS - G120 | 2026-10-28 → 2026-11-02 (+5d) | 2026-10-28 → 2026-11-02 (+5d) |  | -12d → -15d |
| G125-1550 | QC 2.2 checklist Elec Room CRAH - G120 | 2026-10-28 → 2026-11-02 (+5d) | 2026-10-28 → 2026-11-02 (+5d) |  | -12d → -15d |
| G125-1560 | QC 2.2 Mechanical Equipment - G120 | 2026-10-28 → 2026-11-02 (+5d) | 2026-10-28 → 2026-11-02 (+5d) |  | -12d → -15d |
| G125-1380 | ATS Lashing - G120 | 2026-10-29 → 2026-11-03 (+5d) | 2026-10-29 → 2026-11-03 (+5d) |  | -14d → -17d |
| G125-1060 | Cable pulled to A & P Xfmrs - G120 | 2026-10-30 → 2026-11-04 (+5d) | 2026-10-30 → 2026-11-04 (+5d) |  | -18d → -21d |
| G125-1500 | QC 2.2 checklist MOD-01 - G120 | 2026-10-30 → 2026-11-04 (+5d) | 2026-10-30 → 2026-11-04 (+5d) |  | -14d → -17d |
| G125-1510 | QC 2.2 checklist MOD-02 - G120 | 2026-10-30 → 2026-11-04 (+5d) | 2026-10-30 → 2026-11-04 (+5d) |  | -14d → -17d |
| G125-1530 | QC 2.2 checklist ATSs - G120 | 2026-10-30 → 2026-11-04 (+5d) | 2026-10-30 → 2026-11-04 (+5d) |  | -14d → -17d |
| G125-1640 | QC 2.2 checklist Busplugs - G120 | 2026-10-30 → 2026-11-04 (+5d) | 2026-10-30 → 2026-11-04 (+5d) |  | -14d → -17d |
| G125-1070 | Megger Cable Bus Cable - G120 | 2026-11-02 → 2026-11-05 (+3d) | 2026-11-02 → 2026-11-05 (+3d) |  | -18d → -21d |
| G125-1080 | Cable Bus inspection and covers - G120 | 2026-11-02 → 2026-11-05 (+3d) | 2026-11-02 → 2026-11-05 (+3d) |  | -16d → -19d |
| G125-1090 | Terminations at Xfmrs - G120 | 2026-11-03 → 2026-11-06 (+3d) | 2026-11-04 → 2026-11-09 (+5d) |  | -18d → -21d |
| G125-1100 | Terminations at SWD - G120 | 2026-11-03 → 2026-11-06 (+3d) | 2026-11-04 → 2026-11-09 (+5d) |  | -18d → -21d |
| G125-1580 | QC 2.2 checklist SWD - G120 | 2026-11-05 → 2026-11-10 (+5d) | 2026-11-05 → 2026-11-10 (+5d) |  | -18d → -21d |
| G125-1600 | QC 2.2 checklist XFMR - G120 | 2026-11-05 → 2026-11-10 (+5d) | 2026-11-05 → 2026-11-10 (+5d) |  | -18d → -21d |
| G125-1590 | Ready for FTE - G120 | 2026-11-06 → 2026-11-11 (+5d) | 2026-11-06 → 2026-11-11 (+5d) |  | -18d → -21d |
| 9 | **H120** | 2026-10-16 → 2026-10-15 (-1d) | 2026-11-06 → 2026-11-11 (+5d) |  |  |

| ID | Task | Start | Finish | Complete | Total float |
| --- | --- | --- | --- | --- | --- |
| H125-1010 | Set MODs - H120 | 2026-10-20 → 2026-10-15 A (-5d) | 2026-10-21 → 2026-10-18 A (-3d) | 0% → 100% | -14d → none |
| H125-1330 | Busduct installed - H120 | 2026-10-16 → 2026-10-21 (+5d) | 2026-10-16 → 2026-10-21 (+5d) |  | -18d → -21d |
| H125-1340 | Busplugs/Tap Boxes installed - H120 | 2026-10-19 → 2026-10-22 (+3d) | 2026-10-19 → 2026-10-22 (+3d) |  | -18d → -21d |
| H125-1000 | Set Skid - H120 | 2026-10-20 → 2026-10-23 (+3d) | 2026-10-20 → 2026-10-23 (+3d) |  | -18d → -21d |
| H125-1030 | Cable bus Support installed - H120 | 2026-10-20 → 2026-10-23 (+3d) | 2026-10-21 → 2026-10-26 (+5d) |  | -14d → -17d |
| H125-1120 | Chiller feed box and conduit complete - H120 | 2026-10-20 → 2026-10-23 (+3d) | 2026-10-21 → 2026-10-26 (+5d) |  | -11d → -14d |
| H125-1180 | Penetrate MC into MOD-01 - H120 | 2026-10-22 → 2026-10-23 (+1d) | 2026-10-22 → 2026-10-23 (+1d) |  | -13d → -14d |
| H125-1190 | Penetrate MC into MOD-02 - H120 | 2026-10-22 → 2026-10-23 (+1d) | 2026-10-22 → 2026-10-23 (+1d) |  | -13d → -14d |
| H125-1250 | Pull MC from MOD-01 to Mechanical Equipment - H120 | 2026-10-22 → 2026-10-23 (+1d) | 2026-10-23 → 2026-10-26 (+3d) |  | -14d → -15d |
| H125-1260 | Pull MC from MOD-02 to Mechanical Equipment - H120 | 2026-10-22 → 2026-10-23 (+1d) | 2026-10-23 → 2026-10-26 (+3d) |  | -14d → -15d |
| H125-1040 | SWD top covers cut out - H120 | 2026-10-21 → 2026-10-26 (+5d) | 2026-10-27 → 2026-10-30 (+3d) |  | -18d → -21d |
| H125-1110 | Finish Cable Tray to Skid - H120 | 2026-10-21 → 2026-10-26 (+5d) | 2026-10-22 → 2026-10-27 (+5d) |  | -14d → -17d |
| H125-1350 | Install conduit from Busplug to ATSs - H120 | 2026-10-21 → 2026-10-26 (+5d) | 2026-10-22 → 2026-10-27 (+5d) |  | -14d → -17d |
| H125-1390 | Mount VFD Stand and VFD - H120 | 2026-10-21 → 2026-10-26 (+5d) | 2026-10-21 → 2026-10-26 (+5d) |  | -12d → -15d |
| H125-1440 | Mount MPZ - H120 | 2026-10-21 → 2026-10-26 (+5d) | 2026-10-21 → 2026-10-26 (+5d) |  | -11d → -14d |
| H125-1520 | Megger MC Cable from UPS to MOD - H120 | 2026-10-23 → 2026-10-26 (+3d) | 2026-10-23 → 2026-10-26 (+3d) |  | -13d → -14d |
| H125-1620 | Electrical Room CRAH Set - H120 | 2026-10-21 → 2026-10-26 (+5d) | 2026-10-21 → 2026-10-26 (+5d) |  | -12d → -15d |
| H125-1130 | Pull Chiller wire - H120 | 2026-10-22 → 2026-10-27 (+5d) | 2026-10-22 → 2026-10-27 (+5d) |  | -11d → -14d |
| H125-1200 | Finish Conduit to Elec Room CRAH - H120 | 2026-10-22 → 2026-10-27 (+5d) | 2026-10-22 → 2026-10-27 (+5d) |  | -12d → -15d |
| H125-1270 | Megger MC Cable from MOD-01 to Mechanical Equipment - H120 | 2026-10-26 → 2026-10-27 (+1d) | 2026-10-26 → 2026-10-27 (+1d) |  | -14d → -15d |
| H125-1280 | Megger MC Cable from MOD-02 to Mechanical Equipment - H120 | 2026-10-26 → 2026-10-27 (+1d) | 2026-10-26 → 2026-10-27 (+1d) |  | -14d → -15d |
| H125-1400 | Conduit from UPS to VFD - H120 | 2026-10-22 → 2026-10-27 (+5d) | 2026-10-22 → 2026-10-27 (+5d) |  | -12d → -15d |
| H125-1450 | Penetrate MC Cable into MPZ - H120 | 2026-10-22 → 2026-10-27 (+5d) | 2026-10-22 → 2026-10-27 (+5d) |  | -11d → -14d |
| H125-1140 | Megger Chiller Cable - H120 | 2026-10-23 → 2026-10-28 (+5d) | 2026-10-23 → 2026-10-28 (+5d) |  | -11d → -14d |
| H125-1160 | Penetrate MC into SWD - H120 | 2026-10-23 → 2026-10-28 (+5d) | 2026-10-23 → 2026-10-28 (+5d) |  | -14d → -17d |
| H125-1170 | Penetrat MC into UPS - H120 | 2026-10-23 → 2026-10-28 (+5d) | 2026-10-23 → 2026-10-28 (+5d) |  | -14d → -17d |
| H125-1210 | Pull Cable to Elec Room CRAH - H120 | 2026-10-23 → 2026-10-28 (+5d) | 2026-10-23 → 2026-10-28 (+5d) |  | -12d → -15d |
| H125-1300 | Terminate MOD-02 - H120 | 2026-10-27 → 2026-10-28 (+1d) | 2026-10-27 → 2026-10-28 (+1d) |  | -14d → -15d |
| H125-1360 | Pull ATS Cable - H120 | 2026-10-23 → 2026-10-28 (+5d) | 2026-10-23 → 2026-10-28 (+5d) |  | -14d → -17d |
| H125-1410 | Pull Cable from UPS to VFD - H120 | 2026-10-23 → 2026-10-28 (+5d) | 2026-10-23 → 2026-10-28 (+5d) |  | -12d → -15d |
| H125-1460 | Megger MPZ Cable - H120 | 2026-10-23 → 2026-10-28 (+5d) | 2026-10-23 → 2026-10-28 (+5d) |  | -11d → -14d |
| H125-1490 | All Skid Grounding - H120 | 2026-10-23 → 2026-10-28 (+5d) | 2026-10-26 → 2026-10-29 (+3d) |  | -11d → -14d |
| H125-1150 | Terminations at Chiller - H120 | 2026-10-26 → 2026-10-29 (+3d) | 2026-10-26 → 2026-10-29 (+3d) |  | -11d → -14d |
| H125-1220 | Megger MC Cable from Skid to Elec Room CRAH - H120 | 2026-10-26 → 2026-10-29 (+3d) | 2026-10-26 → 2026-10-29 (+3d) |  | -12d → -15d |
| H125-1240 | Megger MC Cable from Skid to MOD - H120 | 2026-10-26 → 2026-10-29 (+3d) | 2026-10-26 → 2026-10-29 (+3d) |  | -14d → -17d |
| H125-1420 | Megger Cable from UPS to VFD - H120 | 2026-10-26 → 2026-10-29 (+3d) | 2026-10-26 → 2026-10-29 (+3d) |  | -12d → -15d |
| H125-1470 | Terminate MC Feed at MPZ - H120 | 2026-10-26 → 2026-10-29 (+3d) | 2026-10-26 → 2026-10-29 (+3d) |  | -11d → -14d |
| H125-1480 | Terminate Cables in VFD - H120 | 2026-10-26 → 2026-10-29 (+3d) | 2026-10-26 → 2026-10-29 (+3d) |  | -11d → -14d |
| H125-1630 | Megger Cable at ATS - H120 | 2026-10-26 → 2026-10-29 (+3d) | 2026-10-26 → 2026-10-29 (+3d) |  | -14d → -17d |
| H125-1230 | Terminate Elec Room CRAH - H120 | 2026-10-27 → 2026-10-30 (+3d) | 2026-10-27 → 2026-10-30 (+3d) |  | -12d → -15d |
| H125-1290 | Terminate MOD-01 - H120 | 2026-10-27 → 2026-10-30 (+3d) | 2026-10-27 → 2026-10-30 (+3d) |  | -14d → -17d |
| H125-1310 | Terminate at Mechanical Equipment - H120 | 2026-10-27 → 2026-10-30 (+3d) | 2026-10-27 → 2026-10-30 (+3d) |  | -14d → -17d |
| H125-1370 | Terminate ATS Cable at Busplugs & ATSs - H120 | 2026-10-27 → 2026-10-30 (+3d) | 2026-10-28 → 2026-11-02 (+5d) |  | -14d → -17d |
| H125-1430 | Terminate Cables in UPS - H120 | 2026-10-27 → 2026-10-30 (+3d) | 2026-10-27 → 2026-10-30 (+3d) |  | -12d → -15d |
| H125-1570 | QC 2.2 checklist VFD - H120 | 2026-10-27 → 2026-10-30 (+3d) | 2026-10-27 → 2026-10-30 (+3d) |  | -11d → -14d |
| H125-1610 | QC 2.2 checklist Chiller - H120 | 2026-10-27 → 2026-10-30 (+3d) | 2026-10-27 → 2026-10-30 (+3d) |  | -11d → -14d |
| H125-1650 | QC 2.2 checklist MPZ - H120 | 2026-10-27 → 2026-10-30 (+3d) | 2026-10-27 → 2026-10-30 (+3d) |  | -11d → -14d |
| H125-1050 | Cable bus Install - H120 | 2026-10-28 → 2026-11-02 (+5d) | 2026-10-29 → 2026-11-03 (+5d) |  | -18d → -21d |
| H125-1320 | Mechanical Equipment/Tray Grounding - H120 | 2026-10-28 → 2026-11-02 (+5d) | 2026-10-29 → 2026-11-03 (+5d) |  | -14d → -17d |
| H125-1540 | QC 2.2 checklist UPS - H120 | 2026-10-28 → 2026-11-02 (+5d) | 2026-10-28 → 2026-11-02 (+5d) |  | -12d → -15d |
| H125-1550 | QC 2.2 checklist Elec Room CRAH - H120 | 2026-10-28 → 2026-11-02 (+5d) | 2026-10-28 → 2026-11-02 (+5d) |  | -12d → -15d |
| H125-1560 | QC 2.2 Mechanical Equipment - H120 | 2026-10-28 → 2026-11-02 (+5d) | 2026-10-28 → 2026-11-02 (+5d) |  | -12d → -15d |
| H125-1380 | ATS Lashing - H120 | 2026-10-29 → 2026-11-03 (+5d) | 2026-10-29 → 2026-11-03 (+5d) |  | -14d → -17d |
| H125-1060 | Cable pulled to A & P Xfmrs - H120 | 2026-10-30 → 2026-11-04 (+5d) | 2026-10-30 → 2026-11-04 (+5d) |  | -18d → -21d |
| H125-1500 | QC 2.2 checklist MOD-01 - H120 | 2026-10-30 → 2026-11-04 (+5d) | 2026-10-30 → 2026-11-04 (+5d) |  | -14d → -17d |
| H125-1510 | QC 2.2 checklist MOD-02 - H120 | 2026-10-30 → 2026-11-04 (+5d) | 2026-10-30 → 2026-11-04 (+5d) |  | -14d → -17d |
| H125-1530 | QC 2.2 checklist ATSs - H120 | 2026-10-30 → 2026-11-04 (+5d) | 2026-10-30 → 2026-11-04 (+5d) |  | -14d → -17d |
| H125-1640 | QC 2.2 checklist Busplugs - H120 | 2026-10-30 → 2026-11-04 (+5d) | 2026-10-30 → 2026-11-04 (+5d) |  | -14d → -17d |
| H125-1070 | Megger Cable Bus Cable - H120 | 2026-11-02 → 2026-11-05 (+3d) | 2026-11-02 → 2026-11-05 (+3d) |  | -18d → -21d |
| H125-1080 | Cable Bus inspection and covers - H120 | 2026-11-02 → 2026-11-05 (+3d) | 2026-11-02 → 2026-11-05 (+3d) |  | -16d → -19d |
| H125-1090 | Terminations at Xfmrs - H120 | 2026-11-03 → 2026-11-06 (+3d) | 2026-11-04 → 2026-11-09 (+5d) |  | -18d → -21d |
| H125-1100 | Terminations at SWD - H120 | 2026-11-03 → 2026-11-06 (+3d) | 2026-11-04 → 2026-11-09 (+5d) |  | -18d → -21d |
| H125-1580 | QC 2.2 checklist SWD - H120 | 2026-11-05 → 2026-11-10 (+5d) | 2026-11-05 → 2026-11-10 (+5d) |  | -18d → -21d |
| H125-1600 | QC 2.2 checklist XFMR - H120 | 2026-11-05 → 2026-11-10 (+5d) | 2026-11-05 → 2026-11-10 (+5d) |  | -18d → -21d |
| H125-1590 | Ready for FTE - H120 | 2026-11-06 → 2026-11-11 (+5d) | 2026-11-06 → 2026-11-11 (+5d) |  | -18d → -21d |
| 8 | **J120** | 2026-10-16 → 2026-10-15 (-1d) | 2026-11-06 → 2026-11-11 (+5d) |  |  |
| J125-1010 | Set MODs - J120 | 2026-10-20 → 2026-10-15 A (-5d) | 2026-10-21 → 2026-10-18 A (-3d) | 0% → 100% | -14d → none |
| J125-1330 | Busduct installed - J120 | 2026-10-16 → 2026-10-21 (+5d) | 2026-10-16 → 2026-10-21 (+5d) |  | -18d → -21d |
| J125-1340 | Busplugs/Tap Boxes installed - J120 | 2026-10-19 → 2026-10-22 (+3d) | 2026-10-19 → 2026-10-22 (+3d) |  | -18d → -21d |
| J125-1000 | Set Skid - J120 | 2026-10-20 → 2026-10-23 (+3d) | 2026-10-20 → 2026-10-23 (+3d) |  | -18d → -21d |

| ID | Task | Start | Finish | Total float |
| --- | --- | --- | --- | --- |
| J125-1030 | Cable bus Support installed - J120 | 2026-10-20 → 2026-10-23 (+3d) | 2026-10-21 → 2026-10-26 (+5d) | -14d → -17d |
| J125-1120 | Chiller feed box and conduit complete - J120 | 2026-10-20 → 2026-10-23 (+3d) | 2026-10-21 → 2026-10-26 (+5d) | -11d → -14d |
| J125-1180 | Penetrate MC into MOD-01 - J120 | 2026-10-22 → 2026-10-23 (+1d) | 2026-10-22 → 2026-10-23 (+1d) | -13d → -14d |
| J125-1190 | Penetrate MC into MOD-02 - J120 | 2026-10-22 → 2026-10-23 (+1d) | 2026-10-22 → 2026-10-23 (+1d) | -13d → -14d |
| J125-1250 | Pull MC from MOD-01 to Mechanical Equipment - J120 | 2026-10-22 → 2026-10-23 (+1d) | 2026-10-23 → 2026-10-26 (+3d) | -14d → -15d |
| J125-1260 | Pull MC from MOD-02 to Mechanical Equipment - J120 | 2026-10-22 → 2026-10-23 (+1d) | 2026-10-23 → 2026-10-26 (+3d) | -14d → -15d |
| J125-1040 | SWD top covers cut out - J120 | 2026-10-21 → 2026-10-26 (+5d) | 2026-10-27 → 2026-10-30 (+3d) | -18d → -21d |
| J125-1110 | Finish Cable Tray to Skid - J120 | 2026-10-21 → 2026-10-26 (+5d) | 2026-10-22 → 2026-10-27 (+5d) | -14d → -17d |
| J125-1350 | Install conduit from Busplug to ATSs - J120 | 2026-10-21 → 2026-10-26 (+5d) | 2026-10-22 → 2026-10-27 (+5d) | -14d → -17d |
| J125-1390 | Mount VFD Stand and VFD - J120 | 2026-10-21 → 2026-10-26 (+5d) | 2026-10-21 → 2026-10-26 (+5d) | -12d → -15d |
| J125-1440 | Mount MPZ - J120 | 2026-10-21 → 2026-10-26 (+5d) | 2026-10-21 → 2026-10-26 (+5d) | -11d → -14d |
| J125-1520 | Megger MC Cable from UPS to MOD - J120 | 2026-10-23 → 2026-10-26 (+3d) | 2026-10-23 → 2026-10-26 (+3d) | -13d → -14d |
| J125-1620 | Electrical Room CRAH Set - J120 | 2026-10-21 → 2026-10-26 (+5d) | 2026-10-21 → 2026-10-26 (+5d) | -12d → -15d |
| J125-1130 | Pull Chiller wire - J120 | 2026-10-22 → 2026-10-27 (+5d) | 2026-10-22 → 2026-10-27 (+5d) | -11d → -14d |
| J125-1200 | Finish Conduit to Elec Room CRAH - J120 | 2026-10-22 → 2026-10-27 (+5d) | 2026-10-22 → 2026-10-27 (+5d) | -12d → -15d |
| J125-1270 | Megger MC Cable from MOD-01 to Mechanical Equipment - J120 | 2026-10-26 → 2026-10-27 (+1d) | 2026-10-26 → 2026-10-27 (+1d) | -14d → -15d |
| J125-1280 | Megger MC Cable from MOD-02 to Mechanical Equipment - J120 | 2026-10-26 → 2026-10-27 (+1d) | 2026-10-26 → 2026-10-27 (+1d) | -14d → -15d |
| J125-1400 | Conduit from UPS to VFD - J120 | 2026-10-22 → 2026-10-27 (+5d) | 2026-10-22 → 2026-10-27 (+5d) | -12d → -15d |
| J125-1450 | Penetrate MC Cable into MPZ - J120 | 2026-10-22 → 2026-10-27 (+5d) | 2026-10-22 → 2026-10-27 (+5d) | -11d → -14d |
| J125-1140 | Megger Chiller Cable - J120 | 2026-10-23 → 2026-10-28 (+5d) | 2026-10-23 → 2026-10-28 (+5d) | -11d → -14d |
| J125-1160 | Penetrate MC into SWD - J120 | 2026-10-23 → 2026-10-28 (+5d) | 2026-10-23 → 2026-10-28 (+5d) | -14d → -17d |
| J125-1170 | Penetrat MC into UPS - J120 | 2026-10-23 → 2026-10-28 (+5d) | 2026-10-23 → 2026-10-28 (+5d) | -14d → -17d |
| J125-1210 | Pull Cable to Elec Room CRAH - J120 | 2026-10-23 → 2026-10-28 (+5d) | 2026-10-23 → 2026-10-28 (+5d) | -12d → -15d |
| J125-1300 | Terminate MOD-02 - J120 | 2026-10-27 → 2026-10-28 (+1d) | 2026-10-27 → 2026-10-28 (+1d) | -14d → -15d |
| J125-1360 | Pull ATS Cable - J120 | 2026-10-23 → 2026-10-28 (+5d) | 2026-10-23 → 2026-10-28 (+5d) | -14d → -17d |
| J125-1410 | Pull Cable from UPS to VFD - J120 | 2026-10-23 → 2026-10-28 (+5d) | 2026-10-23 → 2026-10-28 (+5d) | -12d → -15d |
| J125-1460 | Megger MPZ Cable - J120 | 2026-10-23 → 2026-10-28 (+5d) | 2026-10-23 → 2026-10-28 (+5d) | -11d → -14d |
| J125-1490 | All Skid Grounding - J120 | 2026-10-23 → 2026-10-28 (+5d) | 2026-10-26 → 2026-10-29 (+3d) | -11d → -14d |
| J125-1150 | Terminations at Chiller - J120 | 2026-10-26 → 2026-10-29 (+3d) | 2026-10-26 → 2026-10-29 (+3d) | -11d → -14d |
| J125-1220 | Megger MC Cable from Skid to Elec Room CRAH - J120 | 2026-10-26 → 2026-10-29 (+3d) | 2026-10-26 → 2026-10-29 (+3d) | -12d → -15d |
| J125-1240 | Megger MC Cable from Skid to MOD - J120 | 2026-10-26 → 2026-10-29 (+3d) | 2026-10-26 → 2026-10-29 (+3d) | -14d → -17d |
| J125-1420 | Megger Cable from UPS to VFD - J120 | 2026-10-26 → 2026-10-29 (+3d) | 2026-10-26 → 2026-10-29 (+3d) | -12d → -15d |
| J125-1470 | Terminate MC Feed at MPZ - J120 | 2026-10-26 → 2026-10-29 (+3d) | 2026-10-26 → 2026-10-29 (+3d) | -11d → -14d |
| J125-1480 | Terminate Cables in VFD - J120 | 2026-10-26 → 2026-10-29 (+3d) | 2026-10-26 → 2026-10-29 (+3d) | -11d → -14d |
| J125-1630 | Megger Cable at ATS - J120 | 2026-10-26 → 2026-10-29 (+3d) | 2026-10-26 → 2026-10-29 (+3d) | -14d → -17d |
| J125-1230 | Terminate Elec Room CRAH - J120 | 2026-10-27 → 2026-10-30 (+3d) | 2026-10-27 → 2026-10-30 (+3d) | -12d → -15d |
| J125-1290 | Terminate MOD-01 - J120 | 2026-10-27 → 2026-10-30 (+3d) | 2026-10-27 → 2026-10-30 (+3d) | -14d → -17d |
| J125-1310 | Terminate at Mechanical Equipment - J120 | 2026-10-27 → 2026-10-30 (+3d) | 2026-10-27 → 2026-10-30 (+3d) | -14d → -17d |
| J125-1370 | Terminate ATS Cable at Busplugs & ATSs - J120 | 2026-10-27 → 2026-10-30 (+3d) | 2026-10-28 → 2026-11-02 (+5d) | -14d → -17d |
| J125-1430 | Terminate Cables in UPS - J120 | 2026-10-27 → 2026-10-30 (+3d) | 2026-10-27 → 2026-10-30 (+3d) | -12d → -15d |
| J125-1570 | QC 2.2 checklist VFD - J120 | 2026-10-27 → 2026-10-30 (+3d) | 2026-10-27 → 2026-10-30 (+3d) | -11d → -14d |
| J125-1610 | QC 2.2 checklist Chiller - J120 | 2026-10-27 → 2026-10-30 (+3d) | 2026-10-27 → 2026-10-30 (+3d) | -11d → -14d |
| J125-1650 | QC 2.2 checklist MPZ - J120 | 2026-10-27 → 2026-10-30 (+3d) | 2026-10-27 → 2026-10-30 (+3d) | -11d → -14d |
| J125-1050 | Cable bus Install - J120 | 2026-10-28 → 2026-11-02 (+5d) | 2026-10-29 → 2026-11-03 (+5d) | -18d → -21d |
| J125-1320 | Mechanical Equipment/Tray Grounding - J120 | 2026-10-28 → 2026-11-02 (+5d) | 2026-10-29 → 2026-11-03 (+5d) | -14d → -17d |
| J125-1540 | QC 2.2 checklist UPS - J120 | 2026-10-28 → 2026-11-02 (+5d) | 2026-10-28 → 2026-11-02 (+5d) | -12d → -15d |
| J125-1550 | QC 2.2 checklist Elec Room CRAH - J120 | 2026-10-28 → 2026-11-02 (+5d) | 2026-10-28 → 2026-11-02 (+5d) | -12d → -15d |
| J125-1560 | QC 2.2 Mechanical Equipment - J120 | 2026-10-28 → 2026-11-02 (+5d) | 2026-10-28 → 2026-11-02 (+5d) | -12d → -15d |
| J125-1380 | ATS Lashing - J120 | 2026-10-29 → 2026-11-03 (+5d) | 2026-10-29 → 2026-11-03 (+5d) | -14d → -17d |
| J125-1060 | Cable pulled to A & P Xfmrs - J120 | 2026-10-30 → 2026-11-04 (+5d) | 2026-10-30 → 2026-11-04 (+5d) | -18d → -21d |
| J125-1500 | QC 2.2 checklist MOD-01 - J120 | 2026-10-30 → 2026-11-04 (+5d) | 2026-10-30 → 2026-11-04 (+5d) | -14d → -17d |
| J125-1510 | QC 2.2 checklist MOD-02 - J120 | 2026-10-30 → 2026-11-04 (+5d) | 2026-10-30 → 2026-11-04 (+5d) | -14d → -17d |
| J125-1530 | QC 2.2 checklist ATSs - J120 | 2026-10-30 → 2026-11-04 (+5d) | 2026-10-30 → 2026-11-04 (+5d) | -14d → -17d |
| J125-1640 | QC 2.2 checklist Busplugs - J120 | 2026-10-30 → 2026-11-04 (+5d) | 2026-10-30 → 2026-11-04 (+5d) | -14d → -17d |
| J125-1070 | Megger Cable Bus Cable - J120 | 2026-11-02 → 2026-11-05 (+3d) | 2026-11-02 → 2026-11-05 (+3d) | -18d → -21d |
| J125-1080 | Cable Bus inspection and covers - J120 | 2026-11-02 → 2026-11-05 (+3d) | 2026-11-02 → 2026-11-05 (+3d) | -16d → -19d |
| J125-1090 | Terminations at Xfmrs - J120 | 2026-11-03 → 2026-11-06 (+3d) | 2026-11-04 → 2026-11-09 (+5d) | -18d → -21d |
| J125-1100 | Terminations at SWD - J120 | 2026-11-03 → 2026-11-06 (+3d) | 2026-11-04 → 2026-11-09 (+5d) | -18d → -21d |
| J125-1580 | QC 2.2 checklist SWD - J120 | 2026-11-05 → 2026-11-10 (+5d) | 2026-11-05 → 2026-11-10 (+5d) | -18d → -21d |
| J125-1600 | QC 2.2 checklist XFMR - J120 | 2026-11-05 → 2026-11-10 (+5d) | 2026-11-05 → 2026-11-10 (+5d) | -18d → -21d |
| J125-1590 | Ready for FTE - J120 | 2026-11-06 → 2026-11-11 (+5d) | 2026-11-06 → 2026-11-11 (+5d) | -18d → -21d |
| 10 | **K120** | 2026-10-16 → 2026-10-21 (+5d) | 2026-11-06 → 2026-11-11 (+5d) |  |
| K125-1330 | Busduct installed - K120 | 2026-10-16 → 2026-10-21 (+5d) | 2026-10-16 → 2026-10-21 (+5d) | -18d → -21d |
| K125-1340 | Busplugs/Tap Boxes installed - K120 | 2026-10-19 → 2026-10-22 (+3d) | 2026-10-19 → 2026-10-22 (+3d) | -18d → -21d |
| K125-1000 | Set Skid - K120 | 2026-10-20 → 2026-10-23 (+3d) | 2026-10-20 → 2026-10-23 (+3d) | -18d → -21d |
| K125-1010 | Set MODs - K120 | 2026-10-20 → 2026-10-23 (+3d) | 2026-10-21 → 2026-10-26 (+5d) | -14d → -17d |
| K125-1030 | Cable bus Support installed - K120 | 2026-10-20 → 2026-10-23 (+3d) | 2026-10-21 → 2026-10-26 (+5d) | -14d → -17d |
| K125-1120 | Chiller feed box and conduit complete - K120 | 2026-10-20 → 2026-10-23 (+3d) | 2026-10-21 → 2026-10-26 (+5d) | -11d → -14d |
| K125-1040 | SWD top covers cut out - K120 | 2026-10-21 → 2026-10-26 (+5d) | 2026-10-27 → 2026-10-30 (+3d) | -18d → -21d |
| K125-1110 | Finish Cable Tray to Skid - K120 | 2026-10-21 → 2026-10-26 (+5d) | 2026-10-22 → 2026-10-27 (+5d) | -14d → -17d |

| ID | Task | Start | Finish | Total float |
| --- | --- | --- | --- | --- |
| K125-1350 | Install conduit from Busplug to ATSs - K120 | 2026-10-21 → 2026-10-26 (+5d) | 2026-10-22 → 2026-10-27 (+5d) | -14d → -17d |
| K125-1390 | Mount VFD Stand and VFD - K120 | 2026-10-21 → 2026-10-26 (+5d) | 2026-10-21 → 2026-10-26 (+5d) | -12d → -15d |
| K125-1440 | Mount MPZ - K120 | 2026-10-21 → 2026-10-26 (+5d) | 2026-10-21 → 2026-10-26 (+5d) | -11d → -14d |
| K125-1620 | Electrical Room CRAH Set - K120 | 2026-10-21 → 2026-10-26 (+5d) | 2026-10-21 → 2026-10-26 (+5d) | -12d → -15d |
| K125-1130 | Pull Chiller wire - K120 | 2026-10-22 → 2026-10-27 (+5d) | 2026-10-22 → 2026-10-27 (+5d) | -11d → -14d |
| K125-1180 | Penetrate MC into MOD-01 - K120 | 2026-10-22 → 2026-10-27 (+5d) | 2026-10-22 → 2026-10-27 (+5d) | -13d → -16d |
| K125-1190 | Penetrate MC into MOD-02 - K120 | 2026-10-22 → 2026-10-27 (+5d) | 2026-10-22 → 2026-10-27 (+5d) | -13d → -16d |
| K125-1200 | Finish Conduit to Elec Room CRAH - K120 | 2026-10-22 → 2026-10-27 (+5d) | 2026-10-22 → 2026-10-27 (+5d) | -12d → -15d |
| K125-1250 | Pull MC from MOD-01 to Mechanical Equipment - K120 | 2026-10-22 → 2026-10-27 (+5d) | 2026-10-23 → 2026-10-28 (+5d) | -14d → -17d |
| K125-1260 | Pull MC from MOD-02 to Mechanical Equipment - K120 | 2026-10-22 → 2026-10-27 (+5d) | 2026-10-23 → 2026-10-28 (+5d) | -14d → -17d |
| K125-1400 | Conduit from UPS to VFD - K120 | 2026-10-22 → 2026-10-27 (+5d) | 2026-10-22 → 2026-10-27 (+5d) | -12d → -15d |
| K125-1450 | Penetrate MC Cable into MPZ - K120 | 2026-10-22 → 2026-10-27 (+5d) | 2026-10-22 → 2026-10-27 (+5d) | -11d → -14d |
| K125-1140 | Megger Chiller Cable - K120 | 2026-10-23 → 2026-10-28 (+5d) | 2026-10-23 → 2026-10-28 (+5d) | -11d → -14d |
| K125-1160 | Penetrate MC into SWD - K120 | 2026-10-23 → 2026-10-28 (+5d) | 2026-10-23 → 2026-10-28 (+5d) | -14d → -17d |
| K125-1170 | Penetrat MC into UPS - K120 | 2026-10-23 → 2026-10-28 (+5d) | 2026-10-23 → 2026-10-28 (+5d) | -14d → -17d |
| K125-1210 | Pull Cable to Elec Room CRAH - K120 | 2026-10-23 → 2026-10-28 (+5d) | 2026-10-23 → 2026-10-28 (+5d) | -12d → -15d |
| K125-1360 | Pull ATS Cable - K120 | 2026-10-23 → 2026-10-28 (+5d) | 2026-10-23 → 2026-10-28 (+5d) | -14d → -17d |
| K125-1410 | Pull Cable from UPS to VFD - K120 | 2026-10-23 → 2026-10-28 (+5d) | 2026-10-23 → 2026-10-28 (+5d) | -12d → -15d |
| K125-1460 | Megger MPZ Cable - K120 | 2026-10-23 → 2026-10-28 (+5d) | 2026-10-23 → 2026-10-28 (+5d) | -11d → -14d |
| K125-1490 | All Skid Grounding - K120 | 2026-10-23 → 2026-10-28 (+5d) | 2026-10-26 → 2026-10-29 (+3d) | -11d → -14d |
| K125-1520 | Megger MC Cable from UPS to MOD - K120 | 2026-10-23 → 2026-10-28 (+5d) | 2026-10-23 → 2026-10-28 (+5d) | -13d → -16d |
| K125-1150 | Terminations at Chiller - K120 | 2026-10-26 → 2026-10-29 (+3d) | 2026-10-26 → 2026-10-29 (+3d) | -11d → -14d |
| K125-1220 | Megger MC Cable from Skid to Elec Room CRAH - K120 | 2026-10-26 → 2026-10-29 (+3d) | 2026-10-26 → 2026-10-29 (+3d) | -12d → -15d |
| K125-1240 | Megger MC Cable from Skid to MOD - K120 | 2026-10-26 → 2026-10-29 (+3d) | 2026-10-26 → 2026-10-29 (+3d) | -14d → -17d |
| K125-1270 | Megger MC Cable from MOD-01 to Mechanical Equipment - K120 | 2026-10-26 → 2026-10-29 (+3d) | 2026-10-26 → 2026-10-29 (+3d) | -14d → -17d |
| K125-1280 | Megger MC Cable from MOD-02 to Mechanical Equipment - K120 | 2026-10-26 → 2026-10-29 (+3d) | 2026-10-26 → 2026-10-29 (+3d) | -14d → -17d |
| K125-1420 | Megger Cable from UPS to VFD - K120 | 2026-10-26 → 2026-10-29 (+3d) | 2026-10-26 → 2026-10-29 (+3d) | -12d → -15d |
| K125-1470 | Terminate MC Feed at MPZ - K120 | 2026-10-26 → 2026-10-29 (+3d) | 2026-10-26 → 2026-10-29 (+3d) | -11d → -14d |
| K125-1480 | Terminate Cables in VFD - K120 | 2026-10-26 → 2026-10-29 (+3d) | 2026-10-26 → 2026-10-29 (+3d) | -11d → -14d |
| K125-1630 | Megger Cable at ATS - K120 | 2026-10-26 → 2026-10-29 (+3d) | 2026-10-26 → 2026-10-29 (+3d) | -14d → -17d |
| K125-1230 | Terminate Elec Room CRAH - K120 | 2026-10-27 → 2026-10-30 (+3d) | 2026-10-27 → 2026-10-30 (+3d) | -12d → -15d |
| K125-1290 | Terminate MOD-01 - K120 | 2026-10-27 → 2026-10-30 (+3d) | 2026-10-27 → 2026-10-30 (+3d) | -14d → -17d |
| K125-1300 | Terminate MOD-02 - K120 | 2026-10-27 → 2026-10-30 (+3d) | 2026-10-27 → 2026-10-30 (+3d) | -14d → -17d |
| K125-1310 | Terminate at Mechanical Equipment - K120 | 2026-10-27 → 2026-10-30 (+3d) | 2026-10-27 → 2026-10-30 (+3d) | -14d → -17d |
| K125-1370 | Terminate ATS Cable at Busplugs & ATSs - K120 | 2026-10-27 → 2026-10-30 (+3d) | 2026-10-28 → 2026-11-02 (+5d) | -14d → -17d |
| K125-1430 | Terminate Cables in UPS - K120 | 2026-10-27 → 2026-10-30 (+3d) | 2026-10-27 → 2026-10-30 (+3d) | -12d → -15d |
| K125-1570 | QC 2.2 checklist VFD - K120 | 2026-10-27 → 2026-10-30 (+3d) | 2026-10-27 → 2026-10-30 (+3d) | -11d → -14d |
| K125-1610 | QC 2.2 checklist Chiller - K120 | 2026-10-27 → 2026-10-30 (+3d) | 2026-10-27 → 2026-10-30 (+3d) | -11d → -14d |
| K125-1650 | QC 2.2 checklist MPZ - K120 | 2026-10-27 → 2026-10-30 (+3d) | 2026-10-27 → 2026-10-30 (+3d) | -11d → -14d |
| K125-1050 | Cable bus Install - K120 | 2026-10-28 → 2026-11-02 (+5d) | 2026-10-29 → 2026-11-03 (+5d) | -18d → -21d |
| K125-1320 | Mechanical Equipment/Tray Grounding - K120 | 2026-10-28 → 2026-11-02 (+5d) | 2026-10-29 → 2026-11-03 (+5d) | -14d → -17d |
| K125-1540 | QC 2.2 checklist UPS - K120 | 2026-10-28 → 2026-11-02 (+5d) | 2026-10-28 → 2026-11-02 (+5d) | -12d → -15d |
| K125-1550 | QC 2.2 checklist Elec Room CRAH - K120 | 2026-10-28 → 2026-11-02 (+5d) | 2026-10-28 → 2026-11-02 (+5d) | -12d → -15d |
| K125-1560 | QC 2.2 Mechanical Equipment - K120 | 2026-10-28 → 2026-11-02 (+5d) | 2026-10-28 → 2026-11-02 (+5d) | -12d → -15d |
| K125-1380 | ATS Lashing - K120 | 2026-10-29 → 2026-11-03 (+5d) | 2026-10-29 → 2026-11-03 (+5d) | -14d → -17d |
| K125-1060 | Cable pulled to A & P Xfmrs - K120 | 2026-10-30 → 2026-11-04 (+5d) | 2026-10-30 → 2026-11-04 (+5d) | -18d → -21d |
| K125-1500 | QC 2.2 checklist MOD-01 - K120 | 2026-10-30 → 2026-11-04 (+5d) | 2026-10-30 → 2026-11-04 (+5d) | -14d → -17d |
| K125-1510 | QC 2.2 checklist MOD-02 - K120 | 2026-10-30 → 2026-11-04 (+5d) | 2026-10-30 → 2026-11-04 (+5d) | -14d → -17d |
| K125-1530 | QC 2.2 checklist ATSs - K120 | 2026-10-30 → 2026-11-04 (+5d) | 2026-10-30 → 2026-11-04 (+5d) | -14d → -17d |
| K125-1640 | QC 2.2 checklist Busplugs - K120 | 2026-10-30 → 2026-11-04 (+5d) | 2026-10-30 → 2026-11-04 (+5d) | -14d → -17d |
| K125-1070 | Megger Cable Bus Cable - K120 | 2026-11-02 → 2026-11-05 (+3d) | 2026-11-02 → 2026-11-05 (+3d) | -18d → -21d |
| K125-1080 | Cable Bus inspection and covers - K120 | 2026-11-02 → 2026-11-05 (+3d) | 2026-11-02 → 2026-11-05 (+3d) | -16d → -19d |
| K125-1090 | Terminations at Xfmrs - K120 | 2026-11-03 → 2026-11-06 (+3d) | 2026-11-04 → 2026-11-09 (+5d) | -18d → -21d |
| K125-1100 | Terminations at SWD - K120 | 2026-11-03 → 2026-11-06 (+3d) | 2026-11-04 → 2026-11-09 (+5d) | -18d → -21d |
| K125-1580 | QC 2.2 checklist SWD - K120 | 2026-11-05 → 2026-11-10 (+5d) | 2026-11-05 → 2026-11-10 (+5d) | -18d → -21d |
| K125-1600 | QC 2.2 checklist XFMR - K120 | 2026-11-05 → 2026-11-10 (+5d) | 2026-11-05 → 2026-11-10 (+5d) | -18d → -21d |
| K125-1590 | Ready for FTE - K120 | 2026-11-06 → 2026-11-11 (+5d) | 2026-11-06 → 2026-11-11 (+5d) | -18d → -21d |
| 12 | **Commissioning** | 2026-11-07 → 2026-11-12 (+5d) | 2027-01-16 → 2027-01-21 (+5d) |  |
| 1250-1000 | DH1200 - L3 Clean Walk | 2026-11-07 → 2026-11-12 (+5d) | 2026-11-10 → 2026-11-14 (+4d) | 29d → 25d |
| 1250-1100 | DH1200 - L3 PEI | 2026-11-11 → 2026-11-16 (+5d) | 2026-11-13 → 2026-11-18 (+5d) | 29d → 25d |
| 1250-1200 | DH1200 - L3 FTE | 2026-11-14 → 2026-11-19 (+5d) | 2026-11-17 → 2026-11-22 (+5d) | 38d → 33d |
| 1250-2000 | DH1200 - L4 Cx / IST | 2026-11-18 → 2026-11-23 (+5d) | 2027-01-16 → 2027-01-21 (+5d) | 38d → 33d |
| 7 | **MOH** | 2026-10-14 → 2026-10-19 (+5d) |  |  |
| 1 | **Equipment** | 2026-10-14 → 2026-10-19 (+5d) |  |  |
| 2010 | Set SWD-HSE-1D-Main | 2026-10-14 → 2026-10-19 (+5d) | 2026-10-16 → 2026-10-21 (+5d) | 76d → 73d |
| 2120 | Set UPS-HSE-1D | 2026-10-14 → 2026-10-19 (+5d) | 2026-10-16 → 2026-10-21 (+5d) | 77d → 74d |
| 2190 | Set ELI and battery cabinets | 2026-10-14 → 2026-10-19 (+5d) | 2026-10-16 → 2026-10-21 (+5d) | 76d → 73d |
| 2270 | Set STS-HSE-1D | 2026-10-14 → 2026-10-19 (+5d) | 2026-10-16 → 2026-10-21 (+5d) | 78d → 75d |
| 2340 | Set XFMR-ELI-1D | 2026-10-14 → 2026-10-19 (+5d) | 2026-10-16 → 2026-10-21 (+5d) | 78d → 75d |
| 2400 | Set MTS-ELI-1D | 2026-10-14 → 2026-10-19 (+5d) | 2026-10-16 → 2026-10-21 (+5d) | 78d → 75d |

| ID | Task | Start | Finish | Total float |
| --- | --- | --- | --- | --- |
| 2460 | Set XFMR-UPS-HSE-1D | 2026-10-14 → 2026-10-19 (+5d) | 2026-10-16 → 2026-10-21 (+5d) | 78d → 75d |
| 2520 | Set XFMR-ELI-1D-2 | 2026-10-14 → 2026-10-19 (+5d) | 2026-10-16 → 2026-10-21 (+5d) | 78d → 75d |
| 2580 | Set PNL-UPS-HSE-1D | 2026-10-14 → 2026-10-19 (+5d) | 2026-10-16 → 2026-10-21 (+5d) | 77d → 74d |
| 2720 | Set PNL-ELI-1D | 2026-10-14 → 2026-10-19 (+5d) | 2026-10-16 → 2026-10-21 (+5d) | 77d → 74d |
| 2790 | Finish Conduit to CIP-DH110 | 2026-10-14 → 2026-10-19 (+5d) | 2026-10-14 → 2026-10-19 (+5d) | 81d → 78d |
| 2800 | Pull cables to CIP-DH110 | 2026-10-14 → 2026-10-19 (+5d) | 2026-10-14 → 2026-10-19 (+5d) | 81d → 78d |
| 2840 | Finish Conduit to CIP-DH120 | 2026-10-14 → 2026-10-19 (+5d) | 2026-10-14 → 2026-10-19 (+5d) | 81d → 78d |
| 2850 | Pull cables to CIP-DH120 | 2026-10-14 → 2026-10-19 (+5d) | 2026-10-14 → 2026-10-19 (+5d) | 81d → 78d |
| 2890 | Finish Conduit to CIP-DH130 | 2026-10-14 → 2026-10-19 (+5d) | 2026-10-14 → 2026-10-19 (+5d) | 81d → 78d |
| 2900 | Pull cables to CIP-DH130 | 2026-10-14 → 2026-10-19 (+5d) | 2026-10-14 → 2026-10-19 (+5d) | 81d → 78d |
| 2940 | Finish Conduit to CIP-DH140 | 2026-10-14 → 2026-10-19 (+5d) | 2026-10-14 → 2026-10-19 (+5d) | 81d → 78d |
| 2950 | Pull cables to CIP-DH140 | 2026-10-14 → 2026-10-19 (+5d) | 2026-10-14 → 2026-10-19 (+5d) | 81d → 78d |
| 2990 | Finish Conduit to CIP-DH150 | 2026-10-14 → 2026-10-19 (+5d) | 2026-10-14 → 2026-10-19 (+5d) | 81d → 78d |
| 3000 | Pull cables to CIP-DH150 | 2026-10-14 → 2026-10-19 (+5d) | 2026-10-14 → 2026-10-19 (+5d) | 81d → 78d |
| 3040 | Finish Conduit to CIP-DH160 | 2026-10-14 → 2026-10-19 (+5d) | 2026-10-14 → 2026-10-19 (+5d) | 81d → 78d |
| 3050 | Pull cables to CIP-DH160 | 2026-10-14 → 2026-10-19 (+5d) | 2026-10-14 → 2026-10-19 (+5d) | 81d → 78d |
| 5120 | Set PNL-UPS-HSE-1C | 2026-10-14 → 2026-10-19 (+5d) | 2026-10-14 → 2026-10-19 (+5d) | 80d → 77d |
| 5190 | Finish conduit to PNL-UPS-DH110-02 | 2026-10-14 → 2026-10-19 (+5d) | 2026-10-14 → 2026-10-19 (+5d) | 80d → 77d |
| 5220 | Finish conduit to PNL-UPS-DH120-02 | 2026-10-14 → 2026-10-19 (+5d) | 2026-10-14 → 2026-10-19 (+5d) | 80d → 77d |
| 5250 | Finish conduit to PNL-UPS-DH130-02 | 2026-10-14 → 2026-10-19 (+5d) | 2026-10-14 → 2026-10-19 (+5d) | 80d → 77d |
| 5420 | Set PNL-UPS-DH130-B3 | 2026-10-14 → 2026-10-19 (+5d) | 2026-10-14 → 2026-10-19 (+5d) | 80d → 77d |
| 5500 | Conduit finished to PNL-UPS-DH110-01 | 2026-10-14 → 2026-10-19 (+5d) | 2026-10-14 → 2026-10-19 (+5d) | 172.88d → 169.88d |
| 5510 | Pull/Megger feeder cables to PNL-UPS-DH110-01 | 2026-10-14 → 2026-10-19 (+5d) | 2026-10-14 → 2026-10-19 (+5d) | 172.88d → 169.88d |
| 5570 | Conduit finished to PNL-UPS-DH120-01 | 2026-10-14 → 2026-10-19 (+5d) | 2026-10-14 → 2026-10-19 (+5d) | 172.88d → 169.88d |
| 5580 | Pull/Megger feeder cables to PNL-UPS-DH120-01 | 2026-10-14 → 2026-10-19 (+5d) | 2026-10-14 → 2026-10-19 (+5d) | 172.88d → 169.88d |
| 5640 | Conduit finished to PNL-UPS-DH130-01 | 2026-10-14 → 2026-10-19 (+5d) | 2026-10-14 → 2026-10-19 (+5d) | 172.88d → 169.88d |
| 5650 | Pull/Megger feeder cables to PNL-UPS-DH130-01 | 2026-10-14 → 2026-10-19 (+5d) | 2026-10-14 → 2026-10-19 (+5d) | 172.88d → 169.88d |
| 5710 | Conduit finished to PNL-UPS-DH140-01 | 2026-10-14 → 2026-10-19 (+5d) | 2026-10-14 → 2026-10-19 (+5d) | 172.88d → 169.88d |
| 5720 | Pull/Megger feeder cables to PNL-UPS-DH140-01 | 2026-10-14 → 2026-10-19 (+5d) | 2026-10-14 → 2026-10-19 (+5d) | 172.88d → 169.88d |
| 5770 | Set PNL-UPS-DH140-A3 | 2026-10-14 → 2026-10-19 (+5d) | 2026-10-14 → 2026-10-19 (+5d) | 80d → 77d |
| 5780 | Conduit finished to PNL-UPS-DH140-02 | 2026-10-14 → 2026-10-19 (+5d) | 2026-10-14 → 2026-10-19 (+5d) | 82d → 79d |
| 5790 | Pull/Megger feeder cables to PNL-UPS-DH140-02 | 2026-10-14 → 2026-10-19 (+5d) | 2026-10-14 → 2026-10-19 (+5d) | 82d → 79d |
| 5850 | Conduit finished to PNL-UPS-DH150-01 | 2026-10-14 → 2026-10-19 (+5d) | 2026-10-14 → 2026-10-19 (+5d) | 172.88d → 169.88d |
| 5860 | Pull/Megger feeder cables to PNL-UPS-DH150-01 | 2026-10-14 → 2026-10-19 (+5d) | 2026-10-14 → 2026-10-19 (+5d) | 172.88d → 169.88d |
| 5920 | Conduit finished to PNL-UPS-DH150-02 | 2026-10-14 → 2026-10-19 (+5d) | 2026-10-14 → 2026-10-19 (+5d) | 172.88d → 169.88d |
| 5930 | Pull/Megger feeder cables to PNL-UPS-DH150-02 | 2026-10-14 → 2026-10-19 (+5d) | 2026-10-14 → 2026-10-19 (+5d) | 172.88d → 169.88d |
| 5990 | Conduit finished to PNL-UPS-DH160-01 | 2026-10-14 → 2026-10-19 (+5d) | 2026-10-14 → 2026-10-19 (+5d) | 172.88d → 169.88d |
| 6000 | Pull/Megger feeder cables to PNL-UPS-DH160-01 | 2026-10-14 → 2026-10-19 (+5d) | 2026-10-14 → 2026-10-19 (+5d) | 172.88d → 169.88d |
| 6050 | Set UPS-HSE-1C | 2026-10-14 → 2026-10-19 (+5d) | 2026-10-14 → 2026-10-19 (+5d) | 80d → 77d |
| 6060 | Conduit finished to PNL-UPS-DH160-02 | 2026-10-14 → 2026-10-19 (+5d) | 2026-10-14 → 2026-10-19 (+5d) | 82d → 79d |
| 6070 | Pull/Megger feeder cables to PNL-UPS-DH160-02 | 2026-10-14 → 2026-10-19 (+5d) | 2026-10-14 → 2026-10-19 (+5d) | 82d → 79d |
| 6130 | Set STS-HSE-1C | 2026-10-14 → 2026-10-19 (+5d) | 2026-10-14 → 2026-10-19 (+5d) | 79d → 76d |
| 2810 | Megger cables in CIP-DH110 | 2026-10-15 → 2026-10-20 (+5d) | 2026-10-15 → 2026-10-20 (+5d) | 81d → 78d |
| 2860 | Megger cables in CIP-DH120 | 2026-10-15 → 2026-10-20 (+5d) | 2026-10-15 → 2026-10-20 (+5d) | 81d → 78d |
| 2910 | Megger cables in CIP-DH130 | 2026-10-15 → 2026-10-20 (+5d) | 2026-10-15 → 2026-10-20 (+5d) | 81d → 78d |
| 2960 | Megger cables in CIP-DH140 | 2026-10-15 → 2026-10-20 (+5d) | 2026-10-15 → 2026-10-20 (+5d) | 81d → 78d |
| 3010 | Megger cables in CIP-DH150 | 2026-10-15 → 2026-10-20 (+5d) | 2026-10-15 → 2026-10-20 (+5d) | 81d → 78d |
| 3060 | Megger cables in CIP-DH160 | 2026-10-15 → 2026-10-20 (+5d) | 2026-10-15 → 2026-10-20 (+5d) | 81d → 78d |
| 5200 | Pull feeder cables to PNL-UPS-DH110-02 | 2026-10-15 → 2026-10-20 (+5d) | 2026-10-15 → 2026-10-20 (+5d) | 80d → 77d |
| 5230 | Pull feeder cables to PNL-UPS-DH120-02 | 2026-10-15 → 2026-10-20 (+5d) | 2026-10-15 → 2026-10-20 (+5d) | 80d → 77d |
| 5260 | Pull feeder cables to PNL-UPS-DH130-02 | 2026-10-15 → 2026-10-20 (+5d) | 2026-10-15 → 2026-10-20 (+5d) | 80d → 77d |
| 5800 | Pull branch cables to PNL-UPS-DH140-A3 | 2026-10-15 → 2026-10-20 (+5d) | 2026-10-15 → 2026-10-20 (+5d) | 80d → 77d |
| 6080 | Pull branch cables to UPS-HSE-1C | 2026-10-15 → 2026-10-20 (+5d) | 2026-10-15 → 2026-10-20 (+5d) | 80d → 77d |
| 2820 | Term CIP-DH110 | 2026-10-16 → 2026-10-21 (+5d) | 2026-10-16 → 2026-10-21 (+5d) | 81d → 78d |
| 2870 | Term CIP-DH120 | 2026-10-16 → 2026-10-21 (+5d) | 2026-10-16 → 2026-10-21 (+5d) | 81d → 78d |
| 2920 | Term CIP-DH130 | 2026-10-16 → 2026-10-21 (+5d) | 2026-10-16 → 2026-10-21 (+5d) | 81d → 78d |
| 2970 | Term CIP-DH140 | 2026-10-16 → 2026-10-21 (+5d) | 2026-10-16 → 2026-10-21 (+5d) | 81d → 78d |
| 3020 | Term CIP-DH150 | 2026-10-16 → 2026-10-21 (+5d) | 2026-10-16 → 2026-10-21 (+5d) | 81d → 78d |
| 3070 | Term CIP-DH160 | 2026-10-16 → 2026-10-21 (+5d) | 2026-10-16 → 2026-10-21 (+5d) | 81d → 78d |
| 5210 | Megger cables in PNL-UPS-DH110-02 | 2026-10-16 → 2026-10-21 (+5d) | 2026-10-16 → 2026-10-21 (+5d) | 80d → 77d |
| 5240 | Megger cables in PNL-UPS-DH120-02 | 2026-10-16 → 2026-10-21 (+5d) | 2026-10-16 → 2026-10-21 (+5d) | 80d → 77d |
| 5270 | Megger cables in PNL-UPS-DH130-02 | 2026-10-16 → 2026-10-21 (+5d) | 2026-10-16 → 2026-10-21 (+5d) | 80d → 77d |
| 5810 | Megger branch cables to PNL-UPS-DH140-A3 | 2026-10-16 → 2026-10-21 (+5d) | 2026-10-16 → 2026-10-21 (+5d) | 80d → 77d |
| 6090 | Megger branch cables to UPS-HSE-1C | 2026-10-16 → 2026-10-21 (+5d) | 2026-10-16 → 2026-10-21 (+5d) | 80d → 77d |
| 2020 | Finish Conduit from SWD-HSE-1D-Main | 2026-10-19 → 2026-10-22 (+3d) | 2026-10-19 → 2026-10-22 (+3d) | 77d → 74d |
| 2030 | Pull feed from XFMR to SWD-HSE-1D-Main | 2026-10-19 → 2026-10-22 (+3d) | 2026-10-19 → 2026-10-22 (+3d) | 78d → 75d |
| 2130 | Finish conduit from UPS-HSE-1D | 2026-10-19 → 2026-10-22 (+3d) | 2026-10-19 → 2026-10-22 (+3d) | 77d → 74d |
| 2140 | Pull cables to UPS-HSE-1D | 2026-10-19 → 2026-10-22 (+3d) | 2026-10-19 → 2026-10-22 (+3d) | 77d → 74d |
| 2200 | Finish conduit from ELI | 2026-10-19 → 2026-10-22 (+3d) | 2026-10-19 → 2026-10-22 (+3d) | 76d → 73d |
| 2210 | Pull cable to ELI | 2026-10-19 → 2026-10-22 (+3d) | 2026-10-19 → 2026-10-22 (+3d) | 76d → 73d |

| ID | Task | Start | Finish | Total float |
| --- | --- | --- | --- | --- |
| 2280 | Finish conduit from STS-HSE-1D | 2026-10-19 → 2026-10-22 (+3d) | 2026-10-19 → 2026-10-22 (+3d) | 78d → 75d |
| 2290 | Pull cables to STS-HSE-1D | 2026-10-19 → 2026-10-22 (+3d) | 2026-10-19 → 2026-10-22 (+3d) | 78d → 75d |
| 2350 | Finish conduit from XFMR-ELI-1D | 2026-10-19 → 2026-10-22 (+3d) | 2026-10-19 → 2026-10-22 (+3d) | 78d → 75d |
| 2360 | Pull cables to XFMR-ELI-1D | 2026-10-19 → 2026-10-22 (+3d) | 2026-10-19 → 2026-10-22 (+3d) | 78d → 75d |
| 2410 | Finish conduit from MTS-ELI-1D | 2026-10-19 → 2026-10-22 (+3d) | 2026-10-19 → 2026-10-22 (+3d) | 78d → 75d |
| 2420 | Pull cables to MTS-ELI-1D | 2026-10-19 → 2026-10-22 (+3d) | 2026-10-19 → 2026-10-22 (+3d) | 78d → 75d |
| 2470 | Finish conduit from XFMR-UPS-HSE-1D | 2026-10-19 → 2026-10-22 (+3d) | 2026-10-19 → 2026-10-22 (+3d) | 78d → 75d |
| 2480 | Pull cables to XFMR-UPS-HSE-1D | 2026-10-19 → 2026-10-22 (+3d) | 2026-10-19 → 2026-10-22 (+3d) | 78d → 75d |
| 2530 | Finish conduit from XFMR-ELI-1D-2 | 2026-10-19 → 2026-10-22 (+3d) | 2026-10-19 → 2026-10-22 (+3d) | 78d → 75d |
| 2540 | Pull cables to XFMR-ELI-1D-2 | 2026-10-19 → 2026-10-22 (+3d) | 2026-10-19 → 2026-10-22 (+3d) | 78d → 75d |
| 2590 | Finish conduit to PNL-UPS-HSE-1D | 2026-10-19 → 2026-10-22 (+3d) | 2026-10-19 → 2026-10-22 (+3d) | 78d → 75d |
| 2600 | Pull feeder cables to PNL-UPS-HSE-1D | 2026-10-19 → 2026-10-22 (+3d) | 2026-10-19 → 2026-10-22 (+3d) | 78d → 75d |
| 2610 | Pull branch cables to PNL-UPS-HSE-1D | 2026-10-19 → 2026-10-22 (+3d) | 2026-10-19 → 2026-10-22 (+3d) | 78d → 75d |
| 2730 | Finish conduit to PNL-ELI-1D | 2026-10-19 → 2026-10-22 (+3d) | 2026-10-19 → 2026-10-22 (+3d) | 78d → 75d |
| 2740 | Pull feeder cables to PNL-ELI-1D | 2026-10-19 → 2026-10-22 (+3d) | 2026-10-19 → 2026-10-22 (+3d) | 78d → 75d |
| 2750 | Pull branch cables to PNL-ELI-1D | 2026-10-19 → 2026-10-22 (+3d) | 2026-10-19 → 2026-10-22 (+3d) | 78d → 75d |
| 2830 | QC 2.2 checklist CIP-DH110 | 2026-10-19 → 2026-10-22 (+3d) | 2026-10-19 → 2026-10-22 (+3d) | 81d → 78d |
| 2880 | QC 2.2 checklist CCIP-DH120 | 2026-10-19 → 2026-10-22 (+3d) | 2026-10-19 → 2026-10-22 (+3d) | 81d → 78d |
| 2930 | QC 2.2 checklist CCIP-DH130 | 2026-10-19 → 2026-10-22 (+3d) | 2026-10-19 → 2026-10-22 (+3d) | 81d → 78d |
| 2980 | QC 2.2 checklist CCIP-DH140 | 2026-10-19 → 2026-10-22 (+3d) | 2026-10-19 → 2026-10-22 (+3d) | 81d → 78d |
| 3030 | QC 2.2 checklist CCIP-DH150 | 2026-10-19 → 2026-10-22 (+3d) | 2026-10-19 → 2026-10-22 (+3d) | 81d → 78d |
| 3080 | QC 2.2 checklist CCIP-DH160 | 2026-10-19 → 2026-10-22 (+3d) | 2026-10-19 → 2026-10-22 (+3d) | 81d → 78d |
| 3570 | Set XFMR-G140-01 | 2026-10-19 → 2026-10-22 (+3d) | 2026-10-19 → 2026-10-22 (+3d) | 77d → 74d |
| 5090 | Finish conduit to MMR | 2026-10-19 → 2026-10-22 (+3d) | 2026-10-19 → 2026-10-22 (+3d) | 77d → 74d |
| 5130 | Finish conduit to PNL-UPS-HSE-1C | 2026-10-19 → 2026-10-22 (+3d) | 2026-10-19 → 2026-10-22 (+3d) | 78d → 75d |
| 5140 | Pull feeder cables to PNL-UPS-HSE-1C | 2026-10-19 → 2026-10-22 (+3d) | 2026-10-19 → 2026-10-22 (+3d) | 78d → 75d |
| 5150 | Pull branch cables to PNL-UPS-HSE-1C | 2026-10-19 → 2026-10-22 (+3d) | 2026-10-19 → 2026-10-22 (+3d) | 78d → 75d |
| 5430 | Finish conduit toPNL-UPS-DH130-B3 | 2026-10-19 → 2026-10-22 (+3d) | 2026-10-19 → 2026-10-22 (+3d) | 78d → 75d |
| 5440 | Pull feeder cables to PNL-UPS-DH130-B3 | 2026-10-19 → 2026-10-22 (+3d) | 2026-10-19 → 2026-10-22 (+3d) | 78d → 75d |
| 5450 | Pull branch cables to PNL-UPS-DH130-B3 | 2026-10-19 → 2026-10-22 (+3d) | 2026-10-19 → 2026-10-22 (+3d) | 78d → 75d |
| 5820 | Term PNL-UPS-DH140-A3 | 2026-10-19 → 2026-10-22 (+3d) | 2026-10-19 → 2026-10-22 (+3d) | 80d → 77d |
| 6100 | Term UPS-HSE-1C | 2026-10-19 → 2026-10-22 (+3d) | 2026-10-19 → 2026-10-22 (+3d) | 80d → 77d |
| 2040 | Megger cables from XFMR to SWD-HSE-1D-Main | 2026-10-20 → 2026-10-23 (+3d) | 2026-10-20 → 2026-10-23 (+3d) | 78d → 75d |
| 2050 | Pull cables to SWD-HSE-1D-Main | 2026-10-20 → 2026-10-23 (+3d) | 2026-10-20 → 2026-10-23 (+3d) | 77d → 74d |
| 2150 | Megger cables in UPS-HSE-1D | 2026-10-20 → 2026-10-23 (+3d) | 2026-10-20 → 2026-10-23 (+3d) | 77d → 74d |
| 2220 | Megger cable in ELI | 2026-10-20 → 2026-10-23 (+3d) | 2026-10-20 → 2026-10-23 (+3d) | 76d → 73d |
| 2300 | Megger cables in STS-HSE-1D | 2026-10-20 → 2026-10-23 (+3d) | 2026-10-20 → 2026-10-23 (+3d) | 78d → 75d |
| 2310 | Cables pulled/megged from UPS-HSE-1A | 2026-10-20 → 2026-10-23 (+3d) | 2026-10-20 → 2026-10-23 (+3d) | 78d → 75d |
| 2370 | Megger cables in XFMR-ELI-1D | 2026-10-20 → 2026-10-23 (+3d) | 2026-10-20 → 2026-10-23 (+3d) | 78d → 75d |
| 2430 | Megger cables in MTS-ELI-1D | 2026-10-20 → 2026-10-23 (+3d) | 2026-10-20 → 2026-10-23 (+3d) | 78d → 75d |
| 2490 | Megger cables in XFMR-UPS-HSE-1D | 2026-10-20 → 2026-10-23 (+3d) | 2026-10-20 → 2026-10-23 (+3d) | 78d → 75d |
| 2550 | Megger cables in XFMR-ELI-1D-2 | 2026-10-20 → 2026-10-23 (+3d) | 2026-10-20 → 2026-10-23 (+3d) | 78d → 75d |
| 2620 | Megger cables in PNL-UPS-HSE-1D | 2026-10-20 → 2026-10-23 (+3d) | 2026-10-20 → 2026-10-23 (+3d) | 78d → 75d |
| 2760 | Megger cables in PNL-ELI-1D | 2026-10-20 → 2026-10-23 (+3d) | 2026-10-20 → 2026-10-23 (+3d) | 78d → 75d |
| 3580 | Finish conduit to XFMR-G140-01 | 2026-10-20 → 2026-10-23 (+3d) | 2026-10-20 → 2026-10-23 (+3d) | 77d → 74d |
| 3590 | Pull feeder cables to XFMR-G140-01 | 2026-10-20 → 2026-10-23 (+3d) | 2026-10-20 → 2026-10-23 (+3d) | 77d → 74d |
| 5100 | Pull cable to MMR | 2026-10-20 → 2026-10-23 (+3d) | 2026-10-20 → 2026-10-23 (+3d) | 77d → 74d |
| 5160 | Megger cables in PNL-UPS-HSE-1C | 2026-10-20 → 2026-10-23 (+3d) | 2026-10-20 → 2026-10-23 (+3d) | 78d → 75d |
| 5460 | Megger cables in PNL-UPS-DH130-B3 | 2026-10-20 → 2026-10-23 (+3d) | 2026-10-20 → 2026-10-23 (+3d) | 78d → 75d |
| 5830 | QC 2.2 checklist PNL-UPS-DH140-A3 | 2026-10-20 → 2026-10-23 (+3d) | 2026-10-20 → 2026-10-23 (+3d) | 80d → 77d |
| 6110 | QC 2.2 checklist UPS-HSE-1C | 2026-10-20 → 2026-10-23 (+3d) | 2026-10-20 → 2026-10-23 (+3d) | 80d → 77d |
| 2070 | Term XFMR-HSE-1Da | 2026-10-21 → 2026-10-26 (+5d) | 2026-10-21 → 2026-10-26 (+5d) | 78d → 75d |
| 2080 | Term XFMR-HSE-1Dp | 2026-10-21 → 2026-10-26 (+5d) | 2026-10-21 → 2026-10-26 (+5d) | 78d → 75d |
| 2160 | Term UPS-HSE-1D | 2026-10-21 → 2026-10-26 (+5d) | 2026-10-21 → 2026-10-26 (+5d) | 77d → 74d |
| 2230 | Term ELI | 2026-10-21 → 2026-10-26 (+5d) | 2026-10-21 → 2026-10-26 (+5d) | 76d → 73d |
| 2320 | Term STS-HSE-1D | 2026-10-21 → 2026-10-26 (+5d) | 2026-10-21 → 2026-10-26 (+5d) | 78d → 75d |
| 2380 | Term XFMR-ELI-1D | 2026-10-21 → 2026-10-26 (+5d) | 2026-10-21 → 2026-10-26 (+5d) | 78d → 75d |
| 2440 | Term MTS-ELI-1D | 2026-10-21 → 2026-10-26 (+5d) | 2026-10-21 → 2026-10-26 (+5d) | 78d → 75d |
| 2500 | Term XFMR-UPS-HSE-1D | 2026-10-21 → 2026-10-26 (+5d) | 2026-10-21 → 2026-10-26 (+5d) | 78d → 75d |
| 2560 | Term XFMR-ELI-1D-2 | 2026-10-21 → 2026-10-26 (+5d) | 2026-10-21 → 2026-10-26 (+5d) | 78d → 75d |
| 2770 | Term PNL-ELI-1D | 2026-10-21 → 2026-10-26 (+5d) | 2026-10-21 → 2026-10-26 (+5d) | 78d → 75d |
| 3600 | Megger cables in XFMR-G140-01 | 2026-10-21 → 2026-10-26 (+5d) | 2026-10-21 → 2026-10-26 (+5d) | 77d → 74d |
| 5110 | Megger cable to MMR | 2026-10-21 → 2026-10-26 (+5d) | 2026-10-21 → 2026-10-26 (+5d) | 77d → 74d |
| 5170 | Term PNL-UPS-HSE-1C | 2026-10-21 → 2026-10-26 (+5d) | 2026-10-21 → 2026-10-26 (+5d) | 78d → 75d |
| 5470 | Term PNL-UPS-DH130-B3 | 2026-10-21 → 2026-10-26 (+5d) | 2026-10-21 → 2026-10-26 (+5d) | 78d → 75d |
| 6120 | Megger cables at SWD-HSE-1D-Main | 2026-10-21 → 2026-10-26 (+5d) | 2026-10-21 → 2026-10-26 (+5d) | 77d → 74d |
| 2060 | Term SWD-HSE-1D-Main | 2026-10-22 → 2026-10-27 (+5d) | 2026-10-22 → 2026-10-27 (+5d) | 77d → 74d |
| 2100 | QC 2.2 checklist XFMR-HSE-1Da | 2026-10-22 → 2026-10-27 (+5d) | 2026-10-22 → 2026-10-27 (+5d) | 78d → 75d |
| 2110 | QC 2.2 checklist XFMR-HSE-1Dp | 2026-10-22 → 2026-10-27 (+5d) | 2026-10-22 → 2026-10-27 (+5d) | 78d → 75d |
| 2170 | Battery hookup in UPS-HSE-1D | 2026-10-22 → 2026-10-27 (+5d) | 2026-10-22 → 2026-10-27 (+5d) | 77d → 74d |

| ID | Task | Start | Finish | Total float |
| --- | --- | --- | --- | --- |
| 2240 | Battery hookup in ELI | 2026-10-22 → 2026-10-27 (+5d) | 2026-10-22 → 2026-10-27 (+5d) | 76d → 73d |
| 2330 | QC 2.2 checklist STS-HSE-1D | 2026-10-22 → 2026-10-27 (+5d) | 2026-10-22 → 2026-10-27 (+5d) | 78d → 75d |
| 2390 | QC 2.2 checklist XFMR-ELI-1D | 2026-10-22 → 2026-10-27 (+5d) | 2026-10-22 → 2026-10-27 (+5d) | 78d → 75d |
| 2450 | QC 2.2 checklist MTS-ELI-1D | 2026-10-22 → 2026-10-27 (+5d) | 2026-10-22 → 2026-10-27 (+5d) | 78d → 75d |
| 2510 | QC 2.2 checklist XFMR-UPS-HSE-1D | 2026-10-22 → 2026-10-27 (+5d) | 2026-10-22 → 2026-10-27 (+5d) | 78d → 75d |
| 2570 | QC 2.2 checklist XFMR-ELI-1D-2 | 2026-10-22 → 2026-10-27 (+5d) | 2026-10-22 → 2026-10-27 (+5d) | 78d → 75d |
| 2630 | Term PNL-UPS-HSE-1D | 2026-10-22 → 2026-10-27 (+5d) | 2026-10-22 → 2026-10-27 (+5d) | 77d → 74d |
| 2780 | QC 2/2 checklistPNL-ELI-1D | 2026-10-22 → 2026-10-27 (+5d) | 2026-10-22 → 2026-10-27 (+5d) | 78d → 75d |
| 3610 | Term XFMR-G140-01 | 2026-10-22 → 2026-10-27 (+5d) | 2026-10-22 → 2026-10-27 (+5d) | 77d → 74d |
| 5180 | QC 2/2 checklist PNL-UPS-HSE-1C | 2026-10-22 → 2026-10-27 (+5d) | 2026-10-22 → 2026-10-27 (+5d) | 78d → 75d |
| 5480 | QC 2/2 checklist PNL-UPS-DH130-B3 | 2026-10-22 → 2026-10-27 (+5d) | 2026-10-22 → 2026-10-27 (+5d) | 78d → 75d |
| 2090 | QC 2.2 checklist SWD-HSE-1D-Main | 2026-10-23 → 2026-10-28 (+5d) | 2026-10-23 → 2026-10-28 (+5d) | 77d → 74d |
| 2180 | QC 2.2 checklist UPS-HSE-1D | 2026-10-23 → 2026-10-28 (+5d) | 2026-10-23 → 2026-10-28 (+5d) | 77d → 74d |
| 2260 | Vendor Startup on ELI | 2026-10-23 → 2026-10-28 (+5d) | 2026-10-23 → 2026-10-28 (+5d) | 76d → 73d |
| 2640 | QC 2/2 checklist PNL-UPS-HSE-1D | 2026-10-23 → 2026-10-28 (+5d) | 2026-10-23 → 2026-10-28 (+5d) | 77d → 74d |
| 3620 | QC 2/2 checklist XFMR-G140-01 | 2026-10-23 → 2026-10-28 (+5d) | 2026-10-23 → 2026-10-28 (+5d) | 77d → 74d |
| 2250 | QC 2.2 checklist ELI | 2026-10-26 → 2026-10-29 (+3d) | 2026-10-26 → 2026-10-29 (+3d) | 76d → 73d |
