# [226021-012.00-00] QTS CDR1-DC7 DD09-30-26 Update (Live)

How a schedule from Primavera P6 changed from version to version. A marks actual dates.

## Version 1 (data date 2026-09-30, saved 2026-10-27, file 226021.022.MO-UP-08.xer)

| ID | WBS | Task | Duration | Start | Finish | Predecessors | Complete | Total float | Constraint |
| --- | --- | --- | --- | --- | --- | --- | --- | --- | --- |
|  | 1 | **Suffolk Milestones** |  | 2025-11-12 | 2027-06-22 |  |  |  |  |
|  | 7 | **Site & Shell** |  | 2025-11-12 | 2027-06-22 |  |  |  |  |
| M1010 |  | Project Award (CM Release) | 0d | 2025-11-12 A | 2025-11-12 A | A2000 | 100% |  | start on or after 2025-09-12 |
| M1210 |  | Recieve Executed Work Order From QTS | 0d | 2025-11-12 A | 2025-11-12 A | M1010 SS+57d | 100% |  |  |
| M1050 |  | Buyout of Critical Trades/Preconstruction | 30d | 2025-11-24 A | 2026-03-06 A | M1010 | 100% |  |  |
| M1040 |  | Project Kickoff After Award | 0d | 2025-11-28 A | 2025-11-28 A | M1010 FS+15d | 100% |  |  |
| M1020 |  | Site Plan Full Approval (City review of IFC Set) | 0d | 2025-12-11 A | 2025-12-11 A | A1990, A2000 | 100% |  |  |
| M1030 |  | Receive Building Permit | 0d | 2025-12-19 A | 2025-12-19 A | M1010 SS, A1980, M1020 SS | 100% |  |  |
| M1140 |  | DC7 Site Pad Ready (by others) (11/01/25) | 0d | 2025-12-20 A | 2025-12-20 A | M1020 SF | 100% |  |  |
| M1060 |  | Begin Sitework and Shell | 0d | 2026-01-06 A | 2026-01-06 A | M1140, M1030 | 100% |  |  |
| M1220 |  | BIM Complete (Building Coordinated) | 0d | 2026-07-10 A | 2026-07-10 A | A2640, A2650, A2610 | 100% |  |  |
| M1080 |  | Shell Building Dry-In date | 0d | 2026-10-30 | 2026-10-30 | STRUCTURE.4880 FF, STRUCTURE.4890 FF, STRUCTURE.7020 FF, STRUCTURE.7300 FF, STRUCTURE.7350 FF, STRUCTURE.7330 FF, STRUCTURE.7619 FF, STRUCTURE.7653 FF, STRUCTURE.7661 FF, STRUCTURE.7540 FF, STRUCTURE.7650 FF, STRUCTURE.7660 FF, STRUCTURE.7510 FF, STRUCTURE.7647 FF, STRUCTURE.7659 FF, STRUCTURE.7480 FF, STRUCTURE.7644 FF, STRUCTURE.7658 FF, STRUCTURE.7450 FF, STRUCTURE.7641 FF, STRUCTURE.7657 FF, STRUCTURE.7420 FF, STRUCTURE.7638 FF, STRUCTURE.7656 FF, STRUCTURE.7390 FF, STRUCTURE.7635 FF, STRUCTURE.7655 FF, STRUCTURE.7616 FF, STRUCTURE.7632 FF, STRUCTURE.7654 FF, STRUCTURE.7280 |  | 160d |  |
| M1100 |  | Sitework Complete | 0d | 2026-10-30 | 2026-10-30 | M1080 FF |  | 160d |  |
| M1231 |  | Procurement Completed | 0d | 2026-11-19 | 2026-11-19 | A2540 FF |  | 28d |  |
| M1230 |  | Final Completion (All Closeout & Punch List Complete) | 1d | 2027-03-04 | 2027-03-04 | ARC-DEL-ACT-1, BOH-MS-5, FOH.MS-5, DH1100.4010, DH1100.7820, DH1100-B-EQP-18, DH1100-B-EQP-36, DH1100-B-EQP-54, DH1100-B-EQP-72, DH1100-B-EQP-90, DH1100-B-EQP-108, DH1100-B-EQP-126, DH1100-B-EQP-144, DH1100-B-EQP-162, DH1100-B-EQP-180, DH1100-B-EQP-198, ER.5104.1330, ER.5101.1160, PRE.C3.1110, IDF.C2.1110, F.1000B..1140, DH1100.8080, DH1100-B-EQP-16, ER.5104.1250, ER.5101.1330, DH1200.7790, F.1000A.1160, PDU.1100.1110, G1102.4820, G.1103.1140, IDF.C2.1140, PRE.C3.1140, DH1100-B-EQP-34, DH1100-B-EQP-52, DH1100-B-EQP-70, DH1100-B-EQP-88, DH1100-B-EQP-106, DH1100-B-EQP-124, DH1100-B-EQP-142, DH1100-B-EQP-160, DH1100-B-EQP-178, DH1100-B-EQP-196, DH1100.12056, PDU.1100.1712, DH1100.12113, DH1100.12114, DH1100.12115, A5731, STRUCTURE.4850 SS, DH1100.12043, DH1100.12046, DH1100.12049, DH1100.12052, DH1100.12055, ER.5104.1140, A3210 |  | 77d |  |
| M1130 |  | Project Closeout Complete - Certificate of Occupancy | 0d | 2027-06-22 | 2027-06-22 | DH2300.4030, M1230 FF, DH2200.4030 FF, DH2100.4030 FF, DH1300.4030 FF, DH1200.4030 FF, DH1100.4030 FF, M1220, M1100 FF |  | 0d |  |
|  | 8 | **Interior Build-Out** |  | 2026-06-26 | 2027-06-22 |  |  |  |  |
|  | 7 | **FOH** |  | 2026-09-30 | 2027-03-03 |  |  |  |  |
| FOH.MS-1 |  | Start Work - FOH | 0d | 2026-09-30 | 2026-09-30 | STRUCTURE.4850, A2060, STRUCTURE.7430 |  | 182d |  |
| FOH.MS-3 |  | FOH Build-Out Duration | 5d | 2026-09-30 | 2026-10-06 | FOH.MS-1 SS |  | 23d |  |
| FOH.MS-2 |  | Early Access - FOH - [12/03/2026] | 0d | 2026-12-11 | 2026-12-11 | DH1200.7790 FF, HSE-SYS-STU-1 FF, HSE-SYS-STU-16 FF, HSE-SYS-STU-3 |  | -7d | finish on or before 2026-12-03 |
| FOH.MS-4 |  | Substantial Completion - TCO for FOH [01/01/27] | 0d | 2027-01-20 | 2027-01-20 | DH1100.4020 FF, FOH.MS-2 FF, HSE-SYS-STU-3 FF |  | -11d | finish on or before 2027-01-01 |
| FOH.MS-5 |  | Final Completion - Phase Close-Out (all punch completed) - FOH | 30d | 2027-01-20 | 2027-03-03 | FOH.MS-4 |  | 77d |  |
|  | 8 | **BOH** |  | 2026-07-24 | 2027-03-02 |  |  |  |  |
| BOH-MS-3 |  | BOH Build-Out Duration | 48d | 2026-07-24 A | 2026-12-09 | ADMIN.5506 SS |  | -5d |  |
| BOH-MS-2 |  | Early Access - BOH - [12/03/2026] | 0d | 2026-12-09 | 2026-12-09 | DH1200.7842 FF, HSE-SYS-STU-4 FF, HSE-SYS-STU-17 |  | -5d | finish on or before 2026-12-03 |
| BOH-MS-4 |  | Substantial Completion - TCO for BOH [01/01/27] | 0d | 2027-01-15 | 2027-01-15 | BOH-MS-2 FF+25d, HSE-SYS-STU-6 FF |  | 9d | finish on or before 2027-02-01 |
| BOH-MS-5 |  | Final Completion - Phase Close-Out (all punch completed) - DH1100 | 30d | 2027-01-19 | 2027-03-02 | BOH-MS-4 |  | 78d |  |
|  | 2 | **DH1100** |  | 2026-06-26 | 2027-03-24 |  |  |  |  |
| DH1100.4010 |  | DH1100 Build-Out Duration | 171d | 2026-06-26 A | 2027-03-24 | F.1000A.1010 | 30% | 63d |  |
| M1150 |  | Milestone 1 -Early Access - 1st Data Hall DH1100 - [12/03/2026] | 0d | 2027-01-04 | 2027-01-04 | DH1100-B-EQP-198 FF, A5850 FF, DH1100-B-EQP-18 FF, DH1100-B-EQP-36 FF, DH1100-B-EQP-54 FF, DH1100-B-EQP-72 FF, DH1100-B-EQP-90 FF, DH1100-B-EQP-108 FF, DH1100-B-EQP-126 FF, DH1100-B-EQP-144 FF, DH1100-B-EQP-162 FF, DH1100-B-EQP-180 FF, ER.5104.1330 FF, ER.5101.1160 FF, PRE.C3.1110 FF, IDF.C2.1110 FF, F.1000B..1140 FF, DH1100.8080 FF, DH1100-B-EQP-16 FF, ER.5104.1250 FF, ER.5101.1330 FF, DH1200.7790 FF, F.1000A.1160 FF, DH1100.7820 FF, PDU.1100.1110 FF, G1102.4820 FF, G.1103.1140 FF, IDF.C2.1140 FF, PRE.C3.1140 FF, DH1100-B-EQP-34 FF, DH1100-B-EQP-52 FF, DH1100-B-EQP-70 FF, DH1100-B-EQP-88 FF, DH1100-B-EQP-106 FF, DH1100-B-EQP-124 FF, DH1100-B-EQP-142 FF, DH1100-B-EQP-160 FF, DH1100-B-EQP-178 FF, DH1100-B-EQP-196 FF, DH1100.12056 FF, PDU.1100.1712 FF, DH1100.12113 FF, DH1100.12114 FF, DH1100.12115 FF, A5731 FF, STRUCTURE.4850 FF, DH1100.12043 FF, DH1100.12046 FF, DH1100.12049 FF, DH1100.12052 FF, DH1100.12055 FF, ER.5104.1140 FF, A3210 FF, DH1100.L3CX.009 |  | -19d | finish on or before 2026-12-03 |
| DH1100.4020 |  | Milestone 7 - Substantial Completion - TCO for DH1100 [01/01/27] | 0d | 2027-01-20 | 2027-01-20 | DH1100.4010 FF, DH1100.7820 FF, DH1100-B-EQP-18 FF, DH1100-B-EQP-36 FF, DH1100-B-EQP-54 FF, DH1100-B-EQP-72 FF, DH1100-B-EQP-90 FF, DH1100-B-EQP-108 FF, DH1100-B-EQP-126 FF, DH1100-B-EQP-144 FF, DH1100-B-EQP-162 FF, DH1100-B-EQP-180 FF, DH1100-B-EQP-198 FF, ER.5104.1330 FF, ER.5101.1160 FF, PRE.C3.1110 FF, IDF.C2.1110 FF, F.1000B..1140 FF, DH1100.8080 FF, DH1100-B-EQP-16 FF, ER.5104.1250 FF, ER.5101.1330 FF, DH1200.7790 FF, F.1000A.1160 FF, PDU.1100.1110 FF, G1102.4820 FF, G.1103.1140 FF, IDF.C2.1140 FF, PRE.C3.1140 FF, DH1100-B-EQP-34 FF, DH1100-B-EQP-52 FF, DH1100-B-EQP-70 FF, DH1100-B-EQP-88 FF, DH1100-B-EQP-106 FF, DH1100-B-EQP-124 FF, DH1100-B-EQP-142 FF, DH1100-B-EQP-160 FF, DH1100-B-EQP-178 FF, DH1100-B-EQP-196 FF, DH1100.12056 FF, PDU.1100.1712 FF, DH1100.12113 FF, DH1100.12114 FF, DH1100.12115 FF, A5731 FF, STRUCTURE.4850 FF, DH1100.12043 FF, DH1100.12046 FF, DH1100.12049 FF, DH1100.12052 FF, DH1100.12055 FF, ER.5104.1140 FF, A3210 FF, DH1100.L5CX.COMM.190, M1150 |  | -11d | finish on or before 2027-01-01 |
| DH1100.4030 |  | Final Completion - Phase Close-Out (all punch completed) - DH1100 | 30d | 2027-02-10 | 2027-03-24 | DH1100.L5CX.COMM.190 FF, DH1100.4010, DH1100.4010 FF, DH1100.7820, DH1100.7820 FF, DH1100-B-EQP-18, DH1100-B-EQP-18 FF, DH1100-B-EQP-36, DH1100-B-EQP-36 FF, DH1100-B-EQP-54, DH1100-B-EQP-54 FF, DH1100-B-EQP-72, DH1100-B-EQP-72 FF, DH1100-B-EQP-90, DH1100-B-EQP-90 FF, DH1100-B-EQP-108, DH1100-B-EQP-108 FF, DH1100-B-EQP-126, DH1100-B-EQP-126 FF, DH1100-B-EQP-144, DH1100-B-EQP-144 FF, DH1100-B-EQP-162, DH1100-B-EQP-162 FF, DH1100-B-EQP-180, DH1100-B-EQP-180 FF, DH1100-B-EQP-198, DH1100-B-EQP-198 FF, ER.5104.1330, ER.5104.1330 FF, ER.5101.1160, ER.5101.1160 FF, PRE.C3.1110, PRE.C3.1110 FF, IDF.C2.1110, IDF.C2.1110 FF, F.1000B..1140, F.1000B..1140 FF, DH1100.8080, DH1100.8080 FF, DH1100-B-EQP-16, DH1100-B-EQP-16 FF, ER.5104.1250, ER.5104.1250 FF, ER.5101.1330, ER.5101.1330 FF, DH1200.7790, DH1200.7790 FF, F.1000A.1160, F.1000A.1160 FF, PDU.1100.1110, PDU.1100.1110 FF, G1102.4820, G1102.4820 FF, G.1103.1140, G.1103.1140 FF, IDF.C2.1140, IDF.C2.1140 FF, PRE.C3.1140, PRE.C3.1140 FF, DH1100-B-EQP-34, DH1100-B-EQP-34 FF, DH1100-B-EQP-52, DH1100-B-EQP-52 FF, DH1100-B-EQP-70, DH1100-B-EQP-70 FF, DH1100-B-EQP-88, DH1100-B-EQP-88 FF, DH1100-B-EQP-106, DH1100-B-EQP-106 FF, DH1100-B-EQP-124, DH1100-B-EQP-124 FF, DH1100-B-EQP-142, DH1100-B-EQP-142 FF, DH1100-B-EQP-160, DH1100-B-EQP-160 FF, DH1100-B-EQP-178, DH1100-B-EQP-178 FF, DH1100-B-EQP-196, DH1100-B-EQP-196 FF, DH1100.12056, DH1100.12056 FF, PDU.1100.1712, PDU.1100.1712 FF, DH1100.12113, DH1100.12113 FF, DH1100.12114, DH1100.12114 FF, DH1100.12115, DH1100.12115 FF, DH1100.A2110.CO, A5731 FF, A5731, STRUCTURE.4850 FF, STRUCTURE.4850 SS, DH1100.12043 FF, DH1100.12043, DH1100.12046 FF, DH1100.12046, DH1100.12049 FF, DH1100.12049, DH1100.12052 FF, DH1100.12052, DH1100.12055 FF, DH1100.12055, ER.5104.1140 FF, A3210 FF, A3210 |  | 63d |  |
|  | 1 | **DH1200** |  | 2026-07-28 | 2027-04-07 |  |  |  |  |
| DH1200.7350 |  | DH1200 Build-Out Duration | 124d | 2026-07-28 A | 2027-02-02 | B12000A.1010 SS | 32% | -2d |  |
| DH1200.4010 |  | Milestone 2 - Early Access 2nd Data Hall DH1200 - [01/01/2027] | 0d | 2027-01-15 | 2027-01-15 | A5851 FF, B12000-B-EQP-18 FF, B12000-B-EQP-36 FF, B12000-B-EQP-54 FF, B12000-B-EQP-72 FF, B12000-B-EQP-90 FF, B12000-B-EQP-108 FF, B12000-B-EQP-126 FF, B12000-B-EQP-144 FF, B12000-B-EQP-162 FF, B12000-B-EQP-180 FF, B12000-B-EQP-198 FF, B12000-A-EQP-40 FF, B12000-A-EQP-60 FF, B12000-A-EQP-80 FF, B12000-A-EQP-100 FF, B12000-A-EQP-120 FF, B12000-A-EQP-140 FF, B12000-A-EQP-160 FF, B12000-A-EQP-180 FF, B12000-A-EQP-200 FF, B12000-A-EQP-220 FF, B120004.1330 FF, B120001.1160 FF, B12002.1110 FF, B12000B..1140 FF, B12000-B-EQP-16 FF, B12000-A-EQP-18 FF, B12000-A-EQP-20 FF, B120004.1250 FF, B120004.1310 FF, B120001.1330 FF, B120001.1310 FF, B12000.7841 FF, B5701 FF, B12000.12056 FF, B12000A.1160 FF, B1200.4820 FF, B12000-A-EQP-38 FF, B12000-A-EQP-58 FF, B12000-A-EQP-78 FF, B12000-A-EQP-98 FF, B12000-A-EQP-118 FF, B12000-A-EQP-138 FF, B12000-A-EQP-158 FF, B12000-A-EQP-178 FF, B12000-A-EQP-198 FF, B12000-A-EQP-218 FF, B12003.1140 FF, B12000-B-EQP-34 FF, B12000-B-EQP-52 FF, B12000-B-EQP-70 FF, B12000-B-EQP-88 FF, B12000-B-EQP-106 FF, B12000-B-EQP-124 FF, B12000-B-EQP-142 FF, B12000-B-EQP-160 FF, B12000-B-EQP-178 FF, B12000-B-EQP-196 FF, B12000B..1160 FF, B1200.1140 FF, B1200100.1712 FF, B12000.12098 FF, B12000.12099 FF, B12002.1141 FF, PRE.C3.1156 FF, A5734 FF, A5702 FF, A5700 FF, A5708 FF, A5713 FF, A5705 FF, A5719 FF, DH1200.L3CX.29 |  | -9d | finish on or before 2027-01-01 |
| DH1200.4020 |  | Milestone 8 - Substantial Completion TCO for DH1200 [02/01/27] | 0d | 2027-02-03 | 2027-02-03 | DH1200.7350 FF, DH1200.4010 FF, B12000.7820 FF, DH1200.L5CX.COMM.230 |  | -2d | finish on or before 2027-02-01 |
| DH1200.4030 |  | Final Completion - Phase Close-Out (all punch completed) - DH1200 | 30d | 2027-02-25 | 2027-04-07 | DH1200.4020, DH1200.A2110.CO, B12000.7820 |  | 53d |  |
|  | 3 | **DH1300** |  | 2026-08-03 | 2027-04-29 |  |  |  |  |
| DH1300.7360 |  | DH1300 Build-Out Duration | 141d | 2026-08-03 A | 2027-02-25 | DH.1300.1010 SS | 29% | 1d |  |
| DH1300.4010 |  | Milestone 3 - Early Access 3rd Data Hall DH1300 -[02/01/2027] | 0d | 2027-02-12 | 2027-02-12 | A5852 FF, DH.1300B-EQP-18 FF, DH.1300B-EQP-36 FF, DH.1300B-EQP-54 FF, DH.1300B-EQP-72 FF, DH.1300B-EQP-90 FF, DH.1300B-EQP-108 FF, DH.1300B-EQP-126 FF, DH.1300B-EQP-144 FF, DH.1300B-EQP-162 FF, DH.1300B-EQP-180 FF, DH.1300B-EQP-198 FF, DH.1300A-EQP-40 FF, DH.1300A-EQP-60 FF, DH.1300A-EQP-80 FF, DH.1300A-EQP-100 FF, DH.1300A-EQP-120 FF, DH.1300A-EQP-140 FF, DH.1300A-EQP-160 FF, DH.1300A-EQP-180 FF, DH.1300A-EQP-200 FF, DH.1300A-EQP-220 FF, DH.1300..1140 FF, DH.13008080 FF, DH.1300B-EQP-16 FF, DH.1300A-EQP-18 FF, DH.1300A-EQP-20 FF, DH.1300.1330 FF, DH.1300.1310 FF, DH.130012031 FF, DH.130012055 FF, DH.130012056 FF, DH.1300A-EQP-38 FF, DH.1300A-EQP-58 FF, DH.1300A-EQP-78 FF, DH.1300A-EQP-98 FF, DH.1300A-EQP-118 FF, DH.1300A-EQP-138 FF, DH.1300A-EQP-158 FF, DH.1300A-EQP-178 FF, DH.1300A-EQP-198 FF, DH.1300A-EQP-218 FF, DH.1300820 FF, DH.13001140 FF, DH.1300B-EQP-34 FF, DH.1300B-EQP-52 FF, DH.1300B-EQP-70 FF, DH.1300B-EQP-88 FF, DH.1300B-EQP-106 FF, DH.1300B-EQP-124 FF, DH.1300B-EQP-142 FF, DH.1300B-EQP-160 FF, DH.1300B-EQP-178 FF, DH.1300B-EQP-196 FF, DH.1300.1160 FF, DH.1300..1160 FF, DH.1300140 FF, DH.1300.3062 FF, DH.1300.3059 FF, DH.160012107 FF, DH.13000.1712 FF, DH.160012147 FF, DH.160012148 FF, DH.160012149 FF, A5737 FF, A5756 FF, A5761 FF, A5769 FF, DH1300.L3CX.49 |  | -8d | finish on or before 2027-02-01 |
| DH1300.4020 |  | Milestone 9 - Substantial Completion TCO for DH1300 [03/01/27] | 0d | 2027-02-26 | 2027-02-26 | DH1300.7360 FF, DH1300.4010, DH.13007820 FF, DH.1300B-EQP-18 FF, DH.1300B-EQP-36 FF, DH.1300B-EQP-54 FF, DH.1300B-EQP-72 FF, DH.1300B-EQP-90 FF, DH.1300B-EQP-108 FF, DH.1300B-EQP-126 FF, DH.1300B-EQP-144 FF, DH.1300B-EQP-162 FF, DH.1300B-EQP-180 FF, DH.1300B-EQP-198 FF, DH.1300A-EQP-40 FF, DH.1300A-EQP-60 FF, DH.1300A-EQP-80 FF, DH.1300A-EQP-100 FF, DH.1300A-EQP-120 FF, DH.1300A-EQP-140 FF, DH.1300A-EQP-160 FF, DH.1300A-EQP-180 FF, DH.1300A-EQP-200 FF, DH.1300A-EQP-220 FF, DH.1300..1140 FF, DH.13008080 FF, DH.1300B-EQP-16 FF, DH.1300A-EQP-18 FF, DH.1300A-EQP-20 FF, DH.1300.1330 FF, DH.1300.1310 FF, DH.130012031 FF, DH.130012055 FF, DH.130012056 FF, DH.1300A-EQP-38 FF, DH.1300A-EQP-58 FF, DH.1300A-EQP-78 FF, DH.1300A-EQP-98 FF, DH.1300A-EQP-118 FF, DH.1300A-EQP-138 FF, DH.1300A-EQP-158 FF, DH.1300A-EQP-178 FF, DH.1300A-EQP-198 FF, DH.1300A-EQP-218 FF, DH.1300820 FF, DH.13001140 FF, DH.1300B-EQP-34 FF, DH.1300B-EQP-52 FF, DH.1300B-EQP-70 FF, DH.1300B-EQP-88 FF, DH.1300B-EQP-106 FF, DH.1300B-EQP-124 FF, DH.1300B-EQP-142 FF, DH.1300B-EQP-160 FF, DH.1300B-EQP-178 FF, DH.1300B-EQP-196 FF, DH.1300.1160 FF, DH.1300..1160 FF, DH.1300140 FF, DH.1300.3062 FF, DH.1300.3059 FF, DH.160012107 FF, DH.13000.1712 FF, DH.160012147 FF, DH.160012148 FF, DH.160012149 FF, A5737 FF, A5756 FF, A5761 FF, A5769 FF, DH1300.L5CX.COMM.250 |  | 1d | finish on or before 2027-03-01 |
| DH1300.4030 |  | Final Completion - Phase Close-Out (all punch completed) - DH1300 | 30d | 2027-03-19 | 2027-04-29 | DH1300.4020, DH.13007820, DH.1300B-EQP-18, DH.1300B-EQP-36, DH.1300B-EQP-54, DH.1300B-EQP-72, DH.1300B-EQP-90, DH.1300B-EQP-108, DH.1300B-EQP-126, DH.1300B-EQP-144, DH.1300B-EQP-162, DH.1300B-EQP-180, DH.1300B-EQP-198, DH.1300A-EQP-40, DH.1300A-EQP-60, DH.1300A-EQP-80, DH.1300A-EQP-100, DH.1300A-EQP-120, DH.1300A-EQP-140, DH.1300A-EQP-160, DH.1300A-EQP-180, DH.1300A-EQP-200, DH.1300A-EQP-220, DH.1300..1140, DH.13008080, DH.1300B-EQP-16, DH.1300A-EQP-18, DH.1300A-EQP-20, DH.1300.1330, DH.1300.1310, DH.130012031, DH.130012055, DH.130012056, DH.1300A-EQP-38, DH.1300A-EQP-58, DH.1300A-EQP-78, DH.1300A-EQP-98, DH.1300A-EQP-118, DH.1300A-EQP-138, DH.1300A-EQP-158, DH.1300A-EQP-178, DH.1300A-EQP-198, DH.1300A-EQP-218, DH.1300820, DH.13001140, DH.1300B-EQP-34, DH.1300B-EQP-52, DH.1300B-EQP-70, DH.1300B-EQP-88, DH.1300B-EQP-106, DH.1300B-EQP-124, DH.1300B-EQP-142, DH.1300B-EQP-160, DH.1300B-EQP-178, DH.1300B-EQP-196, DH.1300.1160, DH.1300..1160, DH.1300140, DH.1300.3062, DH.1300.3059, DH.160012107, DH.13000.1712, DH.160012147, DH.160012148, DH.160012149, DH1300.A2110.CO, DH1300.A2110.CO FF, A5737, A5756 SS, A5761, A5769 |  | 37d |  |
|  | 6 | **DH1400** |  | 2026-08-12 | 2027-06-03 |  |  |  |  |
| DH1400.7265 |  | DH1400 Build-Out Duration | 158d | 2026-08-12 A | 2027-03-31 | DH.1400.1010 SS | 22% | 0d |  |
| DH2100.4010 |  | Milestone 4 - Early Access - 4th Data Hall DH1400 - [03/01/2027] | 0d | 2027-03-16 | 2027-03-16 | A5853 FF, DH.1400B-EQP-18 FF, DH.1400B-EQP-36 FF, DH.1400B-EQP-54 FF, DH.1400B-EQP-72 FF, DH.1400B-EQP-90 FF, DH.1400B-EQP-108 FF, DH.1400B-EQP-126 FF, DH.1400B-EQP-144 FF, DH.1400B-EQP-162 FF, DH.1400B-EQP-180 FF, DH.1400B-EQP-198 FF, DH.1400A-EQP-40 FF, DH.1400A-EQP-60 FF, DH.1400A-EQP-80 FF, DH.1400A-EQP-100 FF, DH.1400A-EQP-120 FF, DH.1400A-EQP-140 FF, DH.1400A-EQP-160 FF, DH.1400A-EQP-180 FF, DH.1400A-EQP-200 FF, DH.1400A-EQP-220 FF, DH.1400B-EQP-16 FF, DH.1400A-EQP-18 FF, DH.1400A-EQP-20 FF, DH.1400.1330 FF, DH.1400.1310 FF, DH.1400A-EQP-218 FF, DH.1400A-EQP-198 FF, DH.1400A-EQP-178 FF, DH.1400A-EQP-158 FF, DH.1400A-EQP-138 FF, DH.1400A-EQP-118 FF, DH.1400A-EQP-98 FF, DH.1400A-EQP-78 FF, DH.1400A-EQP-58 FF, DH.1400A-EQP-38 FF, DH.1400820 FF, DH.14001140 FF, DH.1400B-EQP-178 FF, DH.1400B-EQP-196 FF, DH.1400B-EQP-160 FF, DH.1400B-EQP-142 FF, DH.1400B-EQP-124 FF, DH.1400B-EQP-106 FF, DH.1400B-EQP-88 FF, DH.1400B-EQP-70 FF, DH.1400B-EQP-52 FF, DH.1400B-EQP-34 FF, DH.140012056 FF, DH.1400.1160 FF, DH.1400140 FF, DH.14007820 FF, DH.1400.3063 FF, DH.14000.1712 FF, DH.160012154 FF, DH.160012155 FF, DH.1400.3061 FF, A5740 FF, A5780 FF, A5785 FF, A5793 FF, DH1400.L3CX.69 |  | -10d | finish on or before 2027-03-01 |
| DH2100.4020 |  | Milestone 10 - Substantial Completion - TCO for DH1400 [04/01/27] | 0d | 2027-04-01 | 2027-04-01 | DH1400.7265 FF, DH2100.4010 FF, DH.1400B-EQP-18 FF, DH.1400B-EQP-36 FF, DH.1400B-EQP-54 FF, DH.1400B-EQP-72 FF, DH.1400B-EQP-90 FF, DH.1400B-EQP-108 FF, DH.1400B-EQP-126 FF, DH.1400B-EQP-144 FF, DH.1400B-EQP-162 FF, DH.1400B-EQP-180 FF, DH.1400B-EQP-198 FF, DH.1400A-EQP-40 FF, DH.1400A-EQP-60 FF, DH.1400A-EQP-80 FF, DH.1400A-EQP-100 FF, DH.1400A-EQP-120 FF, DH.1400A-EQP-140 FF, DH.1400A-EQP-160 FF, DH.1400A-EQP-180 FF, DH.1400A-EQP-200 FF, DH.1400A-EQP-220 FF, DH.1400B-EQP-16 FF, DH.1400A-EQP-18 FF, DH.1400A-EQP-20 FF, DH.1400.1330 FF, DH.1400.1310 FF, DH.1400A-EQP-218 FF, DH.1400A-EQP-198 FF, DH.1400A-EQP-178 FF, DH.1400A-EQP-158 FF, DH.1400A-EQP-138 FF, DH.1400A-EQP-118 FF, DH.1400A-EQP-98 FF, DH.1400A-EQP-78 FF, DH.1400A-EQP-58 FF, DH.1400A-EQP-38 FF, DH.1400820 FF, DH.14001140 FF, DH.1400B-EQP-178 FF, DH.1400B-EQP-196 FF, DH.1400B-EQP-160 FF, DH.1400B-EQP-142 FF, DH.1400B-EQP-124 FF, DH.1400B-EQP-106 FF, DH.1400B-EQP-88 FF, DH.1400B-EQP-70 FF, DH.1400B-EQP-52 FF, DH.1400B-EQP-34 FF, DH.140012056 FF, DH.1400.1160 FF, DH.1400140 FF, DH.14007820 FF, DH.1400.3063 FF, DH.14000.1712 FF, DH.160012154 FF, DH.160012155 FF, DH.1400.3061 FF, A5740 FF, A5780 FF, A5785 FF, A5793 FF, DH1400.L5CX.COMM.270 |  | 0d | finish on or before 2027-04-01 |
| DH2100.4030 |  | Final Completion - Phase Close-Out (all punch completed) - DH1400 | 30d | 2027-04-22 | 2027-06-03 | DH2100.4020, DH.1400B-EQP-18, DH.1400B-EQP-36, DH.1400B-EQP-54, DH.1400B-EQP-72, DH.1400B-EQP-90, DH.1400B-EQP-108, DH.1400B-EQP-126, DH.1400B-EQP-144, DH.1400B-EQP-162, DH.1400B-EQP-180, DH.1400B-EQP-198, DH.1400A-EQP-40, DH.1400A-EQP-60, DH.1400A-EQP-80, DH.1400A-EQP-100, DH.1400A-EQP-120, DH.1400A-EQP-140, DH.1400A-EQP-160, DH.1400A-EQP-180, DH.1400A-EQP-200, DH.1400A-EQP-220, DH.1400B-EQP-16, DH.1400A-EQP-18, DH.1400A-EQP-20, DH.1400.1330, DH.1400.1310, DH.1400A-EQP-218, DH.1400A-EQP-198, DH.1400A-EQP-178, DH.1400A-EQP-158, DH.1400A-EQP-138, DH.1400A-EQP-118, DH.1400A-EQP-98, DH.1400A-EQP-78, DH.1400A-EQP-58, DH.1400A-EQP-38, DH.1400820, DH.14001140, DH.1400B-EQP-178, DH.1400B-EQP-196, DH.1400B-EQP-160, DH.1400B-EQP-142, DH.1400B-EQP-124, DH.1400B-EQP-106, DH.1400B-EQP-88, DH.1400B-EQP-70, DH.1400B-EQP-52, DH.1400B-EQP-34, DH.140012056, DH.1400.1160, DH.1400140, DH.14007820, DH.1400.3063, DH.14000.1712, DH.160012154, DH.160012155, DH.1400.3061, DH1400.A2110.CO, DH1400.A2110.CO FF, A5740, A5780 SS, A5785, A5793 |  | 13d |  |
|  | 5 | **DH1500** |  | 2026-10-02 | 2027-06-14 |  |  |  |  |
| DH1500.7350 |  | DH1400 Build-Out Duration | 144d | 2026-10-02 | 2027-04-30 | DH.1500.1010 SS |  | 0d |  |
| DH2200.4010 |  | Milestone 5 - Early Access 5th Data Hall DH1500 - [04/01/2027] | 0d | 2027-04-15 | 2027-04-15 | A5854 FF, DH.1500B-EQP-18 FF, DH.1500B-EQP-36 FF, DH.1500B-EQP-54 FF, DH.1500B-EQP-72 FF, DH.1500B-EQP-90 FF, DH.1500B-EQP-108 FF, DH.1500B-EQP-126 FF, DH.1500B-EQP-144 FF, DH.1500B-EQP-162 FF, DH.1500B-EQP-180 FF, DH.1500B-EQP-198 FF, DH.1500A-EQP-40 FF, DH.1500A-EQP-60 FF, DH.1500A-EQP-80 FF, DH.1500A-EQP-100 FF, DH.1500A-EQP-120 FF, DH.1500A-EQP-140 FF, DH.1500A-EQP-160 FF, DH.1500A-EQP-180 FF, DH.1500A-EQP-200 FF, DH.1500A-EQP-220 FF, DH.1500..1140 FF, DH.1500B-EQP-16 FF, DH.1500A-EQP-18 FF, DH.1500A-EQP-20 FF, DH.1500.1330 FF, DH.1500.1310 FF, DH.1500140 FF, DH.1500..1160 FF, DH.15001140 FF, DH.150012056 FF, DH.1500A-EQP-38 FF, DH.1500A-EQP-58 FF, DH.1500A-EQP-98 FF, DH.1500A-EQP-118 FF, DH.1500A-EQP-138 FF, DH.1500A-EQP-158 FF, DH.1500A-EQP-178 FF, DH.1500A-EQP-198 FF, DH.1500A-EQP-218 FF, DH.1500A-EQP-78 FF, DH.1500820 FF, DH.1500B-EQP-34 FF, DH.1500B-EQP-52 FF, DH.1500B-EQP-70 FF, DH.1500B-EQP-88 FF, DH.1500B-EQP-106 FF, DH.1500B-EQP-124 FF, DH.1500B-EQP-142 FF, DH.1500B-EQP-160 FF, DH.1500B-EQP-178 FF, DH.1500B-EQP-196 FF, DH.1500.1160 FF, DH.1500.3056 FF, DH.15000.1712 FF, DH.160012160 FF, DH.160012161 FF, DH.1500.3055 FF, DH.1400B-EQP-18 FF, DH.1400B-EQP-36 FF, DH.1400B-EQP-54 FF, DH.1400B-EQP-72 FF, DH.1400B-EQP-90 FF, DH.1400B-EQP-108 FF, DH.1400B-EQP-126 FF, DH.1400B-EQP-144 FF, DH.1400B-EQP-162 FF, DH.1400B-EQP-180 FF, DH.1400A-EQP-40 FF, DH.1400A-EQP-60 FF, DH.1400A-EQP-80 FF, DH.1400A-EQP-100 FF, DH.1400A-EQP-120 FF, DH.1400A-EQP-140 FF, DH.1400A-EQP-160 FF, DH.1400A-EQP-180 FF, DH.1400A-EQP-200 FF, DH.1400B-EQP-16 FF, DH.1400A-EQP-18 FF, DH.1400A-EQP-20 FF, DH.1400A-EQP-198 FF, DH.1400A-EQP-178 FF, DH.1400A-EQP-158 FF, DH.1400A-EQP-138 FF, DH.1400A-EQP-118 FF, DH.1400A-EQP-98 FF, DH.1400A-EQP-78 FF, DH.1400A-EQP-58 FF, DH.1400A-EQP-38 FF, DH.1400820 FF, DH.14001140 FF, DH.1400B-EQP-178 FF, DH.1400B-EQP-160 FF, DH.1400B-EQP-142 FF, DH.1400B-EQP-124 FF, DH.1400B-EQP-106 FF, DH.1400B-EQP-88 FF, DH.1400B-EQP-70 FF, DH.1400B-EQP-52 FF, DH.1400B-EQP-34 FF, DH.140012056 FF, DH.1400.1160 FF, DH.14007820 FF, A5740 FF, A5780 FF, A5785 FF, A5743 FF, A5804 FF, A5809 FF, A5793 FF, A5817 FF, DH1500.L3CX.89 |  | -9.12d | finish on or before 2027-04-01 |
| DH2200.4020 |  | Milestone 11 - Substantial Completion TCO for DH1500 [05/01/27] | 0d | 2027-05-03 | 2027-05-03 | DH1500.7350 FF, DH2200.4010 FF, DH.15007820 FF, DH.1500B-EQP-18 FF, DH.1500B-EQP-36 FF, DH.1500B-EQP-54 FF, DH.1500B-EQP-72 FF, DH.1500B-EQP-90 FF, DH.1500B-EQP-108 FF, DH.1500B-EQP-126 FF, DH.1500B-EQP-144 FF, DH.1500B-EQP-162 FF, DH.1500B-EQP-180 FF, DH.1500B-EQP-198 FF, DH.1500A-EQP-40 FF, DH.1500A-EQP-60 FF, DH.1500A-EQP-80 FF, DH.1500A-EQP-100 FF, DH.1500A-EQP-120 FF, DH.1500A-EQP-140 FF, DH.1500A-EQP-160 FF, DH.1500A-EQP-180 FF, DH.1500A-EQP-200 FF, DH.1500A-EQP-220 FF, DH.1500..1140 FF, DH.1500B-EQP-16 FF, DH.1500A-EQP-18 FF, DH.1500A-EQP-20 FF, DH.1500.1330 FF, DH.1500.1310 FF, DH.1500140 FF, DH.1500..1160 FF, DH.15001140 FF, DH.150012056 FF, DH.1500A-EQP-38 FF, DH.1500A-EQP-58 FF, DH.1500A-EQP-98 FF, DH.1500A-EQP-118 FF, DH.1500A-EQP-138 FF, DH.1500A-EQP-158 FF, DH.1500A-EQP-178 FF, DH.1500A-EQP-198 FF, DH.1500A-EQP-218 FF, DH.1500A-EQP-78 FF, DH.1500820 FF, DH.1500B-EQP-34 FF, DH.1500B-EQP-52 FF, DH.1500B-EQP-70 FF, DH.1500B-EQP-88 FF, DH.1500B-EQP-106 FF, DH.1500B-EQP-124 FF, DH.1500B-EQP-142 FF, DH.1500B-EQP-160 FF, DH.1500B-EQP-178 FF, DH.1500B-EQP-196 FF, DH.1500.1160 FF, DH.1500.3056 FF, DH.15000.1712 FF, DH.160012160 FF, DH.160012161 FF, DH.1500.3055 FF, DH.1400B-EQP-18 FF, DH.1400B-EQP-36 FF, DH.1400B-EQP-54 FF, DH.1400B-EQP-72 FF, DH.1400B-EQP-90 FF, DH.1400B-EQP-108 FF, DH.1400B-EQP-126 FF, DH.1400B-EQP-144 FF, DH.1400B-EQP-162 FF, DH.1400B-EQP-180 FF, DH.1400A-EQP-40 FF, DH.1400A-EQP-60 FF, DH.1400A-EQP-80 FF, DH.1400A-EQP-100 FF, DH.1400A-EQP-120 FF, DH.1400A-EQP-140 FF, DH.1400A-EQP-160 FF, DH.1400A-EQP-180 FF, DH.1400A-EQP-200 FF, DH.1400B-EQP-16 FF, DH.1400A-EQP-18 FF, DH.1400A-EQP-20 FF, DH.1400A-EQP-198 FF, DH.1400A-EQP-178 FF, DH.1400A-EQP-158 FF, DH.1400A-EQP-138 FF, DH.1400A-EQP-118 FF, DH.1400A-EQP-98 FF, DH.1400A-EQP-78 FF, DH.1400A-EQP-58 FF, DH.1400A-EQP-38 FF, DH.1400820 FF, DH.14001140 FF, DH.1400B-EQP-178 FF, DH.1400B-EQP-160 FF, DH.1400B-EQP-142 FF, DH.1400B-EQP-124 FF, DH.1400B-EQP-106 FF, DH.1400B-EQP-88 FF, DH.1400B-EQP-70 FF, DH.1400B-EQP-52 FF, DH.1400B-EQP-34 FF, DH.140012056 FF, DH.1400.1160 FF, DH.14007820 FF, A5740 FF, A5780 FF, A5785 FF, A5743 FF, A5804 FF, A5809 FF, A5793 FF, A5817 FF, DH1500.L5CX.COMM.290 |  | 0d | finish on or before 2027-05-01 |
| DH2200.4030 |  | Final Completion - Phase Close-Out (all punch completed) - DH1500 | 15d | 2027-05-24 | 2027-06-14 | DH2200.4020, DH1500.A2110.CO, DH.15007820, DH.1500B-EQP-18, DH.1500B-EQP-36, DH.1500B-EQP-54, DH.1500B-EQP-72, DH.1500B-EQP-90, DH.1500B-EQP-108, DH.1500B-EQP-126, DH.1500B-EQP-144, DH.1500B-EQP-162, DH.1500B-EQP-180, DH.1500B-EQP-198, DH.1500A-EQP-40, DH.1500A-EQP-60, DH.1500A-EQP-80, DH.1500A-EQP-100, DH.1500A-EQP-120, DH.1500A-EQP-140, DH.1500A-EQP-160, DH.1500A-EQP-180, DH.1500A-EQP-200, DH.1500A-EQP-220, DH.1500..1140, DH.1500B-EQP-16, DH.1500A-EQP-18, DH.1500A-EQP-20, DH.1500.1330, DH.1500.1310, DH.1500140, DH.1500..1160, DH.15001140, DH.150012056, DH.1500A-EQP-38, DH.1500A-EQP-58, DH.1500A-EQP-98, DH.1500A-EQP-118, DH.1500A-EQP-138, DH.1500A-EQP-158, DH.1500A-EQP-178, DH.1500A-EQP-198, DH.1500A-EQP-218, DH.1500A-EQP-78, DH.1500820, DH.1500B-EQP-34, DH.1500B-EQP-52, DH.1500B-EQP-70, DH.1500B-EQP-88, DH.1500B-EQP-106, DH.1500B-EQP-124, DH.1500B-EQP-142, DH.1500B-EQP-160, DH.1500B-EQP-178, DH.1500B-EQP-196, DH.1500.1160, DH.1500.3056, DH.15000.1712, DH.160012160, DH.160012161, DH.1500.3055, DH.1400B-EQP-18, DH.1400B-EQP-36, DH.1400B-EQP-54, DH.1400B-EQP-72, DH.1400B-EQP-90, DH.1400B-EQP-108, DH.1400B-EQP-126, DH.1400B-EQP-144, DH.1400B-EQP-162, DH.1400B-EQP-180, DH.1400A-EQP-40, DH.1400A-EQP-60, DH.1400A-EQP-80, DH.1400A-EQP-100, DH.1400A-EQP-120, DH.1400A-EQP-140, DH.1400A-EQP-160, DH.1400A-EQP-180, DH.1400A-EQP-200, DH.1400B-EQP-16, DH.1400A-EQP-18, DH.1400A-EQP-20, DH.1400A-EQP-198, DH.1400A-EQP-178, DH.1400A-EQP-158, DH.1400A-EQP-138, DH.1400A-EQP-118, DH.1400A-EQP-98, DH.1400A-EQP-78, DH.1400A-EQP-58, DH.1400A-EQP-38, DH.1400820, DH.14001140, DH.1400B-EQP-178, DH.1400B-EQP-160, DH.1400B-EQP-142, DH.1400B-EQP-124, DH.1400B-EQP-106, DH.1400B-EQP-88, DH.1400B-EQP-70, DH.1400B-EQP-52, DH.1400B-EQP-34, DH.140012056, DH.1400.1160, DH.14007820, DH1500.A2110.CO FF, A5740, A5780 SS, A5785, A5743, A5804 SS, A5809, A5793, A5817 |  | 6d |  |
|  | 4 | **DH1600** |  | 2026-08-31 | 2027-06-22 |  |  |  |  |
| DH2300.7250 |  | DH1600 Build-Out Duration | 188d | 2026-08-31 A | 2027-06-01 | DH.1600.1010 SS | 11% | -1d |  |
| DH2300.4010 |  | Milestone 6 - Early Access 6th Data Hall DH1600 - [05/01/2027] | 0d | 2027-05-14 | 2027-05-14 | A5855 FF, DH.1600B-EQP-18 FF, DH.1600B-EQP-36 FF, DH.1600B-EQP-54 FF, DH.1600B-EQP-72 FF, DH.1600B-EQP-90 FF, DH.1600B-EQP-108 FF, DH.1600B-EQP-126 FF, DH.1600B-EQP-144 FF, DH.1600B-EQP-162 FF, DH.1600B-EQP-180 FF, DH.1600B-EQP-198 FF, DH.1600A-EQP-40 FF, DH.1600A-EQP-60 FF, DH.1600A-EQP-80 FF, DH.1600A-EQP-100 FF, DH.1600A-EQP-120 FF, DH.1600A-EQP-140 FF, DH.1600A-EQP-160 FF, DH.1600A-EQP-180 FF, DH.1600A-EQP-200 FF, DH.1600A-EQP-220 FF, DH.1600..1140 FF, DH.1600B-EQP-16 FF, DH.1600A-EQP-18 FF, DH.1600A-EQP-20 FF, DH.1600.1330 FF, DH.1600.1310 FF, DH.160012056 FF, DH.1600A-EQP-38 FF, DH.1600A-EQP-58 FF, DH.1600A-EQP-78 FF, DH.1600A-EQP-98 FF, DH.1600A-EQP-118 FF, DH.1600A-EQP-138 FF, DH.1600A-EQP-158 FF, DH.1600A-EQP-178 FF, DH.1600A-EQP-198 FF, DH.1600A-EQP-218 FF, DH.1600B-EQP-34 FF, DH.1600B-EQP-52 FF, DH.1600B-EQP-70 FF, DH.1600B-EQP-88 FF, DH.1600B-EQP-106 FF, DH.1600B-EQP-124 FF, DH.1600B-EQP-142 FF, DH.1600B-EQP-160 FF, DH.1600B-EQP-178 FF, DH.1600B-EQP-196 FF, DH.1600..1160 FF, DH.1600140 FF, DH.1600.3057 FF, DH.1600.3056 FF, DH.16000.1712 FF, DH.160012166 FF, DH.160012167 FF, DH.1500B-EQP-18 FF, DH.1500B-EQP-36 FF, DH.1500B-EQP-54 FF, DH.1500B-EQP-72 FF, DH.1500B-EQP-90 FF, DH.1500B-EQP-108 FF, DH.1500B-EQP-126 FF, DH.1500B-EQP-144 FF, DH.1500B-EQP-162 FF, DH.1500B-EQP-180 FF, DH.1500A-EQP-40 FF, DH.1500A-EQP-60 FF, DH.1500A-EQP-80 FF, DH.1500A-EQP-100 FF, DH.1500A-EQP-120 FF, DH.1500A-EQP-140 FF, DH.1500A-EQP-160 FF, DH.1500A-EQP-180 FF, DH.1500A-EQP-200 FF, DH.1500..1140 FF, DH.1500B-EQP-16 FF, DH.1500A-EQP-18 FF, DH.1500A-EQP-20 FF, DH.1500..1160 FF, DH.15001140 FF, DH.150012056 FF, DH.1500A-EQP-38 FF, DH.1500A-EQP-58 FF, DH.1500A-EQP-98 FF, DH.1500A-EQP-118 FF, DH.1500A-EQP-138 FF, DH.1500A-EQP-158 FF, DH.1500A-EQP-178 FF, DH.1500A-EQP-198 FF, DH.1500A-EQP-78 FF, DH.1500820 FF, DH.1500B-EQP-34 FF, DH.1500B-EQP-52 FF, DH.1500B-EQP-70 FF, DH.1500B-EQP-88 FF, DH.1500B-EQP-106 FF, DH.1500B-EQP-124 FF, DH.1500B-EQP-142 FF, DH.1500B-EQP-160 FF, DH.1500B-EQP-178 FF, DH.1500.1160 FF, DH.1400B-EQP-18 FF, DH.1400B-EQP-36 FF, DH.1400B-EQP-54 FF, DH.1400B-EQP-72 FF, DH.1400B-EQP-90 FF, DH.1400B-EQP-108 FF, DH.1400B-EQP-126 FF, DH.1400B-EQP-144 FF, DH.1400B-EQP-162 FF, DH.1400B-EQP-180 FF, DH.1400A-EQP-40 FF, DH.1400A-EQP-60 FF, DH.1400A-EQP-80 FF, DH.1400A-EQP-100 FF, DH.1400A-EQP-120 FF, DH.1400A-EQP-140 FF, DH.1400A-EQP-160 FF, DH.1400A-EQP-180 FF, DH.1400A-EQP-200 FF, DH.1400B-EQP-16 FF, DH.1400A-EQP-18 FF, DH.1400A-EQP-20 FF, DH.1400A-EQP-198 FF, DH.1400A-EQP-178 FF, DH.1400A-EQP-158 FF, DH.1400A-EQP-138 FF, DH.1400A-EQP-118 FF, DH.1400A-EQP-98 FF, DH.1400A-EQP-78 FF, DH.1400A-EQP-58 FF, DH.1400A-EQP-38 FF, DH.1400820 FF, DH.14001140 FF, DH.1400B-EQP-178 FF, DH.1400B-EQP-160 FF, DH.1400B-EQP-142 FF, DH.1400B-EQP-124 FF, DH.1400B-EQP-106 FF, DH.1400B-EQP-88 FF, DH.1400B-EQP-70 FF, DH.1400B-EQP-52 FF, DH.1400B-EQP-34 FF, DH.140012056 FF, DH.1400.1160 FF, DH.14007820 FF, A5740 FF, A5780 FF, A5785 FF, A5743 FF, A5804 FF, A5809 FF, A5746 FF, A5827 FF, A5793 FF, A5817 FF, A5830 FF, A5834 FF, A5835 FF, DH1600.L3CX.9 |  | -9d | finish on or before 2027-05-01 |
| DH2300.4020 |  | v for DH1600 [06/01/27] | 0d | 2027-06-02 | 2027-06-02 | DH2300.7250 FF, DH2300.4010 FF, DH.1600.1160 FF, DH.1600820 FF, DH.16001140 FF, DH.16007820 FF, DH.1600B-EQP-18 FF, DH.1600B-EQP-36 FF, DH.1600B-EQP-54 FF, DH.1600B-EQP-72 FF, DH.1600B-EQP-90 FF, DH.1600B-EQP-108 FF, DH.1600B-EQP-126 FF, DH.1600B-EQP-144 FF, DH.1600B-EQP-162 FF, DH.1600B-EQP-180 FF, DH.1600B-EQP-198 FF, DH.1600A-EQP-40 FF, DH.1600A-EQP-60 FF, DH.1600A-EQP-80 FF, DH.1600A-EQP-100 FF, DH.1600A-EQP-120 FF, DH.1600A-EQP-140 FF, DH.1600A-EQP-160 FF, DH.1600A-EQP-180 FF, DH.1600A-EQP-200 FF, DH.1600A-EQP-220 FF, DH.1600..1140 FF, DH.1600B-EQP-16 FF, DH.1600A-EQP-18 FF, DH.1600A-EQP-20 FF, DH.1600.1330 FF, DH.1600.1310 FF, DH.160012056 FF, DH.1600A-EQP-38 FF, DH.1600A-EQP-58 FF, DH.1600A-EQP-78 FF, DH.1600A-EQP-98 FF, DH.1600A-EQP-118 FF, DH.1600A-EQP-138 FF, DH.1600A-EQP-158 FF, DH.1600A-EQP-178 FF, DH.1600A-EQP-198 FF, DH.1600A-EQP-218 FF, DH.1600B-EQP-34 FF, DH.1600B-EQP-52 FF, DH.1600B-EQP-70 FF, DH.1600B-EQP-88 FF, DH.1600B-EQP-106 FF, DH.1600B-EQP-124 FF, DH.1600B-EQP-142 FF, DH.1600B-EQP-160 FF, DH.1600B-EQP-178 FF, DH.1600B-EQP-196 FF, DH.1600..1160 FF, DH.1600140 FF, DH.1600.3057 FF, DH.1600.3056 FF, DH.16000.1712 FF, DH.160012166 FF, DH.160012167 FF, DH.1500B-EQP-18 FF, DH.1500B-EQP-36 FF, DH.1500B-EQP-54 FF, DH.1500B-EQP-72 FF, DH.1500B-EQP-90 FF, DH.1500B-EQP-108 FF, DH.1500B-EQP-126 FF, DH.1500B-EQP-144 FF, DH.1500B-EQP-162 FF, DH.1500B-EQP-180 FF, DH.1500A-EQP-40 FF, DH.1500A-EQP-60 FF, DH.1500A-EQP-80 FF, DH.1500A-EQP-100 FF, DH.1500A-EQP-120 FF, DH.1500A-EQP-140 FF, DH.1500A-EQP-160 FF, DH.1500A-EQP-180 FF, DH.1500A-EQP-200 FF, DH.1500..1140 FF, DH.1500B-EQP-16 FF, DH.1500A-EQP-18 FF, DH.1500A-EQP-20 FF, DH.1500..1160 FF, DH.15001140 FF, DH.150012056 FF, DH.1500A-EQP-38 FF, DH.1500A-EQP-58 FF, DH.1500A-EQP-98 FF, DH.1500A-EQP-118 FF, DH.1500A-EQP-138 FF, DH.1500A-EQP-158 FF, DH.1500A-EQP-178 FF, DH.1500A-EQP-198 FF, DH.1500A-EQP-78 FF, DH.1500820 FF, DH.1500B-EQP-34 FF, DH.1500B-EQP-52 FF, DH.1500B-EQP-70 FF, DH.1500B-EQP-88 FF, DH.1500B-EQP-106 FF, DH.1500B-EQP-124 FF, DH.1500B-EQP-142 FF, DH.1500B-EQP-160 FF, DH.1500B-EQP-178 FF, DH.1500.1160 FF, DH.1400B-EQP-18 FF, DH.1400B-EQP-36 FF, DH.1400B-EQP-54 FF, DH.1400B-EQP-72 FF, DH.1400B-EQP-90 FF, DH.1400B-EQP-108 FF, DH.1400B-EQP-126 FF, DH.1400B-EQP-144 FF, DH.1400B-EQP-162 FF, DH.1400B-EQP-180 FF, DH.1400A-EQP-40 FF, DH.1400A-EQP-60 FF, DH.1400A-EQP-80 FF, DH.1400A-EQP-100 FF, DH.1400A-EQP-120 FF, DH.1400A-EQP-140 FF, DH.1400A-EQP-160 FF, DH.1400A-EQP-180 FF, DH.1400A-EQP-200 FF, DH.1400B-EQP-16 FF, DH.1400A-EQP-18 FF, DH.1400A-EQP-20 FF, DH.1400A-EQP-198 FF, DH.1400A-EQP-178 FF, DH.1400A-EQP-158 FF, DH.1400A-EQP-138 FF, DH.1400A-EQP-118 FF, DH.1400A-EQP-98 FF, DH.1400A-EQP-78 FF, DH.1400A-EQP-58 FF, DH.1400A-EQP-38 FF, DH.1400820 FF, DH.14001140 FF, DH.1400B-EQP-178 FF, DH.1400B-EQP-160 FF, DH.1400B-EQP-142 FF, DH.1400B-EQP-124 FF, DH.1400B-EQP-106 FF, DH.1400B-EQP-88 FF, DH.1400B-EQP-70 FF, DH.1400B-EQP-52 FF, DH.1400B-EQP-34 FF, DH.140012056 FF, DH.1400.1160 FF, DH.14007820 FF, A5740 FF, A5780 FF, A5785 FF, A5743 FF, A5804 FF, A5809 FF, A5746 FF, A5827 FF, A5793 FF, A5817 FF, A5830 FF, A5834 FF, A5835 FF, DH1600.L5CX.COMM.210 |  | -1d | finish on or before 2027-06-01 |
| DH2300.4030 |  | Final Completion - Phase Close-Out (all punch completed) - DH1600 | 0d | 2027-06-22 | 2027-06-22 | DH2300.4020, DH.1600.1160, DH.1600820, DH.16001140, DH.16007820, DH.1600B-EQP-18, DH.1600B-EQP-36, DH.1600B-EQP-54, DH.1600B-EQP-72, DH.1600B-EQP-90, DH.1600B-EQP-108, DH.1600B-EQP-126, DH.1600B-EQP-144, DH.1600B-EQP-162, DH.1600B-EQP-180, DH.1600B-EQP-198, DH.1600A-EQP-40, DH.1600A-EQP-60, DH.1600A-EQP-80, DH.1600A-EQP-100, DH.1600A-EQP-120, DH.1600A-EQP-140, DH.1600A-EQP-160, DH.1600A-EQP-180, DH.1600A-EQP-200, DH.1600A-EQP-220, DH.1600..1140, DH.1600B-EQP-16, DH.1600A-EQP-18, DH.1600A-EQP-20, DH.1600.1330, DH.1600.1310, DH.160012056, DH.1600A-EQP-38, DH.1600A-EQP-58, DH.1600A-EQP-78, DH.1600A-EQP-98, DH.1600A-EQP-118, DH.1600A-EQP-138, DH.1600A-EQP-158, DH.1600A-EQP-178, DH.1600A-EQP-198, DH.1600A-EQP-218, DH.1600B-EQP-34, DH.1600B-EQP-52, DH.1600B-EQP-70, DH.1600B-EQP-88, DH.1600B-EQP-106, DH.1600B-EQP-124, DH.1600B-EQP-142, DH.1600B-EQP-160, DH.1600B-EQP-178, DH.1600B-EQP-196, DH.1600..1160, DH.1600140, DH.1600.3057, DH.1600.3056, DH.16000.1712, DH.160012166, DH.160012167, DH.1500B-EQP-18, DH.1500B-EQP-36, DH.1500B-EQP-54, DH.1500B-EQP-72, DH.1500B-EQP-90, DH.1500B-EQP-108, DH.1500B-EQP-126, DH.1500B-EQP-144, DH.1500B-EQP-162, DH.1500B-EQP-180, DH.1500A-EQP-40, DH.1500A-EQP-60, DH.1500A-EQP-80, DH.1500A-EQP-100, DH.1500A-EQP-120, DH.1500A-EQP-140, DH.1500A-EQP-160, DH.1500A-EQP-180, DH.1500A-EQP-200, DH.1500..1140, DH.1500B-EQP-16, DH.1500A-EQP-18, DH.1500A-EQP-20, DH.1500..1160, DH.15001140, DH.150012056, DH.1500A-EQP-38, DH.1500A-EQP-58, DH.1500A-EQP-98, DH.1500A-EQP-118, DH.1500A-EQP-138, DH.1500A-EQP-158, DH.1500A-EQP-178, DH.1500A-EQP-198, DH.1500A-EQP-78, DH.1500820, DH.1500B-EQP-34, DH.1500B-EQP-52, DH.1500B-EQP-70, DH.1500B-EQP-88, DH.1500B-EQP-106, DH.1500B-EQP-124, DH.1500B-EQP-142, DH.1500B-EQP-160, DH.1500B-EQP-178, DH.1500.1160, DH.1400B-EQP-18, DH.1400B-EQP-36, DH.1400B-EQP-54, DH.1400B-EQP-72, DH.1400B-EQP-90, DH.1400B-EQP-108, DH.1400B-EQP-126, DH.1400B-EQP-144, DH.1400B-EQP-162, DH.1400B-EQP-180, DH.1400A-EQP-40, DH.1400A-EQP-60, DH.1400A-EQP-80, DH.1400A-EQP-100, DH.1400A-EQP-120, DH.1400A-EQP-140, DH.1400A-EQP-160, DH.1400A-EQP-180, DH.1400A-EQP-200, DH.1400B-EQP-16, DH.1400A-EQP-18, DH.1400A-EQP-20, DH.1400A-EQP-198, DH.1400A-EQP-178, DH.1400A-EQP-158, DH.1400A-EQP-138, DH.1400A-EQP-118, DH.1400A-EQP-98, DH.1400A-EQP-78, DH.1400A-EQP-58, DH.1400A-EQP-38, DH.1400820, DH.14001140, DH.1400B-EQP-178, DH.1400B-EQP-160, DH.1400B-EQP-142, DH.1400B-EQP-124, DH.1400B-EQP-106, DH.1400B-EQP-88, DH.1400B-EQP-70, DH.1400B-EQP-52, DH.1400B-EQP-34, DH.140012056, DH.1400.1160, DH.14007820, DH1600.A2110.CO FF, A5740, A5780 SS, A5785, A5743, A5804 SS, A5809, A5746, A5827, A5793, A5817, A5830, A5834, A5835 |  | 0d | finish on or before 2027-07-01 |
|  | 9 | **Security & Fire Alarm Testing** |  | 2026-10-29 | 2027-03-12 |  |  |  |  |
| A5850 |  | DH1100 - Security Cx & Testing | 0d | 2026-10-29 | 2026-10-29 | F.1000A.1170 FF, F.1000A.1175 FF, F.1000A.1180 FF, F.1000A.1185 FF, F.1000A.1190 FF |  | 23d |  |
| A5851 |  | DH1200 - Security Cx & Testing | 0d | 2026-11-19 | 2026-11-19 | M1231 FF, F.1000A.1195 FF, F.1000A.1200 FF, F.1000A.1205 FF, F.1000A.1210 FF, F.1000A.1215 FF |  | 28d |  |
| A5853 |  | DH1400 - Security Cx & Testing | 0d | 2027-01-07 | 2027-01-07 | F.1000A.1235 FF, F.1000A.1240 FF, F.1000A.1245 FF, F.1000A.1290 FF, F.1000A.1295 FF |  | 35d |  |
| A5852 |  | DH1300 - Security Cx & Testing | 0d | 2027-01-12 | 2027-01-12 | F.1000A.1220 FF+35d, F.1000A.1225 FF, F.1000A.1230 FF, F.1000A.1280 FF, F.1000A.1285 FF |  | 13d |  |
| A5854 |  | DH1500 - Security Cx & Testing | 0d | 2027-02-16 | 2027-02-16 | F.1000A.1250 FF, F.1000A.1255 FF, F.1000A.1260 FF, F.1000A.1300 FF, F.1000A.1305 FF |  | 31.88d |  |
| A5855 |  | DH1600 - Security Cx & Testing | 0d | 2027-03-12 | 2027-03-12 | F.1000A.1265 FF, F.1000A.1270 FF, F.1000A.1275 FF, F.1000A.1315 FF, F.1000A.1310 FF |  | 35d |  |
|  | 2 | **Preconstruction** |  | 2025-09-02 | 2026-07-08 |  |  |  |  |
| PRE.4360 |  | Preconstruction | 60d | 2025-11-26 A | 2026-02-02 A | M1010, M1050 SS | 100% |  |  |
|  | 1 | **Trade Buyout** |  | 2025-09-10 | 2026-07-08 |  |  |  |  |
|  | 1 | **Sitework** |  | 2025-11-03 | 2026-01-16 |  |  |  |  |
| TB.SITE.1010 |  | Trade Buyout / Sitework // Interview and Recieve Final Pricing | 10d | 2025-11-03 A | 2025-11-11 A | PRE.4360 SS | 100% |  |  |

| ID | WBS | Task | Duration | Start | Finish | Predecessors | Complete |
| --- | --- | --- | --- | --- | --- | --- | --- |
| TB.SITE.1000 |  | Trade Buyout / Sitework // Submit RTA | 1d | 2025-11-12 A | 2025-11-13 A | TB.SITE.1010 | 100% |
| TB.SITE.1020 |  | Trade Buyout / Sitework // RTA Concented (approved) | 5d | 2025-11-14 A | 2025-11-20 A | TB.SITE.1000, M1210 SS | 100% |
| TB.SITE.1030 |  | Trade Buyout / Sitework // Issue and Recieve Executed Contract | 10d | 2025-11-21 A | 2026-01-16 A | TB.SITE.1020 | 100% |
|  | 2 | **Concrete** |  | 2025-09-10 | 2026-01-28 |  |  |
| TB.CON.1010 |  | Trade Buyout / Concrete // Interview and Recieve Final Pricing | 10d | 2025-09-10 A | 2025-09-29 A | PRE.4360 SS | 100% |
| TB.CON.1000 |  | Trade Buyout / Concrete // Submit RTA | 1d | 2025-09-30 A | 2025-10-09 A | TB.CON.1010 | 100% |
| TB.CON.1020 |  | Trade Buyout / Concrete // RTA Concented (approved) | 5d | 2025-10-10 A | 2025-10-17 A | TB.CON.1000, M1210 SS | 100% |
| TB.CON.1030 |  | Trade Buyout / Concrete // Issue and Recieve Executed Contract | 10d | 2026-01-16 A | 2026-01-28 A | TB.CON.1020 | 100% |
|  | 3 | **Structural Steel** |  | 2025-10-22 | 2026-01-09 |  |  |
| TB.SS.1010 |  | Trade Buyout / Structural Steel // Interview and Recieve Final Pricing | 10d | 2025-10-22 A | 2025-11-05 A | PRE.4360 SS | 100% |
| TB.SS.1000 |  | Trade Buyout / Structural Steel // Submit RTA | 1d | 2025-11-06 A | 2025-11-06 A | TB.SS.1010 | 100% |
| TB.SS.1020 |  | Trade Buyout / Structural Steel // RTA Concented (approved) | 5d | 2025-11-07 A | 2025-11-12 A | TB.SS.1000, M1210 SS | 100% |
| TB.SS.1030 |  | Trade Buyout / Structural Steel // Issue and Recieve Executed Contract | 10d | 2025-11-12 A | 2026-01-09 A | TB.SS.1020 | 100% |
|  | 4 | **Electrical** |  | 2025-10-22 | 2026-01-21 |  |  |
| TB.ELEC.1010 |  | Trade Buyout / Electrical // Interview and Recieve Final Pricing | 10d | 2025-10-22 A | 2025-11-03 A | PRE.4360 SS | 100% |
| TB.ELEC.1000 |  | Trade Buyout / Electrical // Submit RTA | 1d | 2025-11-03 A | 2025-11-04 A | TB.ELEC.1010 | 100% |
| TB.ELEC.1020 |  | Trade Buyout / Electrical // RTA Concented (approved) | 5d | 2025-11-05 A | 2025-11-10 A | TB.ELEC.1000, M1210 SS | 100% |
| TB.ELEC.1030 |  | Trade Buyout / Electrical // Issue and Recieve Executed Contract | 10d | 2026-01-16 A | 2026-01-21 A | TB.ELEC.1020 | 100% |
|  | 5 | **Mechanical / Plumbing** |  | 2025-10-09 | 2026-01-06 |  |  |
| TB.MECH.1010 |  | Trade Buyout / Mech - Plumb // Interview and Recieve Final Pricing | 10d | 2025-10-09 A | 2025-10-23 A | PRE.4360 SS | 100% |
| TB.MECH.1000 |  | Trade Buyout / Mech - Plumb // Submit RTA | 1d | 2025-10-24 A | 2025-10-27 A | TB.MECH.1010 | 100% |
| TB.MECH.1020 |  | Trade Buyout / Mech - Plumb // RTA Concented (approved) | 5d | 2025-10-28 A | 2025-11-03 A | TB.MECH.1000, M1210 SS | 100% |
| TB.MECH.1030 |  | Trade Buyout / Mech - Plumb // Issue and Recieve Executed Contract | 10d | 2025-11-05 A | 2026-01-06 A | TB.MECH.1020 | 100% |
|  | 6 | **Fire Protection** |  | 2025-10-24 | 2026-03-27 |  |  |
| TB.FP.1010 |  | Trade Buyout / Fire Protection // Interview and Recieve Final Pricing | 10d | 2025-10-24 A | 2025-11-06 A | PRE.4360 SS | 100% |
| TB.FP.1000 |  | Trade Buyout / Fire Protection // Submit RTA | 1d | 2025-11-07 A | 2025-11-10 A | TB.FP.1010 | 100% |
| TB.FP.1020 |  | Trade Buyout / Fire Protection // RTA Concented (approved) | 5d | 2025-11-12 A | 2025-11-20 A | TB.FP.1000, M1210 SS | 100% |
| TB.FP.1030 |  | Trade Buyout / Fire Protection // Issue and Recieve Executed Contract | 10d | 2026-03-16 A | 2026-03-27 A | TB.FP.1020 | 100% |
|  | 7 | **Metal Panels** |  | 2025-10-14 | 2026-01-05 |  |  |
| TB.MP.1010 |  | Trade Buyout / Metal Panel // Interview and Recieve Final Pricing | 10d | 2025-10-14 A | 2025-10-23 A | PRE.4360 SS | 100% |
| TB.MP.1000 |  | Trade Buyout / Metal Panel // Submit RTA | 1d | 2025-10-24 A | 2025-10-27 A | TB.MP.1010 | 100% |
| TB.MP.1020 |  | Trade Buyout / Metal Panel // RTA Concented (approved) | 5d | 2025-10-28 A | 2025-11-03 A | TB.MP.1000, M1210 SS | 100% |
| TB.MP.1030 |  | Trade Buyout / Metal Panel // Issue and Recieve Executed Contract | 10d | 2025-11-04 A | 2026-01-05 A | TB.MP.1020 | 100% |
|  | 8 | **Waterproofing** |  | 2025-11-18 | 2026-01-06 |  |  |
| TB.WP.1010 |  | Trade Buyout / Waterproofing // Interview and Recieve Final Pricing | 10d | 2025-11-18 A | 2025-11-28 A | PRE.4360 SS | 100% |
| TB.WP.1000 |  | Trade Buyout / Waterproofing // Submit RTA | 1d | 2025-11-28 A | 2025-12-01 A | TB.WP.1010 | 100% |
| TB.WP.1020 |  | Trade Buyout / Waterproofing // RTA Concented (approved) | 5d | 2025-12-02 A | 2025-12-09 A | TB.WP.1000, M1210 SS | 100% |
| TB.WP.1030 |  | Trade Buyout / Waterproofing // Issue and Recieve Executed Contract | 10d | 2025-12-10 A | 2026-01-06 A | TB.WP.1020 | 100% |
|  | 9 | **Roofing** |  | 2025-10-31 | 2026-01-23 |  |  |
| TB.ROOF.1010 |  | Trade Buyout / Roofing // Interview and Recieve Final Pricing | 10d | 2025-10-31 A | 2025-11-07 A | PRE.4360 SS | 100% |
| TB.ROOF.1000 |  | Trade Buyout / Roofing // Submit RTA | 1d | 2025-11-10 A | 2025-11-11 A | TB.ROOF.1010 | 100% |
| TB.ROOF.1020 |  | Trade Buyout / Roofing // RTA Concented (approved) | 5d | 2025-11-12 A | 2025-11-20 A | TB.ROOF.1000, M1210 SS | 100% |
| TB.ROOF.1030 |  | Trade Buyout / Roofing // Issue and Recieve Executed Contract | 10d | 2026-01-19 A | 2026-01-23 A | TB.ROOF.1020 | 100% |
|  | 10 | **Doors Frames & Hardware** |  | 2025-10-22 | 2026-03-27 |  |  |
| TB.DFH.1010 |  | Trade Buyout / Doors & Hardware // Interview and Recieve Final Pricing | 10d | 2025-10-22 A | 2025-11-04 A | PRE.4360 SS | 100% |
| TB.DFH.1000 |  | Trade Buyout / Doors & Hardware // Submit RTA | 1d | 2025-11-04 A | 2025-11-05 A | TB.DFH.1010 | 100% |
| TB.DFH.1020 |  | Trade Buyout / Doors & Hardware // RTA Concented (approved) | 5d | 2025-11-06 A | 2025-11-14 A | TB.DFH.1000, M1210 SS | 100% |
| TB.DFH.1030 |  | Trade Buyout / Doors & Hardware // Issue and Recieve Executed Contract | 10d | 2026-03-16 A | 2026-03-27 A | TB.DFH.1020 | 100% |
|  | 11 | **Painting** |  | 2025-10-21 | 2026-01-16 |  |  |
| TB.PAINT.1010 |  | Trade Buyout / Painting // Interview and Recieve Final Pricing | 10d | 2025-10-21 A | 2025-11-03 A | PRE.4360 SS | 100% |
| TB.PAINT.1000 |  | Trade Buyout / Painting // Submit RTA | 1d | 2025-11-03 A | 2025-11-04 A | TB.PAINT.1010 | 100% |
| TB.PAINT.1020 |  | Trade Buyout / Painting // RTA Concented (approved) | 5d | 2025-11-05 A | 2025-11-11 A | TB.PAINT.1000, M1210 SS | 100% |
| TB.PAINT.1030 |  | Trade Buyout / Painting // Issue and Recieve Executed Contract | 10d | 2026-01-09 A | 2026-01-16 A | TB.PAINT.1020 | 100% |
|  | 12 | **Fences & Gates** |  | 2026-03-19 | 2026-06-05 |  |  |
| TB.F&G.1010 |  | Trade Buyout / Fences & Gates // Interview and Recieve Final Pricing | 10d | 2026-03-19 A | 2026-04-01 A | PRE.4360 SS | 100% |
| TB.F&G.1000 |  | Trade Buyout / Fences & Gates // Submit RTA | 1d | 2026-05-20 A | 2026-05-20 A | TB.F&G.1010 | 100% |
| TB.F&G.1020 |  | Trade Buyout / Fences & Gates // RTA Concented (approved) | 5d | 2026-05-21 A | 2026-05-28 A | TB.F&G.1000, M1210 SS | 100% |
| TB.F&G.1030 |  | Trade Buyout / Fences & Gates // Issue and Recieve Executed Contract | 10d | 2026-05-29 A | 2026-06-05 A | TB.F&G.1020 | 100% |
|  | 13 | **Landscaping** |  | 2026-03-19 | 2026-06-05 |  |  |
| TB.LAND.1010 |  | Trade Buyout / Landscaping // Interview and Recieve Final Pricing | 10d | 2026-03-19 A | 2026-04-01 A | PRE.4360 SS | 100% |
| TB.LAND.1000 |  | Trade Buyout / Landscaping // Submit RTA | 1d | 2026-05-20 A | 2026-05-20 A | TB.LAND.1010 | 100% |
| TB.LAND.1020 |  | Trade Buyout / Landscaping // RTA Concented (approved) | 5d | 2026-05-21 A | 2026-05-28 A | TB.LAND.1000, M1210 SS | 100% |
| TB.LAND.1030 |  | Trade Buyout / Landscaping // Issue and Recieve Executed Contract | 10d | 2026-05-29 A | 2026-06-05 A | TB.LAND.1020 | 100% |
|  | 14 | **Security Systems** |  | 2026-05-20 | 2026-06-25 |  |  |
| TB.SEC.1010 |  | Trade Buyout / Security Systems // Interview and Recieve Final Pricing | 10d | 2026-05-20 A | 2026-06-03 A | PRE.4360 SS | 100% |
| TB.SEC.1000 |  | Trade Buyout / Security Systems // Submit RTA | 1d | 2026-06-04 A | 2026-06-04 A | TB.SEC.1010 | 100% |
| TB.SEC.1020 |  | Trade Buyout / Security Systems // RTA Concented (approved) | 5d | 2026-06-04 A | 2026-06-12 A | TB.SEC.1000, M1210 SS | 100% |
| TB.SEC.1030 |  | Trade Buyout / Security Systems // Issue and Recieve Executed Contract | 10d | 2026-06-12 A | 2026-06-25 A | TB.SEC.1020 | 100% |
|  | 15 | **Data & Telecommunications** |  | 2026-01-16 | 2026-04-09 |  |  |
| TB.TELE.1010 |  | Trade Buyout / Data & Telecom // Interview and Recieve Final Pricing | 10d | 2026-01-16 A | 2026-01-28 A | PRE.4360 SS | 100% |

| ID | WBS | Task | Duration | Start | Finish | Predecessors | Complete |
| --- | --- | --- | --- | --- | --- | --- | --- |
| TB.TELE.1000 |  | Trade Buyout / Data & Telecom // Submit RTA | 1d | 2026-03-19 A | 2026-03-19 A | TB.TELE.1010 | 100% |
| TB.TELE.1020 |  | Trade Buyout / Data & Telecom // RTA Concented (approved) | 5d | 2026-03-20 A | 2026-03-26 A | TB.TELE.1000, M1210 SS | 100% |
| TB.TELE.1030 |  | Trade Buyout / Data & Telecom // Issue and Recieve Executed Contract | 10d | 2026-03-27 A | 2026-04-09 A | TB.TELE.1020 | 100% |
|  | 16 | **BMS & EPMS** |  | 2025-11-11 | 2026-06-03 |  |  |
| TB.BMS.1010 |  | Trade Buyout / BMS & EPMS // Interview and Recieve Final Pricing | 10d | 2025-11-11 A | 2025-11-21 A | PRE.4360 SS | 100% |
| TB.BMS.1000 |  | Trade Buyout / BMS & EPMS // Submit RTA | 1d | 2025-11-24 A | 2025-11-25 A | TB.BMS.1010 | 100% |
| TB.BMS.1020 |  | Trade Buyout / BMS & EPMS // RTA Concented (approved) | 5d | 2025-11-26 A | 2025-12-03 A | TB.BMS.1000, M1210 SS | 100% |
| TB.BMS.1030 |  | Trade Buyout / BMS & EPMS // Issue and Recieve Executed Contract | 10d | 2026-05-20 A | 2026-06-03 A | TB.BMS.1020 | 100% |
|  | 17 | **Drywall & Ceilings** |  | 2025-10-07 | 2025-12-19 |  |  |
| TB.DC.1010 |  | Trade Buyout / Drywall & Ceilings // Interview and Recieve Final Pricing | 10d | 2025-10-07 A | 2025-10-14 A | PRE.4360 SS | 100% |
| TB.DC.1000 |  | Trade Buyout / Drywall & Ceilings // Submit RTA | 1d | 2025-10-15 A | 2025-10-16 A | TB.DC.1010 | 100% |
| TB.DC.1020 |  | Trade Buyout / Drywall & Ceilings // RTA Concented (approved) | 5d | 2025-10-17 A | 2025-10-24 A | TB.DC.1000, M1210 SS | 100% |
| TB.DC.1030 |  | Trade Buyout / Drywall & Ceilings // Issue and Recieve Executed Contract | 10d | 2025-12-02 A | 2025-12-19 A | TB.DC.1020 | 100% |
|  | 18 | **Tile, Carpet & Resilient Flooring** |  | 2026-03-19 | 2026-06-05 |  |  |
| TB.FLR.1010 |  | Trade Buyout / Tile, Carpet & Flooring // Interview and Recieve Final Pricing | 10d | 2026-03-19 A | 2026-04-01 A | PRE.4360 SS | 100% |
| TB.FLR.1000 |  | Trade Buyout / Tile, Carpet & Flooring // Submit RTA | 1d | 2026-05-20 A | 2026-05-20 A | TB.FLR.1010 | 100% |
| TB.FLR.1020 |  | Trade Buyout / Tile, Carpet & Flooring // RTA Concented (approved) | 5d | 2026-05-21 A | 2026-05-28 A | TB.FLR.1000, M1210 SS | 100% |
| TB.FLR.1030 |  | Trade Buyout / Tile, Carpet & Flooring // Issue and Recieve Executed Contract | 10d | 2026-05-29 A | 2026-06-05 A | TB.FLR.1020 | 100% |
|  | 19 | **Misc Remaining Packages** |  | 2026-05-20 | 2026-07-08 |  |  |
| TB.MRP.1010 |  | Trade Buyout / Misc. Packages // Interview and Recieve Final Pricing | 15d | 2026-05-20 A | 2026-06-09 A | TB.FLR.1010 SS+6d | 100% |
| TB.MRP.1000 |  | Trade Buyout / Misc. Packages // Submit RTA | 1d | 2026-06-09 A | 2026-06-09 A | TB.MRP.1010 | 100% |
| TB.MRP.1020 |  | Trade Buyout / Misc. Packages // RTA Concented (approved) | 5d | 2026-06-10 A | 2026-06-16 A | TB.MRP.1000, M1210 SS | 100% |
| TB.MRP.1030 |  | Trade Buyout / Misc. Packages // Issue and Recieve Executed Contract | 15d | 2026-06-17 A | 2026-07-08 A | TB.MRP.1020 | 100% |
|  | 2 | **Design Schedule (Owner/Architect)** |  | 2025-09-02 | 2025-12-03 |  |  |
| A1970 |  | Design Schedule // Base Build IFP | 20d | 2025-09-02 A | 2025-09-16 A |  | 100% |
| A1980 |  | Design Schedule // Base Build - Permit Review | 20d | 2025-09-17 A | 2025-10-22 A | A1970 | 100% |
| A2000 |  | Design Schedule // Base Build - IFC (Included UG) | 20d | 2025-10-23 A | 2025-11-11 A | A1980 | 100% |
| A1990 |  | Design Schedule // Full Building Permit in Hand | 1d | 2025-11-12 A | 2025-12-03 A | A2000, A1980 | 100% |
|  | 3 | **Procurement** |  | 2025-10-20 | 2026-11-19 |  |  |
|  | 1 | **Trade Partners** |  | 2025-10-20 | 2026-11-19 |  |  |
|  | 1 | **Sitework** |  | 2025-11-21 | 2026-01-16 |  |  |
| A2010 |  | Procurement / Sitework // Prepare and Issues Submittal Packages | 10d | 2025-11-21 A | 2025-12-05 A | TB.SITE.1020 | 100% |
| A2020 |  | Procurement / Sitework // Design Team review and Approval | 10d | 2025-12-08 A | 2025-12-19 A | A2010 | 100% |
| A2030 |  | Procurement / Sitework // Release Material and Fabricate | 15d | 2025-12-22 A | 2026-01-16 A | A2020 | 100% |
|  | 2 | **Concrete** |  | 2025-10-20 | 2026-04-02 |  |  |
| A2040 |  | Procurement / Concrete // Prepare and Issues Submittal Packages | 10d | 2025-10-20 A | 2025-10-31 A | TB.CON.1020 | 100% |
| A2050 |  | Procurement / Concrete // Design Team review and Approval | 10d | 2025-11-03 A | 2025-11-20 A | A2040 | 100% |
| A2060 |  | Procurement / Concrete // Release Material and Fabricate | 15d | 2025-11-21 A | 2026-04-02 A | A2050 | 100% |
|  | 3 | **Structural Steel** |  | 2025-12-09 | 2026-05-08 |  |  |
| A2070 |  | Procurement / Structural Steel // Prepare and Issues Submittal Packages | 10d | 2025-12-09 A | 2025-12-24 A | A2580 | 100% |
| A2080 |  | Procurement / Structural Steel // Design Team review and Approval | 10d | 2025-12-24 A | 2026-01-06 A | A2070 SS, A2070 | 100% |
| A2090 |  | Procurement / Structural Steel // Release Material and Fabricate | 43d | 2026-01-09 A | 2026-05-08 A | A2080 | 100% |
|  | 4 | **Electrical** |  | 2025-11-11 | 2026-07-24 |  |  |
| A2100 |  | Procurement / Electrical // Prepare and Issues Submittal Packages | 10d | 2025-11-11 A | 2025-11-26 A | TB.ELEC.1020 | 100% |
| A2110 |  | Procurement / Electrical // Design Team review and Approval | 10d | 2025-11-27 A | 2025-12-12 A | A2100 | 100% |
| A2120 |  | Procurement / Electrical // Release Material and Fabricate | 15d | 2025-12-15 A | 2026-03-25 A | A2110 | 100% |
| A5856 |  | Procurement / Electrical // XFMR Fibre Glass 90s | 15d | 2025-12-15 A | 2026-05-08 A | A2110 | 100% |
|  | 1 | **Priority Release (Long Lead)** |  | 2026-03-18 | 2026-07-24 |  |  |
|  | 1 | **Buss Duct** |  | 2026-03-18 | 2026-07-24 |  |  |
| A2940 |  | Long Lead / Buss Duct // Compile and Deliver Material Submittal (BIM Shop Drawing) | 5d | 2026-03-18 A | 2026-03-24 A | A2660 | 100% |
| A2950 |  | Long Lead / Buss Duct // Design Team & Owner Review & Approval | 7d | 2026-03-25 A | 2026-04-01 A | A2940 | 100% |
| A2960 |  | Long Lead / Buss Duct // Material Release and Delivery | 90d | 2026-04-01 A | 2026-07-24 A | A2950 | 100% |
|  | 2 | **Cable Buss** |  |  |  |  |  |
|  | 3 | **MV Cable** |  |  |  |  |  |
|  | 5 | **Mechanical Plumbing** |  | 2025-11-04 | 2026-01-16 |  |  |
| A2130 |  | Long Lead / Mech. Plumbing // Prepare and Issues Submittal Packages | 10d | 2025-11-04 A | 2025-11-19 A | TB.MECH.1020 | 100% |
| A2140 |  | Long Lead / Mech. Plumbing // Design Team review and Approval | 10d | 2025-11-20 A | 2025-12-05 A | A2130 | 100% |
| A2570 |  | Long Lead / Mech. Plumbing // Release Material & Fabricate | 10d | 2025-12-24 A | 2026-01-16 A | A2140 | 100% |
|  | 6 | **Fire Protection** |  | 2025-11-21 | 2026-01-16 |  |  |
| A2160 |  | Long Lead / Fire Protection // Prepare and Issues Submittal Packages | 10d | 2025-11-21 A | 2025-12-02 A | TB.FP.1020 | 100% |
| A2170 |  | Long Lead / Fire Protection // Design Team review and Approval | 10d | 2025-12-03 A | 2025-12-22 A | A2160 | 100% |
| A2180 |  | Long Lead / Fire Protection // Release Material / Fabricate & Deliver | 20d | 2025-12-23 A | 2026-01-16 A | A2170 | 100% |
|  | 7 | **Metal Panels** |  | 2026-01-07 | 2026-05-20 |  |  |
| A2190 |  | Long Lead / Metal Panels // Prepare and Issues Submittal Packages | 10d | 2026-01-07 A | 2026-02-20 A | TB.MP.1030 | 100% |
| A2200 |  | Long Lead / Metal Panels // Design Team review and Approval | 10d | 2026-02-23 A | 2026-03-03 A | A2190 | 100% |
| A2910 |  | Long Lead / Metal Panels // Fabricate and Deliver | 25d | 2026-03-04 A | 2026-05-20 A | A2190, A2200 | 100% |
|  | 8 | **Waterproofing** |  | 2025-12-30 | 2026-01-16 |  |  |
| A2220 |  | Long Lead / Waterproofing // Prepare and Issues Submittal Packages | 10d | 2025-12-30 A | 2026-01-07 A | TB.WP.1030 | 100% |
| A2230 |  | Long Lead / Waterproofing // Design Team review and Approval | 10d | 2026-01-07 A | 2026-01-09 A | A2220 | 100% |
| A2240 |  | Long Lead / Waterproofing // Release Material and Deliver | 15d | 2026-01-07 A | 2026-01-16 A | A2230 | 100% |

| ID | WBS | Task | Duration | Start | Finish | Predecessors | Complete | Total float |
| --- | --- | --- | --- | --- | --- | --- | --- | --- |
|  | 9 | **Roofing** |  | 2026-03-06 | 2026-05-20 |  |  |  |
| A2250 |  | Long Lead / Roofing // Prepare and Issues Submittal Packages | 10d | 2026-03-06 A | 2026-03-17 A | TB.ROOF.1030 | 100% |  |
| A2260 |  | Long Lead / Roofing // Design Team review and Approval | 10d | 2026-03-12 A | 2026-03-20 A | A2250 | 100% |  |
| A2270 |  | Long Lead / Roofing // Release Material and Deliver | 15d | 2026-03-21 A | 2026-05-20 A | A2260 | 100% |  |
|  | 10 | **Doors Frames & Hardware** |  | 2026-05-20 | 2026-06-30 |  |  |  |
| A2280 |  | Long Lead / Doors & Hardware // Prepare and Issues Submittal Packages | 10d | 2026-05-20 A | 2026-06-03 A | TB.DFH.1030 | 100% |  |
| A2290 |  | Long Lead / Doors & Hardware // Design Team review and Approval | 10d | 2026-06-04 A | 2026-06-15 A | A2280 | 100% |  |
| A2300 |  | Long Lead / Doors & Hardware // Release Material and Deliver | 40d | 2026-06-16 A | 2026-06-30 A | A2290 | 100% |  |
|  | 11 | **Painting** |  | 2026-05-20 | 2026-07-08 |  |  |  |
| A2310 |  | Long Lead / Painting // Prepare and Issues Submittal Packages | 10d | 2026-05-20 A | 2026-06-03 A | TB.PAINT.1030 | 100% |  |
| A2320 |  | Long Lead / Painting // Design Team review and Approval | 10d | 2026-06-04 A | 2026-06-17 A | A2310 | 100% |  |
| A2330 |  | Long Lead / Painting // Release Material and Deliver | 15d | 2026-06-17 A | 2026-07-08 A | A2320 | 100% |  |
|  | 12 | **Fences and Gates** |  | 2026-06-08 | 2026-09-30 |  |  |  |
| A2340 |  | Long Lead / Fences & Gates // Prepare and Issues Submittal Packages | 10d | 2026-06-08 A | 2026-06-19 A | TB.F&G.1030 | 100% |  |
| A2350 |  | Long Lead / Fences & Gates // Design Team review and Approval | 10d | 2026-06-19 A | 2026-07-02 A | A2340 | 100% |  |
| A2360 |  | Long Lead / Fences & Gates // Release Material and Fabricate - Deliver | 60d | 2026-07-06 A | 2026-09-30 | A2350 | 100% | 63d |
|  | 13 | **Landscaping** |  | 2026-09-30 | 2026-11-19 |  |  |  |
| A2370 |  | Long Lead / Landscaping // Prepare and Issues Submittal Packages | 10d | 2026-09-30 | 2026-10-14 | TB.LAND.1030 |  | 28d |
| A2380 |  | Long Lead / Landscaping // Design Team review and Approval | 10d | 2026-10-15 | 2026-10-28 | A2370 |  | 28d |
| A2390 |  | Long Lead / Landscaping // Release Material and Deliver | 15d | 2026-10-29 | 2026-11-19 | A2360 FF, A2380 |  | 28d |
|  | 14 | **Security Systems** |  | 2026-09-30 | 2026-11-19 |  |  |  |
| A2400 |  | Long Lead / Security Systems // Prepare and Issues Submittal Packages | 10d | 2026-09-30 | 2026-10-14 | TB.SEC.1030 |  | 28d |
| A2410 |  | Long Lead / Security Systems // Design Team review and Approval | 10d | 2026-10-15 | 2026-10-28 | A2400 |  | 28d |
| A2420 |  | Long Lead / Security Systems // Release Material and Deliver | 15d | 2026-10-29 | 2026-11-19 | A2390 FF, A2410 |  | 28d |
|  | 15 | **Data & Telecommunications** |  | 2026-05-20 | 2026-11-19 |  |  |  |
| A2430 |  | Long Lead / Data & Telecom // Prepare and Issues Submittal Packages | 10d | 2026-05-20 A | 2026-06-03 A | TB.TELE.1030 | 100% |  |
| A2440 |  | Long Lead / Data & Telecom // Design Team review and Approval | 10d | 2026-09-30 | 2026-10-14 | A2430 |  | 38d |
| A2450 |  | Long Lead / Data & Telecom // Release Material and Deliver | 15d | 2026-10-29 | 2026-11-19 | A2420 FF, A2440 |  | 28d |
|  | 16 | **BMS & EPMS** |  | 2026-09-30 | 2026-11-19 |  |  |  |
| A2460 |  | Long Lead / BMS & EPMS // Prepare and Issues Submittal Packages | 10d | 2026-09-30 | 2026-10-14 | TB.BMS.1030 |  | 28d |
| A2470 |  | Long Lead / BMS & EPMS // Design Team review and Approval | 10d | 2026-10-15 | 2026-10-28 | A2460 |  | 28d |
| A2480 |  | Long Lead / BMS & EPMS // Release Material and Deliver | 15d | 2026-10-29 | 2026-11-19 | A2450 FF, A2470 |  | 28d |
|  | 17 | **Tile, Carpet & Resilient Flooring** |  | 2026-09-30 | 2026-11-19 |  |  |  |
| A2490 |  | Long Lead / Tile, Carpet & Flooring // Prepare and Issues Submittal Packages | 10d | 2026-09-30 | 2026-10-14 | TB.FLR.1030 |  | 28d |
| A2500 |  | Long Lead / Tile, Carpet & Flooring // Design Team review and Approval | 10d | 2026-10-15 | 2026-10-28 | A2490 |  | 28d |
| A2510 |  | Long Lead / Tile, Carpet & Flooring // Release Material and Fabricate | 15d | 2026-10-29 | 2026-11-19 | A2480 FF, A2500 |  | 28d |
|  | 18 | **Misc Remaining Packages** |  | 2026-09-30 | 2026-11-19 |  |  |  |
| A2520 |  | Long Lead / Mics. Packages // Prepare and Issues Submittal Packages | 10d | 2026-09-30 | 2026-10-14 | TB.MRP.1030 |  | 28d |
| A2530 |  | Long Lead / Mics. Packages // Design Team review and Approval | 10d | 2026-10-15 | 2026-10-28 | A2520 |  | 28d |
| A2540 |  | Long Lead / Mics. Packages // Release Material and Fabricate | 15d | 2026-10-29 | 2026-11-19 | A2510 FF, A2530 |  | 28d |
|  | 5 | **BIM** |  | 2025-11-20 | 2026-10-14 |  |  |  |
| A2580 |  | BIM // BIM Kick Off | 1d | 2025-12-08 A | 2025-12-08 A | M1040 SS | 100% |  |
|  | 1 | **MV Yard** |  | 2025-12-08 | 2026-02-25 |  |  |  |
| A2590 |  | BIM / MV Yard // Populate Model (All Trades) | 10d | 2025-12-08 A | 2026-01-09 A | A2580 | 100% |  |
| A2600 |  | BIM / MV Yard // Clash Detection | 15d | 2026-01-12 A | 2026-01-23 A | A2590 | 100% |  |
| A2610 |  | BIM / MV Yard // Sign off of Model | 1d | 2026-01-26 A | 2026-02-10 A | A2600 | 100% |  |
| A2830 |  | BIM / MV Yard // Produce and submit Shop Drawings | 10d | 2026-02-17 A | 2026-02-25 A | A2610 | 100% |  |
|  | 2 | **Building** |  | 2025-11-20 | 2026-10-14 |  |  |  |
|  | 1 | **FOH** |  | 2025-11-25 | 2026-04-27 |  |  |  |
| A2630 |  | FOH // BIM Building underground population | 5d | 2025-11-25 A | 2025-12-05 A | A2580 | 100% |  |
| A2640 |  | FOH // BIM Equipment & Foundations Model Population | 5d | 2025-11-25 A | 2025-12-05 A | A2630 | 100% |  |
| A5641 |  | FOH // BIM Underground Model Population & Coordination | 10d | 2025-11-25 A | 2025-12-05 A | A2630 | 100% |  |
| A5642 |  | FOH // Sign-Off BIM Underground & Foundations | 3d | 2025-12-08 A | 2026-01-09 A | A5641 | 100% |  |
| A5643 |  | FOH // BIM Overhead MEP Model Population & Coordination | 10d | 2026-01-08 A | 2026-01-23 A | A2640 | 100% |  |
| A5644 |  | FOH // Sign-Off BIM Overhead MEP Model Population & Coordination | 3d | 2026-03-11 A | 2026-03-13 A | A5643 | 100% |  |
| A2840 |  | FOH / BIM // Produce and submit Shop Drawings | 10d | 2026-03-16 A | 2026-04-27 A | A5642, A5644, A2640 | 100% |  |
|  | 2 | **Data Hall 1100** |  | 2025-11-20 | 2026-04-01 |  |  |  |
| A5655 |  | DH 1100 // BIM Building / Underslab Population & Cordination | 10d | 2025-11-20 A | 2025-12-05 A | A2630 | 100% |  |
| A2650 |  | DH 1100 // Sign-Off BIM Underslab | 1d | 2025-12-08 A | 2026-01-09 A | A5655 | 100% |  |
| A2660 |  | DH 1100 // BIM Equipment Model Population | 5d | 2026-01-05 A | 2026-02-13 A | A5652 FF, A2630 SS | 100% |  |
| A5652 |  | DH 1100 // BIM Overhead MEP Model Population & Coordination | 10d | 2026-01-05 A | 2026-01-29 A | A5644 FF, A2580 | 100% |  |
| A5653 |  | DH 1100 // Sign-Off BIM Overhead MEP | 1d | 2026-03-16 A | 2026-03-16 A | A5652 | 100% |  |
| A5654 |  | DH 1100 // Sign-Off BIM Equipment Model | 1d | 2026-03-18 A | 2026-03-18 A | A2660 | 100% |  |
| A2850 |  | DH 1100 / BIM // Produce and submit Shop Drawings | 10d | 2026-03-19 A | 2026-04-01 A | A5654, A5653, A5652, A2650 | 100% |  |
|  | 3 | **Data Hall 1200** |  | 2026-03-11 | 2026-04-13 |  |  |  |
| A5660 |  | DH 1200 // BIM Building / Underslab Population & Cordination | 10d | 2026-03-11 A | 2026-03-24 A | A5655 | 100% |  |
| A5656 |  | DH 1200 // BIM Overhead MEP Model Population & Coordination | 10d | 2026-03-16 A | 2026-03-24 A | A5652 | 100% |  |
| A5661 |  | DH 1200 // Sign-Off BIM Underslab | 1d | 2026-03-25 A | 2026-03-25 A | A5660 | 100% |  |
| A5657 |  | DH 1200 // Sign-Off BIM Overhead MEP | 1d | 2026-03-30 A | 2026-03-30 A | A5656 | 100% |  |
| A5658 |  | DH 1200 // BIM Equipment Model Population | 5d | 2026-03-30 A | 2026-04-01 A | A5656 | 100% |  |

| ID | WBS | Task | Duration | Start | Finish | Predecessors | Complete | Total float |
| --- | --- | --- | --- | --- | --- | --- | --- | --- |
| A5659 |  | DH 1200 // Sign-Off BIM Equipment Model | 1d | 2026-03-31 A | 2026-04-01 A | A5658 | 100% |  |
| A5662 |  | DH 1200 / BIM // Produce and submit Shop Drawings | 10d | 2026-03-31 A | 2026-04-13 A | A5659 FF, A5657, A5656, A5661 | 100% |  |
|  | 4 | **Data Hall 1300** |  | 2026-05-20 | 2026-06-19 |  |  |  |
| A5663 |  | DH 1300 // BIM Overhead MEP Model Population & Coordination | 10d | 2026-05-20 A | 2026-06-03 A | A5656 | 100% |  |
| A5667 |  | DH 1300 // BIM Building / Underslab Population & Cordination | 10d | 2026-05-20 A | 2026-06-03 A | A5660 | 100% |  |
| A5664 |  | DH 1300 // Sign-Off BIM Overhead MEP | 1d | 2026-06-10 A | 2026-06-10 A | A5663 | 100% |  |
| A5665 |  | DH 1300 // BIM Equipment Model Population | 5d | 2026-06-10 A | 2026-06-16 A | A5663 | 100% |  |
| A5668 |  | DH 1300 // Sign-Off BIM Underslab | 1d | 2026-06-10 A | 2026-06-10 A | A5667 | 100% |  |
| A5669 |  | DH 1300 / BIM // Produce and submit Shop Drawings | 10d | 2026-06-11 A | 2026-06-19 A | A5666 FF, A5664, A5663, A5668 | 100% |  |
| A5666 |  | DH 1300 // Sign-Off BIM Equipment Model | 1d | 2026-06-17 A | 2026-06-17 A | A5665 | 100% |  |
|  | 5 | **Data Hall 1400** |  | 2026-06-04 | 2026-07-27 |  |  |  |
| A5670 |  | DH 1400 // BIM Overhead MEP Model Population & Coordination | 10d | 2026-06-04 A | 2026-06-17 A | A5663 | 100% |  |
| A5674 |  | DH 1400 // BIM Building / Underslab Population & Cordination | 10d | 2026-06-17 A | 2026-06-30 A | A5667 | 100% |  |
| A5672 |  | DH 1400 // BIM Equipment Model Population | 5d | 2026-06-30 A | 2026-07-07 A | A5670 | 100% |  |
| A5675 |  | DH 1400 // Sign-Off BIM Underslab | 1d | 2026-07-09 A | 2026-07-09 A | A5674 | 100% |  |
| A5673 |  | DH 1400 // Sign-Off BIM Equipment Model | 1d | 2026-07-10 A | 2026-07-10 A | A5672 | 100% |  |
| A5676 |  | DH 1400 / BIM // Produce and submit Shop Drawings | 10d | 2026-07-14 A | 2026-07-27 A | A5673, A5671 FF, A5670, A5675 | 100% |  |
| A5671 |  | DH 1400 // Sign-Off BIM Overhead MEP | 1d | 2026-07-23 A | 2026-07-24 A | A5670 | 100% |  |
|  | 6 | **Data Hall 1500** |  | 2026-06-18 | 2026-07-29 |  |  |  |
| A5677 |  | DH 1500 // BIM Overhead MEP Model Population & Coordination | 10d | 2026-06-18 A | 2026-07-01 A | A5670 | 100% |  |
| A5681 |  | DH 1500 // BIM Building / Underslab Population & Cordination | 10d | 2026-06-30 A | 2026-07-14 A | A5674 | 100% |  |
| A5678 |  | DH 1500 // Sign-Off BIM Overhead MEP | 1d | 2026-07-02 A | 2026-07-02 A | A5677 | 100% |  |
| A5679 |  | DH 1500 // BIM Equipment Model Population | 5d | 2026-07-02 A | 2026-07-09 A | A5677 | 100% |  |
| A5680 |  | DH 1500 // Sign-Off BIM Equipment Model | 1d | 2026-07-10 A | 2026-07-10 A | A5679 | 100% |  |
| A5682 |  | DH 1500 // Sign-Off BIM Underslab | 1d | 2026-07-15 A | 2026-07-15 A | A5681 | 100% |  |
| A5683 |  | DH 1500 / BIM // Produce and submit Shop Drawings | 10d | 2026-07-16 A | 2026-07-29 A | A5680 FF, A5678, A5677, A5682 | 100% |  |
|  | 7 | **Data Hall 1600** |  | 2026-07-02 | 2026-08-12 |  |  |  |
| A5684 |  | DH 1600 // BIM Overhead MEP Model Population & Coordination | 10d | 2026-07-02 A | 2026-07-16 A | A5677 | 100% |  |
| A5688 |  | DH 1600 // BIM Building / Underslab Population & Cordination | 10d | 2026-07-15 A | 2026-07-28 A | A5681 | 100% |  |
| A5685 |  | DH 1600 // Sign-Off BIM Overhead MEP | 1d | 2026-07-17 A | 2026-07-17 A | A5684 | 100% |  |
| A5686 |  | DH 1600 // BIM Equipment Model Population | 5d | 2026-07-17 A | 2026-07-23 A | A5684 | 100% |  |
| A5687 |  | DH 1600 // Sign-Off BIM Equipment Model | 1d | 2026-07-24 A | 2026-07-24 A | A5686 | 100% |  |
| A5689 |  | DH 1600 // Sign-Off BIM Underslab | 1d | 2026-07-29 A | 2026-07-29 A | A5688 | 100% |  |
| A5690 |  | DH 1600 / BIM // Produce and submit Shop Drawings | 10d | 2026-07-30 A | 2026-08-12 A | A5687 FF, A5685, A5684, A5689 | 100% |  |
|  | 8 | **BOH** |  | 2026-07-17 | 2026-10-14 |  |  |  |
| A5691 |  | BOH // BIM Overhead MEP Model Population & Coordination | 10d | 2026-07-17 A | 2026-07-30 A | A5684 | 100% |  |
| A5695 |  | BOH // BIM Building / Underslab Population & Cordination | 10d | 2026-07-29 A | 2026-08-11 A | A5688 | 100% |  |
| A5692 |  | BOH // Sign-Off BIM Overhead MEP | 1d | 2026-08-03 A | 2026-08-03 A | A5691 | 100% |  |
| A5693 |  | BOH // BIM Equipment Model Population | 5d | 2026-08-03 A | 2026-08-07 A | A5691 | 100% |  |
| A5694 |  | BOH // Sign-Off BIM Equipment Model | 1d | 2026-08-10 A | 2026-08-10 A | A5693 | 100% |  |
| A5696 |  | BOH // Sign-Off BIM Underslab | 1d | 2026-08-12 A | 2026-08-12 A | A5695 | 100% |  |
| A5697 |  | BOH / BIM // Produce and submit Shop Drawings | 10d | 2026-09-30 | 2026-10-14 | A5692, A5691, A5696 |  | 1d |
|  | 4 | **Construction** |  | 2026-01-27 | 2027-06-22 |  |  |  |
|  | 2 | **Shell** |  | 2026-01-27 | 2026-10-30 |  |  |  |
|  | 4 | **Foundations** |  | 2026-01-27 | 2026-07-10 |  |  |  |
|  | 7 | **Column Line 0.1 - 0.3 - (FOH) A Through E** |  | 2026-01-27 | 2026-04-08 |  |  |  |
| FDN.1050 |  | Foundation / CL 0.1 - 0.3 - (FOH) A Through E // Excavate and Install Footings and Stem Walls Rebars | 5d | 2026-01-27 A | 2026-01-28 A | TB.SITE.1030, M1060, A2650, TB.CON.1030 | 100% |  |
| FDN.1301 |  | Foundation / CL 0.1 - 0.3 - (FOH) A Through E // Fragnet 1A - Ground Remediation | 9d | 2026-02-04 A | 2026-02-25 A | FDN.1050 | 100% |  |
| FDN.1302 |  | Foundation / CL 0.1 - 0.3 - (FOH) A Through E // Excavate and Install Footings and Stem Walls Rebars (Re-Start Works) | 3d | 2026-02-25 A | 2026-02-27 A | FDN.1301 | 100% |  |
| FDN.1060 |  | Foundation / CL 0.1 - 0.3 - (FOH) A Through E // Form, Prep & Pour and Install Stem walls | 5d | 2026-02-27 A | 2026-03-03 A | FDN.1050 SS+8d, FDN.1302 | 100% |  |
| FDN.1232 |  | Foundation / CL 0.1 - 0.3 - (FOH) A Through E // Install Waterproofing | 2d | 2026-03-04 A | 2026-03-07 A | A2240, FDN.1060, TB.WP.1030 | 100% |  |
| FDN.1266 |  | Foundation / CL 0.1 - 0.3 - (FOH) A Through E // Install Drain Tiles & Storm Drains | 6d | 2026-03-09 A | 2026-03-16 A | FDN.1232 | 100% |  |
| FDN.1276 |  | Foundation / CL 0.1 - 0.3 - (FOH) A Through E // Install Interior Colum Foundations | 2d | 2026-03-09 A | 2026-03-12 A | FDN.1060 | 100% |  |
| FDN.1286 |  | Foundation / CL 0.1 - 0.3 - (FOH) A Through E // Install Underslab Plumbing | 5d | 2026-03-24 A | 2026-04-01 A | FDN.1276 SS+5d, TB.MECH.1030 | 100% |  |
| FDN.1296 |  | Foundation / CL 0.1 - 0.3 - (FOH) A Through E // Install Underslab Electrical | 15d | 2026-03-31 A | 2026-04-08 A | FDN.1286 SS+5d, TB.ELEC.1030 | 100% |  |
|  | 1 | **Column line 0.1 Through 1.9 (DH1100)** |  | 2026-02-10 | 2026-04-14 |  |  |  |
| FDN.1010 |  | Foundation / CL 0.1 Through 1.9 (DH1100) // Install Interior Colum Foundations | 2d | 2026-02-10 A | 2026-03-17 A | FDN.1040 SS+6d, FDN.1060, FDN.1235 | 100% |  |
| FDN.1040 |  | Foundation / CL 0.1 Through 1.9 (DH1100) // Excavate and Install Footings and Stem Walls Rebars | 3d | 2026-02-27 A | 2026-03-05 A | FDN.1050, A2650, FDN.1302 | 100% |  |
| FDN.1235 |  | Foundation / CL 0.1 Through 1.9 (DH1100) // Form Prep and Pour Footings and Stem Walls | 5d | 2026-03-06 A | 2026-03-12 A | FDN.1040 | 100% |  |
| FDN.1231 |  | Foundation / CL 0.1 Through 1.9 (DH1100) // Install Waterproofing | 3d | 2026-03-17 A | 2026-03-24 A | FDN.1232, FDN.1235 | 100% |  |
| FDN.1233 |  | Foundation / CL 0.1 Through 1.9 (DH1100) // Install Underslab Electrical | 15d | 2026-03-24 A | 2026-04-08 A | A2120, FDN.1000 SS+5d | 100% |  |
| FDN.1000 |  | Foundation / CL 0.1 Through 1.9 (DH1100) // Install Underslab Plumbing (Deep U/G) | 5d | 2026-03-25 A | 2026-03-30 A | TB.FP.1030 FF, A2570, FDN.1010 SS+5d, A2830, A2180 | 100% |  |
| FDN.1236 |  | Foundation / CL 0.1 Through 1.9 (DH1100) // Install Drain Tiles & Storm Drains | 6d | 2026-03-26 A | 2026-04-02 A | FDN.1231, FDN.1266, FDN.1010 | 100% |  |
| FDN.1322 |  | Foundation / CL 0.1 Through 1.9 (DH1100) // Install Underslab Plumbing (Shallow U/G) | 2d | 2026-04-13 A | 2026-04-14 A | FDN.1000 | 100% |  |
|  | 2 | **Column Line 2.1 Through 2.9 (DH1200)** |  | 2026-03-05 | 2026-04-27 |  |  |  |
| FDN.1070 |  | Foundation / CL 2.1 Through 2.9 (DH1200) // Excavate and Install Footings and Stem Walls Rebars | 3d | 2026-03-05 A | 2026-03-09 A | FDN.1040 SS | 100% |  |
| FDN.1080 |  | Foundation / CL 2.1 Through 2.9 (DH1200) // Install Interior Colum Foundations | 2d | 2026-03-09 A | 2026-03-12 A | FDN.1070, FDN.1010 | 100% |  |
| FDN.1237 |  | Foundation / CL 2.1 Through 2.9 (DH1200) // Form Prep and Pour Footings and Stem Walls | 5d | 2026-03-12 A | 2026-03-18 A | FDN.1070 | 100% |  |
| FDN.1238 |  | Foundation / CL 2.1 Through 2.9 (DH1200) // Install Waterproofing | 3d | 2026-03-18 A | 2026-03-23 A | FDN.1237 | 100% |  |
| FDN.1090 |  | Foundation / CL 2.1 Through 2.9 (DH1200) // Install Under Slab Plumbing (Deep U/G) | 5d | 2026-03-27 A | 2026-04-01 A | FDN.1080 SS+5d, FDN.1239 SS | 100% |  |

| ID | WBS | Task | Duration | Start | Finish | Predecessors | Complete |
| --- | --- | --- | --- | --- | --- | --- | --- |
| FDN.1239 |  | Foundation / CL 2.1 Through 2.9 (DH1200) // Install Drain Tiles & Storm Drains | 6d | 2026-03-27 A | 2026-04-03 A | FDN.1238, FDN.1080 | 100% |
| FDN.1234 |  | Foundation / CL 2.1 Through 2.9 (DH1200) // Install Under Slab Electrical | 15d | 2026-04-09 A | 2026-04-25 A | FDN.1090 SS+5d | 100% |
| FDN.1332 |  | Foundation / CL 2.1 Through 2.9 (DH1200) // Install Under Slab Plumbing (Shallow U/G) | 5d | 2026-04-16 A | 2026-04-27 A | FDN.1090, FDN.1322 | 100% |
|  | 3 | **Column Line 3.1 Through 3.9 (DH1300)** |  | 2026-03-09 | 2026-07-10 |  |  |
| FDN.1100 |  | Foundation / CL 3.1 Through 3.9 (DH1300) // Excavate and Install Footings and Stem Walls Rebars | 3d | 2026-03-09 A | 2026-03-12 A | FDN.1070 SS+7d | 100% |
| FDN.1110 |  | Foundation / CL 3.1 Through 3.9 (DH1300) // Install Interior Colum Foundations | 2d | 2026-03-12 A | 2026-03-17 A | FDN.1100, FDN.1080 | 100% |
| FDN.1240 |  | Foundation / CL 3.1 Through 3.9 (DH1300) // Form Prep and Pour Footings and Stem Walls | 5d | 2026-03-17 A | 2026-03-20 A | FDN.1100 | 100% |
| FDN.1241 |  | Foundation / CL 3.1 Through 3.9 (DH1300) // Install Waterproofing | 3d | 2026-03-21 A | 2026-03-24 A | FDN.1240, FDN.1240 FF | 100% |
| FDN.1120 |  | Foundation / CL 3.1 Through 3.9 (DH1300) // Install Under Slab Plumbing (Deep U/G) | 5d | 2026-03-30 A | 2026-04-03 A | FDN.1110 SS+5d, FDN.1242 SS | 100% |
| FDN.1242 |  | Foundation / CL 3.1 Through 3.9 (DH1300) // Install Drain Tiles & Storm Drains | 6d | 2026-04-01 A | 2026-04-07 A | FDN.1241, FDN.1241 FF, FDN.1110 | 100% |
| FDN.1312 |  | Foundation / CL 3.1 Through 3.9 (DH1300) // Install Under Slab Plumbing (Shallow U/G) | 2d | 2026-04-28 A | 2026-04-29 A | FDN.1332 | 100% |
| FDN.1243 |  | Foundation / CL 3.1 Through 3.9 (DH1300) // Install Under Slab Electrical | 15d | 2026-04-29 A | 2026-07-10 A | FDN.1120 SS+5d | 100% |
|  | 4 | **Column Line 4.1 Through 4.9 (DH1400)** |  | 2026-03-11 | 2026-05-19 |  |  |
| FDN.1130 |  | Foundation / CL 4.1 Through 4.9 (DH1400) // Excavate and Install Footings and Stem Walls Rebars | 3d | 2026-03-11 A | 2026-03-14 A | FDN.1100 SS+7d | 100% |
| FDN.1140 |  | Foundation / CL 4.1 Through 4.9 (DH1400) // Install Interior Colum Foundations | 2d | 2026-03-14 A | 2026-03-17 A | FDN.1130, FDN.1110 | 100% |
| FDN.1244 |  | Foundation / CL 4.1 Through 4.9 (DH1400) // Form Prep and Pour Footings and Stem Walls | 5d | 2026-03-17 A | 2026-03-21 A | FDN.1130 | 100% |
| FDN.1245 |  | Foundation / CL 4.1 Through 4.9 (DH1400) // Install Waterproofing | 3d | 2026-03-23 A | 2026-03-25 A | FDN.1244, FDN.1244 FF, FDN.1244 SS | 100% |
| FDN.1150 |  | Foundation / CL 4.1 Through 4.9 (DH1400) // Install Under Slab Plumbing (Deep U/G) | 5d | 2026-04-01 A | 2026-04-06 A | FDN.1140 SS+5d, FDN.1246 SS | 100% |
| FDN.1246 |  | Foundation / CL 4.1 Through 4.9 (DH1400) // Install Drain Tiles & Storm Drains | 6d | 2026-04-01 A | 2026-04-07 A | FDN.1245, FDN.1245 FF, FDN.1245 SS, FDN.1140, FDN.1242 | 100% |
| FDN.1247 |  | Foundation / CL 4.1 Through 4.9 (DH1400) // Install Under Slab Electrical | 15d | 2026-04-29 A | 2026-05-19 A | FDN.1150 SS+5d | 100% |
| FDN.1333 |  | Foundation / CL 4.1 Through 4.9 (DH1400) // Install Under Slab Plumbing (Shallow U/G) | 2d | 2026-04-29 A | 2026-04-30 A | FDN.1150, FDN.1312 | 100% |
|  | 5 | **Column Line 5.2 Through 5.9 (DH1500)** |  | 2026-03-14 | 2026-05-20 |  |  |
| FDN.1160 |  | Foundation / CL 5.2 Through 5.9 (DH1500) // Excavate and Install Footings and Stem Walls Rebars | 3d | 2026-03-14 A | 2026-03-17 A | FDN.1130 SS+7d | 100% |
| FDN.1170 |  | Foundation / CL 5.2 Through 5.9 (DH1500) // Install Interior Colum Foundations | 2d | 2026-03-17 A | 2026-03-18 A | FDN.1160, FDN.1140 | 100% |
| FDN.1248 |  | Foundation / CL 5.2 Through 5.9 (DH1500) // Form Prep and Pour Footings and Stem Walls | 5d | 2026-03-19 A | 2026-03-23 A | FDN.1160 | 100% |
| FDN.1249 |  | Foundation / CL 5.2 Through 5.9 (DH1500) // Install Waterproofing | 3d | 2026-03-24 A | 2026-03-27 A | FDN.1248, FDN.1248 FF, FDN.1248 SS, FDN.1248 SF | 100% |
| FDN.1334 |  | Foundation / CL 5.2 Through 5.9 (DH1500) // Install Under Slab Plumbing (Deep U/G) | 2d | 2026-04-03 A | 2026-04-09 A | FDN.1170 SS+5d | 100% |
| FDN.1250 |  | Foundation / CL 5.2 Through 5.9 (DH1500) // Install Drain Tiles & Storm Drains | 6d | 2026-04-07 A | 2026-04-13 A | FDN.1249, FDN.1249 FF, FDN.1249 SS, FDN.1249 SF, FDN.1170 | 100% |
| FDN.1180 |  | Foundation / CL 5.2 Through 5.9 (DH1500) // Install Under Slab Plumbing (Shallow U/G) | 2d | 2026-04-30 A | 2026-05-01 A | FDN.1334, FDN.1170 SS+5d, FDN.1250, FDN.1333 | 100% |
| FDN.1251 |  | Foundation / CL 5.2 Through 5.9 (DH1500) // Install Under Slab Electrical | 15d | 2026-04-30 A | 2026-05-20 A | FDN.1334, FDN.1180 SS+5d, FDN.1243 | 100% |
|  | 6 | **Column Line 6.1 Through 7.2 (DH1600)** |  | 2026-03-20 | 2026-06-11 |  |  |
| FDN.1190 |  | Foundation / CL 6.1 Through 7.2 (DH1600) // Excavate and Install Footings and Stem Walls Rebars | 3d | 2026-03-20 A | 2026-03-21 A | FDN.1160 SS+7d | 100% |
| FDN.1200 |  | Foundation / CL 6.1 Through 7.2 (DH1600) // Install Interior Colum Foundations | 2d | 2026-03-23 A | 2026-03-24 A | FDN.1190, FDN.1170 | 100% |
| FDN.1252 |  | Foundation / CL 6.1 Through 7.2 (DH1600) // Form Prep and Pour Footings and Stem Walls | 5d | 2026-03-24 A | 2026-03-28 A | FDN.1190 | 100% |
| FDN.1253 |  | Foundation / CL 6.1 Through 7.2 (DH1600) // Install Waterproofing | 3d | 2026-03-30 A | 2026-04-02 A | FDN.1252, FDN.1252 FF, FDN.1252 SS, FDN.1252 SF | 100% |
| FDN.1210 |  | Foundation / CL 6.1 Through 7.2 (DH1600) // Install Under Slab Plumbing (Deep U/G) | 5d | 2026-04-08 A | 2026-04-14 A | FDN.1200 SS+5d, FDN.1254 | 100% |
| FDN.1254 |  | Foundation / CL 6.1 Through 7.2 (DH1600) // Install Drain Tiles & Storm Drains | 6d | 2026-04-14 A | 2026-04-20 A | FDN.1253, FDN.1253 FF, FDN.1253 SS, FDN.1253 SF, FDN.1200 | 100% |
| FDN.1335 |  | Foundation / CL 6.1 Through 7.2 (DH1600) // Install Under Slab Plumbing (Shallow U/G) | 2d | 2026-05-19 A | 2026-05-20 A | FDN.1180 | 100% |
| FDN.1255 |  | Foundation / CL 6.1 Through 7.2 (DH1600) // Install Under Slab Electrical | 15d | 2026-05-29 A | 2026-06-11 A | FDN.1335, FDN.1210 SS+5d, FDN.1251 | 100% |
|  | 8 | **Column Line 7.2 - (BOH) A Through E** |  | 2026-03-23 | 2026-07-07 |  |  |
| FDN.1298 |  | Foundation / CL 7.2 - (BOH) A Through E // Install Interior Colum Foundations | 3d | 2026-03-23 A | 2026-03-25 A | FDN.1190 | 100% |
| FDN.1230 |  | Foundation / CL 7.2 - (BOH) A Through E // Excavate and Install Footings and Stem Walls Rebar | 5d | 2026-03-25 A | 2026-03-27 A | FDN.1190 SS+7d | 100% |
| FDN.1220 |  | Foundation / CL 7.2 - (BOH) A Through E // Form and Install Stem walls | 5d | 2026-03-26 A | 2026-03-28 A | FDN.1230 SS+5d | 100% |
| FDN.1256 |  | Foundation / CL 7.2 - (BOH) A Through E // Install Waterproofing | 3d | 2026-03-30 A | 2026-04-03 A | FDN.1220 | 100% |
| FDN.1297 |  | Foundation / CL 7.2 - (BOH) A Through E // Install Drain Tiles & Storm Drains | 6d | 2026-04-15 A | 2026-05-01 A | FDN.1256, FDN.1298 | 100% |
| FDN.1299 |  | Foundation / CL 7.2 - (BOH) A Through E // Install Underslab Plumbing | 5d | 2026-05-05 A | 2026-05-11 A | FDN.1298 SS+5d, FDN.1297 FS+3d | 100% |
| FDN.1300 |  | Foundation / CL 7.2 - (BOH) A Through E // Install Underslab Electrical | 15d | 2026-05-14 A | 2026-07-07 A | FDN.1299 SS+5d | 100% |
|  | 5 | **Slab on Grade** |  | 2026-04-15 | 2026-08-26 |  |  |
|  | 1 | **FOH** |  | 2026-04-15 | 2026-05-07 |  |  |
| SOG.1481 |  | FOH // SOG - Rock Grade Walls | 1d | 2026-04-15 A | 2026-04-16 A | SOG.1431 SS | 100% |
| SOG.1431 |  | FOH // SOG - Re-establish Sub-grade | 1d | 2026-04-16 A | 2026-04-17 A | A2030, A2060 | 100% |
| SOG.1483 |  | FOH // SOG - Pad Remediation | 2d | 2026-04-16 A | 2026-04-18 A | SOG.1481 | 100% |
| SOG.1489 |  | FOH // SOG - Rock Grade | 1d | 2026-04-16 A | 2026-04-16 A | SOG.1481 | 100% |
| SOG.1484 |  | FOH // SOG - Backfill & Foam Walls | 1d | 2026-04-18 A | 2026-04-18 A | SOG.1481 | 100% |
| SOG.1482 |  | FOH // SOG - Install Sanitary Line (West Side) | 3d | 2026-04-20 A | 2026-04-22 A | SOG.1481 SS | 100% |
| SOG.1487 |  | FOH // SOG - Dock Leveller Base | 1d | 2026-04-20 A | 2026-04-20 A | SOG.1484 | 100% |
| SOG.1485 |  | FOH // SOG - Shallow Under Ground | 5d | 2026-04-22 A | 2026-04-24 A | SOG.1482 | 100% |
| SOG.1486 |  | FOH // SOG - Power Branch (West to East) | 5d | 2026-04-23 A | 2026-04-28 A | SOG.1485 SS+2d | 100% |
| SOG.1493 |  | FOH // SOG - Sanitary Stack test | 2d | 2026-04-27 A | 2026-04-28 A | SOG.1485 | 100% |
| SOG.1488 |  | FOH // SOG - Rock Grade | 3d | 2026-04-29 A | 2026-05-01 A | SOG.1487, SOG.1483 | 100% |
| SOG.1490 |  | FOH // SOG - Set Fixtures | 2d | 2026-04-29 A | 2026-04-30 A | SOG.1489, SOG.1493 | 100% |
| SOG.1492 |  | FOH // SOG - Grounding | 2d | 2026-04-29 A | 2026-04-30 A | SOG.1486 | 100% |
| SOG.1432 |  | FOH // SOG - Vapor Barrier | 2d | 2026-04-30 A | 2026-05-04 A | SOG.1431 SS, SOG.1488, SOG.1493, SOG.1483, SOG.1487 | 100% |
| SOG.1491 |  | FOH // SOG - Install Floor Boxes | 1d | 2026-04-30 A | 2026-04-30 A | SOG.1492 | 100% |
| SOG.1433 |  | FOH // SOG - Rebar Set & Tie | 2d | 2026-05-01 A | 2026-05-04 A | SOG.1432 SS, SOG.1490 | 100% |
| SOG.1495 |  | FOH // SOG - Truck route Prep/ QAQC Pre-Pour | 2d | 2026-05-01 A | 2026-05-04 A | SOG.1490, SOG.1491 | 100% |
| SOG.1434 |  | FOH // SOG - Pour #1 | 1d | 2026-05-04 A | 2026-05-04 A | SOG.1433, FDN.1296, SOG.1495 SS | 100% |
| SOG.1435 |  | FOH // SOG - Concrete Cure | 3d | 2026-05-05 A | 2026-05-07 A | SOG.1434 | 100% |
|  | 2 | **DH1100** |  | 2026-06-10 | 2026-07-20 |  |  |
| SOG.1437 |  | DH 1100 // SOG - Re-establish Sub-grade | 1d | 2026-06-10 A | 2026-06-10 A | SOG.1431, STRUCTURE.7655 | 100% |

| ID | WBS | Task | Duration | Start | Finish | Predecessors | Complete |
| --- | --- | --- | --- | --- | --- | --- | --- |
| SOG.1508 |  | DH 1100 // SOG - Rock Grade Walls | 1d | 2026-06-11 A | 2026-06-11 A | SOG.1437 SS | 100% |
| SOG.1515 |  | DH 1100 // SOG - Shallow Under Ground | 5d | 2026-06-12 A | 2026-06-16 A | SOG.1508 SS | 100% |
| SOG.1517 |  | DH 1100 // SOG - Sanitary Stack test | 2d | 2026-06-19 A | 2026-06-22 A | SOG.1515 SS | 100% |
| SOG.1518 |  | DH 1100 // SOG - Vapor Barrier | 2d | 2026-06-23 A | 2026-06-24 A | SOG.1517, SOG.1508, SOG.1437 | 100% |
| SOG.1519 |  | DH 1100 // SOG - Set Fixtures | 2d | 2026-06-23 A | 2026-06-24 A | SOG.1517, SOG.1437 | 100% |
| SOG.1522 |  | DH 1100 // SOG - Rebar Set & Tie | 3d | 2026-06-25 A | 2026-07-06 A | SOG.1518 SS, SOG.1519 | 100% |
| SOG.1523 |  | DH 1100 // SOG - Truck route Prep/ QAQC Pre-Pour | 1d | 2026-07-07 A | 2026-07-07 A | SOG.1519, SOG.1515 SS | 100% |
| SOG.1440 |  | DH 1100 // SOG - Pour #3 (DH Side) | 1d | 2026-07-08 A | 2026-07-08 A | FDN.1233, SOG.1434, SOG.1523, SOG.1522 | 100% |
| SOG.1441 |  | DH 1100 // SOG - Pour #4 (ER Side) | 1d | 2026-07-08 A | 2026-07-08 A | SOG.1440 | 100% |
| SOG.1496 |  | DH 1100 // SOG - Pour #5 (CL2.4) DH Side | 1d | 2026-07-17 A | 2026-07-17 A | SOG.1441, STRUCTURE.7656 | 100% |
| SOG.1442 |  | DH 1100 // SOG - Concrete Cure | 1d | 2026-07-20 A | 2026-07-20 A | SOG.1496 | 100% |
|  | 3 | **DH1200** |  | 2026-06-19 | 2026-07-25 |  |  |
| SOG.1528 |  | DH 1200 // SOG - Install Sanitary Line (West Side) | 3d | 2026-06-19 A | 2026-06-23 A | SOG.1524 SS | 100% |
| SOG.1535 |  | DH 1200 // SOG - Set Fixtures | 2d | 2026-06-24 A | 2026-06-25 A | SOG.1525, SOG.1533 | 100% |
| SOG.1536 |  | DH 1200 // SOG - Grounding | 2d | 2026-06-24 A | 2026-06-25 A | SOG.1532 | 100% |
| SOG.1537 |  | DH 1200 // SOG - Install Floor Boxes | 1d | 2026-06-26 A | 2026-06-26 A | SOG.1536 | 100% |
| SOG.1538 |  | DH 1200 // SOG - Rebar Set & Tie | 2d | 2026-06-26 A | 2026-06-29 A | SOG.1534 SS, SOG.1535 | 100% |
| SOG.1443 |  | DH 1200 // SOG - Re-establish Sub-grade | 3d | 2026-07-06 A | 2026-07-08 A | STRUCTURE.7656 | 100% |
| SOG.1533 |  | DH 1200 // SOG - Sanitary Stack test | 2d | 2026-07-06 A | 2026-07-07 A | SOG.1531 | 100% |
| SOG.1524 |  | DH 1200 // SOG - Rock Grade Walls | 1d | 2026-07-07 A | 2026-07-07 A | SOG.1443 | 100% |
| SOG.1525 |  | DH 1200 // SOG - Rock Grade | 1d | 2026-07-07 A | 2026-07-07 A | SOG.1443 | 100% |
| SOG.1526 |  | DH 1200 // SOG - Pad Remediation | 2d | 2026-07-07 A | 2026-07-08 A | SOG.1443 | 100% |
| SOG.1531 |  | DH 1200 // SOG - Shallow Under Ground | 5d | 2026-07-10 A | 2026-07-16 A | SOG.1528 | 100% |
| SOG.1532 |  | DH 1200 // SOG - Power Branch (West to East) | 2d | 2026-07-14 A | 2026-07-15 A | SOG.1531 SS+2d | 100% |
| SOG.1534 |  | DH 1200 // SOG - Vapor Barrier | 2d | 2026-07-15 A | 2026-07-17 A | SOG.1533, SOG.1526, SOG.1524 | 100% |
| SOG.1539 |  | DH 1200 // SOG - Truck route Prep/ QAQC Pre-Pour | 2d | 2026-07-20 A | 2026-07-21 A | SOG.1535, SOG.1537 | 100% |
| SOG.1498 |  | DH 1200 // SOG - Pour #6 (CL 3.1) DH Side | 1d | 2026-07-21 A | 2026-07-21 A | SOG.1441, FDN.1234, SOG.1539, SOG.1538 | 100% |
| SOG.1499 |  | DH 1200 // SOG - Pour #7 (CL 3.1) ER Side | 1d | 2026-07-23 A | 2026-07-23 A | SOG.1498 | 100% |
| SOG.1448 |  | DH 1200 // SOG - Concrete Cure | 1d | 2026-07-24 A | 2026-07-25 A | SOG.1499 | 100% |
|  | 4 | **DH1300** |  | 2026-07-07 | 2026-08-04 |  |  |
| SOG.1449 |  | DH 1300 // SOG - Re-establish Sub-grade | 1d | 2026-07-07 A | 2026-07-07 A | SOG.1443, STRUCTURE.7657 | 100% |
| SOG.1547 |  | DH 1300 // SOG - Shallow Under Ground | 5d | 2026-07-07 A | 2026-07-13 A | SOG.1544 | 100% |
| SOG.1548 |  | DH 1300 // SOG - Power Branch (West to East) | 5d | 2026-07-07 A | 2026-07-13 A | SOG.1547 SS+2d | 100% |
| SOG.1540 |  | DH 1300 // SOG - Rock Grade Walls | 1d | 2026-07-08 A | 2026-07-08 A | SOG.1449 | 100% |
| SOG.1541 |  | DH 1300 // SOG - Rock Grade | 1d | 2026-07-08 A | 2026-07-08 A | SOG.1449 | 100% |
| SOG.1542 |  | DH 1300 // SOG - Pad Remediation | 2d | 2026-07-08 A | 2026-07-09 A | SOG.1449 | 100% |
| SOG.1543 |  | DH 1300 // SOG - Backfill & Foam Walls | 1d | 2026-07-09 A | 2026-07-09 A | SOG.1540 | 100% |
| SOG.1546 |  | DH 1300 // SOG - Rock Grade | 3d | 2026-07-09 A | 2026-07-13 A | SOG.1545, SOG.1542 | 100% |
| SOG.1549 |  | DH 1300 // SOG - Sanitary Stack test | 2d | 2026-07-13 A | 2026-07-14 A | SOG.1547 | 100% |
| SOG.1552 |  | DH 1300 // SOG - Grounding | 2d | 2026-07-14 A | 2026-07-15 A | SOG.1548 | 100% |
| SOG.1544 |  | DH 1300 // SOG - Install Sanitary Line (West Side) | 3d | 2026-07-15 A | 2026-07-17 A | SOG.1540 SS | 100% |
| SOG.1545 |  | DH 1300 // SOG - Dock Leveller Base | 1d | 2026-07-15 A | 2026-07-15 A | SOG.1543 | 100% |
| SOG.1550 |  | DH 1300 // SOG - Vapor Barrier | 2d | 2026-07-17 A | 2026-07-20 A | SOG.1546, SOG.1549 | 100% |
| SOG.1551 |  | DH 1300 // SOG - Set Fixtures | 2d | 2026-07-20 A | 2026-07-21 A | SOG.1541, SOG.1549 | 100% |
| SOG.1554 |  | DH 1300 // SOG - Rebar Set & Tie | 2d | 2026-07-21 A | 2026-07-22 A | SOG.1550 SS, SOG.1551 | 100% |
| SOG.1553 |  | DH 1300 // SOG - Install Floor Boxes | 1d | 2026-07-24 A | 2026-07-24 A | SOG.1552 | 100% |
| SOG.1555 |  | DH 1300 // SOG - Truck route Prep/ QAQC Pre-Pour | 2d | 2026-07-27 A | 2026-07-28 A | SOG.1551, SOG.1553 | 100% |
| SOG.1452 |  | DH 1300 // SOG - Pour #8 (DH Side) | 1d | 2026-07-29 A | 2026-07-29 A | SOG.1555, SOG.1554, FDN.1243 | 100% |
| SOG.1453 |  | DH 1300 // SOG - Pour #9 (ER Side) | 1d | 2026-07-30 A | 2026-08-03 A | SOG.1452, SOG.1452 FF | 100% |
| SOG.1454 |  | DH 1300 // SOG - Concrete Cure | 1d | 2026-07-31 A | 2026-08-04 A | SOG.1453 | 100% |
|  | 5 | **DH1400** |  | 2026-07-13 | 2026-08-11 |  |  |
| SOG.1455 |  | DH 1400 // SOG - Re-establish Sub-grade | 1d | 2026-07-13 A | 2026-07-13 A | SOG.1449, STRUCTURE.7658 | 100% |
| SOG.1556 |  | DH 1400 // SOG - Rock Grade Walls | 1d | 2026-07-14 A | 2026-07-14 A | SOG.1455 | 100% |
| SOG.1557 |  | DH 1400 // SOG - Rock Grade | 1d | 2026-07-14 A | 2026-07-14 A | SOG.1455 | 100% |
| SOG.1558 |  | DH 1400 // SOG - Pad Remediation | 2d | 2026-07-14 A | 2026-07-15 A | SOG.1455 | 100% |
| SOG.1560 |  | DH 1400 // SOG - Install Sanitary Line (West Side) | 3d | 2026-07-14 A | 2026-07-16 A | SOG.1556 SS | 100% |
| SOG.1559 |  | DH 1400 // SOG - Backfill & Foam Walls | 1d | 2026-07-15 A | 2026-07-15 A | SOG.1556 | 100% |
| SOG.1562 |  | DH 1400 // SOG - Rock Grade | 3d | 2026-07-16 A | 2026-07-20 A | SOG.1559, SOG.1558 | 100% |
| SOG.1563 |  | DH 1400 // SOG - Shallow Under Ground | 5d | 2026-07-16 A | 2026-07-22 A | SOG.1560 | 100% |
| SOG.1564 |  | DH 1400 // SOG - Power Branch (West to East) | 5d | 2026-07-16 A | 2026-07-22 A | SOG.1563 SS+2d | 100% |
| SOG.1565 |  | DH 1400 // SOG - Sanitary Stack test | 2d | 2026-07-24 A | 2026-07-27 A | SOG.1563 | 100% |
| SOG.1568 |  | DH 1400 // SOG - Grounding | 2d | 2026-07-24 A | 2026-07-27 A | SOG.1564 | 100% |
| SOG.1566 |  | DH 1400 // SOG - Vapor Barrier | 2d | 2026-07-28 A | 2026-08-03 A | SOG.1562, SOG.1565 | 100% |
| SOG.1567 |  | DH 1400 // SOG - Set Fixtures | 2d | 2026-07-28 A | 2026-08-03 A | SOG.1557, SOG.1565 | 100% |
| SOG.1569 |  | DH 1400 // SOG - Install Floor Boxes | 1d | 2026-07-28 A | 2026-08-03 A | SOG.1568 | 100% |
| SOG.1570 |  | DH 1400 // SOG - Rebar Set & Tie | 2d | 2026-07-30 A | 2026-08-04 A | SOG.1566 SS, SOG.1567 | 100% |
| SOG.1571 |  | DH 1400 // SOG - Truck route Prep/ QAQC Pre-Pour | 2d | 2026-07-30 A | 2026-08-04 A | SOG.1567, SOG.1569 | 100% |
| SOG.1458 |  | DH 1400 // SOG - Pour #10 (CL 4.4) DH Side | 1d | 2026-08-04 A | 2026-08-06 A | SOG.1453, SOG.1571, SOG.1570 FS+1d, FDN.1247 | 100% |
| SOG.1459 |  | DH 1400 // SOG - Pour #11 (CL 4.4) ER Side | 1d | 2026-08-06 A | 2026-08-10 A | SOG.1458 FS+1d, SOG.1458 FF | 100% |
| SOG.1460 |  | DH 1400 // SOG - Concrete Cure | 1d | 2026-08-07 A | 2026-08-11 A | SOG.1459 | 100% |

| ID | WBS | Task | Duration | Start | Finish | Predecessors | Complete |
| --- | --- | --- | --- | --- | --- | --- | --- |
|  | 6 | **DH1500** |  | 2026-07-14 | 2026-08-26 |  |  |
| SOG.1461 |  | DH 1500 // SOG - Re-establish Sub-grade | 1d | 2026-07-14 A | 2026-07-14 A | SOG.1455, STRUCTURE.7659 | 100% |
| SOG.1572 |  | DH 1500 // SOG - Rock Grade Walls | 1d | 2026-07-15 A | 2026-07-15 A | SOG.1461 | 100% |
| SOG.1573 |  | DH 1500 // SOG - Rock Grade | 1d | 2026-07-15 A | 2026-07-15 A | SOG.1461 | 100% |
| SOG.1574 |  | DH 1500 // SOG - Pad Remediation | 2d | 2026-07-15 A | 2026-07-16 A | SOG.1461 | 100% |
| SOG.1575 |  | DH 1500 // SOG - Backfill & Foam Walls | 1d | 2026-07-16 A | 2026-07-16 A | SOG.1572 | 100% |
| SOG.1576 |  | DH 1500 // SOG - Install Sanitary Line (West Side) | 3d | 2026-07-16 A | 2026-07-20 A | SOG.1572 SS | 100% |
| SOG.1579 |  | DH 1500 // SOG - Shallow Under Ground | 5d | 2026-07-24 A | 2026-08-05 A | SOG.1576 | 100% |
| SOG.1577 |  | DH 1500 // SOG - Dock Leveller Base | 1d | 2026-07-24 A | 2026-08-24 A | SOG.1464 SS | 100% |
| SOG.1581 |  | DH 1500 // SOG - Sanitary Stack test | 2d | 2026-07-27 A | 2026-07-29 A | SOG.1579 SS | 100% |
| SOG.1582 |  | DH 1500 // SOG - Vapor Barrier | 2d | 2026-08-03 A | 2026-08-04 A | SOG.1574, SOG.1581 | 100% |
| SOG.1583 |  | DH 1500 // SOG - Set Fixtures | 2d | 2026-08-03 A | 2026-08-04 A | SOG.1575, SOG.1573, SOG.1581 | 100% |
| SOG.1584 |  | DH 1500 // SOG - Grounding | 2d | 2026-08-03 A | 2026-08-04 A | SOG.1579 SS | 100% |
| SOG.1585 |  | DH 1500 // SOG - Install Floor Boxes | 1d | 2026-08-05 A | 2026-08-05 A | SOG.1584 | 100% |
| SOG.1586 |  | DH 1500 // SOG - Rebar Set & Tie | 2d | 2026-08-05 A | 2026-08-06 A | SOG.1582 SS, SOG.1583 | 100% |
| SOG.1587 |  | DH 1500 // SOG - Truck route Prep/ QAQC Pre-Pour | 2d | 2026-08-07 A | 2026-08-19 A | SOG.1583, SOG.1585 | 100% |
| SOG.1464 |  | DH 1500 // SOG - Pour #12 (DH Side) | 1d | 2026-08-11 A | 2026-08-20 A | SOG.1587 SS, SOG.1586, FDN.1251 | 100% |
| SOG.1465 |  | DH 1500 // SOG - Pour #13 (ER Side) | 1d | 2026-08-13 A | 2026-08-25 A | SOG.1577 SS, SOG.1464 | 100% |
| SOG.1466 |  | DH 1500 // SOG - Concrete Cure | 1d | 2026-08-14 A | 2026-08-26 A | SOG.1465 | 100% |
|  | 7 | **DH1600** |  | 2026-07-24 | 2026-08-19 |  |  |
| SOG.1467 |  | DH 1600 // SOG - Re-establish Sub-grade | 1d | 2026-07-24 A | 2026-07-24 A | SOG.1461, STRUCTURE.7660 | 100% |
| SOG.1588 |  | DH 1600 // SOG - Rock Grade Walls | 1d | 2026-07-27 A | 2026-07-27 A | SOG.1467 | 100% |
| SOG.1589 |  | DH 1600 // SOG - Rock Grade | 1d | 2026-07-27 A | 2026-07-27 A | SOG.1467 | 100% |
| SOG.1590 |  | DH 1600 // SOG - Pad Remediation | 2d | 2026-07-27 A | 2026-07-28 A | SOG.1467 | 100% |
| SOG.1592 |  | DH 1600 // SOG - Install Sanitary Line (West Side) | 3d | 2026-07-27 A | 2026-07-29 A | SOG.1588 SS | 100% |
| SOG.1594 |  | DH 1600 // SOG - Rock Grade | 3d | 2026-07-27 A | 2026-07-27 A | SOG.1591, SOG.1590 | 100% |
| SOG.1595 |  | DH 1600 // SOG - Shallow Under Ground | 5d | 2026-07-27 A | 2026-07-27 A | SOG.1592 | 100% |
| SOG.1591 |  | DH 1600 // SOG - Backfill & Foam Walls | 1d | 2026-07-28 A | 2026-07-28 A | SOG.1588 | 100% |
| SOG.1597 |  | DH 1600 // SOG - Sanitary Stack test | 2d | 2026-07-28 A | 2026-07-29 A | SOG.1595 | 100% |
| SOG.1596 |  | DH 1600 // SOG - Power Branch (West to East) | 5d | 2026-08-03 A | 2026-08-07 A | SOG.1595 SS+2d | 100% |
| SOG.1598 |  | DH 1600 // SOG - Vapor Barrier | 2d | 2026-08-03 A | 2026-08-04 A | SOG.1594, SOG.1597 | 100% |
| SOG.1599 |  | DH 1600 // SOG - Set Fixtures | 2d | 2026-08-03 A | 2026-08-04 A | SOG.1589, SOG.1597 | 100% |
| SOG.1602 |  | DH 1600 // SOG - Rebar Set & Tie | 2d | 2026-08-05 A | 2026-08-06 A | SOG.1598 SS, SOG.1599 | 100% |
| SOG.1600 |  | DH 1600 // SOG - Grounding | 2d | 2026-08-10 A | 2026-08-11 A | SOG.1596 | 100% |
| SOG.1471 |  | DH 1600 // SOG - Pour #15 (CL 6.4) ER Side | 1d | 2026-08-11 A | 2026-08-11 A | SOG.1603 FF, SOG.1603, SOG.1602 | 100% |
| SOG.1601 |  | DH 1600 // SOG - Install Floor Boxes | 1d | 2026-08-12 A | 2026-08-12 A | SOG.1600 | 100% |
| SOG.1603 |  | DH 1600 // SOG - Truck route Prep/ QAQC Pre-Pour | 2d | 2026-08-13 A | 2026-08-14 A | SOG.1599, SOG.1601 | 100% |
| SOG.1470 |  | DH 1600 // SOG - Pour #14 (CL 6.4) DH Side | 1d | 2026-08-18 A | 2026-08-18 A | SOG.1471, SOG.1603 FS+2d, FDN.1255 | 100% |
| SOG.1472 |  | DH 1600 // SOG - Concrete Cure | 1d | 2026-08-19 A | 2026-08-19 A | SOG.1470 | 100% |
|  | 8 | **BOH** |  | 2026-05-11 | 2026-06-16 |  |  |
| SOG.1608 |  | BOH // SOG - Install Sanitary Line (West Side) | 3d | 2026-05-11 A | 2026-05-13 A | SOG.1482 | 100% |
| SOG.1611 |  | BOH // SOG - Shallow Under Ground | 5d | 2026-05-12 A | 2026-05-14 A | SOG.1608 | 100% |
| SOG.1612 |  | BOH // SOG - Power Branch (West to East) | 5d | 2026-05-14 A | 2026-05-20 A | SOG.1611 SS+2d | 100% |
| SOG.1613 |  | BOH // SOG - Sanitary Stack test | 2d | 2026-05-14 A | 2026-05-15 A | SOG.1611 | 100% |
| SOG.1473 |  | BOH // SOG - Re-establish Sub-grade | 1d | 2026-05-16 A | 2026-05-16 A | SOG.1431 | 100% |
| SOG.1606 |  | BOH // SOG - Pad Remediation | 2d | 2026-05-16 A | 2026-05-16 A | SOG.1473 | 100% |
| SOG.1604 |  | BOH // SOG - Rock Grade Walls | 1d | 2026-05-18 A | 2026-05-18 A | SOG.1473 | 100% |
| SOG.1607 |  | BOH // SOG - Backfill & Foam Walls | 1d | 2026-05-19 A | 2026-05-19 A | SOG.1604 | 100% |
| SOG.1605 |  | BOH // SOG - Rock Grade | 1d | 2026-05-20 A | 2026-05-20 A | SOG.1604 | 100% |
| SOG.1614 |  | BOH // SOG - Vapor Barrier | 2d | 2026-05-20 A | 2026-05-22 A | SOG.1613, SOG.1606, SOG.1607 | 100% |
| SOG.1615 |  | BOH // SOG - Set Fixtures | 2d | 2026-05-21 A | 2026-05-23 A | SOG.1605, SOG.1613 | 100% |
| SOG.1616 |  | BOH // SOG - Grounding | 2d | 2026-05-21 A | 2026-05-26 A | SOG.1612 | 100% |
| SOG.1618 |  | BOH // SOG - Rebar Set & Tie | 2d | 2026-05-25 A | 2026-05-26 A | SOG.1614 SS, SOG.1615 | 100% |
| SOG.1617 |  | BOH // SOG - Install Floor Boxes | 6d | 2026-05-27 A | 2026-06-13 A | SOG.1616 | 100% |
| SOG.1619 |  | BOH // SOG - Truck route Prep/ QAQC Pre-Pour | 2d | 2026-06-13 A | 2026-06-15 A | SOG.1615, SOG.1617 | 100% |
| SOG.1476 |  | BOH // SOG - Pour #2 | 1d | 2026-06-15 A | 2026-06-15 A | SOG.1619 FF, FDN.1300 SS+5d, SOG.1618 | 100% |
| SOG.1478 |  | BOH // SOG - Concrete Cure | 1d | 2026-06-16 A | 2026-06-16 A | SOG.1476 | 100% |
|  | 3 | **Steel** |  | 2026-05-08 | 2026-07-23 |  |  |
|  | 7 | **Column Line 0.1 Through 1.0 (FOH)** |  | 2026-05-08 | 2026-05-28 |  |  |
| STRUCTURE.7617 |  | Steel / CL 0.1 Through 1.0 (FOH) // Crane 1 -Erect steel Column and Joist | 5d | 2026-05-08 A | 2026-05-20 A | A2090, TB.SS.1030, SOG.1435 SS | 100% |
| STRUCTURE.7630 |  | Steel / CL 0.1 Through 1.0 (FOH) // Crane 2 -Erect steel Column and Joist | 5d | 2026-05-11 A | 2026-05-20 A | STRUCTURE.7617 SS | 100% |
| STRUCTURE.7615 |  | Steel / CL 0.1 Through 1.0 (FOH) // Crane 1 - Plumb, bolt, weld steel | 5d | 2026-05-21 A | 2026-05-27 A | STRUCTURE.7617 | 100% |
| STRUCTURE.7631 |  | Steel / CL 0.1 Through 1.0 (FOH) // Crane 2 - Plumb, bolt, weld steel | 5d | 2026-05-21 A | 2026-05-27 A | STRUCTURE.7630 | 100% |
| STRUCTURE.7616 |  | Steel / CL 0.1 Through 1.0 (FOH) // Crane 1 - Install pan decking | 3d | 2026-05-23 A | 2026-05-27 A | STRUCTURE.7615 SS, STRUCTURE.7615 FF | 100% |
| STRUCTURE.7632 |  | Steel / CL 0.1 Through 1.0 (FOH) // Crane 2 - Install pan decking | 3d | 2026-05-23 A | 2026-05-27 A | STRUCTURE.7631 SS, STRUCTURE.7631 FF | 100% |
| STRUCTURE.7654 |  | Steel / CL 0.1 Through 1.0 (FOH) // FOH - Turnover | 1d | 2026-05-28 A | 2026-05-28 A | STRUCTURE.7616, STRUCTURE.7632 | 100% |
|  | 1 | **Column line 1.1 Through 2.0 (DH1100)** |  | 2026-05-21 | 2026-06-02 |  |  |
| STRUCTURE.7370 |  | Steel / CL 1.1 Through 2.0 (DH1100) // Crane 1 - Erect steel Column and Joist | 5d | 2026-05-21 A | 2026-05-27 A | STRUCTURE.7617 | 100% |
| STRUCTURE.7633 |  | Steel / CL 1.1 Through 2.0 (DH1100) // Crane 2 -Erect steel Column and Joist | 5d | 2026-05-21 A | 2026-05-27 A | STRUCTURE.7630 | 100% |
| STRUCTURE.7380 |  | Steel / CL 1.1 Through 2.0 (DH1100) // Crane 1 -Plumb, bolt, weld steel | 5d | 2026-05-23 A | 2026-05-29 A | STRUCTURE.7370 SS+2d | 100% |

| ID | WBS | Task | Duration | Start | Finish | Predecessors | Complete | Total float |
| --- | --- | --- | --- | --- | --- | --- | --- | --- |
| STRUCTURE.7634 |  | Steel / CL 1.1 Through 2.0 (DH1100) // Crane 2 - Plumb, bolt, weld steel | 5d | 2026-05-23 A | 2026-05-29 A | STRUCTURE.7633 SS+2d | 100% |  |
| STRUCTURE.7635 |  | Steel / CL 1.1 Through 2.0 (DH1100) // Crane 2 - Install pan decking | 3d | 2026-05-27 A | 2026-05-29 A | STRUCTURE.7634 SS+2d | 100% |  |
| STRUCTURE.7390 |  | Steel / CL 1.1 Through 2.0 (DH1100) // Crane 1 - Install pan decking | 3d | 2026-05-30 A | 2026-06-01 A | STRUCTURE.7380 | 100% |  |
| STRUCTURE.7655 |  | Steel / CL 1.1 Through 2.0 (DH1100) // DH1100 - Turnover | 1d | 2026-06-02 A | 2026-06-02 A | STRUCTURE.7390, STRUCTURE.7635 | 100% |  |
|  | 2 | **Column Line 2.1 Through 3.0 (DH1200)** |  | 2026-05-28 | 2026-06-27 |  |  |  |
| STRUCTURE.7400 |  | Steel / CL 2.1 Through 3.0 (DH1200) // Crane 1 - Erect steel Column and Joist | 5d | 2026-05-28 A | 2026-06-02 A | STRUCTURE.7370 | 100% |  |
| STRUCTURE.7636 |  | Steel / CL 2.1 Through 3.0 (DH1200) // Crane 2 -Erect steel Column and Joist | 5d | 2026-05-28 A | 2026-06-02 A | STRUCTURE.7633 | 100% |  |
| STRUCTURE.7410 |  | Steel / CL 2.1 Through 3.0 (DH1200) // Crane 1 - Plumb, bolt, weld steel | 5d | 2026-05-30 A | 2026-06-09 A | STRUCTURE.7400 SS+2d | 100% |  |
| STRUCTURE.7637 |  | Steel / CL 2.1 Through 3.0 (DH1200) // Crane 2 - Plumb, bolt, weld steel | 5d | 2026-05-30 A | 2026-06-09 A | STRUCTURE.7636 SS+2d | 100% |  |
| STRUCTURE.7420 |  | Steel / CL 2.1 Through 3.0 (DH1200) // Crane 1 - Install pan decking | 2d | 2026-06-10 A | 2026-06-26 A | STRUCTURE.7663, STRUCTURE.7410 | 100% |  |
| STRUCTURE.7638 |  | Steel / CL 2.1 Through 3.0 (DH1200) // Crane 2 - Install pan decking | 3d | 2026-06-10 A | 2026-06-26 A | STRUCTURE.7663, STRUCTURE.7637 SS+2d | 100% |  |
| STRUCTURE.7662 |  | ISSU01- Steel / CL 2.1 Through 3.0 (DH1200) // Demob of Installed Column | 1d | 2026-06-19 A | 2026-06-22 A | STRUCTURE.7637 | 100% |  |
| STRUCTURE.7663 |  | ISSU01- Steel / CL 2.1 Through 3.0 (DH1200) // Re-Install / Re-Work of Column Line | 2d | 2026-06-23 A | 2026-06-24 A | STRUCTURE.7662 | 100% |  |
| STRUCTURE.7656 |  | Steel / CL 2.1 Through 3.0 (DH1200) // DH1200 - Turnover | 1d | 2026-06-27 A | 2026-06-27 A | STRUCTURE.7420, STRUCTURE.7638 | 100% |  |
|  | 3 | **Column Line 3.1 Through 4.0 (DH1300)** |  | 2026-06-03 | 2026-06-29 |  |  |  |
| STRUCTURE.7430 |  | Steel / CL 3.1 Through 4.0 (DH1300) // Crane 1 - Erect steel Column and Joist | 5d | 2026-06-03 A | 2026-06-09 A | STRUCTURE.7400 | 100% |  |
| STRUCTURE.7639 |  | Steel / CL 3.1 Through 4.0 (DH1300) // Crane 2 -Erect steel Column and Joist | 5d | 2026-06-03 A | 2026-06-09 A | STRUCTURE.7636 | 100% |  |
| STRUCTURE.7440 |  | Steel / CL 3.1 Through 4.0 (DH1300) // Crane 1 - Plumb, bolt, weld steel | 5d | 2026-06-04 A | 2026-06-24 A | STRUCTURE.7430 SS+2d | 100% |  |
| STRUCTURE.7640 |  | Steel / CL 3.1 Through 4.0 (DH1300) // Crane 2 - Plumb, bolt, weld steel | 5d | 2026-06-04 A | 2026-06-09 A | STRUCTURE.7639 SS+2d | 100% |  |
| STRUCTURE.7450 |  | Steel / CL 3.1 Through 4.0 (DH1300) // Crane 1 - Install pan decking | 3d | 2026-06-10 A | 2026-06-27 A | STRUCTURE.7420, STRUCTURE.7440 | 100% |  |
| STRUCTURE.7641 |  | Steel / CL 3.1 Through 4.0 (DH1300) // Crane 2 - Install pan decking | 3d | 2026-06-10 A | 2026-06-27 A | STRUCTURE.7638, STRUCTURE.7640 SS+2d | 100% |  |
| STRUCTURE.7657 |  | Steel / CL 3.1 Through 4.0 (DH1300) // DH1300 - Turnover | 1d | 2026-06-27 A | 2026-06-29 A | STRUCTURE.7641, STRUCTURE.7450 | 100% |  |
|  | 4 | **Column Line 4.1 Through 5.0 (DH1400)** |  | 2026-06-27 | 2026-07-10 |  |  |  |
| STRUCTURE.7460 |  | Steel / CL 4.1 Through 5.0 (DH1400) // Crane 1 - Erect steel Column and Joist | 5d | 2026-06-27 A | 2026-07-03 A | STRUCTURE.7450, STRUCTURE.7430 | 100% |  |
| STRUCTURE.7642 |  | Steel / CL 4.1 Through 5.0 (DH1400) // Crane 2 -Erect steel Column and Joist | 5d | 2026-06-27 A | 2026-07-03 A | STRUCTURE.7641, STRUCTURE.7639 | 100% |  |
| STRUCTURE.7470 |  | Steel / CL 4.1 Through 5.0 (DH1400) // Crane 1 - Plumb, bolt, weld steel | 5d | 2026-06-30 A | 2026-07-10 A | STRUCTURE.7460 SS+2d | 100% |  |
| STRUCTURE.7643 |  | Steel / CL 4.1 Through 5.0 (DH1400) // Crane 2 - Plumb, bolt, weld steel | 5d | 2026-06-30 A | 2026-07-10 A | STRUCTURE.7642 SS+2d | 100% |  |
| STRUCTURE.7480 |  | Steel / CL 4.1 Through 5.0 (DH1400) // Crane 1 - Install pan decking | 3d | 2026-07-08 A | 2026-07-10 A | STRUCTURE.7470 | 100% |  |
| STRUCTURE.7644 |  | Steel / CL 4.1 Through 5.0 (DH1400) // Crane 2 - Install pan decking | 3d | 2026-07-08 A | 2026-07-10 A | STRUCTURE.7643 SS+2d | 100% |  |
| STRUCTURE.7658 |  | Steel / CL 4.1 Through 5.0 (DH1400) // DH1400 - Turnover | 1d | 2026-07-10 A | 2026-07-10 A | STRUCTURE.7480, STRUCTURE.7644 | 100% |  |
|  | 5 | **Column Line 5.2 Through 6.0 (DH1500)** |  | 2026-06-22 | 2026-07-03 |  |  |  |
| STRUCTURE.7490 |  | Steel / CL 5.2 Through 6.0 (DH1500) // Crane 1 - Erect steel Column and Joist | 5d | 2026-06-22 A | 2026-06-26 A | STRUCTURE.7460 SS+2d | 100% |  |
| STRUCTURE.7645 |  | Steel / CL 5.2 Through 6.0 (DH1500) // Crane 2 -Erect steel Column and Joist | 5d | 2026-06-22 A | 2026-06-26 A | STRUCTURE.7642 SS+2d | 100% |  |
| STRUCTURE.7500 |  | Steel / CL 5.2 Through 6.0 (DH1500) // Crane 1 - Plumb, bolt, weld steel | 5d | 2026-06-24 A | 2026-06-29 A | STRUCTURE.7490 SS+2d | 100% |  |
| STRUCTURE.7646 |  | Steel / CL 5.2 Through 6.0 (DH1500) // Crane 2 - Plumb, bolt, weld steel | 5d | 2026-06-24 A | 2026-06-29 A | STRUCTURE.7645 SS+2d | 100% |  |
| STRUCTURE.7647 |  | Steel / CL 5.2 Through 6.0 (DH1500) // Crane 2 - Install pan decking | 3d | 2026-06-26 A | 2026-06-29 A | STRUCTURE.7646 SS+2d | 100% |  |
| STRUCTURE.7510 |  | Steel / CL 5.2 Through 6.0 (DH1500) // Crane 1 - Install pan decking | 3d | 2026-06-30 A | 2026-07-02 A | STRUCTURE.7500 | 100% |  |
| STRUCTURE.7659 |  | Steel / CL 5.2 Through 6.0 (DH1500) // DH1500 - Turnover | 1d | 2026-07-03 A | 2026-07-03 A | STRUCTURE.7510, STRUCTURE.7647 | 100% |  |
|  | 6 | **Column Line 6.1 Through 7.0 (DH1600)** |  | 2026-06-27 | 2026-07-23 |  |  |  |
| STRUCTURE.7520 |  | Steel / CL 6.1 Through 7.0 (DH1600) // Crane 1 - Erect steel Column and Joist | 5d | 2026-06-27 A | 2026-07-02 A | STRUCTURE.7490 | 100% |  |
| STRUCTURE.7648 |  | Steel / CL 6.1 Through 7.0 (DH1600) // Crane 2 -Erect steel Column and Joist | 5d | 2026-06-27 A | 2026-07-02 A | STRUCTURE.7645 | 100% |  |
| STRUCTURE.7530 |  | Steel / CL 6.1 Through 7.0 (DH1600) // Crane 1 - Plumb, bolt, weld steel | 5d | 2026-06-30 A | 2026-07-06 A | STRUCTURE.7520 SS+2d | 100% |  |
| STRUCTURE.7649 |  | Steel / CL 6.1 Through 7.0 (DH1600) // Crane 2 - Plumb, bolt, weld steel | 5d | 2026-06-30 A | 2026-07-06 A | STRUCTURE.7648 SS+2d | 100% |  |
| STRUCTURE.7650 |  | Steel / CL 6.1 Through 7.0 (DH1600) // Crane 2 - Install pan decking | 3d | 2026-07-02 A | 2026-07-22 A | STRUCTURE.7649 SS+2d | 100% |  |
| STRUCTURE.7540 |  | Steel / CL 6.1 Through 7.0 (DH1600) // Crane 1 - Install pan decking | 3d | 2026-07-07 A | 2026-07-22 A | STRUCTURE.7530 | 100% |  |
| STRUCTURE.7660 |  | Steel / CL 6.1 Through 7.0 (DH1600) // DH1600 - Turnover | 1d | 2026-07-23 A | 2026-07-23 A | STRUCTURE.7540, STRUCTURE.7650 | 100% |  |
|  | 8 | **Column Line 7.1 Through 7.3 (BOH)** |  | 2026-06-27 | 2026-07-13 |  |  |  |
| STRUCTURE.7620 |  | Steel / CL 7.1 Through 7.3 (BOH) // Crane 1 - Erect steel Column and Joist | 5d | 2026-06-27 A | 2026-07-02 A | STRUCTURE.7520 SS | 100% |  |
| STRUCTURE.7618 |  | Steel / CL 7.1 Through 7.3 (BOH) // Crane 1 - Plumb, bolt, weld steel | 5d | 2026-06-30 A | 2026-07-06 A | STRUCTURE.7620 SS+2d | 100% |  |
| STRUCTURE.7651 |  | Steel / CL 7.1 Through 7.3 (BOH) // Crane 2 -Erect steel Column and Joist | 5d | 2026-07-03 A | 2026-07-09 A | STRUCTURE.7648 | 100% |  |
| STRUCTURE.7619 |  | Steel / CL 7.1 Through 7.3 (BOH) // Crane 1 - Install pan decking | 3d | 2026-07-07 A | 2026-07-09 A | STRUCTURE.7618 | 100% |  |
| STRUCTURE.7652 |  | Steel / CL 7.1 Through 7.3 (BOH) // Crane 2 - Plumb, bolt, weld steel | 5d | 2026-07-07 A | 2026-07-11 A | STRUCTURE.7651 SS+2d | 100% |  |
| STRUCTURE.7653 |  | Steel / CL 7.1 Through 7.3 (BOH) // Crane 2 - Install pan decking | 3d | 2026-07-09 A | 2026-07-11 A | STRUCTURE.7652 SS+2d | 100% |  |
| STRUCTURE.7661 |  | Steel / CL 7.1 Through 7.3 (BOH) // BOH - Turnover | 1d | 2026-07-13 A | 2026-07-13 A | STRUCTURE.7619, STRUCTURE.7653 | 100% |  |
|  | 10 | **Roofing** |  | 2026-05-29 | 2026-10-14 |  |  |  |
|  | 1 | **FOH** |  | 2026-05-29 | 2026-06-15 |  |  |  |
| STRUCTURE.7550 |  | Roofing / FOH // Set Equipment Curbs (Column Lines 0.1 - 1.1) FOH | 3d | 2026-05-29 A | 2026-06-02 A | FDN.1266, STRUCTURE.7654 | 100% |  |
| STRUCTURE.7611 |  | Roofing / FOH // Install roofing system(Column 0.1-1.1) | 6d | 2026-05-29 A | 2026-06-15 A | STRUCTURE.7550 SS | 100% |  |
|  | 2 | **DH1100** |  | 2026-06-05 | 2026-07-02 |  |  |  |
| STRUCTURE.7612 |  | Roofing / DH 1100 // Set Equipment Curbs (Column Lines 1.1 - 2.1) DH1100 | 2d | 2026-06-05 A | 2026-06-08 A | STRUCTURE.7550, STRUCTURE.7655 | 100% |  |
| STRUCTURE.1690 |  | Roofing / DH 1100 // Install roofing System | 10d | 2026-06-09 A | 2026-07-02 A | STRUCTURE.7611, STRUCTURE.7612, A2270 | 100% |  |
|  | 3 | **DH1200** |  | 2026-06-19 | 2026-07-17 |  |  |  |
| STRUCTURE.7560 |  | Roofing / DH 1200 // Set Equipment Curbs (Column lines 1.9 - 2.2) | 2d | 2026-06-19 A | 2026-06-22 A | STRUCTURE.7612, STRUCTURE.7656 | 100% |  |
| STRUCTURE.6770 |  | Roofing / DH 1200 // Install roofing (Column 2.1-2.9) | 10d | 2026-06-29 A | 2026-07-17 A | STRUCTURE.1690, STRUCTURE.7090 SS, STRUCTURE.6860 SS, STRUCTURE.7420 | 100% |  |
|  | 4 | **DH1300** |  | 2026-06-29 | 2026-09-10 |  |  |  |
| STRUCTURE.7570 |  | Roofing / DH 1300 // Set Equipment Curbs (Column Lines 2.9 - 3.1) | 2d | 2026-06-29 A | 2026-06-30 A | STRUCTURE.7560, STRUCTURE.7657 | 100% |  |
| STRUCTURE.6780 |  | Roofing / DH 1300 // Install roofing (Column 3.1-3.9) | 10d | 2026-07-24 A | 2026-09-10 A | STRUCTURE.6770 FF, STRUCTURE.6770, STRUCTURE.7130 SS, STRUCTURE.6900 SS, STRUCTURE.7450 | 100% |  |
|  | 5 | **DH1400** |  | 2026-07-02 | 2026-10-14 |  |  |  |
| STRUCTURE.7580 |  | Roofing / DH 1400 // Set Equipment Curbs (Column Lines 3.9 - 4.2) | 2d | 2026-07-02 A | 2026-07-06 A | STRUCTURE.7570, STRUCTURE.7658 | 100% |  |
| STRUCTURE.6790 |  | Roofing / DH 1400 // Install roofing (Column 4.1-4.9) | 10d | 2026-09-24 A | 2026-10-14 | STRUCTURE.6780, STRUCTURE.7170 SS, STRUCTURE.6940 SS, STRUCTURE.7480 |  | 160d |

| ID | WBS | Task | Duration | Start | Finish | Predecessors | Complete | Total float |
| --- | --- | --- | --- | --- | --- | --- | --- | --- |
|  | 6 | **DH1500** |  | 2026-07-07 | 2026-10-08 |  |  |  |
| STRUCTURE.7590 |  | Roofing / DH 1500 // Set Equipment Curbs (Column Lines 4.9 - 5.1) | 2d | 2026-07-07 A | 2026-07-08 A | STRUCTURE.7580, STRUCTURE.7659 | 100% |  |
| STRUCTURE.7340 |  | Roofing / DH 1500 // Install roofing (Column 5.1-5.9) | 10d | 2026-09-11 A | 2026-10-08 | STRUCTURE.7210 SS, STRUCTURE.6980 SS, STRUCTURE.7510, STRUCTURE.6780 | 30% | 167d |
|  | 7 | **DH1600** |  | 2026-07-09 | 2026-09-02 |  |  |  |
| STRUCTURE.7600 |  | Roofing / DH 1600 // Set Equipment Curbs (Column Lines 5.9 - 6.2) | 2d | 2026-07-09 A | 2026-07-10 A | STRUCTURE.7590, STRUCTURE.7660 | 100% |  |
| STRUCTURE.7350 |  | Roofing / DH 1600 // Install roofing (Column 6.1-7.3) | 10d | 2026-08-26 A | 2026-09-02 A | STRUCTURE.7600, STRUCTURE.7250 SS, STRUCTURE.7090 SS, STRUCTURE.7540 | 100% |  |
|  | 8 | **BOH** |  | 2026-07-13 | 2026-09-02 |  |  |  |
| STRUCTURE.7610 |  | Roofing / BOH // Set Equipment Curbs (Column Lines 6.9 - 7.2) | 3d | 2026-07-13 A | 2026-07-30 A | STRUCTURE.7600, STRUCTURE.7618, STRUCTURE.7661 | 100% |  |
| STRUCTURE.7613 |  | Roofing / BOH // Install roofing (Column 6.1-7.3) | 10d | 2026-08-26 A | 2026-09-02 A | STRUCTURE.7350 | 100% |  |
|  | 9 | **IMPs** |  | 2026-05-29 | 2026-10-30 |  |  |  |
|  | 4 | **South (FOH)** |  | 2026-05-29 | 2026-10-06 |  |  |  |
| STRUCTURE.4920 |  | IMPs / South (FOH) // Install Exterior Framing and Substrate South elevation (FOH) A-E Line | 10d | 2026-05-29 A | 2026-06-19 A | STRUCTURE.7654 | 100% |  |
| STRUCTURE.4910 |  | IMPs / South (FOH) // Set IMP wall South Elevation (FOH) A-E Line | 5d | 2026-06-03 A | 2026-06-10 A | STRUCTURE.4920 SS+3d, A2910, TB.MP.1030 | 100% |  |
| STRUCTURE.4880 |  | IMPs / South (FOH) // Install FOH Entry Curtain Wall | 5d | 2026-06-19 A | 2026-06-25 A | A2910, STRUCTURE.4910 | 100% |  |
| STRUCTURE.5370 |  | IMPs / South (FOH) // Install exterior windows and doors South Elevation (FOH) A-E line | 5d | 2026-07-24 A | 2026-09-08 A | STRUCTURE.4880, A2300 | 100% |  |
| STRUCTURE.4890 |  | IMPs / South (FOH) // Install Gutter and Down Spouts | 5d | 2026-09-30 | 2026-10-06 | STRUCTURE.4880 SS, A2910, STRUCTURE.5370 |  | 177d |
|  | 1 | **East** |  | 2026-06-03 | 2026-08-08 |  |  |  |
|  | 1 | **Column line 0.1 Through 1.9 (DH1100)** |  | 2026-06-03 | 2026-06-09 |  |  |  |
| STRUCTURE.4850 |  | East / CL 0.1 Through 1.9 (DH1100) // Set IMP walls East Elevation | 5d | 2026-06-03 A | 2026-06-09 A | A2910, STRUCTURE.7655 SS | 100% |  |
|  | 2 | **Column Line 2.1 Through 2.9 (DH1200)** |  | 2026-06-19 | 2026-06-25 |  |  |  |
| STRUCTURE.6860 |  | East / CL 2.1 Through 2.9 (DH1200) // Set IMP walls East Elevation | 5d | 2026-06-19 A | 2026-06-25 A | STRUCTURE.4850, STRUCTURE.7655 | 100% |  |
|  | 3 | **Column Line 3.1 Through 3.9 (DH1300)** |  | 2026-06-26 | 2026-07-02 |  |  |  |
| STRUCTURE.6900 |  | East / CL 3.1 Through 3.9 (DH1300) // Set IMP walls East Elevation | 5d | 2026-06-26 A | 2026-07-02 A | STRUCTURE.6860, STRUCTURE.7655 | 100% |  |
|  | 4 | **Column Line 4.1 Through 4.9 (DH1400)** |  | 2026-07-06 | 2026-07-10 |  |  |  |
| STRUCTURE.6940 |  | East / CL 4.1 Through 4.9 (DH1400) // Set IMP walls East Elevation | 5d | 2026-07-06 A | 2026-07-10 A | STRUCTURE.6900, STRUCTURE.7655 | 100% |  |
|  | 5 | **Column Line 5.2 Through 5.9 (DH1500)** |  | 2026-07-13 | 2026-07-17 |  |  |  |
| STRUCTURE.6980 |  | East / CL 5.2 Through 5.9 (DH1500) // Set IMP walls East Elevation | 5d | 2026-07-13 A | 2026-07-17 A | STRUCTURE.6940, STRUCTURE.7655 | 100% |  |
|  | 6 | **Column Line 6.1 Through 7.2 (DH1600)** |  | 2026-07-20 | 2026-08-08 |  |  |  |
| STRUCTURE.7020 |  | East / CL 6.1 Through 7.2 (DH1600) // Set IMP walls East Elevation | 5d | 2026-07-20 A | 2026-08-08 A | STRUCTURE.6980, STRUCTURE.7655 | 100% |  |
|  | 3 | **West** |  | 2026-06-03 | 2026-10-30 |  |  |  |
|  | 1 | **Column line 0.1 Through 1.9 (DH1100)** |  | 2026-06-03 | 2026-06-12 |  |  |  |
| STRUCTURE.7050 |  | West / CL 0.1 Through 1.9 (DH1100) // Set IMP walls West Elevation | 5d | 2026-06-03 A | 2026-06-12 A | STRUCTURE.7655 | 100% |  |
|  | 2 | **Column Line 2.1 Through 2.9 (DH1200)** |  | 2026-06-19 | 2026-07-23 |  |  |  |
| STRUCTURE.7090 |  | West / CL 2.1 Through 2.9 (DH1200) // Set IMP walls West Elevation | 5d | 2026-06-19 A | 2026-06-25 A | STRUCTURE.7050, STRUCTURE.7656, STRUCTURE.7655 | 100% |  |
| STRUCTURE.7120 |  | West / CL 2.1 Through 2.9 (DH1200) // Install Gutter and Down Spouts West Elevation | 4d | 2026-07-17 A | 2026-07-23 A | STRUCTURE.7090, STRUCTURE.7050, STRUCTURE.6770 | 100% |  |
|  | 3 | **Column Line 3.1 Through 3.9 (DH1300)** |  | 2026-06-26 | 2026-10-05 |  |  |  |
| STRUCTURE.7130 |  | West / CL 3.1 Through 3.9 (DH1300) // Set IMP walls West Elevation | 5d | 2026-06-26 A | 2026-07-02 A | STRUCTURE.7090, STRUCTURE.7655 | 100% |  |
| STRUCTURE.7160 |  | West / CL 3.1 Through 3.9 (DH1300) // Install Gutter and Down Spouts West Elevation | 4d | 2026-09-30 | 2026-10-05 | STRUCTURE.7120, STRUCTURE.7130, STRUCTURE.7090, STRUCTURE.7050, STRUCTURE.6780 |  | 166d |
|  | 4 | **Column Line 4.1 Through 4.9 (DH1400)** |  | 2026-07-17 | 2026-10-20 |  |  |  |
| STRUCTURE.7170 |  | West / CL 4.1 Through 4.9 (DH1400) // Set IMP walls West Elevation | 5d | 2026-07-17 A | 2026-07-24 A | STRUCTURE.7130, STRUCTURE.7655 | 100% |  |
| STRUCTURE.7200 |  | West / CL 4.1 Through 4.9 (DH1400) // Install Gutter and Down Spouts West Elevation | 4d | 2026-10-15 | 2026-10-20 | STRUCTURE.7160, STRUCTURE.7170, STRUCTURE.7130, STRUCTURE.7090, STRUCTURE.7050, STRUCTURE.6790 |  | 160d |
|  | 5 | **Column Line 5.2 Through 5.9 (DH1500)** |  | 2026-07-25 | 2026-10-26 |  |  |  |
| STRUCTURE.7210 |  | West / CL 5.2 Through 5.9 (DH1500) // Set IMP walls West Elevation | 5d | 2026-07-25 A | 2026-07-29 A | STRUCTURE.7170, STRUCTURE.7655 | 100% |  |
| STRUCTURE.7240 |  | West / CL 5.2 Through 5.9 (DH1500) // Install Gutter and Down Spouts West Elevation | 4d | 2026-10-21 | 2026-10-26 | STRUCTURE.7200, STRUCTURE.7210, STRUCTURE.7170, STRUCTURE.7130, STRUCTURE.7090, STRUCTURE.7050, STRUCTURE.7340 |  | 160d |
|  | 6 | **Column Line 6.1 Through 7.2 (DH1600)** |  | 2026-07-30 | 2026-10-30 |  |  |  |
| STRUCTURE.7250 |  | West / CL 6.1 Through 7.2 (DH1600) // Set IMP walls West Elevation | 5d | 2026-07-30 A | 2026-08-08 A | STRUCTURE.7210, STRUCTURE.7655 | 100% |  |
| STRUCTURE.7280 |  | West / CL 6.1 Through 7.2 (DH1600) // Install Gutter and Down Spouts West Elevation | 4d | 2026-10-27 | 2026-10-30 | STRUCTURE.7240, STRUCTURE.7250, STRUCTURE.7210, STRUCTURE.7170, STRUCTURE.7130, STRUCTURE.7090, STRUCTURE.7050, STRUCTURE.7350 |  | 160d |
|  | 2 | **North (BOH)** |  | 2026-09-09 | 2026-10-15 |  |  |  |
| STRUCTURE.7300 |  | North (BOH) / // Set IMP wall South Elevation (BOH) A-E Line | 5d | 2026-09-09 A | 2026-10-01 | STRUCTURE.7250 | 60% | 171d |
| STRUCTURE.7320 |  | North (BOH) / // Install exterior windows and doors South Elevation (BOH) A-E line | 5d | 2026-10-02 | 2026-10-08 | STRUCTURE.7300 |  | 171d |
| STRUCTURE.7330 |  | North (BOH) / // Install Gutter and Down Spouts | 4d | 2026-10-09 | 2026-10-15 | STRUCTURE.7320, STRUCTURE.7300, STRUCTURE.7613 |  | 171d |
|  | 9 | **Interior Build-Outs** |  | 2026-04-29 | 2027-06-22 |  |  |  |
|  | 7 | **House Systems** |  | 2026-05-29 | 2026-12-18 |  |  |  |
|  | 2 | **Front of House (FOH)** |  | 2026-05-29 | 2026-12-11 |  |  |  |
|  | 16 | **Priority Walls** |  | 2026-05-29 | 2026-10-02 |  |  |  |
|  | 1 | **Priority Rooms** |  | 2026-05-29 | 2026-10-02 |  |  |  |
|  | 10 | **UPS. 0144** |  | 2026-06-03 | 2026-10-01 |  |  |  |
| ADMIN.5109 |  | FOH/UPS. 0144 // Frame Priority Walls | 3d | 2026-06-03 A | 2026-06-10 A | ADMIN.5083 SS+1d | 100% |  |
| ADMIN.5114 |  | FOH/UPS. 0144 // MEPF In-wall rough-in | 4d | 2026-06-09 A | 2026-07-16 A | ADMIN.5109 | 100% |  |
| ADMIN.5110 |  | FOH/UPS. 0144 // MEPF Layout of Overhead Supports | 8d | 2026-06-10 A | 2026-06-30 A | ADMIN.5109 | 100% |  |
| ADMIN.5112 |  | FOH/UPS. 0144 // Install MEPF Overhead Supports | 2d | 2026-06-19 A | 2026-07-02 A | ADMIN.5110 SS+2d | 100% |  |
| ADMIN.5111 |  | FOH/UPS. 0144 // Top Down Install of Sheetrock - Priority Walls | 6d | 2026-07-17 A | 2026-07-24 A | ADMIN.5110, ADMIN.5795 | 100% |  |
| ADMIN.5795 |  | FOH/UPS. 0144 // In-Wall Inspection | 1d | 2026-07-17 A | 2026-07-17 A | ADMIN.5114 | 100% |  |
| ADMIN.5113 |  | FOH/UPS. 0144 // MEPF Overhead Install | 1d | 2026-07-23 A | 2026-08-03 A | ADMIN.5112 SS+5d | 100% |  |
| ADMIN.5796 |  | FOH/UPS. 0144 // Finish Top-down Sheetrock - Priority Walls | 6d | 2026-07-24 A | 2026-07-31 A | ADMIN.5111 | 100% |  |
| ADMIN.5121 |  | FOH/UPS. 0144 // Install Doors and Hardware | 1d | 2026-07-24 A | 2026-08-25 A | ADMIN.5109 | 100% |  |
| ADMIN.5115 |  | FOH/UPS. 0144 // Install Fire Alarm and Security | 3d | 2026-08-07 A | 2026-08-24 A | ADMIN.5113 | 100% |  |
| ADMIN.5116 |  | FOH/UPS. 0144 // 1-Side & Finish Priority Walls | 2d | 2026-08-11 A | 2026-08-21 A | ADMIN.5113, ADMIN.5114 | 100% |  |
| ADMIN.5797 |  | FOH/UPS. 0144 // Rough-In Split System | 5d | 2026-08-19 A | 2026-08-22 A | ADMIN.5111 | 100% |  |
| ADMIN.5117 |  | FOH/UPS. 0144 // Tape and Finish Walls | 3d | 2026-08-24 A | 2026-08-25 A | ADMIN.5116, ADMIN.5796 | 100% |  |

| ID | WBS | Task | Duration | Start | Finish | Predecessors | Complete | Total float |
| --- | --- | --- | --- | --- | --- | --- | --- | --- |
| ADMIN.5798 |  | FOH/UPS. 0144 // Mini Split Condensate Piping | 2d | 2026-08-24 A | 2026-08-25 A | ADMIN.5797, ADMIN.5111 | 100% |  |
| ADMIN.5118 |  | FOH/UPS. 0144 // Final paint | 2d | 2026-08-25 A | 2026-08-26 A | ADMIN.5115, ADMIN.5117 FF | 100% |  |
| ADMIN.5120 |  | FOH/UPS. 0144 // Install Trim-Out | 1d | 2026-08-26 A | 2026-08-26 A | ADMIN.5798 | 100% |  |
| ADMIN.5119 |  | FOH/UPS. 0144 // Install Flooring and Base | 1d | 2026-08-27 A | 2026-08-27 A | ADMIN.5118 SS | 100% |  |
| ADMIN.5799 |  | FOH/UPS. 0144 // Install Ladder Rack | 4d | 2026-08-27 A | 2026-09-01 A | ADMIN.5113 | 100% |  |
| ADMIN.5122 |  | FOH/UPS. 0144 // QTS L1 Punch Walk | 0d | 2026-09-09 A | 2026-09-09 A | ADMIN.5799, ADMIN.5120, ADMIN.5121, ADMIN.5118, ADMIN.5119 FF | 100% |  |
| ADMIN.5760 |  | FOH/UPS. 0144 // FOH- Room Ready to Receive Equipment | 0d | 2026-09-09 A | 2026-09-09 A | ADMIN.5122, ADMIN.5818 FF, ADMIN.5118 | 100% |  |
| ADMIN.5829 |  | FOH/UPS. 0144 // BMS & EPMS Rough In | 2d | 2026-09-30 | 2026-10-01 | ADMIN.5115 SS, ADMIN.5115 |  | 41d |
|  | 13 | **DCIM 1000A1** |  | 2026-06-03 | 2026-10-01 |  |  |  |
| ADMIN.5800 |  | FOH/DCIM 1000A1 // Frame Priority Walls | 3d | 2026-06-03 A | 2026-06-05 A | ADMIN.5109 SS | 100% |  |
| ADMIN.5806 |  | FOH/DCIM 1000A1 // Top Down Install of Sheetrock - Priority Walls | 6d | 2026-06-05 A | 2026-06-15 A | ADMIN.5800 | 100% |  |
| ADMIN.5804 |  | FOH/DCIM 1000A1 // MEPF Layout of Overhead Supports | 8d | 2026-06-10 A | 2026-06-18 A | ADMIN.5800 SS | 100% |  |
| ADMIN.5805 |  | FOH/DCIM 1000A1 // Install MEPF Overhead Supports | 2d | 2026-06-15 A | 2026-06-22 A | ADMIN.5804 SS+2d | 100% |  |
| ADMIN.5811 |  | FOH/DCIM 1000A1 // Finish Top-down Sheetrock - Priority Walls | 6d | 2026-06-16 A | 2026-06-23 A | ADMIN.5806 | 100% |  |
| ADMIN.5802 |  | FOH/DCIM 1000A1 // MEPF In-wall rough-in | 4d | 2026-06-19 A | 2026-06-24 A | ADMIN.5800 | 100% |  |
| ADMIN.5809 |  | FOH/DCIM 1000A1 // Rough-In Split System | 5d | 2026-07-16 A | 2026-07-22 A | ADMIN.5806 | 100% |  |
| ADMIN.5807 |  | FOH/DCIM 1000A1 // MEPF Overhead Install | 10d | 2026-07-22 A | 2026-08-04 A | ADMIN.5805 SS+5d | 100% |  |
| ADMIN.5808 |  | FOH/DCIM 1000A1 // 1-Side & Finish Priority Walls | 2d | 2026-07-22 A | 2026-07-24 A | ADMIN.5803 FF, ADMIN.5802 SS | 100% |  |
| ADMIN.5803 |  | FOH/DCIM 1000A1 // In-Wall Inspection | 1d | 2026-07-24 A | 2026-07-24 A | ADMIN.5802 | 100% |  |
| ADMIN.5812 |  | FOH/DCIM 1000A1 // Mini Split Condensate Piping | 2d | 2026-07-31 A | 2026-08-21 A | ADMIN.5809, ADMIN.5806 | 100% |  |
| ADMIN.5810 |  | FOH/DCIM 1000A1 // Install Fire Alarm and Security | 3d | 2026-08-07 A | 2026-08-24 A | ADMIN.5807 | 100% |  |
| ADMIN.5801 |  | FOH/DCIM 1000A1 // Install Doors and Hardware | 1d | 2026-08-11 A | 2026-08-26 A | ADMIN.5808, ADMIN.5800 | 100% |  |
| ADMIN.5813 |  | FOH/DCIM 1000A1 // Tape and Finish Walls | 3d | 2026-08-11 A | 2026-08-24 A | ADMIN.5808, ADMIN.5811 | 100% |  |
| ADMIN.5814 |  | FOH/DCIM 1000A1 // Install Flooring and Base | 1d | 2026-08-14 A | 2026-08-27 A | ADMIN.5815 SS | 100% |  |
| ADMIN.5815 |  | FOH/DCIM 1000A1 // Final paint | 2d | 2026-08-14 A | 2026-08-26 A | ADMIN.5810, ADMIN.5813 | 100% |  |
| ADMIN.5816 |  | FOH/DCIM 1000A1 // Install Trim-Out | 1d | 2026-08-17 A | 2026-08-26 A | ADMIN.5812 | 100% |  |
| ADMIN.5819 |  | FOH/DCIM 1000A1 // Install Ladder Rack | 4d | 2026-08-18 A | 2026-09-01 A | ADMIN.5807 | 100% |  |
| ADMIN.5817 |  | FOH/DCIM 1000A1 // QTS L1 Punch Walk | 0d | 2026-09-09 A | 2026-09-09 A | ADMIN.5819, ADMIN.5816, ADMIN.5801, ADMIN.5815, ADMIN.5814 FF | 100% |  |
| ADMIN.5818 |  | FOH/DCIM 1000A1 // FOH- Room Ready to Receive Equipment | 0d | 2026-09-09 A | 2026-09-09 A | ADMIN.5817, ADMIN.5815 | 100% |  |
| ADMIN.5839 |  | FOH/DCIM 1000A1 // BMS & EPMS Rough In | 2d | 2026-09-30 | 2026-10-01 | ADMIN.5810 FF, ADMIN.5810 SS, ADMIN.5829 FF |  | 41d |
|  | 12 | **MMR1A1 . 1000A2** |  | 2026-06-03 | 2026-10-02 |  |  |  |
| ADMIN.5137 |  | FOH/MMR1A1 . 1000A2 // Frame Priority Walls | 3d | 2026-06-03 A | 2026-06-05 A | ADMIN.5800 SS | 100% |  |
| ADMIN.5139 |  | FOH/MMR1A1 . 1000A2 // Top Down Install of Sheetrock - Priority Walls | 2d | 2026-06-08 A | 2026-06-09 A | ADMIN.5137 | 100% |  |
| ADMIN.5138 |  | FOH/MMR1A1 . 1000A2 // MEPF Layout of Overhead Supports | 8d | 2026-06-10 A | 2026-06-25 A | ADMIN.5137 | 100% |  |
| ADMIN.5142 |  | FOH/MMR1A1 . 1000A2 // MEPF In-wall rough-in | 13d | 2026-06-10 A | 2026-06-26 A | ADMIN.5139 | 100% |  |
| ADMIN.5140 |  | FOH/MMR1A1 . 1000A2 // Install MEPF Overhead Supports | 2d | 2026-06-25 A | 2026-07-09 A | ADMIN.5138 SS+2d | 100% |  |
| ADMIN.5141 |  | FOH/MMR1A1 . 1000A2 // MEPF Overhead Install | 0d | 2026-08-03 A | 2026-08-03 A | ADMIN.5140 SS+5d | 100% |  |
| ADMIN.5144 |  | FOH/MMR1A1 . 1000A2 // 1-Side & Finish Priority Walls | 2d | 2026-08-18 A | 2026-08-21 A | ADMIN.5139, ADMIN.5141, ADMIN.5142 | 100% |  |
| ADMIN.5143 |  | FOH/MMR1A1 . 1000A2 // Install Fire Alarm and Security | 10d | 2026-08-19 A | 2026-09-01 A | ADMIN.5141 | 100% |  |
| ADMIN.5145 |  | FOH/MMR1A1 . 1000A2 // Tape and Finish Walls | 3d | 2026-08-24 A | 2026-08-25 A | ADMIN.5144 | 100% |  |
| ADMIN.5146 |  | FOH/MMR1A1 . 1000A2 // Final paint | 2d | 2026-08-26 A | 2026-08-26 A | ADMIN.5143, ADMIN.5145 | 100% |  |
| ADMIN.5147 |  | FOH/MMR1A1 . 1000A2 // Install Flooring and Base | 3d | 2026-08-27 A | 2026-08-31 A | ADMIN.5146 | 100% |  |
| ADMIN.5762 |  | FOH/MMR1A1 . 1000A2 // FOH- Room Ready to Receive Equipment | 0d | 2026-08-27 A | 2026-08-27 A | ADMIN.5146 | 100% |  |
| ADMIN.5148 |  | FOH/MMR1A1 . 1000A2 // Install Trim-Out | 1d | 2026-09-01 A | 2026-09-01 A | ADMIN.5147 | 100% |  |
| ADMIN.5150 |  | FOH/MMR1A1 . 1000A2 // Finish & Clean | 1d | 2026-09-02 A | 2026-09-02 A | ADMIN.5148 | 100% |  |
| ADMIN.5849 |  | FOH/MMR1A1 . 1000A2 // BMS & EPMS Rough In | 3d | 2026-09-30 | 2026-10-02 | ADMIN.5143 FF, ADMIN.5143 SS, ADMIN.5839 FF |  | 40d |
| ADMIN.5149 |  | FOH/MMR1A1 . 1000A2 // Install Doors and Hardware | 1d | 2026-10-02 | 2026-10-02 | ADMIN.5148, ADMIN.5762 SS, ADMIN.5849 FF |  | 40d |
|  | 23 | **SDF 0154** |  | 2026-06-03 | 2026-10-01 |  |  |  |
| ADMIN.5375 |  | FOH/SDF 0154 // Frame Priority Walls | 3d | 2026-06-03 A | 2026-06-18 A | ADMIN.5137 SS | 100% |  |
| ADMIN.5376 |  | FOH/SDF 0154 // MEPF Layout of Overhead Supports | 8d | 2026-06-10 A | 2026-06-22 A | ADMIN.5375 | 100% |  |
| ADMIN.5377 |  | FOH/SDF 0154 // Top Down Install of Sheetrock - Priority Walls | 2d | 2026-06-19 A | 2026-06-22 A | ADMIN.5376 | 100% |  |
| ADMIN.5378 |  | FOH/SDF 0154 // Install MEPF Overhead Supports | 2d | 2026-06-23 A | 2026-07-07 A | ADMIN.5376 SS+2d | 100% |  |
| ADMIN.5380 |  | FOH/SDF 0154 // MEPF In-wall rough-in | 2d | 2026-06-23 A | 2026-06-24 A | ADMIN.5377 | 100% |  |
| ADMIN.5379 |  | FOH/SDF 0154 // MEPF Overhead Install | 10d | 2026-07-08 A | 2026-08-03 A | ADMIN.5378 SS+5d | 100% |  |
| ADMIN.5382 |  | FOH/SDF 0154 // 1-Side & Finish Priority Walls | 2d | 2026-08-04 A | 2026-08-05 A | ADMIN.5377, ADMIN.5380 | 100% |  |
| ADMIN.5381 |  | FOH/SDF 0154 // Install Fire Alarm and Security | 3d | 2026-08-18 A | 2026-08-20 A | ADMIN.5379 | 100% |  |
| ADMIN.5383 |  | FOH/SDF 0154 // Tape and Finish Walls | 3d | 2026-08-20 A | 2026-08-24 A | ADMIN.5382 | 100% |  |
| ADMIN.5384 |  | FOH/SDF 0154 // Final paint | 2d | 2026-08-25 A | 2026-08-26 A | ADMIN.5381, ADMIN.5383 | 100% |  |
| ADMIN.5385 |  | FOH/SDF 0154 // Install Flooring and Base | 3d | 2026-08-27 A | 2026-08-31 A | ADMIN.5384, ADMIN.5792 SS | 100% |  |
| ADMIN.5792 |  | FOH/SDF 0154 // FOH- Room Ready to Receive Equipment | 0d | 2026-08-27 A | 2026-08-27 A | ADMIN.5384 | 100% |  |
| ADMIN.5386 |  | FOH/SDF 0154 // Install Trim-Out | 1d | 2026-09-01 A | 2026-09-01 A | ADMIN.5385 | 100% |  |
| ADMIN.5388 |  | FOH/SDF 0154 // Finish & Clean | 1d | 2026-09-02 A | 2026-09-02 A | ADMIN.5386 | 100% |  |
| ADMIN.5859 |  | FOH/SDF 0154 // BMS & EPMS Rough In | 2d | 2026-09-30 | 2026-10-01 | ADMIN.5381 FF, ADMIN.5381 |  | 41d |
| ADMIN.5387 |  | FOH/SDF 0154 // Install Doors and Hardware | 1d | 2026-10-01 | 2026-10-01 | ADMIN.5386, ADMIN.5859 FF |  | 41d |
|  | 15 | **House Elec .0142** |  | 2026-05-29 | 2026-10-02 |  |  |  |
| ADMIN.5794 |  | FOH/House Elec .0142 // Priority Walls Layout | 2d | 2026-05-29 A | 2026-06-01 A | STRUCTURE.7654 | 100% |  |
| ADMIN.5083 |  | FOH/House Elec .0142 // Frame Priority Walls | 3d | 2026-06-02 A | 2026-06-05 A | A2060, TB.DC.1030, SOG.1434, STRUCTURE.7654, ADMIN.5794 | 100% |  |
| ADMIN.1030 |  | FOH/House Elec .0142 // Install MEPF High-Overhead Supports & Installs | 10d | 2026-06-08 A | 2026-06-19 A | ADMIN.5083 | 100% |  |
| ADMIN.1020 |  | FOH/House Elec .0142 // MEPF Layout of Overhead Supports | 8d | 2026-06-10 A | 2026-06-20 A | ADMIN.5083 | 100% |  |
| ADMIN.5108 |  | FOH/House Elec .0142 // MEPF In-wall rough-in | 9d | 2026-06-12 A | 2026-06-24 A | ADMIN.5083 | 100% |  |

| ID | WBS | Task | Duration | Start | Finish | Predecessors | Complete | Total float |
| --- | --- | --- | --- | --- | --- | --- | --- | --- |
| ADMIN.5086 |  | FOH/House Elec .0142 // Install Fire Alarm and Security | 8d | 2026-06-15 A | 2026-06-24 A | ADMIN.5108 | 100% |  |
| ADMIN.5105 |  | FOH/House Elec .0142 // Top Down Install of Sheetrock - Priority Walls | 2d | 2026-06-19 A | 2026-06-22 A | ADMIN.5083 | 100% |  |
| ADMIN.5790 |  | FOH/House Elec .0142 // In-Wall Inspection | 1d | 2026-06-25 A | 2026-06-25 A | ADMIN.5108 | 100% |  |
| ADMIN.5106 |  | FOH/House Elec .0142 // 1-Side & Finish Priority Walls | 2d | 2026-07-15 A | 2026-07-16 A | ADMIN.5105, ADMIN.5790 | 100% |  |
| ADMIN.5107 |  | FOH/House Elec .0142 // Tape and Finish Walls | 3d | 2026-07-29 A | 2026-08-24 A | ADMIN.5106 | 100% |  |
| ADMIN.5087 |  | FOH/House Elec .0142 // Final paint | 2d | 2026-08-03 A | 2026-08-26 A | ADMIN.5107, ADMIN.5086 | 100% |  |
| ADMIN.1040 |  | FOH/House Elec .0142 // MEPF Low - Overhead Install | 0d | 2026-08-10 A | 2026-08-14 A | ADMIN.1020, ADMIN.1030 SS+5d | 100% |  |
| ADMIN.5791 |  | FOH/House Elec .0142 // Install Lighting | 2d | 2026-08-17 A | 2026-08-18 A | ADMIN.5382 | 100% |  |
| ADMIN.5088 |  | FOH/House Elec .0142 // Install Flooring and Base | 3d | 2026-08-20 A | 2026-08-31 A | ADMIN.5087 | 100% |  |
| ADMIN.5090 |  | FOH/House Elec .0142 // Install Trim-Out | 1d | 2026-08-25 A | 2026-09-02 A | ADMIN.5088, ADMIN.5759 SS, ADMIN.5791 | 100% |  |
| DH1100.12116 |  | FOH/House Elec .0142 // Set House SWD Switch - SWD-HSE-1A-MAIN | 1d | 2026-08-25 A | 2026-09-24 A | ADMIN.5759 SS | 100% |  |
| ADMIN.5759 |  | FOH/House Elec .0142 // FOH/House Elec - Room Ready to Receive Equipment | 0d | 2026-09-02 A | 2026-09-02 A | ADMIN.5087, ADMIN.5088 | 100% |  |
| ADMIN.5095 |  | FOH/House Elec .0142 // Install Doors and Hardware | 1d | 2026-09-30 | 2026-09-30 | ADMIN.1040 |  | 41d |
| ADMIN.5869 |  | FOH/House Elec .0142 // BMS & EPMS Rough In | 3d | 2026-09-30 | 2026-10-02 | ADMIN.5086 FF, ADMIN.5086 SS |  | 40d |
| ADMIN.5091 |  | FOH/House Elec .0142 // Finish & Clean | 1d | 2026-10-02 | 2026-10-02 | ADMIN.5095, ADMIN.5090, DH1100.12116, ADMIN.5869 FF |  | 40d |
|  | 21 | **Other Rooms** |  | 2026-06-10 | 2026-11-30 |  |  |  |
|  | 1 | **ELI . 0142** |  | 2026-06-10 | 2026-10-01 |  |  |  |
| ADMIN.5151 |  | FOH/ELI 0142 // Frame Walls | 3d | 2026-06-10 A | 2026-06-12 A | ADMIN.5137 | 100% |  |
| ADMIN.5152 |  | FOH/ELI 0142 // MEPF Layout of Overhead Supports | 8d | 2026-06-15 A | 2026-06-20 A | A2840, ADMIN.5151 | 100% |  |
| ADMIN.5154 |  | FOH/ELI 0142 // Install MEPF Overhead Supports | 2d | 2026-06-17 A | 2026-06-19 A | ADMIN.5152 SS+2d | 100% |  |
| ADMIN.5153 |  | FOH/ELI 0142 // Top Down Install of Sheetrock - Priority Walls | 2d | 2026-06-19 A | 2026-06-22 A | ADMIN.5152 | 100% |  |
| ADMIN.5156 |  | FOH/ELI 0142 // MEPF In-wall rough-in | 2d | 2026-06-23 A | 2026-06-24 A | ADMIN.5153 | 100% |  |
| ADMIN.5158 |  | FOH/ELI 0142 // 1-Side & Finish Priority Walls | 2d | 2026-06-25 A | 2026-06-26 A | ADMIN.5153, ADMIN.5156 | 100% |  |
| ADMIN.5155 |  | FOH/ELI 0142 // MEPF Overhead Install | 10d | 2026-07-31 A | 2026-08-13 A | ADMIN.5154 SS+5d | 100% |  |
| ADMIN.5157 |  | FOH/ELI 0142 // Install Fire Alarm and Security | 3d | 2026-08-07 A | 2026-08-18 A | ADMIN.5155 | 100% |  |
| ADMIN.5159 |  | FOH/ELI 0142 // Tape and Finish Walls | 3d | 2026-08-10 A | 2026-08-12 A | ADMIN.5158 | 100% |  |
| ADMIN.5763 |  | FOH/ELI 0142 // FOH- Room Ready to Receive Equipment | 0d | 2026-08-13 A | 2026-08-13 A | ADMIN.5159 | 100% |  |
| ADMIN.5160 |  | FOH/ELI 0142 // Final paint | 2d | 2026-08-19 A | 2026-08-20 A | ADMIN.5157, ADMIN.5159 | 100% |  |
| ADMIN.5161 |  | FOH/ELI 0142 // Install Flooring and Base | 3d | 2026-08-21 A | 2026-08-22 A | ADMIN.5160 | 100% |  |
| ADMIN.5162 |  | FOH/ELI 0142 // Install Trim-Out | 1d | 2026-08-24 A | 2026-08-24 A | ADMIN.5161 | 100% |  |
| ADMIN.5163 |  | FOH/ELI 0142 // Install Doors and Hardware | 1d | 2026-09-30 | 2026-09-30 | ADMIN.5162, ADMIN.5763 SS |  | 41d |
| ADMIN.5879 |  | FOH/ELI 0142 // BMS & EPMS Rough In | 2d | 2026-09-30 | 2026-10-01 | ADMIN.5157 FF, ADMIN.5157 SS |  | 41d |
| ADMIN.5164 |  | FOH/ELI 0142 // Finish & Clean | 1d | 2026-10-01 | 2026-10-01 | ADMIN.5162, ADMIN.5163, ADMIN.5879 FF |  | 41d |
|  | 11 | **EF1R . 1000A3** |  | 2026-06-15 | 2026-10-01 |  |  |  |
| ADMIN.5165 |  | FOH/EF1R . 1000A3 // Frame Walls | 3d | 2026-06-15 A | 2026-06-17 A | ADMIN.5151 | 100% |  |
| ADMIN.5166 |  | FOH/EF1R . 1000A3 // MEPF Layout of Overhead Supports | 8d | 2026-06-18 A | 2026-06-18 A | ADMIN.5165 | 100% |  |
| ADMIN.5167 |  | FOH/EF1R . 1000A3 // Top Down Install of Sheetrock - Priority Walls | 2d | 2026-06-18 A | 2026-06-19 A | ADMIN.5166 | 100% |  |
| ADMIN.5168 |  | FOH/EF1R . 1000A3 // Install MEPF Overhead Supports | 2d | 2026-06-18 A | 2026-07-02 A | ADMIN.5166 SS | 100% |  |
| ADMIN.5169 |  | FOH/EF1R . 1000A3 // MEPF Overhead Install | 10d | 2026-07-06 A | 2026-07-17 A | ADMIN.5168 SS+5d | 100% |  |
| ADMIN.5170 |  | FOH/EF1R . 1000A3 // MEPF In-wall rough-in | 2d | 2026-07-17 A | 2026-07-20 A | ADMIN.5169 | 100% |  |
| ADMIN.5171 |  | FOH/EF1R . 1000A3 // Install Fire Alarm and Security | 3d | 2026-07-17 A | 2026-07-21 A | ADMIN.5169 | 100% |  |
| ADMIN.5172 |  | FOH/EF1R . 1000A3 // 1-Side & Finish Priority Walls | 2d | 2026-07-21 A | 2026-07-22 A | ADMIN.5167, ADMIN.5169, ADMIN.5170 | 100% |  |
| ADMIN.5173 |  | FOH/EF1R . 1000A3 // Tape and Finish Walls | 3d | 2026-08-03 A | 2026-08-05 A | ADMIN.5172 | 100% |  |
| ADMIN.5764 |  | FOH/EF1R . 1000A3 // FOH- Room Ready to Receive Equipment | 0d | 2026-08-05 A | 2026-08-05 A | ADMIN.5173 | 100% |  |
| ADMIN.5174 |  | FOH/EF1R . 1000A3 // Final paint | 2d | 2026-08-06 A | 2026-08-07 A | ADMIN.5171, ADMIN.5173 | 100% |  |
| ADMIN.5175 |  | FOH/EF1R . 1000A3 // Install Flooring and Base | 3d | 2026-08-18 A | 2026-08-20 A | ADMIN.5174 | 100% |  |
| ADMIN.5176 |  | FOH/EF1R . 1000A3 // Install Trim-Out | 1d | 2026-08-21 A | 2026-08-21 A | ADMIN.5175 | 100% |  |
| ADMIN.5177 |  | FOH/EF1R . 1000A3 // Install Doors and Hardware | 1d | 2026-09-30 | 2026-09-30 | ADMIN.5176, ADMIN.5764 SS |  | 42d |
| ADMIN.5889 |  | FOH/EF1R . 1000A3 // BMS & EPMS Rough In | 2d | 2026-09-30 | 2026-10-01 | ADMIN.5171 FF, ADMIN.5171 SS |  | 41d |
| ADMIN.5178 |  | FOH/EF1R . 1000A3 // Finish & Clean | 1d | 2026-10-01 | 2026-10-01 | ADMIN.5176, ADMIN.5889 FF |  | 41d |
|  | 9 | **Fire . 0140** |  | 2026-06-15 | 2026-10-15 |  |  |  |
| ADMIN.5179 |  | FOH/Fire . 0140 // Frame Walls | 3d | 2026-06-15 A | 2026-06-17 A | ADMIN.5165 | 100% |  |
| ADMIN.5180 |  | FOH/Fire . 0140 // MEPF Layout of Overhead Supports | 8d | 2026-06-16 A | 2026-06-18 A | ADMIN.5179 | 100% |  |
| ADMIN.5182 |  | FOH/Fire . 0140 // Install MEPF Overhead Supports | 2d | 2026-06-18 A | 2026-07-02 A | ADMIN.5180 SS+2d | 100% |  |
| ADMIN.5181 |  | FOH/Fire . 0140 // Top Down Install of Sheetrock - Priority Walls | 2d | 2026-06-19 A | 2026-07-16 A | ADMIN.5180 | 100% |  |
| ADMIN.5184 |  | FOH/Fire . 0140 // MEPF In-wall rough-in | 2d | 2026-07-17 A | 2026-07-20 A | ADMIN.5181 | 100% |  |
| ADMIN.5186 |  | FOH/Fire . 0140 // 1-Side & Finish Priority Walls | 2d | 2026-07-21 A | 2026-07-22 A | ADMIN.5181, ADMIN.5184 | 100% |  |
| ADMIN.5183 |  | FOH/Fire . 0140 // MEPF Overhead Install | 10d | 2026-07-31 A | 2026-08-17 A | ADMIN.5182 SS+5d | 100% |  |
| ADMIN.5185 |  | FOH/Fire . 0140 // Install Fire Alarm and Security | 3d | 2026-08-07 A | 2026-08-20 A | ADMIN.5183 | 100% |  |
| ADMIN.5187 |  | FOH/Fire . 0140 // Tape and Finish Walls | 3d | 2026-08-17 A | 2026-08-18 A | ADMIN.5186 | 100% |  |
| ADMIN.5188 |  | FOH/Fire . 0140 // Final paint | 2d | 2026-08-18 A | 2026-08-21 A | ADMIN.5185, ADMIN.5187 | 100% |  |
| ADMIN.5765 |  | FOH/Fire . 0140 // FOH- Room Ready to Receive Equipment | 0d | 2026-09-14 A | 2026-09-14 A | ADMIN.5183 | 100% |  |
| ADMIN.5189 |  | FOH/Fire . 0140 // Install Flooring and Base | 3d | 2026-09-30 | 2026-10-02 | ADMIN.5188 |  | 37d |
| ADMIN.5497 |  | FOH/Fire . 0140 // Install Ceiling grid | 4d | 2026-09-30 | 2026-10-05 | ADMIN.5183, ADMIN.5186 |  | 32d |
| ADMIN.5899 |  | FOH/Fire . 0140 // BMS & EPMS Rough In | 2d | 2026-09-30 | 2026-10-01 | ADMIN.5185 FF, ADMIN.5185 SS |  | 41d |
| ADMIN.5498 |  | FOH/Fire . 0140 // Hang hard-lid ceiling | 2d | 2026-10-06 | 2026-10-07 | ADMIN.5497 |  | 32d |
| ADMIN.5499 |  | FOH/Fire . 0140 // Hang / drop Ceiling trims | 2d | 2026-10-08 | 2026-10-09 | ADMIN.5498 |  | 32d |
| ADMIN.5190 |  | FOH/Fire . 0140 // Install Trim-Out | 1d | 2026-10-13 | 2026-10-13 | ADMIN.5189, ADMIN.5499 |  | 32d |
| ADMIN.5191 |  | FOH/Fire . 0140 // Install Doors and Hardware | 1d | 2026-10-14 | 2026-10-14 | ADMIN.5190, ADMIN.5765 SS |  | 32d |
| ADMIN.5192 |  | FOH/Fire . 0140 // Finish & Clean | 1d | 2026-10-15 | 2026-10-15 | ADMIN.5190, ADMIN.5191, ADMIN.5899 FF |  | 32d |

| ID | WBS | Task | Duration | Start | Finish | Predecessors | Complete | Total float |
| --- | --- | --- | --- | --- | --- | --- | --- | --- |
|  | 14 | **Tenant Office 0115** |  | 2026-06-18 | 2026-10-07 |  |  |  |
| ADMIN.5194 |  | FOH/Tenant Office 0115 // MEPF Layout of Overhead Supports | 3d | 2026-06-18 A | 2026-06-22 A | ADMIN.5193 SS | 100% |  |
| ADMIN.5193 |  | FOH/Tenant Office 0115 // Frame Walls | 3d | 2026-06-19 A | 2026-06-23 A | ADMIN.5179 | 100% |  |
| ADMIN.5195 |  | FOH/Tenant Office 0115 // Top Down Install of Sheetrock - Priority Walls | 2d | 2026-06-23 A | 2026-06-24 A | ADMIN.5194 | 100% |  |
| ADMIN.5196 |  | FOH/Tenant Office 0115 // Install MEPF Overhead Supports | 2d | 2026-06-23 A | 2026-07-07 A | ADMIN.5194 SS+2d | 100% |  |
| ADMIN.5197 |  | FOH/Tenant Office 0115 // MEPF Overhead Install | 10d | 2026-07-08 A | 2026-08-08 A | ADMIN.5196 SS+5d | 100% |  |
| ADMIN.5198 |  | FOH/Tenant Office 0115 // MEPF In-wall rough-in | 2d | 2026-08-10 A | 2026-08-11 A | ADMIN.5197 | 100% |  |
| ADMIN.5200 |  | FOH/Tenant Office 0115 // 1-Side & Finish Priority Walls | 2d | 2026-08-17 A | 2026-08-18 A | ADMIN.5195, ADMIN.5197, ADMIN.5198 | 100% |  |
| ADMIN.5199 |  | FOH/Tenant Office 0115 // Install Fire Alarm and Security | 3d | 2026-08-18 A | 2026-08-19 A | ADMIN.5197 | 100% |  |
| ADMIN.5201 |  | FOH/Tenant Office 0115 // Tape and Finish Walls | 3d | 2026-08-19 A | 2026-08-21 A | ADMIN.5200 | 100% |  |
| ADMIN.5202 |  | FOH/Tenant Office 0115 // Final paint | 2d | 2026-08-24 A | 2026-08-25 A | ADMIN.5199, ADMIN.5201 | 100% |  |
| ADMIN.5203 |  | FOH/Tenant Office 0115 // Install Flooring and Base | 3d | 2026-09-30 | 2026-10-02 | ADMIN.5202 |  | 37d |
| ADMIN.5766 |  | FOH/Tenant Office 0115 // FOH- Room Ready to Receive Equipment | 0d | 2026-09-30 | 2026-09-30 | ADMIN.5202 |  | 41d |
| ADMIN.5909 |  | FOH/Tenant Office 0115 // BMS & EPMS Rough In | 2d | 2026-09-30 | 2026-10-01 | ADMIN.5199 FF, ADMIN.5199 SS |  | 41d |
| ADMIN.5204 |  | FOH/Tenant Office 0115 // Install Trim-Out | 1d | 2026-10-05 | 2026-10-05 | ADMIN.5203 |  | 37d |
| ADMIN.5205 |  | FOH/Tenant Office 0115 // Install Doors and Hardware | 1d | 2026-10-06 | 2026-10-06 | ADMIN.5204, ADMIN.5766 SS |  | 37d |
| ADMIN.5206 |  | FOH/Tenant Office 0115 // Finish & Clean | 1d | 2026-10-07 | 2026-10-07 | ADMIN.5204, ADMIN.5205, ADMIN.5909 FF |  | 37d |
|  | 2 | **Roof .0125** |  | 2026-06-18 | 2026-10-07 |  |  |  |
| ADMIN.5208 |  | FOH/Roof .0125 // MEPF Layout of Overhead Supports | 3d | 2026-06-18 A | 2026-06-22 A | ADMIN.5207 | 100% |  |
| ADMIN.5210 |  | FOH/Roof .0125 // Install MEPF Overhead Supports | 2d | 2026-06-19 A | 2026-07-23 A | ADMIN.5208 SS+2d | 100% |  |
| ADMIN.5207 |  | FOH/Roof .0125 // Frame Walls | 3d | 2026-06-24 A | 2026-06-26 A | ADMIN.5193 | 100% |  |
| ADMIN.5209 |  | FOH/Roof .0125 // Top Down Install of Sheetrock - Priority Walls | 2d | 2026-07-24 A | 2026-08-07 A | ADMIN.5208 | 100% |  |
| ADMIN.5211 |  | FOH/Roof .0125 // MEPF Overhead Install | 10d | 2026-07-24 A | 2026-08-13 A | ADMIN.5210 SS+5d | 100% |  |
| ADMIN.5212 |  | FOH/Roof .0125 // MEPF In-wall rough-in | 2d | 2026-08-07 A | 2026-08-14 A | ADMIN.5211 | 100% |  |
| ADMIN.5213 |  | FOH/Roof .0125 // Install Fire Alarm and Security | 3d | 2026-08-07 A | 2026-09-18 A | ADMIN.5211 | 100% |  |
| ADMIN.5214 |  | FOH/Roof .0125 // 1-Side & Finish Priority Walls | 2d | 2026-08-11 A | 2026-09-15 A | ADMIN.5209, ADMIN.5211, ADMIN.5212 | 100% |  |
| ADMIN.5215 |  | FOH/Roof .0125 // Tape and Finish Walls | 3d | 2026-08-13 A | 2026-09-18 A | ADMIN.5214 | 100% |  |
| ADMIN.5216 |  | FOH/Roof .0125 // Final paint | 2d | 2026-08-18 A | 2026-09-22 A | ADMIN.5213, ADMIN.5215 | 100% |  |
| ADMIN.5217 |  | FOH/Roof .0125 // Install Flooring and Base | 3d | 2026-09-30 | 2026-10-02 | ADMIN.5216 |  | 37d |
| ADMIN.5767 |  | FOH/Roof .0125 // FOH- Room Ready to Receive Equipment | 0d | 2026-09-30 | 2026-09-30 | ADMIN.5216 |  | 41d |
| ADMIN.5919 |  | FOH/Roof .0125 // BMS & EPMS Rough In | 2d | 2026-09-30 | 2026-10-01 | ADMIN.5213 FF, ADMIN.5213 SS |  | 41d |
| ADMIN.5218 |  | FOH/Roof .0125 // Install Trim-Out | 1d | 2026-10-05 | 2026-10-05 | ADMIN.5217 |  | 37d |
| ADMIN.5219 |  | FOH/Roof .0125 // Install Doors and Hardware | 1d | 2026-10-06 | 2026-10-06 | ADMIN.5218, ADMIN.5767 SS |  | 37d |
| ADMIN.5220 |  | FOH/Roof .0125 // Finish & Clean | 1d | 2026-10-07 | 2026-10-07 | ADMIN.5218, ADMIN.5219, ADMIN.5919 FF |  | 37d |
|  | 4 | **QTS Flex .0114** |  | 2026-06-18 | 2026-10-07 |  |  |  |
| ADMIN.5460 |  | FOH/QTS Flex .0114 // MEPF Layout of Overhead Supports | 3d | 2026-06-18 A | 2026-06-22 A | ADMIN.5459 | 100% |  |
| ADMIN.5462 |  | FOH/QTS Flex .0114 // Install MEPF Overhead Supports | 2d | 2026-06-19 A | 2026-06-23 A | ADMIN.5460 SS+2d | 100% |  |
| ADMIN.5459 |  | FOH/QTS Flex .0114 // Frame Walls | 3d | 2026-06-23 A | 2026-06-25 A | ADMIN.5207 | 100% |  |
| ADMIN.5461 |  | FOH/QTS Flex .0114 // Top Down Install of Sheetrock - Priority Walls | 2d | 2026-07-24 A | 2026-08-04 A | ADMIN.5460 | 100% |  |
| ADMIN.5463 |  | FOH/QTS Flex .0114 // MEPF Overhead Install | 10d | 2026-08-03 A | 2026-08-14 A | ADMIN.5462 SS+5d | 100% |  |
| ADMIN.5464 |  | FOH/QTS Flex .0114 // MEPF In-wall rough-in | 2d | 2026-08-07 A | 2026-08-13 A | ADMIN.5463 | 100% |  |
| ADMIN.5465 |  | FOH/QTS Flex .0114 // Install Fire Alarm and Security | 3d | 2026-08-07 A | 2026-09-18 A | ADMIN.5463 | 100% |  |
| ADMIN.5466 |  | FOH/QTS Flex .0114 // 1-Side & Finish Priority Walls | 2d | 2026-08-11 A | 2026-09-15 A | ADMIN.5461, ADMIN.5463, ADMIN.5464 | 100% |  |
| ADMIN.5467 |  | FOH/QTS Flex .0114 // Tape and Finish Walls | 3d | 2026-08-13 A | 2026-09-17 A | ADMIN.5466 | 100% |  |
| ADMIN.5468 |  | FOH/QTS Flex .0114 // Final paint | 2d | 2026-08-18 A | 2026-09-22 A | ADMIN.5465, ADMIN.5467 | 100% |  |
| ADMIN.5469 |  | FOH/QTS Flex .0114 // Install Flooring and Base | 3d | 2026-09-30 | 2026-10-02 | ADMIN.5468 |  | 37d |
| ADMIN.5768 |  | FOH/QTS Flex .0114 // FOH- Room Ready to Receive Equipment | 0d | 2026-09-30 | 2026-09-30 | ADMIN.5468 |  | 41d |
| ADMIN.5929 |  | FOH/QTS Flex .0114 // BMS & EPMS Rough In | 2d | 2026-09-30 | 2026-10-01 | ADMIN.5465 FF, ADMIN.5465 SS |  | 41d |
| ADMIN.5470 |  | FOH/QTS Flex .0114 // Install Trim-Out | 1d | 2026-10-05 | 2026-10-05 | ADMIN.5469 |  | 37d |
| ADMIN.5471 |  | FOH/QTS Flex .0114 // Install Doors and Hardware | 1d | 2026-10-06 | 2026-10-06 | ADMIN.5470, ADMIN.5768 SS |  | 37d |
| ADMIN.5472 |  | FOH/QTS Flex .0114 // Finish & Clean | 1d | 2026-10-07 | 2026-10-07 | ADMIN.5470, ADMIN.5471, ADMIN.5929 FF |  | 37d |
|  | 3 | **Restroom .M0111 / W 0110** |  | 2026-06-23 | 2026-10-26 |  |  |  |
| ADMIN.5099 |  | FOH/Restroom .M0111 / W 0110 // MEP rough in of Soffits / Hardlids | 2d | 2026-06-23 A | 2026-06-24 A | ADMIN.5460 | 100% |  |
| ADMIN.4814 |  | FOH/Restroom .M0111 / W 0110 // Install MEP Overhead | 3d | 2026-07-24 A | 2026-09-09 A | ADMIN.5460 | 100% |  |
| ADMIN.4813 |  | FOH/Restroom .M0111 / W 0110 // Install Sprinkler Riser System | 10d | 2026-07-29 A | 2026-09-22 A | ADMIN.4814 | 100% |  |
| ADMIN.5100 |  | FOH/Restroom .M0111 / W 0110 // Backing & Blocking | 1d | 2026-07-29 A | 2026-09-08 A | ADMIN.5099 | 100% |  |
| ADMIN.4810 |  | FOH/Restroom .M0111 / W 0110 // Tape and Finish Walls | 5d | 2026-07-30 A | 2026-09-29 A | ADMIN.5100 | 100% |  |
| ADMIN.4815 |  | FOH/Restroom .M0111 / W 0110 // Install Fire Alarm | 5d | 2026-08-12 A | 2026-09-29 A | ADMIN.4813 | 100% |  |
| ADMIN.4811 |  | FOH/Restroom .M0111 / W 0110 // Prime and Paint | 3d | 2026-09-30 | 2026-10-02 | ADMIN.4810 |  | 34d |
| ADMIN.4816 |  | FOH/Restroom .M0111 / W 0110 // Install Lighting | 2d | 2026-09-30 | 2026-10-01 | ADMIN.4815 |  | 37d |
| ADMIN.5101 |  | FOH/Restroom .M0111 / W 0110 // Install Wall & Floor tiles | 5d | 2026-09-30 | 2026-10-06 | ADMIN.4810 |  | 25d |
| ADMIN.4812 |  | FOH/Restroom .M0111 / W 0110 // Install FRP | 2d | 2026-10-05 | 2026-10-06 | ADMIN.4811 |  | 34d |
| ADMIN.5102 |  | FOH/Restroom .M0111 / W 0110 // Millwork On-Field Measurement | 1d | 2026-10-07 | 2026-10-07 | ADMIN.5101 |  | 25d |
| ADMIN.5104 |  | FOH/Restroom .M0111 / W 0110 // Install Toilet Accesories | 3d | 2026-10-08 | 2026-10-13 | ADMIN.5102 |  | 25d |
| ADMIN.5103 |  | FOH/Restroom .M0111 / W 0110 // Install Toilet Partition & Millwork | 5d | 2026-10-14 | 2026-10-20 | ADMIN.5104 |  | 25d |
| ADMIN.4817 |  | FOH/Restroom .M0111 / W 0110 // Finish Trim and Devices | 3d | 2026-10-21 | 2026-10-23 | ADMIN.4816, ADMIN.5103, ADMIN.4812 |  | 25d |
| ADMIN.4818 |  | FOH/Restroom .M0111 / W 0110 // Finish & Clean | 1d | 2026-10-26 | 2026-10-26 | ADMIN.4817 |  | 25d |
|  | 5 | **Janitor 0109** |  | 2026-06-18 | 2026-10-07 |  |  |  |
| ADMIN.5221 |  | FOH/Janitor 0109 // Frame Walls | 3d | 2026-06-18 A | 2026-06-22 A | ADMIN.5179 | 100% |  |
| ADMIN.5222 |  | FOH/Janitor 0109 // MEPF Layout of Overhead Supports | 2d | 2026-06-19 A | 2026-06-22 A | ADMIN.5221 | 100% |  |

| ID | WBS | Task | Duration | Start | Finish | Predecessors | Complete | Total float |
| --- | --- | --- | --- | --- | --- | --- | --- | --- |
| ADMIN.5223 |  | FOH/Janitor 0109 // Top Down Install of Sheetrock - Priority Walls | 2d | 2026-07-29 A | 2026-08-04 A | ADMIN.5222 | 100% |  |
| ADMIN.5224 |  | FOH/Janitor 0109 // Install MEPF Overhead Supports | 2d | 2026-08-03 A | 2026-08-14 A | ADMIN.5222 SS+2d | 100% |  |
| ADMIN.5225 |  | FOH/Janitor 0109 // MEPF Overhead Install | 10d | 2026-08-04 A | 2026-08-17 A | ADMIN.5224 SS+5d | 100% |  |
| ADMIN.5226 |  | FOH/Janitor 0109 // MEPF In-wall rough-in | 2d | 2026-08-10 A | 2026-08-11 A | ADMIN.5225 | 100% |  |
| ADMIN.5227 |  | FOH/Janitor 0109 // Install Fire Alarm and Security | 3d | 2026-08-19 A | 2026-09-10 A | ADMIN.5225 | 100% |  |
| ADMIN.5228 |  | FOH/Janitor 0109 // 1-Side & Finish Priority Walls | 2d | 2026-08-21 A | 2026-09-15 A | ADMIN.5223, ADMIN.5225, ADMIN.5226 | 100% |  |
| ADMIN.5229 |  | FOH/Janitor 0109 // Tape and Finish Walls | 3d | 2026-08-25 A | 2026-09-18 A | ADMIN.5228 | 100% |  |
| ADMIN.5230 |  | FOH/Janitor 0109 // Final paint | 2d | 2026-08-28 A | 2026-09-22 A | ADMIN.5227, ADMIN.5229 | 100% |  |
| ADMIN.5231 |  | FOH/Janitor 0109 // Install Flooring and Base | 3d | 2026-09-30 | 2026-10-02 | ADMIN.5230 |  | 37d |
| ADMIN.5939 |  | FOH/Janitor 0109 // BMS & EPMS Rough In | 2d | 2026-09-30 | 2026-10-01 | ADMIN.5227 FF, ADMIN.5227 SS |  | 41d |
| ADMIN.5232 |  | FOH/Janitor 0109 // Install Trim-Out | 1d | 2026-10-05 | 2026-10-05 | ADMIN.5231 |  | 37d |
| ADMIN.5233 |  | FOH/Janitor 0109 // Install Doors and Hardware | 1d | 2026-10-06 | 2026-10-06 | ADMIN.5232 |  | 37d |
| ADMIN.5234 |  | FOH/Janitor 0109 // Finish & Clean | 1d | 2026-10-07 | 2026-10-07 | ADMIN.5232, ADMIN.5233, ADMIN.5939 FF |  | 37d |
|  | 6 | **Water 1000A4** |  | 2026-06-18 | 2026-10-19 |  |  |  |
| ADMIN.5235 |  | FOH/Water 1000A4 // Frame Walls | 3d | 2026-06-18 A | 2026-06-22 A | ADMIN.5221 | 100% |  |
| ADMIN.5238 |  | FOH/Water 1000A4 // Install MEPF Overhead Supports | 2d | 2026-07-31 A | 2026-08-25 A | ADMIN.5236 FS+2d | 100% |  |
| ADMIN.5236 |  | FOH/Water 1000A4 // MEPF Layout of Overhead Supports | 8d | 2026-08-03 A | 2026-08-05 A | ADMIN.5235 | 100% |  |
| ADMIN.5237 |  | FOH/Water 1000A4 // Top Down Install of Sheetrock - Priority Walls | 2d | 2026-08-06 A | 2026-08-07 A | ADMIN.5236 | 100% |  |
| ADMIN.5239 |  | FOH/Water 1000A4 // MEPF Overhead Install | 10d | 2026-08-07 A | 2026-09-09 A | ADMIN.5238 | 100% |  |
| ADMIN.5240 |  | FOH/Water 1000A4 // MEPF In-wall rough-in | 2d | 2026-08-10 A | 2026-08-11 A | ADMIN.5237 | 100% |  |
| ADMIN.5241 |  | FOH/Water 1000A4 // Install Fire Alarm and Security | 3d | 2026-09-30 | 2026-10-02 | ADMIN.5239 |  | 32d |
| ADMIN.5242 |  | FOH/Water 1000A4 // 1-Side & Finish Priority Walls | 2d | 2026-09-30 | 2026-10-01 | ADMIN.5237, ADMIN.5239, ADMIN.5240 |  | 30d |
| ADMIN.5949 |  | FOH/Water 1000A4 // BMS & EPMS Rough In | 2d | 2026-10-01 | 2026-10-02 | ADMIN.5241 FF, ADMIN.5241 SS |  | 34d |
| ADMIN.5243 |  | FOH/Water 1000A4 // Tape and Finish Walls | 3d | 2026-10-02 | 2026-10-06 | ADMIN.5242 |  | 30d |
| ADMIN.5244 |  | FOH/Water 1000A4 // Final paint | 2d | 2026-10-07 | 2026-10-08 | ADMIN.5949 FF, ADMIN.5241, ADMIN.5243 |  | 30d |
| ADMIN.5245 |  | FOH/Water 1000A4 // Install Flooring and Base | 3d | 2026-10-09 | 2026-10-14 | ADMIN.5244 |  | 30d |
| ADMIN.5246 |  | FOH/Water 1000A4 // Install Trim-Out | 1d | 2026-10-15 | 2026-10-15 | ADMIN.5245 |  | 30d |
| ADMIN.5247 |  | FOH/Water 1000A4 // Install Doors and Hardware | 1d | 2026-10-16 | 2026-10-16 | ADMIN.5246 |  | 30d |
| ADMIN.5248 |  | FOH/Water 1000A4 // Finish & Clean | 1d | 2026-10-19 | 2026-10-19 | ADMIN.5246, ADMIN.5247 |  | 30d |
|  | 7 | **Welness 0108** |  | 2026-06-19 | 2026-10-14 |  |  |  |
| ADMIN.5249 |  | FOH/Welness 0108 // Frame Walls | 3d | 2026-06-19 A | 2026-06-23 A | ADMIN.5235 SS | 100% |  |
| ADMIN.5250 |  | FOH/Welness 0108 // MEPF Layout of Overhead Supports | 8d | 2026-06-25 A | 2026-07-07 A | ADMIN.5249 | 100% |  |
| ADMIN.5252 |  | FOH/Welness 0108 // Install MEPF Overhead Supports | 2d | 2026-07-31 A | 2026-08-27 A | ADMIN.5250 | 100% |  |
| ADMIN.5251 |  | FOH/Welness 0108 // Top Down Install of Sheetrock - Priority Walls | 2d | 2026-08-04 A | 2026-08-05 A | ADMIN.5250 | 100% |  |
| ADMIN.5254 |  | FOH/Welness 0108 // MEPF In-wall rough-in | 2d | 2026-08-06 A | 2026-08-07 A | ADMIN.5251 | 100% |  |
| ADMIN.5253 |  | FOH/Welness 0108 // MEPF Overhead Install | 10d | 2026-08-07 A | 2026-09-14 A | ADMIN.5252 | 100% |  |
| ADMIN.5255 |  | FOH/Welness 0108 // Install Fire Alarm and Security | 3d | 2026-08-21 A | 2026-09-28 A | ADMIN.5253 | 100% |  |
| ADMIN.5256 |  | FOH/Welness 0108 // 1-Side & Finish Priority Walls | 2d | 2026-08-25 A | 2026-09-25 A | ADMIN.5251, ADMIN.5253, ADMIN.5254 | 100% |  |
| ADMIN.5257 |  | FOH/Welness 0108 // Tape and Finish Walls | 3d | 2026-08-27 A | 2026-09-29 A | ADMIN.5256 | 100% |  |
| ADMIN.5258 |  | FOH/Welness 0108 // Final paint | 2d | 2026-09-30 | 2026-10-01 | ADMIN.5959 FF, ADMIN.5255, ADMIN.5257 |  | 35d |
| ADMIN.5473 |  | FOH/Welness 0108 // Install Ceiling grid | 4d | 2026-09-30 | 2026-10-05 | ADMIN.5253, ADMIN.5256 |  | 33d |
| ADMIN.5959 |  | FOH/Welness 0108 // BMS & EPMS Rough In | 2d | 2026-09-30 | 2026-10-01 | ADMIN.5255 FF, ADMIN.5255 SS |  | 35d |
| ADMIN.5259 |  | FOH/Welness 0108 // Install Flooring and Base | 3d | 2026-10-02 | 2026-10-06 | ADMIN.5258 |  | 35d |
| ADMIN.5474 |  | FOH/Welness 0108 // Hang / drop Ceiling tiles | 2d | 2026-10-06 | 2026-10-07 | ADMIN.5473 |  | 33d |
| ADMIN.5475 |  | FOH/Welness 0108 // Hang / drop Ceiling trims | 2d | 2026-10-08 | 2026-10-09 | ADMIN.5474 |  | 33d |
| ADMIN.5260 |  | FOH/Welness 0108 // Install Trim-Out | 1d | 2026-10-09 | 2026-10-09 | ADMIN.5259, ADMIN.5475 FF |  | 33d |
| ADMIN.5261 |  | FOH/Welness 0108 // Install Doors and Hardware | 1d | 2026-10-13 | 2026-10-13 | ADMIN.5260, ADMIN.5769 SS |  | 33d |
| ADMIN.5769 |  | FOH/Welness 0108 // FOH- Room Ready to Receive Equipment | 0d | 2026-10-13 | 2026-10-13 | ADMIN.5475 |  | 33d |
| ADMIN.5262 |  | FOH/Welness 0108 // Finish & Clean | 1d | 2026-10-14 | 2026-10-14 | ADMIN.5260, ADMIN.5261 |  | 33d |
|  | 8 | **Corridor 0112 / Freedom Cafe 0105** |  | 2026-06-19 | 2026-10-14 |  |  |  |
| ADMIN.5263 |  | FOH/Corridor 0112 / Freedom Cafe 0105 // Frame Walls | 3d | 2026-06-19 A | 2026-06-23 A | ADMIN.5249 SS | 100% |  |
| ADMIN.5264 |  | FOH/Corridor 0112 / Freedom Cafe 0105 // MEPF Layout of Overhead Supports | 8d | 2026-06-24 A | 2026-07-06 A | ADMIN.5263 | 100% |  |
| ADMIN.5266 |  | FOH/Corridor 0112 / Freedom Cafe 0105 // Install MEPF Overhead Supports | 2d | 2026-07-31 A | 2026-09-02 A | ADMIN.5264 SS+2d | 100% |  |
| ADMIN.5265 |  | FOH/Corridor 0112 / Freedom Cafe 0105 // Top Down Install of Sheetrock - Priority Walls | 2d | 2026-08-03 A | 2026-08-04 A | ADMIN.5264 | 100% |  |
| ADMIN.5268 |  | FOH/Corridor 0112 / Freedom Cafe 0105 // MEPF In-wall rough-in | 2d | 2026-08-05 A | 2026-08-06 A | ADMIN.5265 | 100% |  |
| ADMIN.5267 |  | FOH/Corridor 0112 / Freedom Cafe 0105 // MEPF Overhead Install | 10d | 2026-08-07 A | 2026-09-16 A | ADMIN.5266 | 100% |  |
| ADMIN.5269 |  | FOH/Corridor 0112 / Freedom Cafe 0105 // Install Fire Alarm and Security | 3d | 2026-08-21 A | 2026-09-21 A | ADMIN.5267 | 100% |  |
| ADMIN.5270 |  | FOH/Corridor 0112 / Freedom Cafe 0105 // 1-Side & Finish Priority Walls | 2d | 2026-08-25 A | 2026-09-18 A | ADMIN.5265, ADMIN.5267, ADMIN.5268 | 100% |  |
| ADMIN.5271 |  | FOH/Corridor 0112 / Freedom Cafe 0105 // Tape and Finish Walls | 3d | 2026-08-27 A | 2026-09-22 A | ADMIN.5270 | 100% |  |
| ADMIN.5272 |  | FOH/Corridor 0112 / Freedom Cafe 0105 // Final paint | 2d | 2026-09-30 | 2026-10-01 | ADMIN.5969 FF, ADMIN.5269, ADMIN.5271 |  | 35d |
| ADMIN.5503 |  | FOH/Corridor 0112 / Freedom Cafe 0105 // Install Ceiling grid | 4d | 2026-09-30 | 2026-10-05 | ADMIN.5270 |  | 33d |
| ADMIN.5969 |  | FOH/Corridor 0112 / Freedom Cafe 0105 // BMS & EPMS Rough In | 2d | 2026-09-30 | 2026-10-01 | ADMIN.5269 FF, ADMIN.5269 SS |  | 35d |
| ADMIN.5273 |  | FOH/Corridor 0112 / Freedom Cafe 0105 // Install Flooring and Base | 3d | 2026-10-02 | 2026-10-06 | ADMIN.5272 |  | 35d |
| ADMIN.5504 |  | FOH/Corridor 0112 / Freedom Cafe 0105 // Hang Hard-Lid Ceiling | 2d | 2026-10-06 | 2026-10-07 | ADMIN.5503 |  | 33d |
| ADMIN.5505 |  | FOH/Corridor 0112 / Freedom Cafe 0105 // Hang / drop Ceiling trims | 2d | 2026-10-08 | 2026-10-09 | ADMIN.5504 |  | 33d |
| ADMIN.5274 |  | FOH/Corridor 0112 / Freedom Cafe 0105 // Install Trim-Out | 1d | 2026-10-09 | 2026-10-09 | ADMIN.5273, ADMIN.5505 FF |  | 33d |
| ADMIN.5275 |  | FOH/Corridor 0112 / Freedom Cafe 0105 // Install Doors and Hardware | 1d | 2026-10-13 | 2026-10-13 | ADMIN.5274 |  | 33d |
| ADMIN.5276 |  | FOH/Corridor 0112 / Freedom Cafe 0105 // Finish & Clean | 1d | 2026-10-14 | 2026-10-14 | ADMIN.5274, ADMIN.5275 |  | 33d |
|  | 16 | **Conference 0103** |  | 2026-06-18 | 2026-10-15 |  |  |  |
| ADMIN.5277 |  | FOH/Conference 0103 // Frame Walls | 3d | 2026-06-18 A | 2026-06-23 A | ADMIN.5263 SS | 100% |  |

| ID | WBS | Task | Duration | Start | Finish | Predecessors | Complete | Total float |
| --- | --- | --- | --- | --- | --- | --- | --- | --- |
| ADMIN.5278 |  | FOH/Conference 0103 // MEPF Layout of Overhead Supports | 8d | 2026-07-29 A | 2026-08-28 A | ADMIN.5277 | 100% |  |
| ADMIN.5280 |  | FOH/Conference 0103 // Install MEPF Overhead Supports | 2d | 2026-07-31 A | 2026-09-01 A | ADMIN.5278 FS+2d | 100% |  |
| ADMIN.5281 |  | FOH/Conference 0103 // MEPF Overhead Install | 10d | 2026-08-07 A | 2026-09-16 A | ADMIN.5280 | 100% |  |
| ADMIN.5279 |  | FOH/Conference 0103 // Top Down Install of Sheetrock - Priority Walls | 2d | 2026-08-10 A | 2026-09-15 A | ADMIN.5278 | 100% |  |
| ADMIN.5282 |  | FOH/Conference 0103 // MEPF In-wall rough-in | 2d | 2026-08-21 A | 2026-09-18 A | ADMIN.5281 | 100% |  |
| ADMIN.5283 |  | FOH/Conference 0103 // Install Fire Alarm and Security | 3d | 2026-08-21 A | 2026-09-21 A | ADMIN.5281 | 100% |  |
| ADMIN.5284 |  | FOH/Conference 0103 // 1-Side & Finish Priority Walls | 2d | 2026-08-25 A | 2026-09-25 A | ADMIN.5279, ADMIN.5281, ADMIN.5282 | 100% |  |
| ADMIN.5285 |  | FOH/Conference 0103 // Tape and Finish Walls | 3d | 2026-09-28 A | 2026-10-02 | ADMIN.5284 |  | 32d |
| ADMIN.5479 |  | FOH/Conference 0103 // Install Ceiling grid | 4d | 2026-09-30 | 2026-10-05 | ADMIN.5284 |  | 33d |
| ADMIN.5979 |  | FOH/Conference 0103 // BMS & EPMS Rough In | 2d | 2026-09-30 | 2026-10-01 | ADMIN.5283 FF, ADMIN.5283 SS |  | 35d |
| ADMIN.5286 |  | FOH/Conference 0103 // Final paint | 2d | 2026-10-05 | 2026-10-06 | ADMIN.5979 FF, ADMIN.5283, ADMIN.5285 |  | 32d |
| ADMIN.5480 |  | FOH/Conference 0103 // Hang / drop Ceiling tiles | 2d | 2026-10-06 | 2026-10-07 | ADMIN.5479 |  | 33d |
| ADMIN.5287 |  | FOH/Conference 0103 // Install Flooring and Base | 3d | 2026-10-07 | 2026-10-09 | ADMIN.5286 |  | 32d |
| ADMIN.5481 |  | FOH/Conference 0103 // Hang / drop Ceiling trims | 2d | 2026-10-08 | 2026-10-09 | ADMIN.5480 |  | 33d |
| ADMIN.5288 |  | FOH/Conference 0103 // Install Trim-Out | 1d | 2026-10-13 | 2026-10-13 | ADMIN.5287, ADMIN.5481 FF |  | 32d |
| ADMIN.5770 |  | FOH/Conference 0103 // FOH- Room Ready to Receive Equipment | 0d | 2026-10-13 | 2026-10-13 | ADMIN.5481 |  | 33d |
| ADMIN.5289 |  | FOH/Conference 0103 // Install Doors and Hardware | 1d | 2026-10-14 | 2026-10-14 | ADMIN.5288, ADMIN.5770 SS |  | 32d |
| ADMIN.5290 |  | FOH/Conference 0103 // Finish & Clean | 1d | 2026-10-15 | 2026-10-15 | ADMIN.5288, ADMIN.5289 |  | 32d |
|  | 17 | **Conference 0102** |  | 2026-06-18 | 2026-10-15 |  |  |  |
| ADMIN.5291 |  | FOH/Conference 0102 // Frame Walls | 3d | 2026-06-18 A | 2026-06-22 A | ADMIN.5277 SS | 100% |  |
| ADMIN.5293 |  | FOH/Conference 0102 // Top Down Install of Sheetrock - Priority Walls | 2d | 2026-06-23 A | 2026-06-24 A | ADMIN.5291 | 100% |  |
| ADMIN.5292 |  | FOH/Conference 0102 // MEPF Layout of Overhead Supports | 8d | 2026-07-29 A | 2026-08-28 A | ADMIN.5291 | 100% |  |
| ADMIN.5294 |  | FOH/Conference 0102 // Install MEPF Overhead Supports | 2d | 2026-07-31 A | 2026-09-01 A | ADMIN.5292 SS+2d | 100% |  |
| ADMIN.5295 |  | FOH/Conference 0102 // MEPF Overhead Install | 10d | 2026-08-07 A | 2026-09-16 A | ADMIN.5294 SS+5d | 100% |  |
| ADMIN.5296 |  | FOH/Conference 0102 // MEPF In-wall rough-in | 2d | 2026-08-21 A | 2026-09-18 A | ADMIN.5295 | 100% |  |
| ADMIN.5297 |  | FOH/Conference 0102 // Install Fire Alarm and Security | 3d | 2026-08-21 A | 2026-09-21 A | ADMIN.5295 | 100% |  |
| ADMIN.5298 |  | FOH/Conference 0102 // 1-Side & Finish Priority Walls | 2d | 2026-08-25 A | 2026-09-25 A | ADMIN.5293, ADMIN.5295, ADMIN.5296 | 100% |  |
| ADMIN.5299 |  | FOH/Conference 0102 // Tape and Finish Walls | 3d | 2026-09-28 A | 2026-10-02 | ADMIN.5298 |  | 32d |
| ADMIN.5482 |  | FOH/Conference 0102 // Install Ceiling grid | 4d | 2026-09-30 | 2026-10-05 | ADMIN.5298 |  | 33d |
| ADMIN.5989 |  | FOH/Conference 0102 // BMS & EPMS Rough In | 2d | 2026-09-30 | 2026-10-01 | ADMIN.5297 FF, ADMIN.5297 SS |  | 35d |
| ADMIN.5300 |  | FOH/Conference 0102 // Final paint | 2d | 2026-10-05 | 2026-10-06 | ADMIN.5989 FF, ADMIN.5297, ADMIN.5299 |  | 32d |
| ADMIN.5483 |  | FOH/Conference 0102 // Hang / drop Ceiling tiles | 2d | 2026-10-06 | 2026-10-07 | ADMIN.5482 |  | 33d |
| ADMIN.5301 |  | FOH/Conference 0102 // Install Flooring and Base | 3d | 2026-10-07 | 2026-10-09 | ADMIN.5300 |  | 32d |
| ADMIN.5484 |  | FOH/Conference 0102 // Hang / drop Ceiling trims | 2d | 2026-10-08 | 2026-10-09 | ADMIN.5483 |  | 33d |
| ADMIN.5302 |  | FOH/Conference 0102 // Install Trim-Out | 1d | 2026-10-13 | 2026-10-13 | ADMIN.5301, ADMIN.5484 FF |  | 32d |
| ADMIN.5771 |  | FOH/Conference 0102 // FOH- Room Ready to Receive Equipment | 0d | 2026-10-13 | 2026-10-13 | ADMIN.5484 |  | 33d |
| ADMIN.5303 |  | FOH/Conference 0102 // Install Doors and Hardware | 1d | 2026-10-14 | 2026-10-14 | ADMIN.5302, ADMIN.5771 SS |  | 32d |
| ADMIN.5304 |  | FOH/Conference 0102 // Finish & Clean | 1d | 2026-10-15 | 2026-10-15 | ADMIN.5302, ADMIN.5303 |  | 32d |
|  | 18 | **Lobby 0101 / Vestibule 0100** |  | 2026-07-16 | 2026-10-15 |  |  |  |
| ADMIN.5305 |  | FOH/Lobby 0101 / Vestibule 0100 // Frame Walls | 3d | 2026-07-16 A | 2026-07-20 A | ADMIN.5291 SS | 100% |  |
| ADMIN.5306 |  | FOH/Lobby 0101 / Vestibule 0100 // MEPF Layout of Overhead Supports | 8d | 2026-07-21 A | 2026-07-30 A | ADMIN.5305 | 100% |  |
| ADMIN.5307 |  | FOH/Lobby 0101 / Vestibule 0100 // Top Down Install of Sheetrock - Priority Walls | 2d | 2026-08-03 A | 2026-08-04 A | ADMIN.5306 | 100% |  |
| ADMIN.5308 |  | FOH/Lobby 0101 / Vestibule 0100 // Install MEPF Overhead Supports | 2d | 2026-08-03 A | 2026-08-04 A | ADMIN.5306 SS+2d | 100% |  |
| ADMIN.5310 |  | FOH/Lobby 0101 / Vestibule 0100 // MEPF In-wall rough-in | 2d | 2026-08-05 A | 2026-08-06 A | ADMIN.5307 | 100% |  |
| ADMIN.5312 |  | FOH/Lobby 0101 / Vestibule 0100 // 1-Side & Finish Priority Walls | 2d | 2026-08-07 A | 2026-08-10 A | ADMIN.5307, ADMIN.5310 | 100% |  |
| ADMIN.5313 |  | FOH/Lobby 0101 / Vestibule 0100 // Tape and Finish Walls | 3d | 2026-08-11 A | 2026-08-13 A | ADMIN.5312 | 100% |  |
| ADMIN.5309 |  | FOH/Lobby 0101 / Vestibule 0100 // MEPF Overhead Install | 10d | 2026-08-25 A | 2026-09-29 A | ADMIN.5308 SS+5d | 100% |  |
| ADMIN.5311 |  | FOH/Lobby 0101 / Vestibule 0100 // Install Fire Alarm and Security | 3d | 2026-08-26 A | 2026-09-11 A | ADMIN.5309 SS | 100% |  |
| ADMIN.5314 |  | FOH/Lobby 0101 / Vestibule 0100 // Final paint | 2d | 2026-09-30 | 2026-10-01 | ADMIN.5999 FF, ADMIN.5311, ADMIN.5313 |  | 35d |
| ADMIN.5500 |  | FOH/Lobby 0101 / Vestibule 0100 // Install Ceiling grid | 4d | 2026-09-30 | 2026-10-05 | ADMIN.5312 |  | 32d |
| ADMIN.5999 |  | FOH/Lobby 0101 / Vestibule 0100 // BMS & EPMS Rough In | 2d | 2026-09-30 | 2026-10-01 | ADMIN.5311 FF, ADMIN.5311 SS |  | 35d |
| ADMIN.5315 |  | FOH/Lobby 0101 / Vestibule 0100 // Install Flooring and Base | 3d | 2026-10-02 | 2026-10-06 | ADMIN.5314 |  | 35d |
| ADMIN.5501 |  | FOH/Lobby 0101 / Vestibule 0100 // Hang Hard-Lid Ceiling | 2d | 2026-10-06 | 2026-10-07 | ADMIN.5500 |  | 32d |
| ADMIN.5502 |  | FOH/Lobby 0101 / Vestibule 0100 // Hang / drop Ceiling trims | 2d | 2026-10-08 | 2026-10-09 | ADMIN.5501 |  | 32d |
| ADMIN.5316 |  | FOH/Lobby 0101 / Vestibule 0100 // Install Trim-Out | 1d | 2026-10-13 | 2026-10-13 | ADMIN.5315, ADMIN.5502 |  | 32d |
| ADMIN.5317 |  | FOH/Lobby 0101 / Vestibule 0100 // Install Doors and Hardware | 1d | 2026-10-14 | 2026-10-14 | ADMIN.5316 |  | 32d |
| ADMIN.5318 |  | FOH/Lobby 0101 / Vestibule 0100 // Finish & Clean | 1d | 2026-10-15 | 2026-10-15 | ADMIN.5316, ADMIN.5317 |  | 32d |
|  | 19 | **Badging 0152** |  | 2026-06-19 | 2026-10-14 |  |  |  |
| ADMIN.5319 |  | FOH/Badging 0152 // Frame Walls | 3d | 2026-06-19 A | 2026-06-23 A | ADMIN.5179 | 100% |  |
| ADMIN.5321 |  | FOH/Badging 0152 // Top Down Install of Sheetrock - Priority Walls | 2d | 2026-06-23 A | 2026-06-24 A | ADMIN.5319 | 100% |  |
| ADMIN.5320 |  | FOH/Badging 0152 // MEPF Layout of Overhead Supports | 8d | 2026-06-25 A | 2026-07-07 A | ADMIN.5319 | 100% |  |
| ADMIN.5322 |  | FOH/Badging 0152 // Install MEPF Overhead Supports | 2d | 2026-07-09 A | 2026-07-10 A | ADMIN.5320 SS+2d | 100% |  |
| ADMIN.5324 |  | FOH/Badging 0152 // MEPF In-wall rough-in | 2d | 2026-07-20 A | 2026-07-21 A | ADMIN.5320 | 100% |  |
| ADMIN.5326 |  | FOH/Badging 0152 // 1-Side & Finish Priority Walls | 2d | 2026-07-23 A | 2026-07-24 A | ADMIN.5321, ADMIN.5324 | 100% |  |
| ADMIN.5327 |  | FOH/Badging 0152 // Tape and Finish Walls | 3d | 2026-08-03 A | 2026-08-05 A | ADMIN.5326 | 100% |  |
| ADMIN.5323 |  | FOH/Badging 0152 // MEPF Overhead Install | 10d | 2026-08-18 A | 2026-08-31 A | ADMIN.5322 | 100% |  |
| ADMIN.5325 |  | FOH/Badging 0152 // Install Fire Alarm and Security | 3d | 2026-08-21 A | 2026-09-10 A | ADMIN.5323 | 100% |  |
| ADMIN.5328 |  | FOH/Badging 0152 // Final paint | 2d | 2026-09-30 | 2026-10-01 | ADMIN.6009 FF, ADMIN.5325, ADMIN.5327 |  | 35d |
| ADMIN.5485 |  | FOH/Badging 0152 // Install Ceiling grid | 4d | 2026-09-30 | 2026-10-05 | ADMIN.5326 |  | 33d |
| ADMIN.6009 |  | FOH/Badging 0152 // BMS & EPMS Rough In | 2d | 2026-09-30 | 2026-10-01 | ADMIN.5325 FF, ADMIN.5325 SS |  | 35d |

| ID | WBS | Task | Duration | Start | Finish | Predecessors | Complete | Total float |
| --- | --- | --- | --- | --- | --- | --- | --- | --- |
| ADMIN.5329 |  | FOH/Badging 0152 // Install Flooring and Base | 3d | 2026-10-02 | 2026-10-06 | ADMIN.5328 |  | 35d |
| ADMIN.5486 |  | FOH/Badging 0152 // Hang / drop Ceiling tiles | 2d | 2026-10-06 | 2026-10-07 | ADMIN.5485 |  | 33d |
| ADMIN.5487 |  | FOH/Badging 0152 // Hang / drop Ceiling trims | 2d | 2026-10-08 | 2026-10-09 | ADMIN.5486 |  | 33d |
| ADMIN.5330 |  | FOH/Badging 0152 // Install Trim-Out | 1d | 2026-10-09 | 2026-10-09 | ADMIN.5329, ADMIN.5487 FF |  | 33d |
| ADMIN.5331 |  | FOH/Badging 0152 // Install Doors and Hardware | 1d | 2026-10-13 | 2026-10-13 | ADMIN.5330, ADMIN.5772 SS |  | 33d |
| ADMIN.5772 |  | FOH/Badging 0152 // FOH- Room Ready to Receive Equipment | 0d | 2026-10-13 | 2026-10-13 | ADMIN.5487 |  | 33d |
| ADMIN.5332 |  | FOH/Badging 0152 // Finish & Clean | 1d | 2026-10-14 | 2026-10-14 | ADMIN.5330, ADMIN.5331 |  | 33d |
|  | 20 | **Security Vestibule 0130/0131** |  | 2026-06-19 | 2026-10-15 |  |  |  |
| ADMIN.5333 |  | FOH/Security Vestibule 0130/0131 // Frame Walls | 3d | 2026-06-19 A | 2026-06-23 A | ADMIN.5319 SS | 100% |  |
| ADMIN.5335 |  | FOH/Security Vestibule 0130/0131 // Top Down Install of Sheetrock - Priority Walls | 2d | 2026-06-23 A | 2026-06-24 A | ADMIN.5333 | 100% |  |
| ADMIN.5334 |  | FOH/Security Vestibule 0130/0131 // MEPF Layout of Overhead Supports | 8d | 2026-07-02 A | 2026-07-14 A | ADMIN.5333 | 100% |  |
| ADMIN.5336 |  | FOH/Security Vestibule 0130/0131 // Install MEPF Overhead Supports | 2d | 2026-07-06 A | 2026-07-07 A | ADMIN.5334 SS+2d | 100% |  |
| ADMIN.5338 |  | FOH/Security Vestibule 0130/0131 // MEPF In-wall rough-in | 2d | 2026-08-03 A | 2026-08-04 A | ADMIN.5335 | 100% |  |
| ADMIN.5340 |  | FOH/Security Vestibule 0130/0131 // 1-Side & Finish Priority Walls | 2d | 2026-08-05 A | 2026-08-06 A | ADMIN.5335, ADMIN.5338 | 100% |  |
| ADMIN.5341 |  | FOH/Security Vestibule 0130/0131 // Tape and Finish Walls | 3d | 2026-08-06 A | 2026-08-10 A | ADMIN.5340 | 100% |  |
| ADMIN.5337 |  | FOH/Security Vestibule 0130/0131 // MEPF Overhead Install | 10d | 2026-08-07 A | 2026-09-04 A | ADMIN.5336 | 100% |  |
| ADMIN.5339 |  | FOH/Security Vestibule 0130/0131 // Install Fire Alarm and Security | 3d | 2026-08-21 A | 2026-09-10 A | ADMIN.5337 | 100% |  |
| ADMIN.5342 |  | FOH/Security Vestibule 0130/0131 // Final paint | 2d | 2026-09-30 | 2026-10-01 | ADMIN.6019 FF, ADMIN.5339, ADMIN.5341 |  | 35d |
| ADMIN.5488 |  | FOH/Security Vestibule 0130/0131 // Install Ceiling grid | 4d | 2026-09-30 | 2026-10-05 | ADMIN.5340 |  | 32d |
| ADMIN.6019 |  | FOH/Security Vestibule 0130/0131 // BMS & EPMS Rough In | 2d | 2026-09-30 | 2026-10-01 | ADMIN.5339 FF, ADMIN.5339 SS |  | 35d |
| ADMIN.5343 |  | FOH/Security Vestibule 0130/0131 // Install Flooring and Base | 3d | 2026-10-02 | 2026-10-06 | ADMIN.5342 |  | 35d |
| ADMIN.5489 |  | FOH/Security Vestibule 0130/0131 // Hang / drop Ceiling tiles | 2d | 2026-10-06 | 2026-10-07 | ADMIN.5488 |  | 32d |
| ADMIN.5490 |  | FOH/Security Vestibule 0130/0131 // Hang / drop Ceiling trims | 2d | 2026-10-08 | 2026-10-09 | ADMIN.5489 |  | 32d |
| ADMIN.5344 |  | FOH/Security Vestibule 0130/0131 // Install Trim-Out | 1d | 2026-10-13 | 2026-10-13 | ADMIN.5343, ADMIN.5490 |  | 32d |
| ADMIN.5345 |  | FOH/Security Vestibule 0130/0131 // Install Doors and Hardware | 1d | 2026-10-14 | 2026-10-14 | ADMIN.5344 |  | 32d |
| ADMIN.5346 |  | FOH/Security Vestibule 0130/0131 // Finish & Clean | 1d | 2026-10-15 | 2026-10-15 | ADMIN.5344, ADMIN.5345 |  | 32d |
|  | 21 | **Security Office 0155** |  | 2026-06-19 | 2026-10-14 |  |  |  |
| ADMIN.5347 |  | FOH/Security Office 0155 // Frame Walls | 3d | 2026-06-19 A | 2026-06-23 A | ADMIN.5333 SS | 100% |  |
| ADMIN.5349 |  | FOH/Security Office 0155 // Top Down Install of Sheetrock - Priority Walls | 2d | 2026-06-23 A | 2026-06-24 A | ADMIN.5347 | 100% |  |
| ADMIN.5348 |  | FOH/Security Office 0155 // MEPF Layout of Overhead Supports | 8d | 2026-06-29 A | 2026-07-09 A | ADMIN.5347 | 100% |  |
| ADMIN.5350 |  | FOH/Security Office 0155 // Install MEPF Overhead Supports | 2d | 2026-07-06 A | 2026-07-07 A | ADMIN.5348 SS+2d | 100% |  |
| ADMIN.5352 |  | FOH/Security Office 0155 // MEPF In-wall rough-in | 2d | 2026-07-16 A | 2026-07-17 A | ADMIN.5350 | 100% |  |
| ADMIN.5354 |  | FOH/Security Office 0155 // 1-Side & Finish Priority Walls | 2d | 2026-08-03 A | 2026-08-04 A | ADMIN.5349, ADMIN.5352 | 100% |  |
| ADMIN.5355 |  | FOH/Security Office 0155 // Tape and Finish Walls | 3d | 2026-08-05 A | 2026-08-07 A | ADMIN.5354 | 100% |  |
| ADMIN.5351 |  | FOH/Security Office 0155 // MEPF Overhead Install | 10d | 2026-08-18 A | 2026-08-31 A | ADMIN.5350 | 100% |  |
| ADMIN.5353 |  | FOH/Security Office 0155 // Install Fire Alarm and Security | 3d | 2026-08-21 A | 2026-09-08 A | ADMIN.5351 | 100% |  |
| ADMIN.5356 |  | FOH/Security Office 0155 // Final paint | 2d | 2026-09-30 | 2026-10-01 | ADMIN.6029 FF, ADMIN.5353, ADMIN.5355 |  | 35d |
| ADMIN.5491 |  | FOH/Security Office 0155 // Install Ceiling grid | 4d | 2026-09-30 | 2026-10-05 | ADMIN.5354 |  | 33d |
| ADMIN.6029 |  | FOH/Security Office 0155 // BMS & EPMS Rough In | 2d | 2026-09-30 | 2026-10-01 | ADMIN.5353 FF, ADMIN.5353 SS |  | 35d |
| ADMIN.5357 |  | FOH/Security Office 0155 // Install Flooring and Base | 3d | 2026-10-02 | 2026-10-06 | ADMIN.5356 |  | 35d |
| ADMIN.5492 |  | FOH/Security Office 0155 // Hang / drop Ceiling tiles | 2d | 2026-10-06 | 2026-10-07 | ADMIN.5491 |  | 33d |
| ADMIN.5493 |  | FOH/Security Office 0155 // Hang / drop Ceiling trims | 2d | 2026-10-08 | 2026-10-09 | ADMIN.5492 |  | 33d |
| ADMIN.5358 |  | FOH/Security Office 0155 // Install Trim-Out | 1d | 2026-10-09 | 2026-10-09 | ADMIN.5357, ADMIN.5493 FF |  | 33d |
| ADMIN.5359 |  | FOH/Security Office 0155 // Install Doors and Hardware | 1d | 2026-10-13 | 2026-10-13 | ADMIN.5358 |  | 33d |
| ADMIN.5360 |  | FOH/Security Office 0155 // Finish & Clean | 1d | 2026-10-14 | 2026-10-14 | ADMIN.5358, ADMIN.5359 |  | 33d |
|  | 22 | **Security Suite 0150** |  | 2026-06-19 | 2026-10-14 |  |  |  |
| ADMIN.5361 |  | FOH/Security Suite 0150 // Frame Walls | 3d | 2026-06-19 A | 2026-06-23 A | ADMIN.5347 SS | 100% |  |
| ADMIN.5363 |  | FOH/Security Suite 0150 // Top Down Install of Sheetrock - Priority Walls | 2d | 2026-06-23 A | 2026-06-24 A | ADMIN.5361 | 100% |  |
| ADMIN.5362 |  | FOH/Security Suite 0150 // MEPF Layout of Overhead Supports | 8d | 2026-06-26 A | 2026-07-08 A | ADMIN.5361 | 100% |  |
| ADMIN.5364 |  | FOH/Security Suite 0150 // Install MEPF Overhead Supports | 2d | 2026-07-02 A | 2026-07-06 A | ADMIN.5362 SS+2d | 100% |  |
| ADMIN.5366 |  | FOH/Security Suite 0150 // MEPF In-wall rough-in | 2d | 2026-07-09 A | 2026-07-10 A | ADMIN.5363 | 100% |  |
| ADMIN.5368 |  | FOH/Security Suite 0150 // 1-Side & Finish Priority Walls | 2d | 2026-07-13 A | 2026-07-14 A | ADMIN.5363, ADMIN.5366 | 100% |  |
| ADMIN.5369 |  | FOH/Security Suite 0150 // Tape and Finish Walls | 3d | 2026-08-03 A | 2026-08-05 A | ADMIN.5368 | 100% |  |
| ADMIN.5365 |  | FOH/Security Suite 0150 // MEPF Overhead Install | 10d | 2026-08-07 A | 2026-09-04 A | ADMIN.5364 | 100% |  |
| ADMIN.5367 |  | FOH/Security Suite 0150 // Install Fire Alarm and Security | 3d | 2026-08-21 A | 2026-09-10 A | ADMIN.5365 | 100% |  |
| ADMIN.5370 |  | FOH/Security Suite 0150 // Final paint | 2d | 2026-09-30 | 2026-10-01 | ADMIN.6039 FF, ADMIN.5367, ADMIN.5369 |  | 35d |
| ADMIN.5494 |  | FOH/Security Suite 0150 // Install Ceiling grid | 4d | 2026-09-30 | 2026-10-05 | ADMIN.5368 |  | 33d |
| ADMIN.6039 |  | FOH/Security Suite 0150 // BMS & EPMS Rough In | 2d | 2026-09-30 | 2026-10-01 | ADMIN.5367 FF, ADMIN.5367 SS |  | 35d |
| ADMIN.5371 |  | FOH/Security Suite 0150 // Install Flooring and Base | 3d | 2026-10-02 | 2026-10-06 | ADMIN.5370 |  | 35d |
| ADMIN.5495 |  | FOH/Security Suite 0150 // Hang / drop Ceiling tiles | 2d | 2026-10-06 | 2026-10-07 | ADMIN.5494 |  | 33d |
| ADMIN.5496 |  | FOH/Security Suite 0150 // Hang / drop Ceiling trims | 2d | 2026-10-08 | 2026-10-09 | ADMIN.5495 |  | 33d |
| ADMIN.5372 |  | FOH/Security Suite 0150 // Install Trim-Out | 1d | 2026-10-09 | 2026-10-09 | ADMIN.5371, ADMIN.5496 FF |  | 33d |
| ADMIN.5373 |  | FOH/Security Suite 0150 // Install Doors and Hardware | 1d | 2026-10-13 | 2026-10-13 | ADMIN.5372 |  | 33d |
| ADMIN.5374 |  | FOH/Security Suite 0150 // Finish & Clean | 1d | 2026-10-14 | 2026-10-14 | ADMIN.5372, ADMIN.5373 |  | 33d |
|  | 24 | **Security Storage 0151** |  | 2026-06-18 | 2026-10-09 |  |  |  |
| ADMIN.5390 |  | FOH/Security Storage 0151 // MEPF Layout of Overhead Supports | 3d | 2026-06-18 A | 2026-06-22 A | ADMIN.5389 | 100% |  |
| ADMIN.5389 |  | FOH/Security Storage 0151 // Frame Walls | 3d | 2026-06-19 A | 2026-06-23 A | ADMIN.5375 SS | 100% |  |
| ADMIN.5392 |  | FOH/Security Storage 0151 // Install MEPF Overhead Supports | 2d | 2026-06-19 A | 2026-07-23 A | ADMIN.5390 SS+2d | 100% |  |
| ADMIN.5391 |  | FOH/Security Storage 0151 // Top Down Install of Sheetrock - Priority Walls | 2d | 2026-07-02 A | 2026-07-06 A | ADMIN.5390 | 100% |  |
| ADMIN.5394 |  | FOH/Security Storage 0151 // MEPF In-wall rough-in | 2d | 2026-07-07 A | 2026-07-08 A | ADMIN.5391 | 100% |  |

| ID | WBS | Task | Duration | Start | Finish | Predecessors | Complete | Total float |
| --- | --- | --- | --- | --- | --- | --- | --- | --- |
| ADMIN.5396 |  | FOH/Security Storage 0151 // 1-Side & Finish Priority Walls | 2d | 2026-07-24 A | 2026-07-27 A | ADMIN.5391, ADMIN.5394 | 100% |  |
| ADMIN.5393 |  | FOH/Security Storage 0151 // MEPF Overhead Install | 10d | 2026-07-24 A | 2026-09-04 A | ADMIN.5392 SS+5d | 100% |  |
| ADMIN.5397 |  | FOH/Security Storage 0151 // Tape and Finish Walls | 3d | 2026-08-03 A | 2026-08-05 A | ADMIN.5396 | 100% |  |
| ADMIN.5395 |  | FOH/Security Storage 0151 // Install Fire Alarm and Security | 3d | 2026-08-07 A | 2026-09-10 A | ADMIN.5393 | 100% |  |
| ADMIN.5398 |  | FOH/Security Storage 0151 // Final paint | 2d | 2026-09-30 | 2026-10-01 | ADMIN.6049 FF, ADMIN.5395, ADMIN.5397 |  | 35d |
| ADMIN.6049 |  | FOH/Security Storage 0151 // BMS & EPMS Rough In | 2d | 2026-09-30 | 2026-10-01 | ADMIN.5395 FF, ADMIN.5395 SS |  | 35d |
| ADMIN.5399 |  | FOH/Security Storage 0151 // Install Flooring and Base | 3d | 2026-10-02 | 2026-10-06 | ADMIN.5398 |  | 35d |
| ADMIN.5400 |  | FOH/Security Storage 0151 // Install Trim-Out | 1d | 2026-10-07 | 2026-10-07 | ADMIN.5399 |  | 35d |
| ADMIN.5401 |  | FOH/Security Storage 0151 // Install Doors and Hardware | 1d | 2026-10-08 | 2026-10-08 | ADMIN.5400 |  | 35d |
| ADMIN.5402 |  | FOH/Security Storage 0151 // Finish & Clean | 1d | 2026-10-09 | 2026-10-09 | ADMIN.5400, ADMIN.5401 |  | 35d |
|  | 25 | **RR Dock 0163** |  | 2026-06-10 | 2026-10-09 |  |  |  |
| ADMIN.5404 |  | FOH/RR Dock 0163 // MEPF Layout of Overhead Supports | 10d | 2026-06-10 A | 2026-06-23 A | ADMIN.5403 | 100% |  |
| ADMIN.5406 |  | FOH/RR Dock 0163 // Install MEPF Overhead Supports | 2d | 2026-06-11 A | 2026-06-23 A | ADMIN.5404 SS+2d | 100% |  |
| ADMIN.5403 |  | FOH/RR Dock 0163 // Frame Walls | 3d | 2026-06-19 A | 2026-06-23 A | ADMIN.5389 SS | 100% |  |
| ADMIN.5405 |  | FOH/RR Dock 0163 // Top Down Install of Sheetrock - Priority Walls | 2d | 2026-07-06 A | 2026-07-07 A | ADMIN.5404 | 100% |  |
| ADMIN.5408 |  | FOH/RR Dock 0163 // MEPF In-wall rough-in | 2d | 2026-07-09 A | 2026-07-10 A | ADMIN.5405, ADMIN.5403 | 100% |  |
| ADMIN.5407 |  | FOH/RR Dock 0163 // MEPF Overhead Install | 10d | 2026-07-24 A | 2026-09-14 A | ADMIN.5406 | 100% |  |
| ADMIN.5409 |  | FOH/RR Dock 0163 // Install Fire Alarm and Security | 3d | 2026-08-07 A | 2026-09-17 A | ADMIN.5407 | 100% |  |
| ADMIN.5410 |  | FOH/RR Dock 0163 // 1-Side & Finish Priority Walls | 2d | 2026-08-11 A | 2026-09-25 A | ADMIN.5405, ADMIN.5407, ADMIN.5408 | 100% |  |
| ADMIN.5411 |  | FOH/RR Dock 0163 // Tape and Finish Walls | 3d | 2026-08-13 A | 2026-09-29 A | ADMIN.5410 | 100% |  |
| ADMIN.5412 |  | FOH/RR Dock 0163 // Final paint | 2d | 2026-09-30 | 2026-10-01 | ADMIN.6059 FF, ADMIN.5409, ADMIN.5411 |  | 35d |
| ADMIN.6059 |  | FOH/RR Dock 0163 // BMS & EPMS Rough In | 2d | 2026-09-30 | 2026-10-01 | ADMIN.5409 FF, ADMIN.5409 SS |  | 35d |
| ADMIN.5413 |  | FOH/RR Dock 0163 // Install Flooring and Base | 3d | 2026-10-02 | 2026-10-06 | ADMIN.5412 |  | 35d |
| ADMIN.5414 |  | FOH/RR Dock 0163 // Install Trim-Out | 1d | 2026-10-07 | 2026-10-07 | ADMIN.5413 |  | 35d |
| ADMIN.5415 |  | FOH/RR Dock 0163 // Install Doors and Hardware | 1d | 2026-10-08 | 2026-10-08 | ADMIN.5414 |  | 35d |
| ADMIN.5416 |  | FOH/RR Dock 0163 // Finish & Clean | 1d | 2026-10-09 | 2026-10-09 | ADMIN.5414, ADMIN.5415 |  | 35d |
|  | 26 | **Dock Storage 0162** |  | 2026-06-18 | 2026-10-08 |  |  |  |
| ADMIN.5418 |  | FOH/Dock Storage 0162 // MEPF Layout of Overhead Supports | 3d | 2026-06-18 A | 2026-06-22 A | ADMIN.5417 | 100% |  |
| ADMIN.5417 |  | FOH/Dock Storage 0162 // Frame Walls | 3d | 2026-06-19 A | 2026-06-23 A | ADMIN.5403 SS | 100% |  |
| ADMIN.5420 |  | FOH/Dock Storage 0162 // Install MEPF Overhead Supports | 2d | 2026-06-19 A | 2026-07-23 A | ADMIN.5418 SS | 100% |  |
| ADMIN.5422 |  | FOH/Dock Storage 0162 // MEPF In-wall rough-in | 2d | 2026-06-24 A | 2026-07-02 A | ADMIN.5420 | 100% |  |
| ADMIN.5423 |  | FOH/Dock Storage 0162 // Install Fire Alarm and Security | 3d | 2026-06-24 A | 2026-09-02 A | ADMIN.5420 | 100% |  |
| ADMIN.5419 |  | FOH/Dock Storage 0162 // Top Down Install of Sheetrock - Priority Walls | 2d | 2026-07-06 A | 2026-07-07 A | ADMIN.5418 | 100% |  |
| ADMIN.5424 |  | FOH/Dock Storage 0162 // 1-Side & Finish Priority Walls | 2d | 2026-07-16 A | 2026-07-17 A | ADMIN.5419, ADMIN.5422 | 100% |  |
| ADMIN.5421 |  | FOH/Dock Storage 0162 // MEPF Overhead Install | 10d | 2026-07-24 A | 2026-09-29 A | ADMIN.5420 | 100% |  |
| ADMIN.5425 |  | FOH/Dock Storage 0162 // Tape and Finish Walls | 3d | 2026-08-04 A | 2026-08-06 A | ADMIN.5424 | 100% |  |
| ADMIN.5428 |  | FOH/Dock Storage 0162 // Install Trim-Out | 1d | 2026-08-25 A | 2026-09-08 A | ADMIN.5423 | 100% |  |
| ADMIN.5426 |  | FOH/Dock Storage 0162 // Final paint | 2d | 2026-09-30 | 2026-10-01 | ADMIN.6069 FF, ADMIN.5423, ADMIN.5425 |  | 36d |
| ADMIN.6069 |  | FOH/Dock Storage 0162 // BMS & EPMS Rough In | 2d | 2026-09-30 | 2026-10-01 | ADMIN.5423 FF, ADMIN.5423 |  | 36d |
| ADMIN.5427 |  | FOH/Dock Storage 0162 // Install Flooring and Base | 3d | 2026-10-02 | 2026-10-06 | ADMIN.5426 |  | 36d |
| ADMIN.5429 |  | FOH/Dock Storage 0162 // Install Doors and Hardware | 1d | 2026-10-07 | 2026-10-07 | ADMIN.5427, ADMIN.5428 |  | 36d |
| ADMIN.5430 |  | FOH/Dock Storage 0162 // Finish & Clean | 1d | 2026-10-08 | 2026-10-08 | ADMIN.5428, ADMIN.5429, ADMIN.5421 |  | 36d |
|  | 27 | **Loading Dock 0160** |  | 2026-06-24 | 2026-11-30 |  |  |  |
| DH1300.LD.2012 |  | FOH / Loading Dock #0160 // Overhead Fire Protection | 5d | 2026-06-24 A | 2026-06-30 A | ADMIN.5222 | 100% |  |
| DH1300.LD.2013 |  | FOH / Loading Dock #0160 // Overhead Mechanical Piping | 5d | 2026-06-30 A | 2026-07-07 A | DH1300.LD.2012 | 100% |  |
| DH1300.LD.2014 |  | FOH / Loading Dock #0160 // OH Electrical Rough | 5d | 2026-07-07 A | 2026-07-13 A | DH1300.LD.2013 | 100% |  |
| DH1300.LD.2015 |  | FOH / Loading Dock #0160 // Overhead Mechanical Duct | 5d | 2026-07-08 A | 2026-07-14 A | DH1300.LD.2013 | 100% |  |
| DH1300.LD.2017 |  | FOH / Loading Dock #0160 // Top of Wall Fire Stop | 2d | 2026-07-13 A | 2026-07-14 A | DH1300.LD.2014 | 100% |  |
| DH1300.LD.2018 |  | FOH / Loading Dock #0160 // Install Dock Levelers | 2d | 2026-07-15 A | 2026-07-16 A | DH1300.LD.2015 | 100% |  |
| DH1300.LD.2016 |  | FOH / Loading Dock #0160 // In-Wall Electrical Rough | 5d | 2026-07-17 A | 2026-07-23 A | DH1300.LD.2014 | 100% |  |
| DH1300.LD.2019 |  | FOH / Loading Dock #0160 // In-Wall Inspection | 1d | 2026-07-28 A | 2026-07-28 A | DH1300.LD.2016, DH1300.LD.2018 | 100% |  |
| DH1300.LD.2020 |  | FOH / Loading Dock #0160 // Hang, Tape, & Finish Drywall | 10d | 2026-09-30 | 2026-10-14 | DH1300.LD.2019 |  | 2d |
| DH1300.LD.2021 |  | FOH / Loading Dock #0160 // Paint Walls | 5d | 2026-10-15 | 2026-10-21 | DH1300.LD.2020 |  | 2d |
| DH1300.LD.2022 |  | FOH / Loading Dock #0160 // Install Fire Alarm | 5d | 2026-10-22 | 2026-10-28 | DH1300.LD.2021, DH1300.LD.2015, DH1300.LD.2017 |  | 2d |
| DH1300.LD.2023 |  | FOH / Loading Dock #0160 // Pull, Test, & Terminate | 6d | 2026-10-22 | 2026-10-29 | DH1300.LD.2021 |  | 7d |
| DH1300.LD.2024 |  | FOH / Loading Dock #0160 // Install Overhead Door - 0160.2 | 3d | 2026-10-29 | 2026-11-02 | DH1300.LD.2018, DH1300.LD.2022 |  | 2d |
| DH1300.LD.2027 |  | FOH / Loading Dock #0160 // Install Overhead Lighting Fixtures | 5d | 2026-10-30 | 2026-11-05 | DH1300.LD.2023 |  | 7d |
| DH1300.LD.2025 |  | FOH / Loading Dock #0160 // Install Overhead Door - 0160.3 | 3d | 2026-11-03 | 2026-11-05 | DH1300.LD.2024 |  | 2d |
| DH1300.LD.2026 |  | FOH / Loading Dock #0160 // Loading Dock Operational | 0d | 2026-11-05 | 2026-11-05 | DH1300.LD.2025 |  | 2d |
| DH1300.LD.2028 |  | FOH / Loading Dock #0160 // Install Fire Sprinkler Heads | 5d | 2026-11-06 | 2026-11-13 | DH1300.LD.2022, DH1300.LD.2026 |  | 2d |
| DH1300.LD.2029 |  | FOH / Loading Dock #0160// Electrical Trim | 5d | 2026-11-16 | 2026-11-20 | DH1300.LD.2021, DH1300.LD.2027, DH1300.LD.2028, DH1300.LD.2025 |  | 2d |
| DH1300.LD.2030 |  | FOH / Loading Dock #0160 // Clean and Punch | 5d | 2026-11-23 | 2026-11-30 | DH1300.LD.2029 |  | 2d |
|  | 28 | **Trash 0161** |  | 2026-06-18 | 2026-10-09 |  |  |  |
| ADMIN.5446 |  | FOH/Trash 0161 // MEPF Layout of Overhead Supports | 3d | 2026-06-18 A | 2026-06-22 A | ADMIN.5445 | 100% |  |
| ADMIN.5445 |  | FOH/Trash 0161 // Frame Walls | 3d | 2026-06-19 A | 2026-06-23 A | ADMIN.5417 SS | 100% |  |
| ADMIN.5448 |  | FOH/Trash 0161 // Install MEPF Overhead Supports | 2d | 2026-06-19 A | 2026-06-23 A | ADMIN.5446 SS+2d | 100% |  |
| ADMIN.5447 |  | FOH/Trash 0161 // Top Down Install of Sheetrock - Priority Walls | 2d | 2026-07-06 A | 2026-07-07 A | ADMIN.5446 | 100% |  |
| ADMIN.5449 |  | FOH/Trash 0161 // MEPF Overhead Install | 8d | 2026-07-14 A | 2026-07-23 A | ADMIN.5448 SS+5d | 100% |  |
| ADMIN.5450 |  | FOH/Trash 0161 // MEPF In-wall rough-in | 2d | 2026-07-24 A | 2026-07-27 A | ADMIN.5449 | 100% |  |
| ADMIN.5452 |  | FOH/Trash 0161 // 1-Side & Finish Priority Walls | 2d | 2026-08-03 A | 2026-08-04 A | ADMIN.5447, ADMIN.5449, ADMIN.5450 | 100% |  |

| ID | WBS | Task | Duration | Start | Finish | Predecessors | Complete | Total float |
| --- | --- | --- | --- | --- | --- | --- | --- | --- |
| ADMIN.5453 |  | FOH/Trash 0161 // Tape and Finish Walls | 3d | 2026-08-05 A | 2026-08-07 A | ADMIN.5452 | 100% |  |
| ADMIN.5451 |  | FOH/Trash 0161 // Install Fire Alarm and Security | 3d | 2026-08-05 A | 2026-09-28 A | ADMIN.5449 | 100% |  |
| ADMIN.5454 |  | FOH/Trash 0161 // Final paint | 2d | 2026-09-30 | 2026-10-01 | ADMIN.6079 FF, ADMIN.5451, ADMIN.5453 |  | 5d |
| ADMIN.6079 |  | FOH/Trash 0161 // BMS & EPMS Rough In | 2d | 2026-09-30 | 2026-10-01 | ADMIN.5451 FF, ADMIN.5451 SS |  | 5d |
| ADMIN.5455 |  | FOH/Trash 0161 // Install Flooring and Base | 3d | 2026-10-02 | 2026-10-06 | ADMIN.5454 |  | 5d |
| ADMIN.5456 |  | FOH/Trash 0161 // Install Trim-Out | 1d | 2026-10-07 | 2026-10-07 | ADMIN.5455 |  | 5d |
| ADMIN.5457 |  | FOH/Trash 0161 // Install Doors and Hardware | 1d | 2026-10-08 | 2026-10-08 | ADMIN.5456 |  | 5d |
| ADMIN.5458 |  | FOH/Trash 0161 // Finish & Clean | 1d | 2026-10-09 | 2026-10-09 | ADMIN.5456, ADMIN.5457 |  | 5d |
|  | 1 | **Equipment** |  | 2026-07-13 | 2026-11-12 |  |  |  |
|  | 2 | **Roof - RTUs** |  | 2026-07-13 | 2026-11-12 |  |  |  |
|  | 1 | **Column Lines 01 thru 1.1** |  | 2026-07-13 | 2026-11-12 |  |  |  |
| DH1100.7840 |  | FOH/Roof - RTUs // Install RTU-RT Units - RTU-RT- 01 | 1d | 2026-07-13 A | 2026-07-13 A | STRUCTURE.7550, STRUCTURE.1690 | 100% |  |
| DH1100.7860 |  | FOH/Roof - RTUs // Install Mechanical Piping | 15d | 2026-09-30 | 2026-10-21 | DH1100.7840 SS, STRUCTURE.1690, DH1100.7840 |  | -7d |
| DH1200.7790 |  | FOH/Roof - RTUs // Install Electrical Conduit and Controls Piping | 15d | 2026-10-07 | 2026-10-28 | FOH.MS-3, DH1100.7840 SS, STRUCTURE.1690, DH1100.7860 FF+5d |  | 23d |
| DH1100.7870 |  | FOH/Roof - RTUs // Install heat trace system | 15d | 2026-10-22 | 2026-11-12 | DH1100.7860 |  | -7d |
|  | 1 | **Gen - XFMRs etc** |  | 2026-07-24 | 2026-10-02 |  |  |  |
| DH1100.12096 |  | FOH/Gen - XFMRs etc // Set House Generator - GEN-HSE-FOH | 6d | 2026-07-24 A | 2026-08-07 A | FDN.1296, STRUCTURE.7450 | 100% |  |
| DH1100.12110 |  | FOH/Gen - XFMRs etc // Set House XFMR - XFMR-HSE-FOH | 1d | 2026-07-27 A | 2026-08-07 A | DH1100.12096 FF | 100% |  |
| DH1100.12111 |  | FOH/Gen - XFMRs etc // Set House XFMR - XFMR-HSE-1Da | 1d | 2026-07-28 A | 2026-08-28 A | DH1100.12110 FF | 100% |  |
| DH1100.12098 |  | FOH/Gen - XFMRs etc // Set House Static Transfer Switch - STS-HSE-1A1 | 1d | 2026-09-30 | 2026-09-30 | DH1100.12096, DH1100.12110, DH1100.12111, ADMIN.5759 SS, ADMIN.5759 |  | 10d |
| DH1100.12104 |  | FOH/Gen - XFMRs etc // Set House UPS - UPS-HSE-1A1 | 1d | 2026-09-30 | 2026-09-30 | DH1100.12111, ADMIN.5759 SS |  | 10d |
| DH1100.12099 |  | FOH/Gen - XFMRs etc // Set House Static Transfer Switch - STS-HSE-1A2 | 1d | 2026-10-01 | 2026-10-01 | DH1100.12098 |  | 10d |
| DH1100.12105 |  | FOH/Gen - XFMRs etc // Set House UPS - UPS-HSE-1A2 | 1d | 2026-10-01 | 2026-10-01 | DH1100.12104 |  | 10d |
| DH1100.12100 |  | FOH/Gen - XFMRs etc // Set House Static Transfer Switch - STS-HSE-1C | 1d | 2026-10-02 | 2026-10-02 | DH1100.12099 |  | 10d |
| DH1100.12106 |  | FOH/Gen - XFMRs etc // Set House UPS - UPS-HSE-1C | 1d | 2026-10-02 | 2026-10-02 | DH1100.12105 |  | 10d |
|  | 2 | **Commissioning & Start Up** |  | 2026-10-13 | 2026-12-11 |  |  |  |
| HSE-SYS-STU-1 |  | FOH/Commissioning & Start Up // L3 Start-Up | 10d | 2026-10-13 | 2026-10-26 | ADMIN.5458, DH1100.12100, DH1100.12106 |  | 5d |
| HSE-SYS-STU-2 |  | FOH/Commissioning & Start Up // L4 Cx | 15d | 2026-11-13 | 2026-12-04 | HSE-SYS-STU-1, DH1100.7870 |  | -7d |
| HSE-SYS-STU-16 |  | FOH/Commissioning & Start Up // FOH Clean & Punch | 0d | 2026-11-30 | 2026-11-30 | ADMIN.5122 FF, ADMIN.5150 FF, ADMIN.5164 FF, ADMIN.5178 FF, ADMIN.5206 FF, ADMIN.5220 FF, ADMIN.5472 FF, ADMIN.4818 FF, ADMIN.5192 FF, ADMIN.5234 FF, ADMIN.5248 FF, ADMIN.5262 FF, ADMIN.5276 FF, ADMIN.5290 FF, ADMIN.5304 FF, ADMIN.5318 FF, ADMIN.5332 FF, ADMIN.5346 FF, ADMIN.5360 FF, ADMIN.5374 FF, ADMIN.5388 FF, ADMIN.5402 FF, ADMIN.5416 FF, ADMIN.5430 FF, ADMIN.5458 FF, DH1300.LD.2030 FF, ADMIN.5091 FF, ADMIN.5149, ADMIN.5387, ADMIN.5177 |  | 2d |
| HSE-SYS-STU-3 |  | FOH/Commissioning & Start Up // L5 Cx (Completes Jan 01 2027) | 5d | 2026-12-07 | 2026-12-11 | HSE-SYS-STU-2 |  | -7d |
|  | 1 | **Back of House (BOH)** |  | 2026-07-24 | 2026-12-18 |  |  |  |
|  | 16 | **Priority Walls** |  | 2026-07-24 | 2026-11-02 |  |  |  |
|  | 1 | **Priority Rooms** |  | 2026-07-24 | 2026-11-02 |  |  |  |
|  | 15 | **House Elec 1000G15** |  | 2026-07-24 | 2026-11-02 |  |  |  |
| ADMIN.5506 |  | BOH/House Elec 1000G15 // Frame Priority Walls | 3d | 2026-07-24 A | 2026-08-05 A | STRUCTURE.7540, SOG.1478 | 100% |  |
| ADMIN.5509 |  | BOH/House Elec 1000G15 // Install MEPF Overhead Supports | 2d | 2026-07-31 A | 2026-09-17 A | ADMIN.5507 SS+2d | 100% |  |
| ADMIN.5507 |  | BOH/House Elec 1000G15 // MEPF Layout of Overhead Supports | 8d | 2026-08-04 A | 2026-08-13 A | ADMIN.5506 | 100% |  |
| ADMIN.5511 |  | BOH/House Elec 1000G15 // MEPF In-wall rough-in | 2d | 2026-08-05 A | 2026-09-24 A | ADMIN.5506 | 100% |  |
| ADMIN.5508 |  | BOH/House Elec 1000G15 // Top Down Install of Sheetrock - Priority Walls | 2d | 2026-08-10 A | 2026-09-18 A | ADMIN.5507 | 100% |  |
| ADMIN.5510 |  | BOH/House Elec 1000G15 // MEPF Overhead Install | 10d | 2026-09-25 A | 2026-10-14 | ADMIN.5509 FS+5d |  | 20d |
| ADMIN.5512 |  | BOH/House Elec 1000G15 // Install Fire Alarm and Security | 3d | 2026-10-15 | 2026-10-19 | ADMIN.5510 |  | 22d |
| ADMIN.5513 |  | BOH/House Elec 1000G15 // 1-Side & Finish Priority Walls | 2d | 2026-10-15 | 2026-10-16 | ADMIN.5508, ADMIN.5510, ADMIN.5511 |  | 20d |
| ADMIN.6089 |  | BOH/House Elec 1000G15 // BMS & EPMS Rough In | 2d | 2026-10-16 | 2026-10-19 | ADMIN.5512 FF, ADMIN.5512 SS |  | 24d |
| ADMIN.5514 |  | BOH/House Elec 1000G15 // Tape and Finish Walls | 3d | 2026-10-19 | 2026-10-21 | ADMIN.5513 |  | 20d |
| ADMIN.5515 |  | BOH/House Elec 1000G15 // Final paint | 2d | 2026-10-22 | 2026-10-23 | ADMIN.6089 FF, ADMIN.5512, ADMIN.5514 |  | 20d |
| ADMIN.5516 |  | BOH/House Elec 1000G15 // Install Flooring and Base | 3d | 2026-10-26 | 2026-10-28 | ADMIN.5515 |  | 20d |
| ADMIN.5773 |  | BOH/House Elec 1000G15 // BOH - Room Ready to Receive Equipment | 0d | 2026-10-26 | 2026-10-26 | ADMIN.5515 |  | 24d |
| ADMIN.5517 |  | BOH/House Elec 1000G15 // Install Trim-Out | 1d | 2026-10-29 | 2026-10-29 | ADMIN.5516 |  | 20d |
| ADMIN.5518 |  | BOH/House Elec 1000G15 // Install Doors and Hardware | 1d | 2026-10-30 | 2026-10-30 | ADMIN.5517, ADMIN.5773 SS |  | 20d |
| ADMIN.5519 |  | BOH/House Elec 1000G15 // Finish & Clean | 1d | 2026-11-02 | 2026-11-02 | ADMIN.5517, ADMIN.5518 |  | 20d |
|  | 10 | **UPS 1000G14** |  | 2026-07-29 | 2026-11-02 |  |  |  |
| ADMIN.5520 |  | BOH/UPS 1000G14 // Frame Priority Walls | 3d | 2026-07-29 A | 2026-08-10 A | ADMIN.5506 | 100% |  |
| ADMIN.5521 |  | BOH/UPS 1000G14 // MEPF Layout of Overhead Supports | 8d | 2026-08-03 A | 2026-09-18 A | ADMIN.5520 | 100% |  |
| ADMIN.5523 |  | BOH/UPS 1000G14 // Install MEPF Overhead Supports | 2d | 2026-08-05 A | 2026-09-25 A | ADMIN.5521 SS+2d | 100% |  |
| ADMIN.5525 |  | BOH/UPS 1000G14 // MEPF In-wall rough-in | 2d | 2026-08-10 A | 2026-09-24 A | ADMIN.5520 | 100% |  |
| ADMIN.5522 |  | BOH/UPS 1000G14 // Top Down Install of Sheetrock - Priority Walls | 2d | 2026-08-13 A | 2026-09-25 A | ADMIN.5521 | 100% |  |
| ADMIN.5524 |  | BOH/UPS 1000G14 // MEPF Overhead Install | 10d | 2026-09-24 A | 2026-10-14 | ADMIN.5523 SS+5d |  | 20d |
| ADMIN.5526 |  | BOH/UPS 1000G14 // Install Fire Alarm and Security | 3d | 2026-10-15 | 2026-10-19 | ADMIN.5524 |  | 22d |
| ADMIN.5527 |  | BOH/UPS 1000G14 // 1-Side & Finish Priority Walls | 2d | 2026-10-15 | 2026-10-16 | ADMIN.5522, ADMIN.5524, ADMIN.5525 |  | 20d |
| ADMIN.6099 |  | BOH/UPS 1000G14 // BMS & EPMS Rough In | 2d | 2026-10-16 | 2026-10-19 | ADMIN.5526 FF, ADMIN.5526 SS |  | 24d |
| ADMIN.5528 |  | BOH/UPS 1000G14 // Tape and Finish Walls | 3d | 2026-10-19 | 2026-10-21 | ADMIN.5527 |  | 20d |
| ADMIN.5529 |  | BOH/UPS 1000G14 // Final paint | 2d | 2026-10-22 | 2026-10-23 | ADMIN.6099 FF, ADMIN.5526, ADMIN.5528 |  | 20d |
| ADMIN.5530 |  | BOH/UPS 1000G14 // Install Flooring and Base | 3d | 2026-10-26 | 2026-10-28 | ADMIN.5529 |  | 20d |
| ADMIN.5774 |  | BOH/UPS 1000G14 // BOH - Room Ready to Receive Equipment | 0d | 2026-10-26 | 2026-10-26 | ADMIN.5529 |  | 24d |
| ADMIN.5531 |  | BOH/UPS 1000G14 // Install Trim-Out | 1d | 2026-10-29 | 2026-10-29 | ADMIN.5530 |  | 20d |
| ADMIN.5532 |  | BOH/UPS 1000G14 // Install Doors and Hardware | 1d | 2026-10-30 | 2026-10-30 | ADMIN.5531, ADMIN.5774 SS |  | 20d |
| ADMIN.5533 |  | BOH/UPS 1000G14 // Finish & Clean | 1d | 2026-11-02 | 2026-11-02 | ADMIN.5531, ADMIN.5532 |  | 20d |
|  | 9 | **Fire 1000G12** |  | 2026-08-03 | 2026-11-02 |  |  |  |
| ADMIN.5534 |  | BOH/Fire 1000G12 // Frame Priority Walls | 3d | 2026-08-03 A | 2026-08-12 A | ADMIN.5520 | 100% |  |
| ADMIN.5535 |  | BOH/Fire 1000G12 // MEPF Layout of Overhead Supports | 8d | 2026-08-06 A | 2026-09-16 A | ADMIN.5534 | 100% |  |

| ID | WBS | Task | Duration | Start | Finish | Predecessors | Complete | Total float |
| --- | --- | --- | --- | --- | --- | --- | --- | --- |
| ADMIN.5537 |  | BOH/Fire 1000G12 // Install MEPF Overhead Supports | 2d | 2026-08-10 A | 2026-09-18 A | ADMIN.5535 SS+2d | 100% |  |
| ADMIN.5539 |  | BOH/Fire 1000G12 // MEPF In-wall rough-in | 2d | 2026-08-12 A | 2026-09-25 A | ADMIN.5534 | 100% |  |
| ADMIN.5536 |  | BOH/Fire 1000G12 // Top Down Install of Sheetrock - Priority Walls | 2d | 2026-08-18 A | 2026-09-18 A | ADMIN.5535 | 100% |  |
| ADMIN.5538 |  | BOH/Fire 1000G12 // MEPF Overhead Install | 10d | 2026-09-24 A | 2026-10-14 | ADMIN.5537 SS+5d |  | 20d |
| ADMIN.5540 |  | BOH/Fire 1000G12 // Install Fire Alarm and Security | 3d | 2026-10-15 | 2026-10-19 | ADMIN.5538 |  | 22d |
| ADMIN.5541 |  | BOH/Fire 1000G12 // 1-Side & Finish Priority Walls | 2d | 2026-10-15 | 2026-10-16 | ADMIN.5536, ADMIN.5538, ADMIN.5539 |  | 20d |
| ADMIN.6109 |  | BOH/Fire 1000G12 // BMS & EPMS Rough In | 2d | 2026-10-16 | 2026-10-19 | ADMIN.5540 FF, ADMIN.5540 SS |  | 24d |
| ADMIN.5542 |  | BOH/Fire 1000G12 // Tape and Finish Walls | 3d | 2026-10-19 | 2026-10-21 | ADMIN.5541 |  | 20d |
| ADMIN.5543 |  | BOH/Fire 1000G12 // Final paint | 2d | 2026-10-22 | 2026-10-23 | ADMIN.6109 FF, ADMIN.5540, ADMIN.5542 |  | 20d |
| ADMIN.5544 |  | BOH/Fire 1000G12 // Install Flooring and Base | 3d | 2026-10-26 | 2026-10-28 | ADMIN.5543 |  | 20d |
| ADMIN.5775 |  | BOH/Fire 1000G12 // BOH - Room Ready to Receive Equipment | 0d | 2026-10-26 | 2026-10-26 | ADMIN.5543 |  | 24d |
| ADMIN.5545 |  | BOH/Fire 1000G12 // Install Trim-Out | 1d | 2026-10-29 | 2026-10-29 | ADMIN.5544 |  | 20d |
| ADMIN.5546 |  | BOH/Fire 1000G12 // Install Doors and Hardware | 1d | 2026-10-30 | 2026-10-30 | ADMIN.5545, ADMIN.5775 SS |  | 20d |
| ADMIN.5547 |  | BOH/Fire 1000G12 // Finish & Clean | 1d | 2026-11-02 | 2026-11-02 | ADMIN.5545, ADMIN.5546 |  | 20d |
|  | 3 | **MMR1B2** |  | 2026-08-06 | 2026-10-28 |  |  |  |
| ADMIN.5548 |  | BOH/MMR1B2 // Frame Priority Walls | 3d | 2026-08-06 A | 2026-08-14 A | ADMIN.5534 | 100% |  |
| ADMIN.5549 |  | BOH/MMR1B2 // MEPF Layout of Overhead Supports | 8d | 2026-08-11 A | 2026-09-15 A | ADMIN.5548 | 100% |  |
| ADMIN.5551 |  | BOH/MMR1B2 // Install MEPF Overhead Supports | 2d | 2026-08-13 A | 2026-09-18 A | ADMIN.5549 SS+2d | 100% |  |
| ADMIN.5553 |  | BOH/MMR1B2 // MEPF In-wall rough-in | 2d | 2026-08-14 A | 2026-09-18 A | ADMIN.5548 | 100% |  |
| ADMIN.5550 |  | BOH/MMR1B2 // Top Down Install of Sheetrock - Priority Walls | 2d | 2026-08-21 A | 2026-09-18 A | ADMIN.5549 | 100% |  |
| ADMIN.5552 |  | BOH/MMR1B2 // MEPF Overhead Install | 10d | 2026-09-21 A | 2026-10-08 | ADMIN.5551 | 30% | 23d |
| ADMIN.5554 |  | BOH/MMR1B2 // Install Fire Alarm and Security | 3d | 2026-10-09 | 2026-10-14 | ADMIN.5552 |  | 25d |
| ADMIN.5555 |  | BOH/MMR1B2 // 1-Side & Finish Priority Walls | 2d | 2026-10-09 | 2026-10-13 | ADMIN.5550, ADMIN.5552, ADMIN.5553 |  | 23d |
| ADMIN.6119 |  | BOH/MMR1B2 // BMS & EPMS Rough In | 2d | 2026-10-13 | 2026-10-14 | ADMIN.5554 FF, ADMIN.5554 SS |  | 27d |
| ADMIN.5556 |  | BOH/MMR1B2 // Tape and Finish Walls | 3d | 2026-10-14 | 2026-10-16 | ADMIN.5555 |  | 23d |
| ADMIN.5557 |  | BOH/MMR1B2 // Final paint | 2d | 2026-10-19 | 2026-10-20 | ADMIN.6119 FF, ADMIN.5554, ADMIN.5556 |  | 23d |
| ADMIN.5558 |  | BOH/MMR1B2 // Install Flooring and Base | 3d | 2026-10-21 | 2026-10-23 | ADMIN.5557 |  | 23d |
| ADMIN.5776 |  | BOH/MMR1B2 // BOH - Room Ready to Receive Equipment | 0d | 2026-10-21 | 2026-10-21 | ADMIN.5557 |  | 27d |
| ADMIN.5559 |  | BOH/MMR1B2 // Install Trim-Out | 1d | 2026-10-26 | 2026-10-26 | ADMIN.5558 |  | 23d |
| ADMIN.5560 |  | BOH/MMR1B2 // Install Doors and Hardware | 1d | 2026-10-27 | 2026-10-27 | ADMIN.5559, ADMIN.5776 SS |  | 23d |
| ADMIN.5561 |  | BOH/MMR1B2 // Finish & Clean | 1d | 2026-10-28 | 2026-10-28 | ADMIN.5559, ADMIN.5560 |  | 23d |
|  | 5 | **IDF 1000G7** |  | 2026-08-11 | 2026-10-29 |  |  |  |
| ADMIN.5562 |  | BOH/IDF 1000G7 // Frame Priority Walls | 3d | 2026-08-11 A | 2026-08-18 A | ADMIN.5548 | 100% |  |
| ADMIN.5563 |  | BOH/IDF 1000G7 // MEPF Layout of Overhead Supports | 8d | 2026-08-14 A | 2026-09-14 A | ADMIN.5562 | 100% |  |
| ADMIN.5567 |  | BOH/IDF 1000G7 // MEPF In-wall rough-in | 2d | 2026-08-18 A | 2026-09-25 A | ADMIN.5562 | 100% |  |
| ADMIN.5565 |  | BOH/IDF 1000G7 // Install MEPF Overhead Supports | 2d | 2026-08-18 A | 2026-09-18 A | ADMIN.5563 SS+2d | 100% |  |
| ADMIN.5566 |  | BOH/IDF 1000G7 // MEPF Overhead Install | 10d | 2026-09-21 A | 2026-10-09 | ADMIN.5565 SS+5d | 20% | 22d |
| ADMIN.5564 |  | BOH/IDF 1000G7 // Top Down Install of Sheetrock - Priority Walls | 2d | 2026-09-30 | 2026-10-01 | ADMIN.5563 |  | 28d |
| ADMIN.5568 |  | BOH/IDF 1000G7 // Install Fire Alarm and Security | 3d | 2026-10-13 | 2026-10-15 | ADMIN.5566 |  | 24d |
| ADMIN.5569 |  | BOH/IDF 1000G7 // 1-Side & Finish Priority Walls | 2d | 2026-10-13 | 2026-10-14 | ADMIN.5564, ADMIN.5566, ADMIN.5567 |  | 22d |
| ADMIN.6129 |  | BOH/IDF 1000G7 // BMS & EPMS Rough In | 2d | 2026-10-14 | 2026-10-15 | ADMIN.5568 FF, ADMIN.5568 SS |  | 26d |
| ADMIN.5570 |  | BOH/IDF 1000G7 // Tape and Finish Walls | 3d | 2026-10-15 | 2026-10-19 | ADMIN.5569 |  | 22d |
| ADMIN.5571 |  | BOH/IDF 1000G7 // Final paint | 2d | 2026-10-20 | 2026-10-21 | ADMIN.6129 FF, ADMIN.5568, ADMIN.5570 |  | 22d |
| ADMIN.5572 |  | BOH/IDF 1000G7 // Install Flooring and Base | 3d | 2026-10-22 | 2026-10-26 | ADMIN.5571 |  | 22d |
| ADMIN.5777 |  | BOH/IDF 1000G7 // BOH - Room Ready to Receive Equipment | 0d | 2026-10-22 | 2026-10-22 | ADMIN.5571 |  | 26d |
| ADMIN.5573 |  | BOH/IDF 1000G7 // Install Trim-Out | 1d | 2026-10-27 | 2026-10-27 | ADMIN.5572 |  | 22d |
| ADMIN.5574 |  | BOH/IDF 1000G7 // Install Doors and Hardware | 1d | 2026-10-28 | 2026-10-28 | ADMIN.5573, ADMIN.5777 SS |  | 22d |
| ADMIN.5575 |  | BOH/IDF 1000G7 // Finish & Clean | 1d | 2026-10-29 | 2026-10-29 | ADMIN.5573, ADMIN.5574 |  | 22d |
|  | 21 | **Other Rooms** |  | 2026-08-17 | 2026-12-09 |  |  |  |
|  | 11 | **ELI 1000G13** |  | 2026-08-17 | 2026-12-01 |  |  |  |
| ADMIN.5644 |  | BOH/ELI 1000G13 // Frame Priority Walls | 3d | 2026-08-17 A | 2026-08-19 A | ADMIN.5562 | 100% |  |
| ADMIN.5645 |  | BOH/ELI 1000G13 // MEPF Layout of Overhead Supports | 8d | 2026-10-15 | 2026-10-26 | ADMIN.5644, A5697 |  | 1d |
| ADMIN.5647 |  | BOH/ELI 1000G13 // Install MEPF Overhead Supports | 2d | 2026-10-19 | 2026-10-20 | ADMIN.5645 SS+2d |  | 1d |
| ADMIN.5648 |  | BOH/ELI 1000G13 // MEPF Overhead Install | 10d | 2026-10-26 | 2026-11-06 | ADMIN.5647 SS+5d |  | 1d |
| ADMIN.5646 |  | BOH/ELI 1000G13 // Top Down Install of Sheetrock - Priority Walls | 2d | 2026-10-27 | 2026-10-28 | ADMIN.5645 |  | 10d |
| ADMIN.5649 |  | BOH/ELI 1000G13 // MEPF In-wall rough-in | 2d | 2026-11-09 | 2026-11-10 | ADMIN.5648 |  | 1d |
| ADMIN.5650 |  | BOH/ELI 1000G13 // Install Fire Alarm and Security | 3d | 2026-11-09 | 2026-11-12 | ADMIN.5648 |  | 5d |
| ADMIN.6139 |  | BOH/ELI 1000G13 // BMS & EPMS Rough In | 2d | 2026-11-10 | 2026-11-12 | ADMIN.5650 FF, ADMIN.5650 SS |  | 7d |
| ADMIN.5651 |  | BOH/ELI 1000G13 // 1-Side & Finish Priority Walls | 2d | 2026-11-12 | 2026-11-13 | ADMIN.5646, ADMIN.5648, ADMIN.5649 |  | 1d |
| ADMIN.5652 |  | BOH/ELI 1000G13 // Tape and Finish Walls | 3d | 2026-11-16 | 2026-11-18 | ADMIN.5651 |  | 1d |
| ADMIN.5653 |  | BOH/ELI 1000G13 // Final paint | 2d | 2026-11-19 | 2026-11-20 | ADMIN.6139 FF, ADMIN.5650, ADMIN.5652 |  | 1d |
| ADMIN.5654 |  | BOH/ELI 1000G13 // Install Flooring and Base | 3d | 2026-11-23 | 2026-11-25 | ADMIN.5653 |  | 1d |
| ADMIN.5778 |  | BOH/ELI 1000G13 // BOH - Room Ready to Receive Equipment | 0d | 2026-11-23 | 2026-11-23 | ADMIN.5653 |  | 5d |
| ADMIN.5655 |  | BOH/ELI 1000G13 // Install Trim-Out | 1d | 2026-11-27 | 2026-11-27 | ADMIN.5654 |  | 1d |
| ADMIN.5656 |  | BOH/ELI 1000G13 // Install Doors and Hardware | 1d | 2026-11-30 | 2026-11-30 | ADMIN.5655, ADMIN.5778 SS |  | 1d |
| ADMIN.5657 |  | BOH/ELI 1000G13 // Finish & Clean | 1d | 2026-12-01 | 2026-12-01 | ADMIN.5655, ADMIN.5656 |  | 1d |
|  | 12 | **Flex 1000G11** |  | 2026-08-19 | 2026-11-04 |  |  |  |
| ADMIN.5658 |  | BOH/Flex 1000G11 // Frame Priority Walls | 3d | 2026-08-19 A | 2026-09-03 A | ADMIN.5644 | 100% |  |
| ADMIN.5659 |  | BOH/Flex 1000G11 // MEPF Layout of Overhead Supports | 8d | 2026-08-24 A | 2026-09-18 A | ADMIN.5658 | 100% |  |
| ADMIN.5661 |  | BOH/Flex 1000G11 // Install MEPF Overhead Supports | 2d | 2026-08-26 A | 2026-09-22 A | ADMIN.5659 SS+2d | 100% |  |

| ID | WBS | Task | Duration | Start | Finish | Predecessors | Complete | Total float |
| --- | --- | --- | --- | --- | --- | --- | --- | --- |
| ADMIN.5660 |  | BOH/Flex 1000G11 // Top Down Install of Sheetrock - Priority Walls | 2d | 2026-09-03 A | 2026-09-22 A | ADMIN.5659 | 100% |  |
| ADMIN.5662 |  | BOH/Flex 1000G11 // MEPF Overhead Install | 10d | 2026-09-28 A | 2026-10-14 | ADMIN.5661 SS+5d |  | 18d |
| ADMIN.5663 |  | BOH/Flex 1000G11 // MEPF In-wall rough-in | 2d | 2026-10-15 | 2026-10-16 | ADMIN.5662 |  | 18d |
| ADMIN.5664 |  | BOH/Flex 1000G11 // Install Fire Alarm and Security | 3d | 2026-10-15 | 2026-10-19 | ADMIN.5662 |  | 22d |
| ADMIN.6149 |  | BOH/Flex 1000G11 // BMS & EPMS Rough In | 2d | 2026-10-16 | 2026-10-19 | ADMIN.5664 FF, ADMIN.5664 SS |  | 24d |
| ADMIN.5665 |  | BOH/Flex 1000G11 // 1-Side & Finish Priority Walls | 2d | 2026-10-19 | 2026-10-20 | ADMIN.5660, ADMIN.5662, ADMIN.5663 |  | 18d |
| ADMIN.5666 |  | BOH/Flex 1000G11 // Tape and Finish Walls | 3d | 2026-10-21 | 2026-10-23 | ADMIN.5665 |  | 18d |
| ADMIN.5667 |  | BOH/Flex 1000G11 // Final paint | 2d | 2026-10-26 | 2026-10-27 | ADMIN.6149 FF, ADMIN.5664, ADMIN.5666 |  | 18d |
| ADMIN.5668 |  | BOH/Flex 1000G11 // Install Flooring and Base | 3d | 2026-10-28 | 2026-10-30 | ADMIN.5667 |  | 18d |
| ADMIN.5780 |  | BOH/Flex 1000G11 // BOH - Room Ready to Receive Equipment | 0d | 2026-10-28 | 2026-10-28 | ADMIN.5667 |  | 22d |
| ADMIN.5669 |  | BOH/Flex 1000G11 // Install Trim-Out | 1d | 2026-11-02 | 2026-11-02 | ADMIN.5668 |  | 18d |
| ADMIN.5670 |  | BOH/Flex 1000G11 // Install Doors and Hardware | 1d | 2026-11-03 | 2026-11-03 | ADMIN.5669, ADMIN.5780 SS |  | 18d |
| ADMIN.5671 |  | BOH/Flex 1000G11 // Finish & Clean | 1d | 2026-11-04 | 2026-11-04 | ADMIN.5669, ADMIN.5670 |  | 18d |
|  | 14 | **Roof 1000G10** |  | 2026-08-24 | 2026-11-04 |  |  |  |
| ADMIN.5672 |  | BOH/Roof 1000G10 // Frame Priority Walls | 3d | 2026-08-24 A | 2026-09-10 A | ADMIN.5658 | 100% |  |
| ADMIN.5673 |  | BOH/Roof 1000G10 // MEPF Layout of Overhead Supports | 8d | 2026-08-27 A | 2026-09-21 A | ADMIN.5672 | 100% |  |
| ADMIN.5675 |  | BOH/Roof 1000G10 // Install MEPF Overhead Supports | 2d | 2026-08-31 A | 2026-09-23 A | ADMIN.5673 | 100% |  |
| ADMIN.5674 |  | BOH/Roof 1000G10 // Top Down Install of Sheetrock - Priority Walls | 2d | 2026-09-24 A | 2026-09-30 | ADMIN.5673 | 100% | 30d |
| ADMIN.5676 |  | BOH/Roof 1000G10 // MEPF Overhead Install | 10d | 2026-09-29 A | 2026-10-14 | ADMIN.5675 SS+5d |  | 18d |
| ADMIN.5677 |  | BOH/Roof 1000G10 // MEPF In-wall rough-in | 2d | 2026-10-15 | 2026-10-16 | ADMIN.5676 |  | 18d |
| ADMIN.5678 |  | BOH/Roof 1000G10 // Install Fire Alarm and Security | 3d | 2026-10-15 | 2026-10-19 | ADMIN.5676 |  | 22d |
| ADMIN.6159 |  | BOH/Roof 1000G10 // BMS & EPMS Rough In | 2d | 2026-10-16 | 2026-10-19 | ADMIN.5678 FF, ADMIN.5678 SS |  | 24d |
| ADMIN.5679 |  | BOH/Roof 1000G10 // 1-Side & Finish Priority Walls | 2d | 2026-10-19 | 2026-10-20 | ADMIN.5674, ADMIN.5676, ADMIN.5677 |  | 18d |
| ADMIN.5680 |  | BOH/Roof 1000G10 // Tape and Finish Walls | 3d | 2026-10-21 | 2026-10-23 | ADMIN.5679 |  | 18d |
| ADMIN.5681 |  | BOH/Roof 1000G10 // Final paint | 2d | 2026-10-26 | 2026-10-27 | ADMIN.6159 FF, ADMIN.5678, ADMIN.5680 |  | 18d |
| ADMIN.5682 |  | BOH/Roof 1000G10 // Install Flooring and Base | 3d | 2026-10-28 | 2026-10-30 | ADMIN.5681 |  | 18d |
| ADMIN.5781 |  | BOH/Roof 1000G10 // BOH - Room Ready to Receive Equipment | 0d | 2026-10-28 | 2026-10-28 | ADMIN.5681 |  | 22d |
| ADMIN.5683 |  | BOH/Roof 1000G10 // Install Trim-Out | 1d | 2026-11-02 | 2026-11-02 | ADMIN.5682 |  | 18d |
| ADMIN.5684 |  | BOH/Roof 1000G10 // Install Doors and Hardware | 1d | 2026-11-03 | 2026-11-03 | ADMIN.5683, ADMIN.5781 SS |  | 18d |
| ADMIN.5685 |  | BOH/Roof 1000G10 // Finish & Clean | 1d | 2026-11-04 | 2026-11-04 | ADMIN.5683, ADMIN.5684 |  | 18d |
|  | 13 | **Corridor 1000H** |  | 2026-08-27 | 2026-11-04 |  |  |  |
| ADMIN.5686 |  | BOH/Corridor 1000H // Frame Priority Walls | 3d | 2026-08-27 A | 2026-09-17 A | ADMIN.5672 | 100% |  |
| ADMIN.5687 |  | BOH/Corridor 1000H // MEPF Layout of Overhead Supports | 8d | 2026-09-01 A | 2026-09-21 A | ADMIN.5672 | 100% |  |
| ADMIN.5689 |  | BOH/Corridor 1000H // Install MEPF Overhead Supports | 2d | 2026-09-03 A | 2026-09-23 A | ADMIN.5687 SS+2d | 100% |  |
| ADMIN.5688 |  | BOH/Corridor 1000H // Top Down Install of Sheetrock - Priority Walls | 2d | 2026-09-24 A | 2026-10-01 | ADMIN.5687 |  | 28d |
| ADMIN.5690 |  | BOH/Corridor 1000H // MEPF Overhead Install | 10d | 2026-09-29 A | 2026-10-14 | ADMIN.5689 SS+5d |  | 18d |
| ADMIN.5691 |  | BOH/Corridor 1000H // MEPF In-wall rough-in | 2d | 2026-10-15 | 2026-10-16 | ADMIN.5690 |  | 18d |
| ADMIN.5692 |  | BOH/Corridor 1000H // Install Fire Alarm and Security | 3d | 2026-10-15 | 2026-10-19 | ADMIN.5690 |  | 22d |
| ADMIN.6169 |  | BOH/Corridor 1000H // BMS & EPMS Rough In | 2d | 2026-10-16 | 2026-10-19 | ADMIN.5692 FF, ADMIN.5692 SS |  | 24d |
| ADMIN.5693 |  | BOH/Corridor 1000H // 1-Side & Finish Priority Walls | 2d | 2026-10-19 | 2026-10-20 | ADMIN.5688, ADMIN.5690, ADMIN.5691 |  | 18d |
| ADMIN.5694 |  | BOH/Corridor 1000H // Tape and Finish Walls | 3d | 2026-10-21 | 2026-10-23 | ADMIN.5693 |  | 18d |
| ADMIN.5695 |  | BOH/Corridor 1000H // Final paint | 2d | 2026-10-26 | 2026-10-27 | ADMIN.6169 FF, ADMIN.5692, ADMIN.5694 |  | 18d |
| ADMIN.5696 |  | BOH/Corridor 1000H // Install Flooring and Base | 3d | 2026-10-28 | 2026-10-30 | ADMIN.5695 |  | 18d |
| ADMIN.5782 |  | BOH/Corridor 1000H // BOH - Room Ready to Receive Equipment | 0d | 2026-10-28 | 2026-10-28 | ADMIN.5695 |  | 22d |
| ADMIN.5697 |  | BOH/Corridor 1000H // Install Trim-Out | 1d | 2026-11-02 | 2026-11-02 | ADMIN.5696 |  | 18d |
| ADMIN.5698 |  | BOH/Corridor 1000H // Install Doors and Hardware | 1d | 2026-11-03 | 2026-11-03 | ADMIN.5697, ADMIN.5782 SS |  | 18d |
| ADMIN.5699 |  | BOH/Corridor 1000H // Finish & Clean | 1d | 2026-11-04 | 2026-11-04 | ADMIN.5697, ADMIN.5698 |  | 18d |
|  | 1 | **EF2R 1000G9** |  | 2026-09-01 | 2026-11-04 |  |  |  |
| ADMIN.5700 |  | BOH/EF2R 1000G9 // Frame Priority Walls | 3d | 2026-09-01 A | 2026-09-21 A | ADMIN.5686 | 100% |  |
| ADMIN.5703 |  | BOH/EF2R 1000G9 // Install MEPF Overhead Supports | 2d | 2026-09-09 A | 2026-09-23 A | ADMIN.5701 SS+2d | 100% |  |
| ADMIN.5701 |  | BOH/EF2R 1000G9 // MEPF Layout of Overhead Supports | 8d | 2026-09-14 A | 2026-09-21 A | ADMIN.5687 SS | 100% |  |
| ADMIN.5702 |  | BOH/EF2R 1000G9 // Top Down Install of Sheetrock - Priority Walls | 2d | 2026-09-24 A | 2026-10-01 | ADMIN.5701 |  | 28d |
| ADMIN.5704 |  | BOH/EF2R 1000G9 // MEPF Overhead Install | 10d | 2026-09-29 A | 2026-10-14 | ADMIN.5703 SS+5d |  | 18d |
| ADMIN.5705 |  | BOH/EF2R 1000G9 // MEPF In-wall rough-in | 2d | 2026-10-15 | 2026-10-16 | ADMIN.5704 |  | 18d |
| ADMIN.5706 |  | BOH/EF2R 1000G9 // Install Fire Alarm and Security | 3d | 2026-10-15 | 2026-10-19 | ADMIN.5704 |  | 22d |
| ADMIN.6179 |  | BOH/EF2R 1000G9 // BMS & EPMS Rough In | 2d | 2026-10-16 | 2026-10-19 | ADMIN.5706 FF, ADMIN.5706 SS |  | 24d |
| ADMIN.5707 |  | BOH/EF2R 1000G9 // 1-Side & Finish Priority Walls | 2d | 2026-10-19 | 2026-10-20 | ADMIN.5702, ADMIN.5704, ADMIN.5705 |  | 18d |
| ADMIN.5708 |  | BOH/EF2R 1000G9 // Tape and Finish Walls | 3d | 2026-10-21 | 2026-10-23 | ADMIN.5707 |  | 18d |
| ADMIN.5709 |  | BOH/EF2R 1000G9 // Final paint | 2d | 2026-10-26 | 2026-10-27 | ADMIN.6179 FF, ADMIN.5706, ADMIN.5708 |  | 18d |
| ADMIN.5710 |  | BOH/EF2R 1000G9 // Install Flooring and Base | 3d | 2026-10-28 | 2026-10-30 | ADMIN.5709 |  | 18d |
| ADMIN.5783 |  | BOH/EF2R 1000G9 // BOH - Room Ready to Receive Equipment | 0d | 2026-10-28 | 2026-10-28 | ADMIN.5709 |  | 22d |
| ADMIN.5711 |  | BOH/EF2R 1000G9 // Install Trim-Out | 1d | 2026-11-02 | 2026-11-02 | ADMIN.5710 |  | 18d |
| ADMIN.5712 |  | BOH/EF2R 1000G9 // Install Doors and Hardware | 1d | 2026-11-03 | 2026-11-03 | ADMIN.5711, ADMIN.5783 SS |  | 18d |
| ADMIN.5713 |  | BOH/EF2R 1000G9 // Finish & Clean | 1d | 2026-11-04 | 2026-11-04 | ADMIN.5711, ADMIN.5712 |  | 18d |
|  | 2 | **RR 1025B/1025C/1025D** |  | 2026-09-04 | 2026-11-04 |  |  |  |
| ADMIN.5627 |  | BOH/RR 1025B-1025C-1025D // Frame Walls | 3d | 2026-09-04 A | 2026-09-23 A | ADMIN.5700 | 100% |  |
| ADMIN.5630 |  | BOH/RR 1025B-1025C-1025D // Install MEPF Overhead Supports | 2d | 2026-09-14 A | 2026-09-23 A | ADMIN.5628 SS+2d | 100% |  |
| ADMIN.5628 |  | BOH/RR 1025B-1025C-1025D // MEPF Layout of Overhead Supports | 8d | 2026-09-15 A | 2026-09-22 A | ADMIN.5701 SS | 100% |  |
| ADMIN.5629 |  | BOH/RR 1025B-1025C-1025D // Top Down Install of Sheetrock - Priority Walls | 2d | 2026-09-24 A | 2026-10-01 | ADMIN.5628 |  | 28d |
| ADMIN.5631 |  | BOH/RR 1025B-1025C-1025D // MEPF Overhead Install | 10d | 2026-09-28 A | 2026-10-14 | ADMIN.5630 SS+5d |  | 18d |

| ID | WBS | Task | Duration | Start | Finish | Predecessors | Complete | Total float |
| --- | --- | --- | --- | --- | --- | --- | --- | --- |
| ADMIN.5632 |  | BOH/RR 1025B-1025C-1025D // MEPF In-wall rough-in | 2d | 2026-10-15 | 2026-10-16 | ADMIN.5631 |  | 18d |
| ADMIN.5633 |  | BOH/RR 1025B-1025C-1025D // Install Fire Alarm and Security | 3d | 2026-10-15 | 2026-10-19 | ADMIN.5631 |  | 22d |
| ADMIN.6189 |  | BOH/RR 1025B-1025C-1025D // BMS & EPMS Rough In | 2d | 2026-10-16 | 2026-10-19 | ADMIN.5633 FF, ADMIN.5633 SS |  | 24d |
| ADMIN.5634 |  | BOH/RR 1025B-1025C-1025D // 1-Side & Finish Priority Walls | 2d | 2026-10-19 | 2026-10-20 | ADMIN.5629, ADMIN.5631, ADMIN.5632 |  | 18d |
| ADMIN.5635 |  | BOH/RR 1025B-1025C-1025D // Tape and Finish Walls | 3d | 2026-10-21 | 2026-10-23 | ADMIN.5634 |  | 18d |
| ADMIN.5636 |  | BOH/RR 1025B-1025C-1025D // Install Ceiling grid | 4d | 2026-10-21 | 2026-10-26 | ADMIN.5634 |  | 18d |
| ADMIN.5637 |  | BOH/RR 1025B-1025C-1025D // Final paint | 2d | 2026-10-26 | 2026-10-27 | ADMIN.6189 FF, ADMIN.5633, ADMIN.5635 |  | 18d |
| ADMIN.5638 |  | BOH/RR 1025B-1025C-1025D // Hang Hard-Lid Ceiling | 2d | 2026-10-27 | 2026-10-28 | ADMIN.5636 |  | 18d |
| ADMIN.5639 |  | BOH/RR 1025B-1025C-1025D // Install Flooring and Base | 3d | 2026-10-28 | 2026-10-30 | ADMIN.5637 |  | 18d |
| ADMIN.5640 |  | BOH/RR 1025B-1025C-1025D // Hang / drop Ceiling trims | 2d | 2026-10-29 | 2026-10-30 | ADMIN.5638 |  | 18d |
| ADMIN.5641 |  | BOH/RR 1025B-1025C-1025D // Install Trim-Out | 1d | 2026-11-02 | 2026-11-02 | ADMIN.5639, ADMIN.5640 |  | 18d |
| ADMIN.5784 |  | BOH/RR 1025B-1025C-1025D // BOH - Room Ready to Receive Equipment | 0d | 2026-11-02 | 2026-11-02 | ADMIN.5640 |  | 19d |
| ADMIN.5642 |  | BOH/RR 1025B-1025C-1025D // Install Doors and Hardware | 1d | 2026-11-03 | 2026-11-03 | ADMIN.5641, ADMIN.5784 SS |  | 18d |
| ADMIN.5643 |  | BOH/RR 1025B-1025C-1025D // Finish & Clean | 1d | 2026-11-04 | 2026-11-04 | ADMIN.5641, ADMIN.5642 |  | 18d |
|  | 3 | **Offices 1025E/1052F/1025G** |  | 2026-09-10 | 2026-11-09 |  |  |  |
| ADMIN.5613 |  | BOH/1025E-1052F-1025G // Frame Walls | 3d | 2026-09-10 A | 2026-09-23 A | ADMIN.5627 SS | 100% |  |
| ADMIN.5612 |  | BOH/1025E-1052F-1025G // MEPF Layout of Overhead Supports | 8d | 2026-09-24 A | 2026-10-09 | ADMIN.5613 |  | 15d |
| ADMIN.5610 |  | BOH/1025E-1052F-1025G // Install MEPF Overhead Supports | 2d | 2026-09-28 A | 2026-10-01 | ADMIN.5612 SS+2d |  | 15d |
| ADMIN.5620 |  | BOH/1025E-1052F-1025G // Top Down Install of Sheetrock - Priority Walls | 2d | 2026-09-28 A | 2026-10-01 | ADMIN.5613 |  | 28d |
| ADMIN.5611 |  | BOH/1025E-1052F-1025G // MEPF Overhead Install | 10d | 2026-10-05 | 2026-10-19 | ADMIN.5610 SS+5d |  | 15d |
| ADMIN.5617 |  | BOH/1025E-1052F-1025G // Install Fire Alarm and Security | 3d | 2026-10-20 | 2026-10-22 | ADMIN.5611 |  | 19d |
| ADMIN.5623 |  | BOH/1025E-1052F-1025G // MEPF In-wall rough-in | 2d | 2026-10-20 | 2026-10-21 | ADMIN.5611 |  | 15d |
| ADMIN.6199 |  | BOH/1025E-1052F-1025G // BMS & EPMS Rough In | 2d | 2026-10-21 | 2026-10-22 | ADMIN.5617 FF, ADMIN.5617 SS |  | 21d |
| ADMIN.5622 |  | BOH/1025E-1052F-1025G // 1-Side & Finish Priority Walls | 2d | 2026-10-22 | 2026-10-23 | ADMIN.5620, ADMIN.5611, ADMIN.5623 |  | 15d |
| ADMIN.5621 |  | BOH/1025E-1052F-1025G // Tape and Finish Walls | 3d | 2026-10-26 | 2026-10-28 | ADMIN.5622 |  | 15d |
| ADMIN.5624 |  | BOH/1025E-1052F-1025G // Install Ceiling grid | 4d | 2026-10-26 | 2026-10-29 | ADMIN.5622 |  | 15d |
| ADMIN.5614 |  | BOH/1025E-1052F-1025G // Final paint | 2d | 2026-10-29 | 2026-10-30 | ADMIN.6199 FF, ADMIN.5617, ADMIN.5621 |  | 15d |
| ADMIN.5625 |  | BOH/1025E-1052F-1025G // Hang hard-lid ceiling | 2d | 2026-10-30 | 2026-11-02 | ADMIN.5624 |  | 15d |
| ADMIN.5615 |  | BOH/1025E-1052F-1025G // Install Flooring and Base | 3d | 2026-11-02 | 2026-11-04 | ADMIN.5614 |  | 15d |
| ADMIN.5626 |  | BOH/1025E-1052F-1025G // Hang / drop Ceiling trims | 2d | 2026-11-03 | 2026-11-04 | ADMIN.5625 |  | 15d |
| ADMIN.5616 |  | BOH/1025E-1052F-1025G // Install Trim-Out | 1d | 2026-11-05 | 2026-11-05 | ADMIN.5615, ADMIN.5626 |  | 15d |
| ADMIN.5785 |  | BOH/1025E-1052F-1025G // BOH - Room Ready to Receive Equipment | 0d | 2026-11-05 | 2026-11-05 | ADMIN.5626 |  | 16d |
| ADMIN.5619 |  | BOH/1025E-1052F-1025G // Install Doors and Hardware | 1d | 2026-11-06 | 2026-11-06 | ADMIN.5616, ADMIN.5785 SS |  | 15d |
| ADMIN.5618 |  | BOH/1025E-1052F-1025G // Finish & Clean | 1d | 2026-11-09 | 2026-11-09 | ADMIN.5616, ADMIN.5619 |  | 15d |
|  | 4 | **Break 1025A** |  | 2026-09-15 | 2026-11-09 |  |  |  |
| ADMIN.5593 |  | BOH/Break 1025A // Frame Walls | 3d | 2026-09-15 A | 2026-09-22 A | ADMIN.5686 | 100% |  |
| ADMIN.5594 |  | BOH/Break 1025A // MEPF Layout of Overhead Supports | 8d | 2026-09-24 A | 2026-10-09 | ADMIN.5593 |  | 15d |
| ADMIN.5595 |  | BOH/Break 1025A // Top Down Install of Sheetrock - Priority Walls | 2d | 2026-09-28 A | 2026-10-01 | ADMIN.5593 |  | 28d |
| ADMIN.5596 |  | BOH/Break 1025A // Install MEPF Overhead Supports | 2d | 2026-09-28 A | 2026-10-01 | ADMIN.5594 SS+2d |  | 15d |
| ADMIN.5597 |  | BOH/Break 1025A // MEPF Overhead Install | 10d | 2026-10-05 | 2026-10-19 | ADMIN.5596 SS+5d |  | 15d |
| ADMIN.5598 |  | BOH/Break 1025A // MEPF In-wall rough-in | 2d | 2026-10-20 | 2026-10-21 | ADMIN.5597 |  | 15d |
| ADMIN.5599 |  | BOH/Break 1025A // Install Fire Alarm and Security | 3d | 2026-10-20 | 2026-10-22 | ADMIN.5597 |  | 19d |
| ADMIN.6209 |  | BOH/Break 1025A // BMS & EPMS Rough In | 2d | 2026-10-21 | 2026-10-22 | ADMIN.5599 FF, ADMIN.5599 SS |  | 21d |
| ADMIN.5600 |  | BOH/Break 1025A // 1-Side & Finish Priority Walls | 2d | 2026-10-22 | 2026-10-23 | ADMIN.5595, ADMIN.5597, ADMIN.5598 |  | 15d |
| ADMIN.5601 |  | BOH/Break 1025A // Tape and Finish Walls | 3d | 2026-10-26 | 2026-10-28 | ADMIN.5600 |  | 15d |
| ADMIN.5602 |  | BOH/Break 1025A // Install Ceiling grid | 4d | 2026-10-26 | 2026-10-29 | ADMIN.5600 |  | 15d |
| ADMIN.5603 |  | BOH/Break 1025A // Final paint | 2d | 2026-10-29 | 2026-10-30 | ADMIN.6209 FF, ADMIN.5599, ADMIN.5601 |  | 15d |
| ADMIN.5604 |  | BOH/Break 1025A // Hang hard-lid ceiling | 2d | 2026-10-30 | 2026-11-02 | ADMIN.5602 |  | 15d |
| ADMIN.5605 |  | BOH/Break 1025A // Install Flooring and Base | 3d | 2026-11-02 | 2026-11-04 | ADMIN.5603 |  | 15d |
| ADMIN.5606 |  | BOH/Break 1025A // Hang / drop Ceiling trims | 2d | 2026-11-03 | 2026-11-04 | ADMIN.5604 |  | 15d |
| ADMIN.5607 |  | BOH/Break 1025A // Install Trim-Out | 1d | 2026-11-05 | 2026-11-05 | ADMIN.5605, ADMIN.5606 |  | 15d |
| ADMIN.5786 |  | BOH/Break 1025A // BOH - Room Ready to Receive Equipment | 0d | 2026-11-05 | 2026-11-05 | ADMIN.5606 |  | 16d |
| ADMIN.5608 |  | BOH/Break 1025A // Install Doors and Hardware | 1d | 2026-11-06 | 2026-11-06 | ADMIN.5607, ADMIN.5786 SS |  | 15d |
| ADMIN.5609 |  | BOH/Break 1025A // Finish & Clean | 1d | 2026-11-09 | 2026-11-09 | ADMIN.5607, ADMIN.5608 |  | 15d |
|  | 6 | **QTS Ops 1025** |  | 2026-09-18 | 2026-11-12 |  |  |  |
| ADMIN.5576 |  | BOH/QTS Ops 1025 // Frame Walls | 3d | 2026-09-18 A | 2026-09-29 A | ADMIN.5593 | 100% |  |
| ADMIN.5577 |  | BOH/QTS Ops 1025 // MEPF Layout of Overhead Supports | 8d | 2026-09-28 A | 2026-10-09 | ADMIN.5576 SS+5d |  | 13d |
| ADMIN.5578 |  | BOH/QTS Ops 1025 // Top Down Install of Sheetrock - Priority Walls | 2d | 2026-09-28 A | 2026-10-01 | ADMIN.5576 |  | 28d |
| ADMIN.5579 |  | BOH/QTS Ops 1025 // Install MEPF Overhead Supports | 2d | 2026-09-30 | 2026-10-01 | ADMIN.5577 SS+2d |  | 13d |
| ADMIN.5580 |  | BOH/QTS Ops 1025 // MEPF Overhead Install | 10d | 2026-10-07 | 2026-10-21 | ADMIN.5579 SS+5d |  | 13d |
| ADMIN.5581 |  | BOH/QTS Ops 1025 // MEPF In-wall rough-in | 2d | 2026-10-22 | 2026-10-23 | ADMIN.5580 |  | 13d |
| ADMIN.5582 |  | BOH/QTS Ops 1025 // Install Fire Alarm and Security | 3d | 2026-10-22 | 2026-10-26 | ADMIN.5580 |  | 17d |
| ADMIN.6219 |  | BOH/QTS Ops 1025 // BMS & EPMS Rough In | 2d | 2026-10-23 | 2026-10-26 | ADMIN.5582 FF, ADMIN.5582 SS |  | 19d |
| ADMIN.5583 |  | BOH/QTS Ops 1025 // 1-Side & Finish Priority Walls | 2d | 2026-10-26 | 2026-10-27 | ADMIN.5578, ADMIN.5580, ADMIN.5581 |  | 13d |
| ADMIN.5584 |  | BOH/QTS Ops 1025 // Tape and Finish Walls | 3d | 2026-10-28 | 2026-10-30 | ADMIN.5583 |  | 13d |
| ADMIN.5585 |  | BOH/QTS Ops 1025 // Install Ceiling grid | 4d | 2026-10-28 | 2026-11-02 | ADMIN.5583 |  | 13d |
| ADMIN.5586 |  | BOH/QTS Ops 1025 // Final paint | 2d | 2026-11-02 | 2026-11-03 | ADMIN.6219 FF, ADMIN.5582, ADMIN.5584 |  | 13d |
| ADMIN.5587 |  | BOH/QTS Ops 1025 // Hang hard-lid ceiling | 2d | 2026-11-03 | 2026-11-04 | ADMIN.5585 |  | 13d |
| ADMIN.5588 |  | BOH/QTS Ops 1025 // Install Flooring and Base | 3d | 2026-11-04 | 2026-11-06 | ADMIN.5586 |  | 13d |
| ADMIN.5589 |  | BOH/QTS Ops 1025 // Hang / drop Ceiling trims | 2d | 2026-11-05 | 2026-11-06 | ADMIN.5587 |  | 13d |

| ID | WBS | Task | Duration | Start | Finish | Predecessors | Complete | Total float |
| --- | --- | --- | --- | --- | --- | --- | --- | --- |
| ADMIN.5590 |  | BOH/QTS Ops 1025 // Install Trim-Out | 1d | 2026-11-09 | 2026-11-09 | ADMIN.5588, ADMIN.5589 |  | 13d |
| ADMIN.5787 |  | BOH/QTS Ops 1025 // BOH - Room Ready to Receive Equipment | 0d | 2026-11-09 | 2026-11-09 | ADMIN.5589 |  | 14d |
| ADMIN.5591 |  | BOH/QTS Ops 1025 // Install Doors and Hardware | 1d | 2026-11-10 | 2026-11-10 | ADMIN.5590, ADMIN.5787 SS |  | 13d |
| ADMIN.5592 |  | BOH/QTS Ops 1025 // Finish & Clean | 1d | 2026-11-12 | 2026-11-12 | ADMIN.5590, ADMIN.5591 |  | 13d |
|  | 7 | **Conf. Room 1025H** |  | 2026-09-18 | 2026-11-13 |  |  |  |
| ADMIN.5714 |  | BOH/Conf. Room 1025H // Frame Walls | 3d | 2026-09-18 A | 2026-09-28 A | ADMIN.5576 SS | 100% |  |
| ADMIN.5715 |  | BOH/Conf. Room 1025H // MEPF Layout of Overhead Supports | 8d | 2026-09-29 A | 2026-10-09 | ADMIN.5714 |  | 12d |
| ADMIN.5716 |  | BOH/Conf. Room 1025H // Top Down Install of Sheetrock - Priority Walls | 2d | 2026-09-29 A | 2026-10-01 | ADMIN.5714 |  | 28d |
| ADMIN.5717 |  | BOH/Conf. Room 1025H // Install MEPF Overhead Supports | 2d | 2026-10-01 | 2026-10-02 | ADMIN.5715 SS+2d |  | 12d |
| ADMIN.5718 |  | BOH/Conf. Room 1025H // MEPF Overhead Install | 10d | 2026-10-08 | 2026-10-22 | ADMIN.5717 SS+5d |  | 12d |
| ADMIN.5719 |  | BOH/Conf. Room 1025H // MEPF In-wall rough-in | 2d | 2026-10-23 | 2026-10-26 | ADMIN.5718 |  | 12d |
| ADMIN.5720 |  | BOH/Conf. Room 1025H // Install Fire Alarm and Security | 3d | 2026-10-23 | 2026-10-27 | ADMIN.5718 |  | 16d |
| ADMIN.6229 |  | BOH/Conf. Room 1025H // BMS & EPMS Rough In | 2d | 2026-10-26 | 2026-10-27 | ADMIN.5720 FF, ADMIN.5720 SS |  | 18d |
| ADMIN.5721 |  | BOH/Conf. Room 1025H // 1-Side & Finish Priority Walls | 2d | 2026-10-27 | 2026-10-28 | ADMIN.5716, ADMIN.5718, ADMIN.5719 |  | 12d |
| ADMIN.5722 |  | BOH/Conf. Room 1025H // Tape and Finish Walls | 3d | 2026-10-29 | 2026-11-02 | ADMIN.5721 |  | 12d |
| ADMIN.5723 |  | BOH/Conf. Room 1025H // Install Ceiling grid | 4d | 2026-10-29 | 2026-11-03 | ADMIN.5721 |  | 12d |
| ADMIN.5724 |  | BOH/Conf. Room 1025H // Final paint | 2d | 2026-11-03 | 2026-11-04 | ADMIN.6229 FF, ADMIN.5720, ADMIN.5722 |  | 12d |
| ADMIN.5725 |  | BOH/Conf. Room 1025H // Hang hard-lid ceiling | 2d | 2026-11-04 | 2026-11-05 | ADMIN.5723 |  | 12d |
| ADMIN.5726 |  | BOH/Conf. Room 1025H // Install Flooring and Base | 3d | 2026-11-05 | 2026-11-09 | ADMIN.5724 |  | 12d |
| ADMIN.5727 |  | BOH/Conf. Room 1025H // Hang / drop Ceiling trims | 2d | 2026-11-06 | 2026-11-09 | ADMIN.5725 |  | 12d |
| ADMIN.5728 |  | BOH/Conf. Room 1025H // Install Trim-Out | 1d | 2026-11-10 | 2026-11-10 | ADMIN.5726, ADMIN.5727 |  | 12d |
| ADMIN.5788 |  | BOH/Conf. Room 1025H // BOH - Room Ready to Receive Equipment | 0d | 2026-11-10 | 2026-11-10 | ADMIN.5727 |  | 13d |
| ADMIN.5729 |  | BOH/Conf. Room 1025H // Install Doors and Hardware | 1d | 2026-11-12 | 2026-11-12 | ADMIN.5728, ADMIN.5788 SS |  | 12d |
| ADMIN.5730 |  | BOH/Conf. Room 1025H // Finish & Clean | 1d | 2026-11-13 | 2026-11-13 | ADMIN.5728, ADMIN.5729 |  | 12d |
|  | 16 | **Flex 1020** |  | 2026-09-18 | 2026-11-10 |  |  |  |
| ADMIN.5731 |  | BOH/Flex 1020 // Frame Priority Walls | 3d | 2026-09-18 A | 2026-09-28 A | ADMIN.5714 SS | 100% |  |
| ADMIN.5732 |  | BOH/Flex 1020 // MEPF Layout of Overhead Supports | 8d | 2026-09-29 A | 2026-10-09 | ADMIN.5731 |  | 14d |
| ADMIN.5734 |  | BOH/Flex 1020 // Install MEPF Overhead Supports | 2d | 2026-09-29 A | 2026-10-01 | ADMIN.5732 SS |  | 14d |
| ADMIN.5735 |  | BOH/Flex 1020 // MEPF Overhead Install | 10d | 2026-10-06 | 2026-10-20 | ADMIN.5734 SS+5d |  | 14d |
| ADMIN.5733 |  | BOH/Flex 1020 // Top Down Install of Sheetrock - Priority Walls | 2d | 2026-10-13 | 2026-10-14 | ADMIN.5732 |  | 20d |
| ADMIN.5736 |  | BOH/Flex 1020 // MEPF In-wall rough-in | 2d | 2026-10-21 | 2026-10-22 | ADMIN.5735 |  | 14d |
| ADMIN.5737 |  | BOH/Flex 1020 // Install Fire Alarm and Security | 3d | 2026-10-21 | 2026-10-23 | ADMIN.5735 |  | 18d |
| ADMIN.6239 |  | BOH/Flex 1020 // BMS & EPMS Rough In | 2d | 2026-10-22 | 2026-10-23 | ADMIN.5737 FF, ADMIN.5737 SS |  | 20d |
| ADMIN.5738 |  | BOH/Flex 1020 // 1-Side & Finish Priority Walls | 2d | 2026-10-23 | 2026-10-26 | ADMIN.5733, ADMIN.5735, ADMIN.5736 |  | 14d |
| ADMIN.5739 |  | BOH/Flex 1020 // Tape and Finish Walls | 3d | 2026-10-27 | 2026-10-29 | ADMIN.5738 |  | 14d |
| ADMIN.5740 |  | BOH/Flex 1020 // Final paint | 2d | 2026-10-30 | 2026-11-02 | ADMIN.6239 FF, ADMIN.5737, ADMIN.5739 |  | 14d |
| ADMIN.5741 |  | BOH/Flex 1020 // Install Flooring and Base | 3d | 2026-11-03 | 2026-11-05 | ADMIN.5740 |  | 14d |
| ADMIN.5742 |  | BOH/Flex 1020 // Install Trim-Out | 1d | 2026-11-06 | 2026-11-06 | ADMIN.5741 |  | 14d |
| ADMIN.5743 |  | BOH/Flex 1020 // Install Doors and Hardware | 1d | 2026-11-09 | 2026-11-09 | ADMIN.5742 |  | 14d |
| ADMIN.5744 |  | BOH/Flex 1020 // Finish & Clean | 1d | 2026-11-10 | 2026-11-10 | ADMIN.5742, ADMIN.5743 |  | 14d |
|  | 17 | **Loading Dock 1010** |  | 2026-08-21 | 2026-12-09 |  |  |  |
| DH1300.LD.2031 |  | BOH/Loading Dock #1010 // Overhead Fire Protection | 5d | 2026-08-21 A | 2026-09-22 A | ADMIN.5549 | 100% |  |
| DH1300.LD.2032 |  | BOH/Loading Dock #1010 // Overhead Mechanical Piping | 5d | 2026-09-24 A | 2026-10-06 | DH1300.LD.2031 |  | -5d |
| DH1300.LD.2033 |  | BOH/Loading Dock #1010 // OH Electrical Rough | 5d | 2026-10-07 | 2026-10-14 | DH1300.LD.2032 |  | -5d |
| DH1300.LD.2034 |  | BOH/Loading Dock #1010 // Overhead Mechanical Duct | 5d | 2026-10-07 | 2026-10-14 | DH1300.LD.2032 |  | -5d |
| DH1300.LD.2035 |  | BOH/Loading Dock #1010 // In-Wall Electrical Rough | 2d | 2026-10-15 | 2026-10-16 | DH1300.LD.2033 |  | -5d |
| DH1300.LD.2036 |  | BOH/Loading Dock #1010 // Top of Wall Fire Stop | 2d | 2026-10-15 | 2026-10-16 | DH1300.LD.2033 |  | 9d |
| DH1300.LD.2037 |  | BOH/Loading Dock #1010 // Install Dock Levelers | 2d | 2026-10-15 | 2026-10-16 | DH1300.LD.2034 |  | -5d |
| DH1300.LD.2038 |  | BOH/Loading Dock #1010 // In-Wall Inspection | 1d | 2026-10-19 | 2026-10-19 | DH1300.LD.2035, DH1300.LD.2037 |  | -5d |
| DH1300.LD.2039 |  | BOH/Loading Dock #1010 // Hang, Tape, & Finish Drywall | 10d | 2026-10-20 | 2026-11-02 | DH1300.LD.2038 |  | -5d |
| DH1300.LD.2040 |  | BOH/Loading Dock #1010 // Paint Walls | 3d | 2026-11-03 | 2026-11-05 | DH1300.LD.2039 |  | -5d |
| DH1300.LD.2041 |  | BOH/Loading Dock #1010 // Install Fire Alarm | 5d | 2026-11-06 | 2026-11-13 | DH1300.LD.2040, DH1300.LD.2034, DH1300.LD.2036 |  | -5d |
| DH1300.LD.2042 |  | BOH/Loading Dock #1010 // Pull, Test, & Terminate | 6d | 2026-11-06 | 2026-11-16 | DH1300.LD.2040 |  | -4d |
| DH1300.LD.2043 |  | BOH/Loading Dock #1010 // Install Overhead Door - 0160.2 | 1d | 2026-11-16 | 2026-11-16 | DH1300.LD.2037, DH1300.LD.2041 |  | -5d |
| DH1300.LD.2044 |  | BOH/Loading Dock #1010 // Install Overhead Door - 0160.3 | 1d | 2026-11-17 | 2026-11-17 | DH1300.LD.2043 |  | -5d |
| DH1300.LD.2046 |  | BOH/Loading Dock #1010 // Install Overhead Lighting Fixtures | 5d | 2026-11-17 | 2026-11-23 | DH1300.LD.2042 |  | -4d |
| DH1300.LD.2045 |  | BOH/Loading Dock #1010 // Loading Dock Operational | 0d | 2026-11-17 | 2026-11-17 | DH1300.LD.2044 |  | -5d |
| DH1300.LD.2047 |  | BOH/Loading Dock #1010 // Install Fire Sprinkler Heads | 5d | 2026-11-18 | 2026-11-24 | DH1300.LD.2041, DH1300.LD.2045 |  | -5d |
| DH1300.LD.2048 |  | BOH/Loading Dock #1010// Electrical Trim | 5d | 2026-11-25 | 2026-12-02 | DH1300.LD.2040, DH1300.LD.2046, DH1300.LD.2047, DH1300.LD.2044 |  | -5d |
| DH1300.LD.2049 |  | BOH/Loading Dock #1010 // Clean and Punch | 5d | 2026-12-03 | 2026-12-09 | DH1300.LD.2048 |  | -5d |
|  | 1 | **Equipment** |  | 2026-09-14 | 2026-10-28 |  |  |  |
|  | 2 | **Roof - RTUs** |  | 2026-09-14 | 2026-10-28 |  |  |  |
|  | 1 | **Column Lines 7.0 thru 7.3** |  | 2026-09-14 | 2026-10-28 |  |  |  |
| DH1100.12062 |  | BOH/Roof - RTUs // Set RTU-RT Units - RTU-RT- 17 | 3d | 2026-09-14 A | 2026-09-16 A | STRUCTURE.7610, STRUCTURE.7613 | 100% |  |
| DH1100.12063 |  | BOH/Roof - RTUs // Install Mechanical Piping | 10d | 2026-09-30 | 2026-10-14 | DH1100.12062 SS, DH1100.12062 |  | 8d |
| DH1100.12060 |  | BOH/Roof - RTUs // Install heat trace system | 10d | 2026-10-15 | 2026-10-28 | DH1100.12063 |  | 8d |
| DH1200.7842 |  | BOH/Roof - RTUs // Install Electrical Conduit and Controls Piping | 10d | 2026-10-15 | 2026-10-28 | BOH-MS-3 FF, DH1100.12062 SS, DH1100.12063 |  | 23d |
|  | 1 | **Gens - XFMRs etc** |  | 2026-09-30 | 2026-10-15 |  |  |  |
| DH1100.12097 |  | BOH // Set House Generator - GEN-HSE-BOH | 1d | 2026-09-30 | 2026-09-30 | A5694 |  | 17d |
| DH1600.2282 |  | BOH // Set House XFMR - XFMR-HSE-BOH | 1d | 2026-10-01 | 2026-10-01 | DH1100.12097 |  | 17d |

| ID | WBS | Task | Duration | Start | Finish | Predecessors | Complete | Total float |
| --- | --- | --- | --- | --- | --- | --- | --- | --- |
| DH1600.2283 |  | BOH // Set House XFMR - XFMR-HSE-1Dp | 1d | 2026-10-02 | 2026-10-02 | DH1600.2282 |  | 17d |
| DH1600.2020 |  | BOH // Set House Static Transfer Switch - STS-HSE-1B1 | 1d | 2026-10-05 | 2026-10-05 | DH1600.2283 |  | 17d |
| DH1600.2280 |  | BOH // Set House Static Transfer Switch - STS-HSE-1B2 | 1d | 2026-10-06 | 2026-10-06 | DH1600.2020, DH1600.2020 FF |  | 17d |
| DH1600.2281 |  | BOH // Set House Static Transfer Switch - STS-HSE-1D | 1d | 2026-10-07 | 2026-10-07 | DH1600.2280 |  | 17d |
| DH1100.12102 |  | BOH // Set House SWD Switch - SWD-HSE-1B-MAIN | 1d | 2026-10-08 | 2026-10-08 | DH1600.2281 |  | 17d |
| DH1100.12103 |  | BOH // Set House SWD Switch - SWD-HSE-1D-MAIN | 1d | 2026-10-09 | 2026-10-09 | DH1100.12102 |  | 17d |
| DH1100.12107 |  | BOH // Set House UPS - UPS-HSE-1B1 | 1d | 2026-10-13 | 2026-10-13 | ADMIN.5760, DH1100.12103 |  | 17d |
| DH1100.12108 |  | BOH // Set House UPS - UPS-HSE-1B2 | 1d | 2026-10-14 | 2026-10-14 | ADMIN.5760, DH1100.12107 |  | 17d |
| DH1100.12109 |  | BOH // Set House UPS - UPS-HSE-1D | 1d | 2026-10-15 | 2026-10-15 | ADMIN.5760, DH1100.12108 |  | 17d |
|  | 2 | **Commissioning & Start Up** |  | 2026-10-29 | 2026-12-18 |  |  |  |
| HSE-SYS-STU-4 |  | BOH/Commissioning & Start Up // L3 Start-Up | 15d | 2026-10-29 | 2026-11-19 | DH1100.12109, DH1100.12060 |  | 8d |
| HSE-SYS-STU-5 |  | BOH/Commissioning & Start Up // L4 Cx | 15d | 2026-11-20 | 2026-12-11 | HSE-SYS-STU-4 |  | 27d |
| HSE-SYS-STU-17 |  | BOH/Commissioning & Start Up // BOH Clean & Punch | 0d | 2026-12-09 | 2026-12-09 | BOH-MS-3 FF, ADMIN.5744 FF, ADMIN.5730 FF, ADMIN.5592 FF, ADMIN.5609 FF, ADMIN.5618 FF, ADMIN.5643 FF, ADMIN.5713 FF, ADMIN.5699 FF, ADMIN.5685 FF, ADMIN.5671 FF, ADMIN.5657 FF, ADMIN.5575 FF, ADMIN.5561 FF, ADMIN.5547 FF, ADMIN.5533 FF, ADMIN.5519 FF, DH1300.LD.2049 FF |  | -5d |
| HSE-SYS-STU-6 |  | BOH/Commissioning & Start Up // L5 Cx (Completes Jan 01 2027) | 5d | 2026-12-14 | 2026-12-18 | HSE-SYS-STU-5, HSE-SYS-STU-17 |  | 27d |
|  | 5 | **Data Hall 1100** |  | 2026-04-29 | 2027-02-09 |  |  |  |
|  | 10 | **Exterior Build Out** |  | 2026-04-29 | 2026-11-12 |  |  |  |
|  | 9 | **Electrical Yard** |  | 2026-06-19 | 2026-08-07 |  |  |  |
|  | 3 | **Electrical** |  | 2026-06-19 | 2026-08-07 |  |  |  |
|  | 1 | **Underground** |  | 2026-06-19 | 2026-07-27 |  |  |  |
|  | 1 | **Column Line 1 to 1.9** |  | 2026-06-19 | 2026-07-27 |  |  |  |
| A2920 |  | DH1100/Electrical Yard-Underground // Excavate A110 - F110 XFMR Pads (A-Side) | 1d | 2026-06-19 A | 2026-06-19 A | FDN.1010, A2650, FDN.1235, FDN.1236 FS+2d, STRUCTURE.7655, STRUCTURE.7050 SS+2d | 100% |  |
| A2930 |  | DH1100/Electrical Yard-Underground // Run Conduit A110 - F110 XFMR Pads (A-Side) | 2d | 2026-06-22 A | 2026-06-23 A | A2920 | 100% |  |
| PS920 |  | DH1100/Electrical Yard-Underground // Excavate A110 - F110 XFMR Pads (P-Side) | 1d | 2026-06-23 A | 2026-06-23 A | A5870 | 100% |  |
| A3140 |  | DH1100/Electrical Yard-Underground // Backfill A110 - F110 XFMR Pads (A-Side) | 1d | 2026-06-24 A | 2026-07-16 A | A2930 | 100% |  |
| A5868 |  | DH1100/Electrical Yard-Underground // Excavate G110 - R110 XFMR Pads (A-Side) | 1d | 2026-06-25 A | 2026-06-25 A | A3140 | 100% |  |
| A5869 |  | DH1100/Electrical Yard-Underground // Run Conduit G110 - R110 XFMR Pads (A-Side) | 2d | 2026-06-26 A | 2026-06-29 A | A5868 | 100% |  |
| A5870 |  | DH1100/Electrical Yard-Underground // Backfill G110 - R110 XFMR Pads (A-Side) | 1d | 2026-06-30 A | 2026-07-17 A | A5869 | 100% |  |
| PS930 |  | DH1100/Electrical Yard-Underground // Run Conduit A110 - F110 XFMR Pads (P-Side) | 2d | 2026-07-20 A | 2026-07-21 A | PS920 | 100% |  |
| PS140 |  | DH1100/Electrical Yard-Underground // Backfill A110 - F110 XFMR Pads (P-Side) | 1d | 2026-07-22 A | 2026-07-22 A | PS930 | 100% |  |
| PS868 |  | DH1100/Electrical Yard-Underground // Excavate G110 - R110 XFMR Pads (P-Side) | 1d | 2026-07-23 A | 2026-07-23 A | PS140 | 100% |  |
| PS869 |  | DH1100/Electrical Yard-Underground // Run Conduit G110 - R110 XFMR Pads (P-Side) | 2d | 2026-07-24 A | 2026-07-27 A | PS868 | 100% |  |
| PS870 |  | DH1100/Electrical Yard-Underground // Backfill G110 - R110 XFMR Pads (P-Side) | 1d | 2026-07-27 A | 2026-07-27 A | PS869 | 100% |  |
|  | 2 | **Column Line 1.0 - 1.9** |  | 2026-06-29 | 2026-07-15 |  |  |  |
| A3150 |  | DH1100/Electrical Yard-Underground // Excavate From MVG to Transformers | 5d | 2026-06-29 A | 2026-07-06 A | A2920 | 100% |  |
| A3160 |  | DH1100/Electrical Yard-Underground // Install Raceway from MVG to Transformers | 5d | 2026-07-07 A | 2026-07-13 A | A3150 | 100% |  |
| A3170 |  | DH1100/Electrical Yard-Underground // Backfill Raceways from MVG to Transformers | 3d | 2026-07-14 A | 2026-07-15 A | A3160 | 100% |  |
|  | 2 | **Pads** |  | 2026-07-16 | 2026-08-07 |  |  |  |
| EP.1020 |  | DH1100/Electrical Yard-Pads // Excavate / Form / Rebar /pour-Finish XFMR Pads | 10d | 2026-07-16 A | 2026-07-29 A | A3140, A3170, A3170 FF | 100% |  |
| EP.1010 |  | DH1100/Electrical Yard-Pads // Pad Strip and Cure | 8d | 2026-07-21 A | 2026-07-29 A | EP.1030, A5856, EP.1020 | 100% |  |
| EP.1030 |  | DH1100/Electrical Yard-Pads // Excavate / Form / Rebar /pour-Finish Pads | 6d | 2026-07-21 A | 2026-07-28 A | EP.1020, A5856 | 100% |  |
| EP.1031 |  | DH1100/ Xfmr Delivery | 4d | 2026-08-07 A | 2026-08-07 A | EP.1010 | 100% |  |
|  | 3 | **Equipment** |  | 2026-08-07 | 2026-08-07 |  |  |  |
|  | 1 | **A110** |  | 2026-08-07 | 2026-08-07 |  |  |  |
| EE..1351 |  | DH1100/Electrical Yard // Set XFMR - XFMR-A110a | 1d | 2026-08-07 A | 2026-08-07 A | EP.1031, EP.1010, EP.1020 | 100% |  |
| EE..1352 |  | DH1100/Electrical Yard // Set XFMR - XFMR-A110p | 1d | 2026-08-07 A | 2026-08-07 A | EE..1351 SS | 100% |  |
|  | 2 | **B110** |  | 2026-08-07 | 2026-08-07 |  |  |  |
| EE..1353 |  | DH1100/Electrical Yard // Set XFMR - XFMR-B110a | 1d | 2026-08-07 A | 2026-08-07 A | EE..1352 SS | 100% |  |
| EE..1354 |  | DH1100/Electrical Yard // Set XFMR - XFMR-B110p | 1d | 2026-08-07 A | 2026-08-07 A | EE..1353 SS | 100% |  |
|  | 3 | **C110** |  | 2026-08-07 | 2026-08-07 |  |  |  |
| EE..1355 |  | DH1100/Electrical Yard // Set XFMR - XFMR-C110a | 1d | 2026-08-07 A | 2026-08-07 A | EE..1354 FF | 100% |  |
| EE..1356 |  | DH1100/Electrical Yard // Set XFMR - XFMR-C110p | 1d | 2026-08-07 A | 2026-08-07 A | EE..1355 SS | 100% |  |
|  | 4 | **D110** |  | 2026-08-07 | 2026-08-07 |  |  |  |
| EE..1357 |  | DH1100/Electrical Yard // Set XFMR - XFMR-D110a | 1d | 2026-08-07 A | 2026-08-07 A | EE..1356 FF | 100% |  |
| EE..1358 |  | DH1100/Electrical Yard // Set XFMR - XFMR-D110p | 1d | 2026-08-07 A | 2026-08-07 A | EE..1357 SS | 100% |  |
|  | 5 | **E110** |  | 2026-08-07 | 2026-08-07 |  |  |  |
| EE..1359 |  | DH1100/Electrical Yard // Set XFMR - XFMR-E110a | 1d | 2026-08-07 A | 2026-08-07 A | EE..1358 FF | 100% |  |
| EE..1360 |  | DH1100/Electrical Yard // Set XFMR - XFMR-E110p | 1d | 2026-08-07 A | 2026-08-07 A | EE..1359 SS | 100% |  |
|  | 6 | **F110** |  | 2026-08-07 | 2026-08-07 |  |  |  |
| EE..1361 |  | DH1100/Electrical Yard // Set XFMR - XFMR-F110a | 1d | 2026-08-07 A | 2026-08-07 A | EE..1360 FF | 100% |  |
| EE..1362 |  | DH1100/Electrical Yard // Set XFMR - XFMR-F110p | 1d | 2026-08-07 A | 2026-08-07 A | EE..1361 SS | 100% |  |
|  | 7 | **G110** |  | 2026-08-07 | 2026-08-07 |  |  |  |
| EE..1363 |  | DH1100/Electrical Yard // Set XFMR - XFMR-G110a | 1d | 2026-08-07 A | 2026-08-07 A | EE..1362 FF | 100% |  |
| EE..1364 |  | DH1100/Electrical Yard // Set XFMR - XFMR-G110p | 1d | 2026-08-07 A | 2026-08-07 A | EE..1363 SS | 100% |  |
|  | 8 | **H110** |  | 2026-08-07 | 2026-08-07 |  |  |  |
| EE..1365 |  | DH1100/Electrical Yard // Set XFMR - XFMR-H110a | 1d | 2026-08-07 A | 2026-08-07 A | EE..1364 FF | 100% |  |
| EE..1366 |  | DH1100/Electrical Yard // Set XFMR - XFMR-H110p | 1d | 2026-08-07 A | 2026-08-07 A | EE..1365 SS | 100% |  |
|  | 9 | **J110** |  | 2026-08-07 | 2026-08-07 |  |  |  |
| EE..1367 |  | DH1100/Electrical Yard // Set XFMR - XFMR-J110a | 1d | 2026-08-07 A | 2026-08-07 A | EE..1366 FF | 100% |  |
| EE..1368 |  | DH1100/Electrical Yard // Set XFMR - XFMR-J110p | 1d | 2026-08-07 A | 2026-08-07 A | EE..1367 SS | 100% |  |
|  | 10 | **K110** |  | 2026-08-07 | 2026-08-07 |  |  |  |

| ID | WBS | Task | Duration | Start | Finish | Predecessors | Complete | Constraint |
| --- | --- | --- | --- | --- | --- | --- | --- | --- |
| EE..1369 |  | DH1100/Electrical Yard // Set XFMR - XFMR-K110a | 1d | 2026-08-07 A | 2026-08-07 A | EE..1368 FF | 100% |  |
| EE..1370 |  | DH1100/Electrical Yard // Set XFMR - XFMR-K110p | 1d | 2026-08-07 A | 2026-08-07 A | EE..1369 SS | 100% |  |
|  | 11 | **R110** |  | 2026-08-07 | 2026-08-07 |  |  |  |
| EE..1371 |  | DH1100/Electrical Yard // Set XFMR - XFMR-R110a | 1d | 2026-08-07 A | 2026-08-07 A | EE..1370 FF | 100% |  |
| EE..1372 |  | DH1100/Electrical Yard // Set XFMR - XFMR-R110p | 1d | 2026-08-07 A | 2026-08-07 A | EE..1371 SS | 100% |  |
|  | 1 | **Mechanical Yard** |  | 2026-04-29 | 2026-10-30 |  |  |  |
|  | 1 | **Pads** |  | 2026-04-29 | 2026-07-16 |  |  |  |
| A3210 |  | DH1100/Mechanical Yard-Pads // Excavate / Form / Rebar / Pour Chiller Pads | 15d | 2026-04-29 A | 2026-05-07 A | FDN.1110 | 100% |  |
| A5861 |  | DH1100/Mechanical Yard-Pads // Set 10 " Pipe Supports | 4d | 2026-06-19 A | 2026-06-24 A | A3210 FS+14d, STRUCTURE.7655, STRUCTURE.4850 SS+2d | 100% |  |
| A5862 |  | DH1100/Mechanical Yard-Pads // Exterior Lighting | 2d | 2026-06-25 A | 2026-06-26 A | A5861 SS+2d, STRUCTURE.4850 SS+4d | 100% |  |
| A5863 |  | DH1100/Mechanical Yard-Pads // Excavate / Form / Rebar / Pour Support and TES Pads | 8d | 2026-06-29 A | 2026-07-06 A | A5862 SS+1d | 100% |  |
| A5864 |  | DH1100/Mechanical Yard-Pads // Conduit Excavation | 8d | 2026-07-07 A | 2026-07-16 A | A5863 SS+5d | 100% |  |
| A5865 |  | DH1100/Mechanical Yard-Pads // Install U/G Conduit | 8d | 2026-07-07 A | 2026-07-16 A | A5864 SS+2d | 100% |  |
| A5866 |  | DH1100/Mechanical Yard-Pads // Waterproof Conduit Penetrations | 6d | 2026-07-07 A | 2026-07-14 A | A5865 SS+1d | 100% |  |
| A5867 |  | DH1100/Mechanical Yard-Pads // Backfill Conduit | 8d | 2026-07-07 A | 2026-07-16 A | A5866 SS+1d, A5865 SS+2d | 100% |  |
|  | 5 | **Equipment** |  | 2026-07-27 | 2026-10-26 |  |  |  |
|  | 1 | **A110** |  | 2026-07-27 | 2026-09-15 |  |  |  |
| DH1100.12117 |  | DH1100/Mechanical Yard-A110 // Prep & Pour Pipe Support Foundations | 8d | 2026-07-27 A | 2026-08-03 A | A5867 SS+1d | 100% |  |
| DH1100.12023 |  | DH1100/Mechanical Yard-A110 // Install CHWP | 4d | 2026-08-17 A | 2026-08-20 A | DH1100.12117 SS+7d, STRUCTURE.7655 | 100% |  |
| DH1100.12002 |  | DH1100/Mechanical Yard-A110 // Set TES tank - TES-1CY40-A110 | 1d | 2026-08-18 A | 2026-09-08 A | DH1100.12023 | 100% |  |
| DH1100.12001 |  | DH1100/Mechanical Yard-A110 // Set Chiller - CHLR-1CY40-A110 | 1d | 2026-09-15 A | 2026-09-15 A | DH1100.12118, STRUCTURE.4850 SS, A5867, A3210 | 100% |  |
| DH1100.12118 |  | DH1100/Mechanical Yard- DH1100 - OFCI Chiller Ship Date (09/04/26) First Shipment | 0d | 2026-09-15 A | 2026-09-15 A | DH1100.12023 | 100% | finish on or after 2026-09-15 |
|  | 2 | **B110** |  | 2026-08-20 | 2026-09-15 |  |  |  |
| DH1100.12026 |  | DH1100/Mechanical Yard-B110 // Install CHWP | 1d | 2026-08-20 A | 2026-08-20 A | DH1100.12023 SS | 100% |  |
| DH1100.12027 |  | DH1100/Mechanical Yard-B110 // Install Mechanical Piping Mains (Building -to Line) | 1d | 2026-09-03 A | 2026-09-03 A | DH1100.12026 | 100% |  |
| DH1100.12004 |  | DH1100/Mechanical Yard-B110 // Set TES tank - TES-1CY40-B110 | 1d | 2026-09-08 A | 2026-09-08 A | DH1100.12026, DH1100.12002 SS | 100% |  |
| DH1100.12028 |  | DH1100/Mechanical Yard-B110 // Install Mechanical Chiller to Mains | 1d | 2026-09-09 A | 2026-09-09 A | DH1100.12027 | 100% |  |
| DH1100.12003 |  | DH1100/Mechanical Yard-B110 // Set Chiller - CHLR-1CY40-B110 | 1d | 2026-09-15 A | 2026-09-15 A | DH1100.12001 | 100% |  |
|  | 3 | **C110** |  | 2026-08-20 | 2026-09-16 |  |  |  |
| DH1100.12029 |  | DH1100/Mechanical Yard-C110 // Install CHWP | 1d | 2026-08-20 A | 2026-08-20 A | DH1100.12026 SS | 100% |  |
| DH1100.12030 |  | DH1100/Mechanical Yard-C110 // Install Mechanical Piping Mains (Building -to Line) | 1d | 2026-09-03 A | 2026-09-03 A | DH1100.12029 | 100% |  |
| DH1100.12006 |  | DH1100/Mechanical Yardt-C110 // Set TES tank - TES-1CY40-C110 | 1d | 2026-09-08 A | 2026-09-08 A | DH1100.12029, DH1100.12004 SS | 100% |  |
| DH1100.12031 |  | DH1100/Mechanical Yard-C110 // Install Mechanical Chiller to Mains | 1d | 2026-09-09 A | 2026-09-09 A | DH1100.12030 | 100% |  |
| DH1100.12005 |  | DH1100/Mechanical Yard-C110 // Set Chiller - CHLR-1CY40-C110 | 1d | 2026-09-16 A | 2026-09-16 A | DH1100.12003 | 100% |  |
|  | 4 | **D110** |  | 2026-08-21 | 2026-09-16 |  |  |  |
| DH1100.12032 |  | DH1100/Mechanical Yard-D110 // Install CHWP | 1d | 2026-08-21 A | 2026-08-21 A | DH1100.12029 | 100% |  |
| DH1100.12033 |  | DH1100/Mechanical Yard-D110 // Install Mechanical Piping Mains (Building -to Line) | 1d | 2026-09-03 A | 2026-09-03 A | DH1100.12032 | 100% |  |
| DH1100.12008 |  | DH1100/Mechanical Yard-D110 // Set TES tank - TES-1CY40-D110 | 1d | 2026-09-08 A | 2026-09-08 A | DH1100.12032, DH1100.12006 SS | 100% |  |
| DH1100.12034 |  | DH1100/Mechanical Yard-D110 // Install Mechanical Chiller to Mains | 1d | 2026-09-09 A | 2026-09-09 A | DH1100.12033 | 100% |  |
| DH1100.12007 |  | DH1100/Mechanical Yard-D110 // Set Chiller - CHLR-1CY40-D110 | 1d | 2026-09-16 A | 2026-09-16 A | DH1100.12005 | 100% |  |
|  | 5 | **E110** |  | 2026-08-21 | 2026-09-16 |  |  |  |
| DH1100.12035 |  | DH1100/Mechanical Yard-E110 // Install CHWP | 1d | 2026-08-21 A | 2026-08-21 A | DH1100.12032 SS | 100% |  |
| DH1100.12036 |  | DH1100/Mechanical Yardt-E110 // Install Mechanical Piping Mains (Building -to Line) | 1d | 2026-09-03 A | 2026-09-03 A | DH1100.12035 | 100% |  |
| DH1100.12010 |  | DH1100/Mechanical Yard-E110 // Set TES tank - TES-1CY40-E110 | 1d | 2026-09-08 A | 2026-09-08 A | DH1100.12035, DH1100.12008 SS | 100% |  |
| DH1100.12037 |  | DH1100/Mechanical Yard-E110 // Install Mechanical Chiller to Mains | 1d | 2026-09-09 A | 2026-09-09 A | DH1100.12036 | 100% |  |
| DH1100.12009 |  | DH1100/Mechanical Yard-E110 // Set Chiller - CHLR-1CY40-E110 | 1d | 2026-09-16 A | 2026-09-16 A | DH1100.12007 | 100% |  |
|  | 6 | **F110** |  | 2026-08-24 | 2026-09-16 |  |  |  |
| DH1100.12038 |  | DH1100/Mechanical Yard-F110 // Install CHWP | 1d | 2026-08-24 A | 2026-08-24 A | DH1100.12035 | 100% |  |
| DH1100.12039 |  | DH1100/Mechanical Yard-F110 // Install Mechanical Piping Mains (Building -to Line) | 1d | 2026-09-03 A | 2026-09-03 A | DH1100.12038 | 100% |  |
| DH1100.12012 |  | DH1100/Mechanical Yard-F110 // Set TES tank - TES-1CY40-F110 | 1d | 2026-09-08 A | 2026-09-08 A | DH1100.12038, DH1100.12010 SS | 100% |  |
| DH1100.12040 |  | DH1100/Mechanical Yard-F110 // Install Mechanical Chiller to Mains | 1d | 2026-09-09 A | 2026-09-09 A | DH1100.12039 | 100% |  |
| DH1100.12011 |  | DH1100/Mechanical Yard-F110 // Set Chiller - CHLR-1CY40-F110 | 1d | 2026-09-16 A | 2026-09-16 A | DH1100.12009, DH1100.12038 | 100% |  |
|  | 7 | **G110** |  | 2026-08-24 | 2026-09-17 |  |  |  |
| DH1100.12041 |  | DH1100/Mechanical Yard-G110 // Install CHWP | 1d | 2026-08-24 A | 2026-08-24 A | DH1100.12038 SS | 100% |  |
| DH1100.12042 |  | DH1100/Mechanical Yard-G110 // Install Mechanical Piping Mains (Building -to Line) | 1d | 2026-09-04 A | 2026-09-04 A | DH1100.12041 | 100% |  |
| DH1100.12014 |  | DH1100/Mechanical Yard-G110 // Set TES tank - TES-1CY40-G110 | 1d | 2026-09-09 A | 2026-09-09 A | DH1100.12041, DH1100.12012 | 100% |  |
| DH1100.12043 |  | DH1100/Mechanical Yard-G110 // Install Mechanical Chiller to Mains | 1d | 2026-09-10 A | 2026-09-10 A | DH1100.12042 | 100% |  |
| DH1100.12013 |  | DH1100/Mechanical Yard-G110 // Set Chiller - CHLR-1CY40-G110 | 1d | 2026-09-17 A | 2026-09-17 A | DH1100.12011 | 100% |  |
|  | 8 | **H110** |  | 2026-08-24 | 2026-09-17 |  |  |  |
| DH1100.12044 |  | DH1100/Mechanical Yard-H110 // Install CHWP | 1d | 2026-08-24 A | 2026-08-24 A | DH1100.12041 SS | 100% |  |
| DH1100.12045 |  | DH1100/Mechanical Yard-H110 // Install Mechanical Piping Mains (Building -to Line) | 1d | 2026-09-04 A | 2026-09-04 A | DH1100.12044 | 100% |  |
| DH1100.12016 |  | DH1100/Mechanical Yard-H110 // Set TES tank - TES-1CY40-H110 | 1d | 2026-09-09 A | 2026-09-09 A | DH1100.12044, DH1100.12014 | 100% |  |
| DH1100.12046 |  | DH1100/Mechanical Yard-H110 // Install Mechanical Chiller to Mains | 1d | 2026-09-10 A | 2026-09-10 A | DH1100.12045 | 100% |  |
| DH1100.12015 |  | DH1100/Mechanical Yard-H110 // Set Chiller - CHLR-1CY40-H110 | 1d | 2026-09-17 A | 2026-09-17 A | DH1100.12013 | 100% |  |
|  | 9 | **J110** |  | 2026-08-25 | 2026-09-17 |  |  |  |
| DH1100.12047 |  | DH1100/Mechanical Yard-J110 // Install CHWP | 1d | 2026-08-25 A | 2026-08-25 A | DH1100.12044 | 100% |  |
| DH1100.12048 |  | DH1100/Mechanical Yard-J110 // Install Mechanical Piping Mains (Building -to Line) | 1d | 2026-09-04 A | 2026-09-04 A | DH1100.12047 | 100% |  |
| DH1100.12018 |  | DH1100/Mechanical Yard-J110 // Set TES tank - TES-1CY40-J110 | 1d | 2026-09-09 A | 2026-09-09 A | DH1100.12016, DH1100.12047 | 100% |  |
| DH1100.12049 |  | DH1100/Mechanical Yard-J110 // Install Mechanical Chiller to Mains | 1d | 2026-09-10 A | 2026-09-10 A | DH1100.12048 | 100% |  |
| DH1100.12017 |  | DH1100/Mechanical Yard-J110 // Set Chiller - CHLR-1CY40-J110 | 1d | 2026-09-17 A | 2026-09-17 A | DH1100.12015 | 100% |  |

| ID | WBS | Task | Duration | Start | Finish | Predecessors | Complete | Total float |
| --- | --- | --- | --- | --- | --- | --- | --- | --- |
|  | 10 | **K110** |  | 2026-08-25 | 2026-09-17 |  |  |  |
| DH1100.12050 |  | DH1100/Mechanical Yard-K110 // Install CHWP | 1d | 2026-08-25 A | 2026-08-25 A | DH1100.12047 | 100% |  |
| DH1100.12051 |  | DH1100/Mechanical Yard-K110 // Install Mechanical Piping Mains (Building -to Line) | 1d | 2026-09-04 A | 2026-09-04 A | DH1100.12050 | 100% |  |
| DH1100.12020 |  | DH1100/Mechanical Yard-K110 // Set TES tank - TES-1CY40-K110 | 1d | 2026-09-09 A | 2026-09-09 A | DH1100.12018, DH1100.12050 | 100% |  |
| DH1100.12052 |  | DH1100/Mechanical Yard-K110 // Install Mechanical Chiller to Mains | 1d | 2026-09-10 A | 2026-09-10 A | DH1100.12051 | 100% |  |
| DH1100.12019 |  | DH1100/Mechanical Yard-K110 // Set Chiller - CHLR-1CY40-K110 | 1d | 2026-09-17 A | 2026-09-17 A | DH1100.12017 | 100% |  |
|  | 11 | **R110** |  | 2026-08-25 | 2026-09-17 |  |  |  |
| DH1100.12053 |  | DH1100/Mechanical Yard-R110 // Install CHWP | 1d | 2026-08-25 A | 2026-08-25 A | DH1100.12050 SS | 100% |  |
| DH1100.12054 |  | DH1100/Mechanical Yard-R110 // Install Mechanical Piping Mains (Building -to Line) | 1d | 2026-09-04 A | 2026-09-04 A | DH1100.12053 | 100% |  |
| DH1100.12022 |  | DH1100/Mechanical Yard-R110 // Set TES tank - TES-1CY40-R110 | 1d | 2026-09-09 A | 2026-09-09 A | DH1100.12020, DH1100.12053 | 100% |  |
| DH1100.12055 |  | DH1100/Mechanical Yard-R110 // Install Mechanical Chiller to Mains | 1d | 2026-09-10 A | 2026-09-10 A | DH1100.12054 | 100% |  |
| DH1100.12021 |  | DH1100/Mechanical Yard-R110 // Set Chiller - CHLR-1CY40-R110 | 1d | 2026-09-17 A | 2026-09-17 A | DH1100.12019 | 100% |  |
|  | 12 | **Test & Flushing** |  | 2026-09-21 | 2026-10-26 |  |  |  |
| A5730 |  | DH1100/Mechanical Yard-Test & Flushing // Line Test & Checking | 5d | 2026-09-21 A | 2026-09-23 A | DH1100.12055, DH1100.12052, DH1100.12049, DH1100.12046, DH1100.12043, DH1100.12040, DH1100.12037, DH1100.12034, DH1100.12031, DH1100.12028, DH1100.12023, DH1100.12021, DH1100.12022 | 100% |  |
| A5732 |  | DH1100/Mechanical Yard-Test & Flushing // Electrical & Controls Testing / Checking | 3d | 2026-09-30 | 2026-10-02 | A5730 |  | 26d |
| A5731 |  | DH1100/Mechanical Yard-Test & Flushing // Fill, Flush & Purge | 15d | 2026-10-05 | 2026-10-26 | A5732 |  | 26d |
|  | 2 | **Electrical & Controls** |  | 2026-05-20 | 2026-10-30 |  |  |  |
| A3180 |  | DH1100/Electrical & Controls // Excavate Raceways from Building to Chiller Pad | 8d | 2026-05-20 A | 2026-06-01 A | FDN.1070 SS+4d, A3210 | 100% |  |
| A3190 |  | DH1100/Electrical & Controls // Install Raceway from Building To Chiller Pad | 8d | 2026-06-02 A | 2026-06-19 A | A3180 | 100% |  |
| A3200 |  | DH1100/Electrical & Controls // Backfill Chiller Raceways from Building to Chiller Pad | 8d | 2026-06-23 A | 2026-07-02 A | A3190 | 100% |  |
| A3340 |  | DH1100/Electrical & Controls // Install Controls conduits and wire to Chiller units | 12d | 2026-07-02 A | 2026-07-20 A | A3190 SS | 100% |  |
| A5699 |  | DH1100/Electrical & Controls // Mechanical CWP Support Caisson Footings | 6d | 2026-07-06 A | 2026-07-13 A | A3200 | 100% |  |
| A3320 |  | DH1100/Electrical & Controls // Install Panels and Raceways to CHWP | 10d | 2026-09-30 | 2026-10-14 | A3200, DH1100.12053, DH1100.12050, DH1100.12047, DH1100.12044, DH1100.12041, DH1100.12038, DH1100.12035, DH1100.12032, DH1100.12029, DH1100.12026, DH1100.12023 |  | 75d |
| A5698 |  | DH1100/Electrical & Controls // Fine Grade Install Landscape Fabric & Install Rock | 5d | 2026-09-30 | 2026-10-06 | A5699 |  | 164d |
| A3380 |  | DH1100/Electrical & Controls // Chiller units Ready to Energize | 6d | 2026-10-07 | 2026-10-15 | A3340, A5698 |  | 164d |
| A3300 |  | DH1100/Electrical & Controls // Raceway connections to Chiller units | 6d | 2026-10-15 | 2026-10-22 | STRUCTURE.4850 SS, A3320, DH1100.12021, DH1100.12019, DH1100.12017, DH1100.12015, DH1100.12013, DH1100.12011, DH1100.12009, DH1100.12007, DH1100.12005, DH1100.12003, DH1100.12001 |  | 75d |
| A3360 |  | DH1100/Electrical & Controls // Pull and Terminate Feeders to Chiller units | 6d | 2026-10-23 | 2026-10-30 | A3300 |  | 75d |
|  | 2 | **Roof - RTUs** |  | 2026-07-08 | 2026-11-12 |  |  |  |
|  | 1 | **Column Lines 1.2 thru 2.0** |  | 2026-07-08 | 2026-11-12 |  |  |  |
| DH1100.12058 |  | DH1100/Roof - RTUs // - RTU-RT- 02 | 1d | 2026-07-08 A | 2026-07-09 A | DH1100.7840 | 100% |  |
| DH1100.12057 |  | DH1100/Roof - RTUs // - RTU-RT- 03 | 1d | 2026-07-10 A | 2026-07-13 A | DH1100.12058 SS+2d | 100% |  |
| DH1100.12064 |  | DH1100/Roof - RTUs // - RTU-RT- 04 | 1d | 2026-07-13 A | 2026-07-14 A | DH1100.12057 | 100% |  |
| DH1100.12059 |  | DH1100/Roof - RTUs // Install Mechanical Piping | 15d | 2026-09-30 | 2026-10-21 | DH1100.12064, DH1100.12058 |  | -19d |
| DH1200.7841 |  | DH1100/Roof - RTUs // Install Electrical Conduit and Controls Piping | 15d | 2026-10-07 | 2026-10-28 | DH1100.12064, DH1100.12059 FF+5d |  | -19d |
| DH1100.12056 |  | DH1100/Roof - RTUs // Install heat trace system | 15d | 2026-10-22 | 2026-11-12 | DH1100.12059 |  | 14d |
|  | 1 | **Interior Build Out** |  | 2026-06-25 | 2027-02-09 |  |  |  |
|  | 9 | **Flex 1000A10** |  | 2026-06-25 | 2026-10-28 |  |  |  |
| F.1000A.1010 |  | DH1100/Flex 1000A10 // MEPF Layout of Overhead Supports | 2d | 2026-06-25 A | 2026-06-26 A | STRUCTURE.7380, SOG.1442 | 100% |  |
| F.1000A.1020 |  | DH1100/Flex 1000A10 // MEPF Install High Overhead Systems | 6d | 2026-06-29 A | 2026-07-07 A | F.1000A.1010 | 100% |  |
| F.1000A.1040 |  | DH1100/Flex 1000A10 // Frame Walls including Backing | 4d | 2026-06-29 A | 2026-07-02 A | F.1000A.1010, SOG.1442 | 100% |  |
| F.1000A.1060 |  | DH1100/Flex 1000A10 // MEPF Install Rough Wall | 2d | 2026-07-06 A | 2026-08-04 A | F.1000A.1040 | 100% |  |
| F.1000A.1050 |  | DH1100/Flex 1000A10 // Install Door Frames | 1d | 2026-07-29 A | 2026-07-29 A | F.1000A.1040 FF | 100% |  |
| F.1000A.1070 |  | DH1100/Flex 1000A10 // Install Top Down Sheet Rock | 5d | 2026-08-03 A | 2026-08-07 A | F.1000A.1020, F.1000A.1040 SS+2d | 100% |  |
| F.1000A.1080 |  | DH1100/Flex 1000A10 // Rough Wall Inspspection (Approval to Close up) | 1d | 2026-08-03 A | 2026-08-17 A | F.1000A.1060 | 100% |  |
| F.1000A.1161 |  | DH1100/Flex 1000A10 // Rough-In Security | 2d | 2026-08-03 A | 2026-09-10 A | F.1000A.1020 | 100% |  |
| F.1000A.1090 |  | DH1100/Flex 1000A10 // Install Balance of Sheetrock | 3d | 2026-08-10 A | 2026-08-20 A | F.1000A.1070, F.1000A.1080 | 100% |  |
| F.1000A.1163 |  | DH1100/Flex 1000A10 // Install Security Devices | 2d | 2026-08-10 A | 2026-08-25 A | F.1000A.1090 | 100% |  |
| F.1000A.1120 |  | DH1100/Flex 1000A10 // Install MEPF Overhead Ceiling Rough | 3d | 2026-08-20 A | 2026-08-31 A | F.1000A.1050 | 100% |  |
| F.1000A.1130 |  | DH1100/Flex 1000A10 // Install Lighting, Fire Alarm & Fire Protection | 2d | 2026-08-21 A | 2026-09-10 A | F.1000A.1120 SS | 100% |  |
| F.1000A.1100 |  | DH1100/Flex 1000A10 // Tape and Finish Walls | 6d | 2026-09-17 A | 2026-10-07 | F.1000A.1090 |  | 24d |
| F.1000A.1140 |  | DH1100/Flex 1000A10 // Wall Touch up Final Coat of Paint | 3d | 2026-09-30 | 2026-10-02 | F.1000A.1130 |  | 31d |
| F.1000A.1162 |  | DH1100/Flex 1000A10 // Pull & Test Security Cable | 3d | 2026-09-30 | 2026-10-02 | F.1000A.1161 |  | 34d |
| F.1000A.1325 |  | DH1100/Flex 1000A10 // BMS & EPMS Rough-In | 2d | 2026-09-30 | 2026-10-01 | F.1000A.1161 FF, F.1000A.1161 SS |  | 37d |
| F.1000A.1150 |  | DH1100/Flex 1000A10 // Install Wall Base, Trim, and Devices | 3d | 2026-10-05 | 2026-10-07 | F.1000A.1140 |  | 31d |
| F.1000A.1110 |  | DH1100/Flex 1000A10 // Prime and First Coat of Paint | 2d | 2026-10-08 | 2026-10-09 | F.1000A.1100 |  | 24d |
| F.1000A.1000 |  | DH1100/Flex 1000A10 // Seal Concrete | 5d | 2026-10-13 | 2026-10-19 | F.1000A.1110, F.1000A.1100 |  | 26d |
| F.1000A.1164 |  | DH1100/Flex 1000A10 // Mount & Terminate Security Devices | 5d | 2026-10-13 | 2026-10-19 | F.1000A.1110, F.1000A.1163 |  | 24d |
| F.1000A.1165 |  | DH1100/Flex 1000A10 // Test Security Devices | 2d | 2026-10-20 | 2026-10-21 | F.1000A.1325 FF, F.1000A.1162, F.1000A.1150, F.1000A.1164 |  | 24d |
| F.1000A.1160 |  | DH1100/Flex 1000A10 // Suffolk Pre Punch | 5d | 2026-10-22 | 2026-10-28 | F.1000A.1000, F.1000A.1165, F.1000A.1050, F.1000A.1150 |  | 24d |
|  | 7 | **Electrical Room #5101** |  | 2026-06-29 | 2026-11-03 |  |  |  |
| ER.5101.1010 |  | DH100/Electrical Room #5101 // MEPF Layout of Overhead Supports | 2d | 2026-06-29 A | 2026-06-30 A | F.1000A.1010 | 100% |  |
| ER.5101.1020 |  | DH100/Electrical Room #5101 // MEPF Install High Overhead Systems | 6d | 2026-07-06 A | 2026-07-13 A | ER.5101.1010 | 100% |  |
| ER.5101.1040 |  | DH100/Electrical Room #5101 // Frame Walls including Backing | 4d | 2026-07-16 A | 2026-08-03 A | ER.5101.1010, F.1000A.1010 | 100% |  |
| ER.5101.1060 |  | DH100/Electrical Room #5101 // MEPF Install Rough Wall | 2d | 2026-08-04 A | 2026-08-05 A | ER.5101.1040 | 100% |  |
| ER.5101.1070 |  | DH100/Electrical Room #5101 // Install Top Down Sheet Rock | 5d | 2026-08-05 A | 2026-08-11 A | ER.5101.1040 SS+2d, ER.5101.1060 | 100% |  |
| B120001.3129 |  | DH100/Electrical Room #5101 // Install Overhead Cable Ladder / 36" Cable Tray - TFO | 5d | 2026-08-05 A | 2026-09-08 A | ER.5101.1020 | 100% |  |
| ER.5101.1080 |  | DH100/Electrical Room #5101 // Rough Wall Inspspection (Approval to Close up) | 1d | 2026-08-05 A | 2026-08-19 A | ER.5101.1060, ER.5101.1040 | 100% |  |
| ER.5101.1120 |  | DH100/Electrical Room #5101 // Install MEPF Overhead Ceiling Rough | 3d | 2026-08-05 A | 2026-08-26 A | ER.5101.1020 | 100% |  |
| ER.5101.1090 |  | DH100/Electrical Room #5101 // Install Balance of Sheetrock | 3d | 2026-08-12 A | 2026-08-27 A | ER.5101.1080, ER.5101.1070 | 100% |  |
| ER.5101.1170 |  | DH100/Electrical Room #5101 // Install Overhead Buss duct | 2d | 2026-08-12 A | 2026-09-08 A | ER.5101.1020, ER.5101.1070, A2960 | 100% |  |

| ID | WBS | Task | Duration | Start | Finish | Predecessors | Complete | Total float | Constraint |
| --- | --- | --- | --- | --- | --- | --- | --- | --- | --- |
| ER.5101.1180 |  | DH100/Electrical Room #5101 // Install Cable Tray | 3d | 2026-08-12 A | 2026-08-27 A | ER.5101.1170 SS | 100% |  |  |
| ER.5101.1320 |  | DH100/Electrical Room #5101 // Buss Duct Tie In to Elect Gear | 3d | 2026-08-14 A | 2026-09-21 A | ER.5101.1170 | 100% |  |  |
| ER.5101.1100 |  | DH100/Electrical Room #5101 // Tape and Finish Walls | 6d | 2026-08-17 A | 2026-09-01 A | ER.5101.1150 SS, ER.5101.1090 | 100% |  |  |
| ER.5101.1050 |  | DH100/Electrical Room #5101 // Install Door Frames | 1d | 2026-08-18 A | 2026-08-18 A | ER.5101.1040 FF | 100% |  |  |
| ER.5101.1200 |  | DH100/Electrical Room #5101 // Install Cable Buss From Exterior | 3d | 2026-08-19 A | 2026-09-28 A | ER.5101.1320 | 100% |  |  |
| F.1000A.1166 |  | DH100/Electrical Room #5101 // Rough-In Security | 2d | 2026-08-19 A | 2026-08-28 A | ER.5101.1020 | 100% |  |  |
| ER.5101.1290 |  | DH100/Electrical Room #5101 // Pull Misc Feeder and Branch Circuits | 6d | 2026-08-24 A | 2026-09-16 A | ER.5101.1180 SS | 100% |  |  |
| ER.5101.1150 |  | DH100/Electrical Room #5101 // Install Wall Base, Trim, and Devices | 3d | 2026-08-25 A | 2026-08-27 A | ER.5101.1050, ER.5101.1040, ER.5101.1020 | 100% |  |  |
| ER.5101.1110 |  | DH100/Electrical Room #5101 // Prime and First Coat of Paint | 2d | 2026-08-31 A | 2026-09-01 A | ER.5101.1100 FF | 100% |  |  |
| ER.5101.3107 |  | DH100/Electrical Room #5101 // Room Ready to Receive Equipment | 0d | 2026-09-01 A | 2026-09-01 A | ER.5101.1110 FF | 100% |  |  |
| ER.5101.1250 |  | DH100/Electrical Room #5101 // Set CRAH-ER5101- 01 | 1d | 2026-09-02 A | 2026-09-02 A | ER.5101.3107 | 100% |  |  |
| ER.5101.3031 |  | DH100/Electrical Room #5101 // Set CRAH-ER5101- 02 | 1d | 2026-09-02 A | 2026-09-02 A | ER.5101.1250 | 100% |  |  |
| ER.5101.3032 |  | DH100/Electrical Room #5101 // Set CRAH-ER5101- 03 | 1d | 2026-09-03 A | 2026-09-03 A | ER.5101.3031 | 100% |  |  |
| ER.5101.3033 |  | DH100/Electrical Room #5101 // Set CRAH-ER5101- 04 | 1d | 2026-09-03 A | 2026-09-03 A | ER.5101.3032 | 100% |  |  |
| ER.5101.3034 |  | DH100/Electrical Room #5101 // Set CRAH-ER5101- 05 | 1d | 2026-09-03 A | 2026-09-03 A | ER.5101.3033 | 100% |  |  |
| ER.5101.3035 |  | DH100/Electrical Room #5101 // Set CRAH-ER5101- 06 | 1d | 2026-09-03 A | 2026-09-03 A | ER.5101.3034 | 100% |  |  |
| ER.5101.1190 |  | DH100/Electrical Room #5101 // Set Skid - SKID-A110 | 1d | 2026-09-03 A | 2026-09-29 A | ER.5101.3107, ER.5101.3109 | 100% |  |  |
| ER.5101.3095 |  | DH100/Electrical Room #5101 // Set PDU - PDU-R110-01 | 1d | 2026-09-24 A | 2026-09-30 | ER.5101.1180, ER.5101.3035 |  | -7d |  |
| ER.5101.3036 |  | DH100/Electrical Room #5101 // Set Skid - SKID-B110 | 1d | 2026-09-29 A | 2026-09-30 | ER.5101.1190 SS |  | -11d |  |
| ER.5101.3037 |  | DH100/Electrical Room #5101 // Set Skid - SKID-C110 | 1d | 2026-09-29 A | 2026-09-30 | ER.5101.3036 SS |  | -11d |  |
| ER.5101.3109 |  | DH100/Electrical Room #5101 // DH1100 - OFCI Skid Ship Date (08/31/26) First Shipment | 0d | 2026-09-29 A | 2026-09-29 A | ER.5101.3107 FF | 100% |  | finish on or after 2026-09-29 |
| ER.5101.3101 |  | DH100/Electrical Room #5101 // Set UPS - UPS-R110 | 1d | 2026-09-30 A | 2026-09-30 | ER.5101.1180 |  | -7d |  |
| B120001.3130 |  | DH100/Electrical Room #5101 // Install Overhead HAC - TFO | 5d | 2026-09-30 | 2026-10-06 | B120001.3129 |  | 27d |  |
| ER.5101.1210 |  | DH100/Electrical Room #5101 // Pull Cable Buss Feeders | 6d | 2026-09-30 | 2026-10-07 | ER.5101.1200 FF |  | -8d |  |
| ER.5101.1220 |  | DH100/Electrical Room #5101 // Pull Cable Tray Feeders (CRAHU/CDU) | 6d | 2026-09-30 | 2026-10-07 | ER.5101.1180 |  | -10d |  |
| ER.5101.1240 |  | DH100/Electrical Room #5101 // Land and Terminate Cabel Tray Feeders In Gear | 10d | 2026-09-30 | 2026-10-14 | ER.5101.1210 SS |  | -8d |  |
| ER.5101.3038 |  | DH100/Electrical Room #5101 // Set Skid - SKID-D110 | 1d | 2026-09-30 | 2026-09-30 | ER.5101.3037 SS |  | -11d |  |
| ER.5101.3039 |  | DH100/Electrical Room #5101 // Set Skid - SKID-E110 | 1d | 2026-09-30 | 2026-09-30 | ER.5101.3038 SS |  | -11d |  |
| F.1000A.1167 |  | DH100/Electrical Room #5101 // Pull & Test Security Cable | 3d | 2026-09-30 | 2026-10-02 | F.1000A.1166 |  | 29d |  |
| F.1000A.1335 |  | DH100/Electrical Room #5101 // BMS & EPMS Rough-In | 2d | 2026-09-30 | 2026-10-01 | F.1000A.1166 FF, F.1000A.1166 SS |  | 39d |  |
| ER.5101.1260 |  | DH100/Electrical Room #5101 // Mechanical Connections to CRAHU | 5d | 2026-10-01 | 2026-10-07 | ER.5101.3035, ER.5101.1250, ER.5101.3101, ER.5101.3095 |  | -7d |  |
| F.1000A.1168 |  | DH100/Electrical Room #5101 // Install Security Devices | 2d | 2026-10-07 | 2026-10-08 | B120001.3130, F.1000A.1167 |  | 27d |  |
| ER.5101.1230 |  | DH100/Electrical Room #5101 // Terminate Cable Buss Feeders | 3d | 2026-10-08 | 2026-10-13 | ER.5101.1210 |  | -7d |  |
| ER.5101.1270 |  | DH100/Electrical Room #5101 // Install Condensate lines from CRAHU's | 2d | 2026-10-08 | 2026-10-09 | ER.5101.1260 |  | 34d |  |
| ER.5101.1300 |  | DH100/Electrical Room #5101 // Land and Terminate Misc Feeder and Branch Circuits | 6d | 2026-10-08 | 2026-10-16 | ER.5101.1220, ER.5101.1290 |  | -10d |  |
| ER.5101.1280 |  | DH100/Electrical Room #5101 // Install Elec Feeders to CRAHU's | 3d | 2026-10-14 | 2026-10-16 | ER.5101.1260, ER.5101.1180, ER.5101.1300 FF |  | -10d |  |
| ER.5101.1130 |  | DH100/Electrical Room #5101 // Install Lighting, Fire Alarm & Fire Protection | 2d | 2026-10-19 | 2026-10-20 | ER.5101.1120, ER.5101.1300 |  | 20d |  |
| ER.5101.1310 |  | DH100/Electrical Room #5101 // Final FOD Check of all Panels | 2d | 2026-10-19 | 2026-10-20 | ER.5101.1230, ER.5101.1240, ER.5101.1320, ER.5101.1300, ER.5101.1280 |  | -10d |  |
| ER.5101.1140 |  | DH100/Electrical Room #5101 // Wall Touch up Final Coat of Paint | 3d | 2026-10-21 | 2026-10-23 | ER.5101.1100, ER.5101.1150, ER.5101.1130 |  | 25d |  |
| F.1000A.1169 |  | DH100/Electrical Room #5101 // Mount & Terminate Security Devices | 5d | 2026-10-21 | 2026-10-27 | F.1000A.1168, ER.5101.1130 |  | 20d |  |
| ER.5101.1330 |  | DH100/Electrical Room #5101 // Mechanical Equipment Pre-Start up | 2d | 2026-10-26 | 2026-10-27 | ER.5101.1140, A3170, ER.5101.1280, ER.5101.1270, ER.5101.1260, ER.5101.1240, ER.5101.1050 |  | 25d |  |
| ER.5101.1160 |  | DH100/Electrical Room #5101 // Suffolk Pre Punch | 5d | 2026-10-28 | 2026-11-03 | ER.5101.1150 SS, F.1000A.1170 SS |  | 20d |  |
| F.1000A.1170 |  | DH100/Electrical Room #5101 // Test Security Devices | 2d | 2026-10-28 | 2026-10-29 | F.1000A.1335 FF, F.1000A.1169, ER.5101.1150 |  | 20d |  |
|  | 2 | **Electrcal Room #5104** |  | 2026-06-30 | 2026-10-23 |  |  |  |  |
| ER.5104.1010 |  | DH100/Electrcal Room #5104 // MEPF Layout of Overhead Supports | 2d | 2026-06-30 A | 2026-07-01 A | ER.5101.1010 | 100% |  |  |
| ER.5104.1020 |  | DH100/Electrcal Room #5104 // MEPF Install High Overhead Systems | 6d | 2026-07-08 A | 2026-07-15 A | ER.5104.1010 | 100% |  |  |
| ER.5104.1040 |  | DH100/Electrcal Room #5104 // Frame Walls including Backing | 4d | 2026-07-09 A | 2026-08-03 A | ER.5104.1010 | 100% |  |  |
| ER.5104.1070 |  | DH100/Electrcal Room #5104 // Install Top Down Sheet Rock | 5d | 2026-08-03 A | 2026-08-07 A | ER.5104.1040 | 100% |  |  |
| ER.5104.1060 |  | DH100/Electrcal Room #5104 // MEPF Install Rough Wall | 2d | 2026-08-04 A | 2026-08-05 A | ER.5104.1040 | 100% |  |  |
| B120001.3127 |  | DH100/Electrical Room #5104 // Install Overhead Cable Ladder / 36" Cable Tray - TFO | 5d | 2026-08-07 A | 2026-09-08 A | ER.5104.1020 | 100% |  |  |
| F.1000A.1171 |  | DH100/Electrical Room #5104 // Rough-In Security | 2d | 2026-08-07 A | 2026-08-26 A | ER.5104.1020 | 100% |  |  |
| ER.5104.1090 |  | DH100/Electrical Room #5104 // Rough Wall Inspection (Approval to Close up) | 1d | 2026-08-10 A | 2026-08-10 A | ER.5104.1060 | 100% |  |  |
| ER.5104.1050 |  | DH100/Electrical Room #5104 // Install Door Frames | 1d | 2026-08-11 A | 2026-08-11 A | ER.5104.1040 FF | 100% |  |  |
| ER.5104.1080 |  | DH100/Electrical Room #5104 // Install Overhead Buss duct | 2d | 2026-08-12 A | 2026-09-25 A | ER.5104.1020, ER.5104.1070 | 100% |  |  |
| ER.5104.1130 |  | DH100/Electrical Room #5104 // Install MEPF Overhead Ceiling Rough | 3d | 2026-08-13 A | 2026-09-10 A | ER.5104.1140 SS | 100% |  |  |
| ER.5104.1140 |  | DH100/Electrical Room #5104 // Install Cable Tray | 3d | 2026-08-13 A | 2026-08-27 A | ER.5104.1070 | 100% |  |  |
| ER.5104.1190 |  | DH100/Electrical Room #5104 // Install Cable Buss From Exterior | 3d | 2026-08-18 A | 2026-09-28 A | ER.5104.1140 | 100% |  |  |
| ER.5104.1100 |  | DH100/Electrical Room #5104 // Install Balance of Sheetrock | 3d | 2026-08-19 A | 2026-08-21 A | ER.5104.1090 | 100% |  |  |
| ER.5104.1110 |  | DH100/Electrical Room #5104 // Tape and Finish Walls | 6d | 2026-08-24 A | 2026-08-31 A | ER.5104.1100 | 100% |  |  |
| ER.5104.1320 |  | DH100/Electrical Room #5104 // Install Wall Base, Trim, and Devices | 3d | 2026-08-24 A | 2026-08-26 A | ER.5104.1050 | 100% |  |  |
| ER.5104.1120 |  | DH100/Electrical Room #5104 // Prime and First Coat of Paint | 2d | 2026-09-01 A | 2026-09-02 A | ER.5104.1110, ER.5104.1140 | 100% |  |  |
| ER.5104.1290 |  | DH100/Electrical Room #5104 // Install Lighting, Fire Alarm & Fire Protection | 2d | 2026-09-02 A | 2026-09-03 A | B120001.3127 SS | 100% |  |  |
| ER.5104.3036 |  | DH100/Electrical Room #5104 // Room Ready to Receive Equipment | 0d | 2026-09-02 A | 2026-09-02 A | ER.5104.1120 FF | 100% |  |  |
| ER.5104.1150 |  | DH100/Electrical Room #5104 // Set CRAH-ER5104- 01 | 1d | 2026-09-04 A | 2026-09-04 A | ER.5104.1140, ER.5104.3036 | 100% |  |  |
| ER.5104.3031 |  | DH100/Electrical Room #5104 // Set CRAH-ER5104- 02 | 1d | 2026-09-04 A | 2026-09-04 A | ER.5104.1150 | 100% |  |  |
| ER.5104.3032 |  | DH100/Electrical Room #5104 // Set CRAH-ER5104- 03 | 1d | 2026-09-04 A | 2026-09-04 A | ER.5104.3031 | 100% |  |  |
| ER.5104.3033 |  | DH100/Electrical Room #5104 // Set CRAH-ER5104- 04 | 1d | 2026-09-04 A | 2026-09-04 A | ER.5104.3032 | 100% |  |  |
| ER.5104.3034 |  | DH100/Electrical Room #5104 // Set CRAH-ER5104- 05 | 1d | 2026-09-04 A | 2026-09-04 A | ER.5104.3033 | 100% |  |  |
| ER.5104.3035 |  | DH100/Electrical Room #5104 // Set CRAH-ER5104- 06 | 1d | 2026-09-04 A | 2026-09-04 A | ER.5104.3034 | 100% |  |  |
| ER.5104.1300 |  | DH100/Electrical Room #5104 // Wall Touch up Final Coat of Paint | 3d | 2026-09-09 A | 2026-09-11 A | ER.5104.1290 | 100% |  |  |

| ID | WBS | Task | Duration | Start | Finish | Predecessors | Complete | Total float | Constraint |
| --- | --- | --- | --- | --- | --- | --- | --- | --- | --- |
| ER.5104.1200 |  | DH100/Electrical Room #5104 // Pull Cable Tray Feeders (CRAHU/CDU) | 10d | 2026-09-22 A | 2026-10-05 | ER.5104.1140 | 60% | -8d |  |
| ER.5101.3111 |  | DH100/Electrical Room #5104 // DH1100 - OFCI Skid Ship Date (09/02/26) 2ND Shipment | 0d | 2026-09-30 A | 2026-09-30 A | ER.5104.3036 FF | 100% |  | finish on or after 2026-09-30 |
| B120001.3128 |  | DH100/Electrical Room #5104 // Install Overhead HAC - TFO | 5d | 2026-09-30 | 2026-10-06 | B120001.3127 |  | -13d |  |
| ER.5104.1160 |  | DH100/Electrical Room #5104 // Mechanical Connections to CRAHU | 5d | 2026-09-30 | 2026-10-06 | ER.5104.3035 FF |  | -5d |  |
| ER.5104.1180 |  | DH100/Electrical Room #5104 // Pull Misc Feeder and Branch Circuits | 10d | 2026-09-30 | 2026-10-14 | ER.5104.1130 |  | -12d |  |
| ER.5104.1230 |  | DH100/Electrical Room #5104 // Buss Duct Tie In to Elect Gear | 3d | 2026-09-30 | 2026-10-02 | ER.5104.1080, ER.5104.1140 |  | -1d |  |
| F.1000A.1172 |  | DH100/Electrical Room #5104 // Pull & Test Security Cable | 3d | 2026-09-30 | 2026-10-02 | F.1000A.1171 |  | 27d |  |
| F.1000A.1345 |  | DH100/Electrical Room #5104 // BMS & EPMS Rough-In | 2d | 2026-09-30 | 2026-10-01 | F.1000A.1171 FF, F.1000A.1171 SS |  | 37d |  |
| ER.5101.3040 |  | DH100/Electrical Room #5104 // Set Skid - SKID-F110 | 1d | 2026-10-01 | 2026-10-01 | ER.5101.3039, ER.5101.3111 |  | -11d |  |
| ER.5101.3041 |  | DH100/Electrical Room #5104 // Set Skid - SKID-G110 | 1d | 2026-10-01 | 2026-10-01 | ER.5101.3040 SS |  | -11d |  |
| ER.5101.3042 |  | DH100/Electrical Room #5104 // Set Skid - SKID-H110 | 1d | 2026-10-02 | 2026-10-02 | ER.5101.3041 |  | -11d |  |
| ER.5101.3043 |  | DH100/Electrical Room #5104 // Set Skid - SKID-J110 | 1d | 2026-10-02 | 2026-10-02 | ER.5101.3042 SS |  | -11d |  |
| ER.5101.3044 |  | DH100/Electrical Room #5104 // Set Skid - SKID-K110 | 1d | 2026-10-02 | 2026-10-02 | ER.5101.3043 SS |  | -11d |  |
| ER.5104.1220 |  | DH100/Electrical Room #5104 // Install Elec Feeders to CRAHU's | 3d | 2026-10-02 | 2026-10-06 | ER.5104.1160 FF, ER.5104.1140 |  | -3d |  |
| ER.5104.1240 |  | DH100/Electrical Room #5104 // Pull Cable Buss Feeders | 6d | 2026-10-05 | 2026-10-13 | ER.5101.3044, ER.5104.1190 |  | -10d |  |
| ER.5104.1280 |  | DH100/Electrical Room #5104 // Land and Terminate Cabel Tray Feeders In Gear | 10d | 2026-10-05 | 2026-10-19 | ER.5104.1200 SS+5d, ER.5101.3044 |  | -11d |  |
| F.1000A.1173 |  | DH100/Electrical Room #5104 // Install Security Devices | 2d | 2026-10-05 | 2026-10-06 | F.1000A.1172 |  | 27d |  |
| ER.5104.1210 |  | DH100/Electrical Room #5104 // Install Condensate lines from CRAHU's | 2d | 2026-10-07 | 2026-10-08 | ER.5104.1160 |  | -5d |  |
| ER.5104.1260 |  | DH100/Electrical Room #5104 // Land and Terminate Misc Feeder and Branch Circuits | 10d | 2026-10-07 | 2026-10-21 | B120001.3128, ER.5104.1180 FF+4d |  | -13d |  |
| F.1000A.1174 |  | DH100/Electrical Room #5104 // Mount & Terminate Security Devices | 5d | 2026-10-07 | 2026-10-14 | F.1000A.1173, ER.5104.1290 |  | 27d |  |
| ER.5104.1270 |  | DH100/Electrical Room #5104 // Terminate Cable Buss Feeders | 3d | 2026-10-14 | 2026-10-16 | EE..1372, ER.5104.1240 |  | -10d |  |
| F.1000A.1175 |  | DH100/Electrical Room #5104 // Test Security Devices | 2d | 2026-10-15 | 2026-10-16 | F.1000A.1345 FF, ER.5104.1300, F.1000A.1174, ER.5104.1320 |  | 27d |  |
| ER.5104.1330 |  | DH100/Electrical Room #5104 // Suffolk Pre Punch | 5d | 2026-10-19 | 2026-10-23 | ER.5104.1320, F.1000A.1175 |  | 27d |  |
| ER.5104.1250 |  | DH100/Electrical Room #5104 // Mechanical Equipment Pre-Start up | 2d | 2026-10-20 | 2026-10-21 | ER.5104.1220, ER.5104.1210, ER.5104.1160, ER.5104.1280, ER.5104.1050 |  | -11d |  |
| ER.5104.1310 |  | DH100/Electrical Room #5104 // Final FOD Check of all Panels | 2d | 2026-10-22 | 2026-10-23 | ER.5104.1270, ER.5104.1280, ER.5104.1230, ER.5104.1260, ER.5104.1220 |  | -13d |  |
|  | 3 | **Data Hall 1100** |  | 2026-07-02 | 2026-11-04 |  |  |  |  |
| DH1100.6270 |  | DH1100 // MEPF overhead layout | 3d | 2026-07-02 A | 2026-07-07 A | ER.5104.1010 | 100% |  |  |
| DH1100.6290 |  | DH1100 // MEPF high overhead install | 10d | 2026-07-06 A | 2026-07-17 A | DH1100.6270 | 100% |  |  |
| DH1100.6280 |  | DH1100 // Layout walls | 3d | 2026-07-07 A | 2026-07-09 A | DH1100.6270 SS+1d, A2850 | 100% |  |  |
| DH1100.6300 |  | DH1100 // Frame walls | 3d | 2026-07-29 A | 2026-08-03 A | DH1100.6280 | 100% |  |  |
| DH1100.7800 |  | DH1100 // Install Ceiling supports (rods/wires) no grid | 5d | 2026-08-05 A | 2026-08-11 A | DH1100.6300 SS, DH1100.6290 | 100% |  |  |
| DH1100.6320 |  | DH1100 // MEP rough in walls | 5d | 2026-08-10 A | 2026-08-24 A | DH1100.6300 | 100% |  |  |
| DH1100.12067 |  | DH1100 // Install 1-Side Sheet Rock (DH-Side) | 3d | 2026-08-17 A | 2026-09-04 A | DH1100.6300, DH1100.6320 | 100% |  |  |
| DH1100.6250 |  | DH1100 // Install overhead MEP and lighting | 5d | 2026-08-19 A | 2026-08-28 A | DH1100.6300 | 100% |  |  |
| B120001.3131 |  | DH1100 // Install Overhead Cable Ladder / 36" Cable Tray - TFO | 5d | 2026-08-20 A | 2026-09-04 A | DH1100.6290 | 100% |  |  |
| DH1100.6360 |  | DH1100 // Tape and finish walls | 5d | 2026-08-20 A | 2026-09-15 A | DH1100.6320, DH1100.12067, DH1100.6300 SS | 100% |  |  |
| DH1100.6410 |  | DH1100 // Prime and 1st coat of Paint | 5d | 2026-08-27 A | 2026-09-30 A | DH1100.6360, A2330 | 100% |  |  |
| DH1100.6310 |  | DH1100 // Install wall door frames | 3d | 2026-09-03 A | 2026-09-28 A | DH1100.6300 FF, DH1100.6410 | 100% |  |  |
| DH1100.6220 |  | DH1100 // Install Ceiling Grid System | 8d | 2026-09-24 A | 2026-10-09 | DH1100.7800 |  | 19d |  |
| B120001.3132 |  | DH1100 // Install Overhead HAC - TFO | 5d | 2026-09-30 | 2026-10-06 | B120001.3131 |  | 20d |  |
| DH1100.6240 |  | DH1100 // Install ceiling grid tiles | 3d | 2026-09-30 | 2026-10-02 | DH1100.6220 SS+3d, DH1100.6250 |  | 24d |  |
| F.1000A.1176 |  | DH1100 // Rough-In Security | 2d | 2026-10-07 | 2026-10-08 | DH1100.6290, B120001.3132 |  | 20d |  |
| F.1000A.1355 |  | DH1100 // BMS & EPMS Rough-In | 2d | 2026-10-07 | 2026-10-08 | F.1000A.1176 FF, F.1000A.1176 SS |  | 32d |  |
| F.1000A.1177 |  | DH1100 // Pull & Test Security Cable | 3d | 2026-10-09 | 2026-10-14 | F.1000A.1176 |  | 20d |  |
| DH1100.7790 |  | DH1100 // Final Paint & Touch up walls | 5d | 2026-10-13 | 2026-10-19 | DH1100.6360, DH1100.6410, DH1100.6220, DH1100.6240 |  | 19d |  |
| F.1000A.1178 |  | DH1100 // Install Security Devices | 2d | 2026-10-15 | 2026-10-16 | F.1000A.1177 |  | 20d |  |
| F.1000A.1179 |  | DH1100 // Mount & Terminate Security Devices | 5d | 2026-10-19 | 2026-10-23 | F.1000A.1178, DH1100.6410 |  | 20d |  |
| DH1100.7810 |  | DH1100 // Install MEPF Trim and Finishes | 5d | 2026-10-20 | 2026-10-26 | DH1100.7790, DH1100.6310 |  | 19d |  |
| DH1100.12112 |  | DH1100 // Ready to Receive Equipment | 0d | 2026-10-26 | 2026-10-26 | DH1100.7810 FF |  | 21d |  |
| F.1000A.1180 |  | DH1100 // Test Security Devices | 2d | 2026-10-27 | 2026-10-28 | F.1000A.1355 FF, F.1000A.1179, DH1100.7810 |  | 19d |  |
| DH1100.7820 |  | DH1100 // Suffolk Pre Punch | 5d | 2026-10-29 | 2026-11-04 | DH1100.12112, F.1000A.1180 |  | 19d |  |
|  | 15 | **PDU Gallery** |  | 2026-07-21 | 2026-09-11 |  |  |  |  |
| PDU.1100.1010 |  | DH1100/PDU Gallery // MEPF overhead layout | 5d | 2026-07-21 A | 2026-07-27 A | STRUCTURE.7380, SOG.1442 | 100% |  |  |
| PDU.1100.1713 |  | DH1100/PDU Gallery // Install Cable Tray (From Elec Rm 5104 to CRAHU Gallery) | 6d | 2026-07-24 A | 2026-09-11 A | PDU.1100.1110 | 100% |  |  |
| PDU.1100.1040 |  | DH1100/PDU Gallery // Frame walls | 5d | 2026-07-27 A | 2026-08-05 A | PDU.1100.1010 | 100% |  |  |
| PDU.1100.1060 |  | DH1100/PDU Gallery // Install Sheetrock Top Down | 3d | 2026-08-07 A | 2026-08-11 A | PDU.1100.1040 SS | 100% |  |  |
| PDU.1100.1050 |  | DH1100/PDU Gallery // Install wall door frames | 1d | 2026-08-07 A | 2026-08-19 A | PDU.1100.1040 | 100% |  |  |
| PDU.1100.1030 |  | DH1100/PDU Gallery // MEPF high overhead install | 3d | 2026-08-11 A | 2026-08-13 A | PDU.1100.1060, PDU.1100.1010 SS | 100% |  |  |
| PDU.1100.1711 |  | DH1100/PDU Gallery // MEP rough in walls | 3d | 2026-08-13 A | 2026-08-21 A | PDU.1100.1060 | 100% |  |  |
| PDU.1100.1070 |  | DH1100/PDU Gallery // In wall inspection | 1d | 2026-08-18 A | 2026-08-21 A | PDU.1100.1060, PDU.1100.1711 FF, PDU.1100.1030 | 100% |  |  |
| PDU.1100.1080 |  | DH1100/PDU Gallery // Install sheetrock on walls | 5d | 2026-08-24 A | 2026-08-27 A | PDU.1100.1070, PDU.1100.1050 | 100% |  |  |
| PDU.1100.1110 |  | DH1100/PDU Gallery // Install Cable Tray (From Elec Rm 5101 to CRAHU Gallery) | 6d | 2026-08-25 A | 2026-09-02 A | ER.5101.1180 SS | 100% |  |  |
| PDU.1100.1090 |  | DH1100/PDU Gallery // Tape and finish walls | 1d | 2026-08-26 A | 2026-08-28 A | PDU.1100.1080 | 100% |  |  |
| PDU.1100.1000 |  | DH1100/PDU Gallery // Seal concrete | 5d | 2026-08-31 A | 2026-09-03 A | PDU.1100.1090 | 100% |  |  |
| PDU.1100.1100 |  | DH1100/PDU Gallery // Paint walls | 2d | 2026-09-03 A | 2026-09-10 A | PDU.1100.1090 | 100% |  |  |
| PDU.1100.1712 |  | DH1100/PDU Gallery // Room Ready to Receive Equipment | 0d | 2026-09-11 A | 2026-09-11 A | PDU.1100.1100, PDU.1100.1000, PDU.1100.1713, PDU.1100.1110 FF | 100% |  |  |
|  | 14 | **CRAH/CDU Galleries** |  | 2026-07-17 | 2026-11-20 |  |  |  |  |
|  | 2 | **Gallery 1102** |  | 2026-07-17 | 2026-11-20 |  |  |  |  |
|  | 4 | **Architectural** |  | 2026-07-17 | 2026-10-20 |  |  |  |  |
| G1102.4700 |  | DH 1100/Gallery 1102 // Frame walls | 4d | 2026-07-17 A | 2026-07-22 A | SOG.1496, G1102.4670, A2060 | 100% |  |  |

| ID | WBS | Task | Duration | Start | Finish | Predecessors | Complete | Total float |
| --- | --- | --- | --- | --- | --- | --- | --- | --- |
| G1102.4670 |  | DH 1100/Gallery 1102 // MEPF overhead layout | 5d | 2026-07-20 A | 2026-07-24 A | SOG.1442, STRUCTURE.7655 | 100% |  |
| B120001.3133 |  | DH 1100/Gallery 1102 // Install Overhead Cable Ladder / 36" Cable Tray - TFO | 3d | 2026-07-21 A | 2026-07-23 A | G1102.4670 | 100% |  |
| B120001.3134 |  | DH 1100/Gallery 1102 // Install Overhead HAC - TFO | 3d | 2026-07-21 A | 2026-07-23 A | B120001.3133 | 100% |  |
| G1102.4690 |  | DH 1100/Gallery 1102 // MEPF high overhead install | 10d | 2026-07-21 A | 2026-08-04 A | G1102.4670 SS, A2850, B120001.3134 SS | 100% |  |
| G1102.4720 |  | DH 1100/Gallery 1102 // Install Sheetrock Top Down / Paint | 6d | 2026-07-24 A | 2026-07-31 A | G1102.4700 SS | 100% |  |
| F.1000A.1181 |  | DH 1100/Gallery 1102 // Rough-In Security | 2d | 2026-08-07 A | 2026-08-13 A | G1102.4690 | 100% |  |
| G1102.4730 |  | DH 1100/Gallery 1102 // MEP rough in walls | 4d | 2026-08-07 A | 2026-08-25 A | G1102.4720 | 100% |  |
| G1102.4750 |  | DH 1100/Gallery 1102 // Install Balance of Sheetrock on walls | 3d | 2026-08-07 A | 2026-08-28 A | G1102.4690 | 100% |  |
| G1102.4770 |  | DH 1100/Gallery 1102 // Tape and finish walls | 5d | 2026-08-12 A | 2026-08-28 A | G1102.4750 SS | 100% |  |
| G1102.4740 |  | DH 1100/Gallery 1102 // In wall inspection | 1d | 2026-08-13 A | 2026-09-04 A | G1102.4730 | 100% |  |
| G1102.4660 |  | DH 1100/Gallery 1102 // Seal concrete | 2d | 2026-08-19 A | 2026-09-08 A | G1102.4770 | 100% |  |
| G1102.4710 |  | DH 1100/Gallery 1102 // Install wall door frames | 1d | 2026-08-19 A | 2026-09-08 A | G1102.4740, G1102.4770, G1102.4700 FF | 100% |  |
| G1102.4790 |  | DH 1100/Gallery 1102 // Prime and Paint walls | 4d | 2026-08-19 A | 2026-09-03 A | G1102.4770 FF, A2330 | 100% |  |
| G1102.4800 |  | DH 1100/Gallery 1102 // Touch up Walls and Final Paint | 5d | 2026-08-25 A | 2026-09-08 A | G1102.4790 | 100% |  |
| G1102.4810 |  | DH 1100/Gallery 1102 // Install Trim and Devices | 2d | 2026-09-01 A | 2026-09-08 A | G1102.4800, G1102.4660, G1102.4710 | 100% |  |
| G1102.4821 |  | DH 1100/Gallery 1102 // Ready to Receive Equipment | 0d | 2026-09-08 A | 2026-09-08 A | G1102.4810 FF | 100% |  |
| F.1000A.1182 |  | DH 1100/Gallery 1102 // Pull & Test Security Cable | 3d | 2026-09-09 A | 2026-09-30 | F.1000A.1181 | 67% | 30d |
| F.1000A.1183 |  | DH 1100/Gallery 1102 // Install Security Devices | 2d | 2026-09-21 A | 2026-10-01 | F.1000A.1182 SS |  | 30d |
| F.1000A.1365 |  | DH 1100/Gallery 1102 // BMS & EPMS Rough-In | 2d | 2026-09-30 | 2026-10-01 | F.1000A.1181 FF, F.1000A.1181 SS |  | 37d |
| F.1000A.1184 |  | DH 1100/Gallery 1102 // Mount & Terminate Security Devices | 5d | 2026-10-02 | 2026-10-08 | F.1000A.1183, G1102.4790 |  | 30d |
| F.1000A.1185 |  | DH 1100/Gallery 1102 // Test Security Devices | 2d | 2026-10-09 | 2026-10-13 | F.1000A.1365 FF, F.1000A.1184, G1102.4810 |  | 30d |
| G1102.4820 |  | DH 1100/Gallery 1102 // Suffolk Pre Punch | 5d | 2026-10-14 | 2026-10-20 | G1102.4821, F.1000A.1185 |  | 30d |
|  | 16 | **Raceway** |  |  |  |  |  |  |
|  | 3 | **Equipment Line-Ups** |  | 2026-08-25 | 2026-11-20 |  |  |  |
|  | 1 | **A110** |  | 2026-08-25 | 2026-11-17 |  |  |  |
| DH1100-A-EQP-5 |  | Gallery 1102 - A110/Line-Ups // Set MOD-A110-01 | 1d | 2026-08-25 A | 2026-09-11 A | G1102.4790 | 100% |  |
| DH1100-A-EQP-6 |  | Gallery 1102 - A110/Line-Ups // Set MOD-A110-02 | 1d | 2026-08-25 A | 2026-09-11 A | DH1100-A-EQP-5 SS | 100% |  |
| DH1100-A-EQP-12 |  | Gallery 1102 - A110/Line-Ups // Mount Electrial Gear for Chiller Controls | 10d | 2026-08-26 A | 2026-09-29 A | DH1100-A-EQP-6 | 100% |  |
| DH1100-A-EQP-9 |  | Gallery 1102 - A110/Line-Ups // Pull Feeder from SWD to MOD | 1d | 2026-08-26 A | 2026-09-10 A | DH1100-A-EQP-6 | 100% |  |
| DH1100-A-EQP-1 |  | Gallery 1102 - A110/Line-Ups // Set CRAH-DH1100- 23 | 1d | 2026-09-03 A | 2026-09-09 A | DH1100.6360, G1102.4821, G1102.4770 | 100% |  |
| DH1100-A-EQP-3 |  | Gallery 1102 - A110/Line-Ups // Set CRAH-DH1100- 24 | 1d | 2026-09-03 A | 2026-09-09 A | DH1100-A-EQP-1 SS | 100% |  |
| DH1100-A-EQP-10 |  | Gallery 1102 - A110/Line-Ups // Pull Cable Tray Feed from MOD to CRAHU's | 5d | 2026-09-14 A | 2026-10-02 | DH1100-A-EQP-6 | 40% | -6d |
| DH1100-A-EQP-11 |  | Gallery 1102 - A110/Line-Ups // Mechanical Connections to CRAHU Units | 10d | 2026-09-17 A | 2026-10-13 | DH1100-A-EQP-3 | 10% | 1d |
| DH1100-A-EQP-4 |  | Gallery 1102 - A110/Line-Ups // Condensate connections to Floor Drains | 10d | 2026-09-21 A | 2026-10-13 | DH1100-A-EQP-8 FF, DH1100-A-EQP-7 FF, DH1100-A-EQP-3 | 10% | 1d |
| DH1100-A-EQP-17 |  | Gallery 1102 - A110/Line-Ups // Pull Feeder and Branch circuits to MIsc equipment and Chiller controls | 10d | 2026-09-30 | 2026-10-14 | DH1100-A-EQP-12 SS+4d |  | 4d |
| DH1100-A-EQP-7 |  | Gallery 1102 - A110/Line-Ups // Set CDU-DH1100- 21 | 1d | 2026-09-30 | 2026-09-30 | DH1100-A-EQP-1 |  | 8d |
| DH1100-A-EQP-8 |  | Gallery 1102 - A110/Line-Ups // Set CDU-DH1100- 22 | 1d | 2026-10-01 | 2026-10-01 | DH1100-A-EQP-3, DH1100-A-EQP-7 |  | 8d |
| DH1100-A-EQP-13 |  | Gallery 1102 - A110/Line-Ups // Pull Cable Tray Feed from MOD to CRAHU's | 5d | 2026-10-05 | 2026-10-09 | DH1100-A-EQP-10 |  | -6d |
| DH1100-A-EQP-19 |  | Gallery 1102 - A110/Line-Ups // Teminate all Misc Equipment and Chiller Controls | 10d | 2026-10-06 | 2026-10-20 | DH1100-A-EQP-17 SS+4d |  | 4d |
| DH1100-A-EQP-16 |  | Gallery 1102 - A110/Line-Ups // Terminate CRAHU Electrical Connections | 5d | 2026-10-07 | 2026-10-14 | DH1100-A-EQP-10, DH1100-A-EQP-13 SS+2d |  | 8d |
| DH1100-A-EQP-15 |  | Gallery 1102 - A110/Line-Ups // Terminate Mod Panels | 1d | 2026-10-13 | 2026-10-13 | DH1100-A-EQP-9, DH1100-A-EQP-10, DH1100-A-EQP-13 |  | -6d |
| DH1100-A-EQP-20 |  | Gallery 1102 - A110/Line-Ups // Electrical Gear FOD Inspection Pre-Start Up | 1d | 2026-10-21 | 2026-10-21 | DH1100-A-EQP-19, DH1100-A-EQP-16 |  | 4d |
| DH1100-A-EQP-14 |  | Gallery 1102 - A110/Line-Ups // Condensate connections to Floor Drains | 10d | 2026-10-29 | 2026-11-12 | DH1100-A-EQP-4 SS+5d, DH1100-A-EQP-11 SS+5d, DH1200.7841 |  | -19d |
| DH1100-A-EQP-18 |  | Gallery 1102 - A110/Line-Ups // Mechanical Gear FOD Inspection Pre-Start Up | 3d | 2026-11-13 | 2026-11-17 | DH1100-A-EQP-11, DH1100-A-EQP-4, DH1100-A-EQP-14, DH1100-A-EQP-3 |  | -19d |
|  | 2 | **B110** |  | 2026-08-26 | 2026-11-17 |  |  |  |
| DH1100-A-EQP-25 |  | Gallery 1102 - B110/Line-Ups // Set MOD-B110-01 | 1d | 2026-08-26 A | 2026-09-11 A | DH1100-A-EQP-6 FF | 100% |  |
| DH1100-A-EQP-26 |  | Gallery 1102 - B110/Line-Ups // Set MOD-B110-02 | 1d | 2026-08-26 A | 2026-09-11 A | DH1100-A-EQP-25 SS | 100% |  |
| DH1100-A-EQP-30 |  | Gallery 1102 - B110/Line-Ups // Pull Cable Tray Feed from MOD to CRAHU's | 5d | 2026-08-27 A | 2026-09-28 A | DH1100-A-EQP-26 | 100% |  |
| DH1100-A-EQP-32 |  | Gallery 1102 - B110/Line-Ups // Mount Electrial Gear for Chiller Controls | 10d | 2026-08-27 A | 2026-09-29 A | DH1100-A-EQP-26 | 100% |  |
| DH1100-A-EQP-21 |  | Gallery 1102 - B110/Line-Ups // Set CRAH-DH1100- 25 | 1d | 2026-09-03 A | 2026-09-09 A | DH1100-A-EQP-3 SS | 100% |  |
| DH1100-A-EQP-23 |  | Gallery 1102 - B110/Line-Ups // Set CRAH-DH1100- 26 | 1d | 2026-09-03 A | 2026-09-09 A | DH1100-A-EQP-21 SS | 100% |  |
| DH1100-A-EQP-31 |  | Gallery 1102 - B110/Line-Ups // Mechanical Connections to CRAHU Units | 10d | 2026-09-17 A | 2026-10-13 | DH1100-A-EQP-23 | 10% | 1d |
| DH1100-A-EQP-24 |  | Gallery 1102 - B110/Line-Ups // Condensate connections to Floor Drains | 10d | 2026-09-21 A | 2026-10-13 | DH1100-A-EQP-28 FF, DH1100-A-EQP-27 FF, DH1100-A-EQP-23 | 10% | 1d |
| DH1100-A-EQP-27 |  | Gallery 1102 - B110/Line-Ups // Set CDU-DH1100- 23 | 1d | 2026-09-30 | 2026-09-30 | DH1100-A-EQP-21 |  | 8d |
| DH1100-A-EQP-29 |  | Gallery 1102 - B110/Line-Ups // Pull Feeder from SWD to MOD | 1d | 2026-09-30 | 2026-09-30 | DH1100-A-EQP-26 |  | 2d |
| DH1100-A-EQP-33 |  | Gallery 1102 - B110/Line-Ups // Pull Cable Tray Feed from MOD to CRAHU's | 5d | 2026-09-30 | 2026-10-06 | DH1100-A-EQP-30 |  | -2d |
| DH1100-A-EQP-34 |  | Gallery 1102 - B110/Line-Ups // Condensate connections to Floor Drains | 10d | 2026-09-30 | 2026-10-14 | DH1100-A-EQP-24 SS+5d, DH1100-A-EQP-31 SS+5d |  | 1d |
| DH1100-A-EQP-37 |  | Gallery 1102 - B110/Line-Ups // Pull Feeder and Branch circuits to MIsc equipment and Chiller controls | 10d | 2026-09-30 | 2026-10-14 | DH1100-A-EQP-32 SS+4d |  | 4d |
| DH1100-A-EQP-28 |  | Gallery 1102 - B110/Line-Ups // Set CDU-DH1100- 24 | 1d | 2026-10-01 | 2026-10-01 | DH1100-A-EQP-23, DH1100-A-EQP-27 |  | 8d |
| DH1100-A-EQP-36 |  | Gallery 1102 - B110/Line-Ups // Terminate CRAHU Electrical Connections | 5d | 2026-10-02 | 2026-10-08 | DH1100-A-EQP-30, DH1100-A-EQP-33 SS+2d |  | 11d |
| DH1100-A-EQP-39 |  | Gallery 1102 - B110/Line-Ups // Teminate all Misc Equipment and Chiller Controls | 10d | 2026-10-06 | 2026-10-20 | DH1100-A-EQP-37 SS+4d |  | 4d |
| DH1100-A-EQP-35 |  | Gallery 1102 - B110/Line-Ups // Terminate Mod Panels | 1d | 2026-10-14 | 2026-10-14 | DH1100-A-EQP-29, DH1100-A-EQP-30, DH1100-A-EQP-33, DH1100-A-EQP-15 |  | -6d |
| DH1100-A-EQP-40 |  | Gallery 1102 - B110/Line-Ups // Electrical Gear FOD Inspection Pre-Start Up | 1d | 2026-10-21 | 2026-10-21 | DH1100-A-EQP-39, DH1100-A-EQP-36, DH1100-A-EQP-20 FF |  | 4d |
| DH1100-A-EQP-38 |  | Gallery 1102 - B110/Line-Ups // Mechanical Gear FOD Inspection Pre-Start Up | 3d | 2026-11-13 | 2026-11-17 | DH1100-A-EQP-31, DH1100-A-EQP-24, DH1100-A-EQP-34, DH1100-A-EQP-23, DH1100-A-EQP-18 FF |  | -19d |
|  | 3 | **C110** |  | 2026-08-27 | 2026-11-17 |  |  |  |
| DH1100-A-EQP-45 |  | Gallery 1102 - C110/Line-Ups // Set MOD-C110-01 | 1d | 2026-08-27 A | 2026-09-11 A | DH1100-A-EQP-26 FF | 100% |  |
| DH1100-A-EQP-46 |  | Gallery 1102 - C110/Line-Ups // Set MOD-C110-02 | 1d | 2026-08-27 A | 2026-09-11 A | DH1100-A-EQP-45 SS | 100% |  |
| DH1100-A-EQP-50 |  | Gallery 1102 - C110/Line-Ups // Pull Cable Tray Feed from MOD to CRAHU's | 5d | 2026-08-28 A | 2026-09-28 A | DH1100-A-EQP-46 | 100% |  |
| DH1100-A-EQP-52 |  | Gallery 1102 - C110/Line-Ups // Mount Electrial Gear for Chiller Controls | 10d | 2026-08-28 A | 2026-09-29 A | DH1100-A-EQP-46 | 100% |  |
| DH1100-A-EQP-41 |  | Gallery 1102 - C110/Line-Ups // Set CRAH-DH1100- 27 | 1d | 2026-09-03 A | 2026-09-21 A | DH1100-A-EQP-23 SS | 100% |  |

| ID | WBS | Task | Duration | Start | Finish | Predecessors | Complete | Total float |
| --- | --- | --- | --- | --- | --- | --- | --- | --- |
| DH1100-A-EQP-43 |  | Gallery 1102 - C110/Line-Ups // Set CRAH-DH1100- 28 | 1d | 2026-09-03 A | 2026-09-21 A | DH1100-A-EQP-41 SS | 100% |  |
| DH1100-A-EQP-49 |  | Gallery 1102 - C110/Line-Ups // Pull Feeder from SWD to MOD | 1d | 2026-09-24 A | 2026-09-30 | DH1100-A-EQP-46 |  | 2d |
| DH1100-A-EQP-47 |  | Gallery 1102 - C110/Line-Ups // Set CDU-DH1100- 25 | 1d | 2026-09-30 | 2026-09-30 | DH1100-A-EQP-41 |  | -6d |
| DH1100-A-EQP-51 |  | Gallery 1102 - C110/Line-Ups // Mechanical Connections to CRAHU Units | 10d | 2026-09-30 | 2026-10-14 | DH1100-A-EQP-43 SS+5d |  | -4d |
| DH1100-A-EQP-53 |  | Gallery 1102 - C110/Line-Ups // Pull Cable Tray Feed from MOD to CRAHU's | 5d | 2026-09-30 | 2026-10-06 | DH1100-A-EQP-50 |  | -2d |
| DH1100-A-EQP-57 |  | Gallery 1102 - C110/Line-Ups // Pull Feeder and Branch circuits to MIsc equipment and Chiller controls | 10d | 2026-09-30 | 2026-10-14 | DH1100-A-EQP-52 SS+4d |  | 4d |
| DH1100-A-EQP-48 |  | Gallery 1102 - C110/Line-Ups // Set CDU-DH1100- 26 | 1d | 2026-10-01 | 2026-10-01 | DH1100-A-EQP-43, DH1100-A-EQP-47 |  | -6d |
| DH1100-A-EQP-44 |  | Gallery 1102 - C110/Line-Ups // Condensate connections to Floor Drains | 10d | 2026-10-02 | 2026-10-16 | DH1100-A-EQP-48, DH1100-A-EQP-47, DH1100-A-EQP-43 |  | -6d |
| DH1100-A-EQP-56 |  | Gallery 1102 - C110/Line-Ups // Terminate CRAHU Electrical Connections | 5d | 2026-10-02 | 2026-10-08 | DH1100-A-EQP-50, DH1100-A-EQP-53 SS+2d |  | 11d |
| DH1100-A-EQP-59 |  | Gallery 1102 - C110/Line-Ups // Teminate all Misc Equipment and Chiller Controls | 10d | 2026-10-06 | 2026-10-20 | DH1100-A-EQP-57 SS+4d |  | 4d |
| DH1100-A-EQP-54 |  | Gallery 1102 - C110/Line-Ups // Condensate connections to Floor Drains | 10d | 2026-10-09 | 2026-10-23 | DH1100-A-EQP-44 SS+5d, DH1100-A-EQP-51 SS+5d |  | -6d |
| DH1100-A-EQP-55 |  | Gallery 1102 - C110/Line-Ups // Terminate Mod Panels | 1d | 2026-10-14 | 2026-10-14 | DH1100-A-EQP-49, DH1100-A-EQP-50, DH1100-A-EQP-53, DH1100-A-EQP-35 FF |  | -6d |
| DH1100-A-EQP-60 |  | Gallery 1102 - C110/Line-Ups // Electrical Gear FOD Inspection Pre-Start Up | 1d | 2026-10-21 | 2026-10-21 | DH1100-A-EQP-59, DH1100-A-EQP-56, DH1100-A-EQP-40 FF |  | 4d |
| DH1100-A-EQP-58 |  | Gallery 1102 - C110/Line-Ups // Mechanical Gear FOD Inspection Pre-Start Up | 3d | 2026-11-13 | 2026-11-17 | DH1100-A-EQP-51, DH1100-A-EQP-44, DH1100-A-EQP-54, DH1100-A-EQP-43, DH1100-A-EQP-38 FF |  | -19d |
|  | 4 | **D110** |  | 2026-08-28 | 2026-11-17 |  |  |  |
| DH1100-A-EQP-65 |  | Gallery 1102 - D110/Line-Ups // Set MOD-D110-01 | 1d | 2026-08-28 A | 2026-09-11 A | DH1100-A-EQP-46 FF | 100% |  |
| DH1100-A-EQP-66 |  | Gallery 1102 - D110/Line-Ups // Set MOD-D110-02 | 1d | 2026-08-28 A | 2026-09-11 A | DH1100-A-EQP-65 SS | 100% |  |
| DH1100-A-EQP-70 |  | Gallery 1102 - D110/Line-Ups // Pull Cable Tray Feed from MOD to CRAHU's | 5d | 2026-08-31 A | 2026-09-29 A | DH1100-A-EQP-66 | 100% |  |
| DH1100-A-EQP-61 |  | Gallery 1102 - D110/Line-Ups // Set CRAH-DH1100- 29 | 1d | 2026-09-04 A | 2026-09-21 A | DH1100-A-EQP-43 | 100% |  |
| DH1100-A-EQP-63 |  | Gallery 1102 - D110/Line-Ups // Set CRAH-DH1100- 30 | 1d | 2026-09-04 A | 2026-09-21 A | DH1100-A-EQP-61 SS | 100% |  |
| DH1100-A-EQP-72 |  | Gallery 1102 - D110/Line-Ups // Mount Electrial Gear for Chiller Controls | 10d | 2026-09-24 A | 2026-10-14 | DH1100-A-EQP-66 |  | 4d |
| DH1100-A-EQP-67 |  | Gallery 1102 - D110/Line-Ups // Set CDU-DH1100- 27 | 1d | 2026-09-30 | 2026-09-30 | DH1100-A-EQP-61 |  | -6d |
| DH1100-A-EQP-69 |  | Gallery 1102 - D110/Line-Ups // Pull Feeder from SWD to MOD | 1d | 2026-09-30 | 2026-09-30 | DH1100-A-EQP-66 |  | 2d |
| DH1100-A-EQP-71 |  | Gallery 1102 - D110/Line-Ups // Mechanical Connections to CRAHU Units | 10d | 2026-09-30 | 2026-10-14 | DH1100-A-EQP-63 SS+5d |  | -4d |
| DH1100-A-EQP-73 |  | Gallery 1102 - D110/Line-Ups // Pull Cable Tray Feed from MOD to CRAHU's | 5d | 2026-09-30 | 2026-10-06 | DH1100-A-EQP-70 |  | -2d |
| DH1100-A-EQP-77 |  | Gallery 1102 - D110/Line-Ups // Pull Feeder and Branch circuits to MIsc equipment and Chiller controls | 10d | 2026-09-30 | 2026-10-14 | DH1100-A-EQP-72 SS+4d |  | 4d |
| DH1100-A-EQP-68 |  | Gallery 1102 - D110/Line-Ups // Set CDU-DH1100- 28 | 1d | 2026-10-01 | 2026-10-01 | DH1100-A-EQP-63, DH1100-A-EQP-67 |  | -6d |
| DH1100-A-EQP-64 |  | Gallery 1102 - D110/Line-Ups // Condensate connections to Floor Drains | 10d | 2026-10-02 | 2026-10-16 | DH1100-A-EQP-68, DH1100-A-EQP-67, DH1100-A-EQP-63 |  | -6d |
| DH1100-A-EQP-76 |  | Gallery 1102 - D110/Line-Ups // Terminate CRAHU Electrical Connections | 5d | 2026-10-02 | 2026-10-08 | DH1100-A-EQP-70, DH1100-A-EQP-73 SS+2d |  | 11d |
| DH1100-A-EQP-79 |  | Gallery 1102 - D110/Line-Ups // Teminate all Misc Equipment and Chiller Controls | 10d | 2026-10-06 | 2026-10-20 | DH1100-A-EQP-77 SS+4d |  | 4d |
| DH1100-A-EQP-74 |  | Gallery 1102 - D110/Line-Ups // Condensate connections to Floor Drains | 10d | 2026-10-09 | 2026-10-23 | DH1100-A-EQP-64 SS+5d, DH1100-A-EQP-71 SS+5d |  | -6d |
| DH1100-A-EQP-75 |  | Gallery 1102 - D110/Line-Ups // Terminate Mod Panels | 1d | 2026-10-14 | 2026-10-14 | DH1100-A-EQP-69, DH1100-A-EQP-70, DH1100-A-EQP-73, DH1100-A-EQP-55 FF |  | -6d |
| DH1100-A-EQP-80 |  | Gallery 1102 - D110/Line-Ups // Electrical Gear FOD Inspection Pre-Start Up | 1d | 2026-10-21 | 2026-10-21 | DH1100-A-EQP-79, DH1100-A-EQP-76, DH1100-A-EQP-60 FF |  | 4d |
| DH1100-A-EQP-78 |  | Gallery 1102 - D110/Line-Ups // Mechanical Gear FOD Inspection Pre-Start Up | 3d | 2026-11-13 | 2026-11-17 | DH1100-A-EQP-71, DH1100-A-EQP-64, DH1100-A-EQP-74, DH1100-A-EQP-63, DH1100-A-EQP-58 FF |  | -19d |
|  | 5 | **E110** |  | 2026-08-31 | 2026-11-17 |  |  |  |
| DH1100-A-EQP-85 |  | Gallery 1102 - E110/Line-Ups // Set MOD-E110-01 | 1d | 2026-08-31 A | 2026-09-11 A | DH1100-A-EQP-66 | 100% |  |
| DH1100-A-EQP-86 |  | Gallery 1102 - E110/Line-Ups // Set MOD-E110-02 | 1d | 2026-08-31 A | 2026-09-11 A | DH1100-A-EQP-85 SS | 100% |  |
| DH1100-A-EQP-90 |  | Gallery 1102 - E110/Line-Ups // Pull Cable Tray Feed from MOD to CRAHU's | 5d | 2026-09-01 A | 2026-09-29 A | DH1100-A-EQP-86 | 100% |  |
| DH1100-A-EQP-81 |  | Gallery 1102 - E110/Line-Ups // Set CRAH-DH1100- 31 | 1d | 2026-09-04 A | 2026-09-22 A | DH1100-A-EQP-63 SS | 100% |  |
| DH1100-A-EQP-83 |  | Gallery 1102 - E110/Line-Ups // Set CRAH-DH1100- 32 | 1d | 2026-09-04 A | 2026-09-22 A | DH1100-A-EQP-81 SS | 100% |  |
| DH1100-A-EQP-92 |  | Gallery 1102 - E110/Line-Ups // Mount Electrial Gear for Chiller Controls | 10d | 2026-09-24 A | 2026-10-14 | DH1100-A-EQP-86 |  | 4d |
| DH1100-A-EQP-87 |  | Gallery 1102 - E110/Line-Ups // Set CDU-DH1100- 29 | 1d | 2026-09-30 | 2026-09-30 | DH1100-A-EQP-81 |  | -6d |
| DH1100-A-EQP-89 |  | Gallery 1102 - E110/Line-Ups // Pull Feeder from SWD to MOD | 1d | 2026-09-30 | 2026-09-30 | DH1100-A-EQP-86 |  | -2d |
| DH1100-A-EQP-91 |  | Gallery 1102 - E110/Line-Ups // Mechanical Connections to CRAHU Units | 10d | 2026-09-30 | 2026-10-14 | DH1100-A-EQP-83 SS+5d |  | -4d |
| DH1100-A-EQP-96 |  | Gallery 1102 - E110/Line-Ups // Terminate CRAHU Electrical Connections | 5d | 2026-09-30 | 2026-10-06 | DH1100-A-EQP-90 |  | 13d |
| DH1100-A-EQP-97 |  | Gallery 1102 - E110/Line-Ups // Pull Feeder and Branch circuits to MIsc equipment and Chiller controls | 10d | 2026-09-30 | 2026-10-14 | DH1100-A-EQP-92 SS+4d |  | 4d |
| DH1100-A-EQP-88 |  | Gallery 1102 - E110/Line-Ups // Set CDU-DH1100- 30 | 1d | 2026-10-01 | 2026-10-01 | DH1100-A-EQP-83, DH1100-A-EQP-87 |  | -6d |
| DH1100-A-EQP-84 |  | Gallery 1102 - E110/Line-Ups // Condensate connections to Floor Drains | 10d | 2026-10-02 | 2026-10-16 | DH1100-A-EQP-88, DH1100-A-EQP-87, DH1100-A-EQP-83 |  | -6d |
| DH1100-A-EQP-99 |  | Gallery 1102 - E110/Line-Ups // Teminate all Misc Equipment and Chiller Controls | 10d | 2026-10-06 | 2026-10-20 | DH1100-A-EQP-97 SS+4d |  | 4d |
| DH1100-A-EQP-95 |  | Gallery 1102 - E110/Line-Ups // Terminate Mod Panels | 5d | 2026-10-07 | 2026-10-14 | DH1100-A-EQP-89, DH1100-A-EQP-90, DH1100-A-EQP-75 FF |  | -6d |
| DH1100-A-EQP-94 |  | Gallery 1102 - E110/Line-Ups // Condensate connections to Floor Drains | 10d | 2026-10-09 | 2026-10-23 | DH1100-A-EQP-84 SS+5d, DH1100-A-EQP-91 SS+5d |  | -6d |
| DH1100-A-EQP-100 |  | Gallery 1102 - E110/Line-Ups // Electrical Gear FOD Inspection Pre-Start Up | 1d | 2026-10-21 | 2026-10-21 | DH1100-A-EQP-99, DH1100-A-EQP-96, DH1100-A-EQP-80 FF |  | 4d |
| DH1100-A-EQP-98 |  | Gallery 1102 - E110/Line-Ups // Mechanical Gear FOD Inspection Pre-Start Up | 3d | 2026-11-13 | 2026-11-17 | DH1100-A-EQP-91, DH1100-A-EQP-84, DH1100-A-EQP-94, DH1100-A-EQP-83, DH1100-A-EQP-78 FF |  | -19d |
|  | 6 | **F110** |  | 2026-09-01 | 2026-11-20 |  |  |  |
| DH1100-A-EQP-105 |  | Gallery 1102 - F110/Line-Ups // Set MOD-F110-01 | 1d | 2026-09-01 A | 2026-09-11 A | DH1100-A-EQP-86 | 100% |  |
| DH1100-A-EQP-106 |  | Gallery 1102 - F110/Line-Ups // Set MOD-F110-02 | 1d | 2026-09-01 A | 2026-09-11 A | DH1100-A-EQP-105 SS | 100% |  |
| DH1100-A-EQP-110 |  | Gallery 1102 - F110/Line-Ups // Pull Cable Tray Feed from MOD to CRAHU's | 5d | 2026-09-02 A | 2026-09-29 A | DH1100-A-EQP-106 | 100% |  |
| DH1100-A-EQP-101 |  | Gallery 1102 - F110/Line-Ups // Set CRAH-DH1100- 33 | 1d | 2026-09-04 A | 2026-09-22 A | DH1100-A-EQP-83 SS | 100% |  |
| DH1100-A-EQP-103 |  | Gallery 1102 - F110/Line-Ups // Set CRAH-DH1100- 34 | 1d | 2026-09-04 A | 2026-09-22 A | DH1100-A-EQP-101 SS | 100% |  |
| DH1100-A-EQP-112 |  | Gallery 1102 - F110/Line-Ups // Mount Electrial Gear for Chiller Controls | 10d | 2026-09-24 A | 2026-10-14 | DH1100-A-EQP-106 |  | 4d |
| DH1100-A-EQP-107 |  | Gallery 1102 - F110/Line-Ups // Set CDU-DH1100- 31 | 1d | 2026-09-30 | 2026-09-30 | DH1100-A-EQP-101 |  | -3d |
| DH1100-A-EQP-109 |  | Gallery 1102 - F110/Line-Ups // Pull Feeder from SWD to MOD | 1d | 2026-09-30 | 2026-09-30 | DH1100-A-EQP-106 |  | 2d |
| DH1100-A-EQP-111 |  | Gallery 1102 - F110/Line-Ups // Mechanical Connections to CRAHU Units | 10d | 2026-09-30 | 2026-10-14 | DH1100-A-EQP-103 SS+5d |  | -1d |
| DH1100-A-EQP-113 |  | Gallery 1102 - F110/Line-Ups // Pull Cable Tray Feed from MOD to CRAHU's | 5d | 2026-09-30 | 2026-10-06 | DH1100-A-EQP-110 |  | -2d |
| DH1100-A-EQP-117 |  | Gallery 1102 - F110/Line-Ups // Pull Feeder and Branch circuits to MIsc equipment and Chiller controls | 10d | 2026-09-30 | 2026-10-14 | DH1100-A-EQP-112 SS+4d |  | 4d |
| DH1100-A-EQP-108 |  | Gallery 1102 - F110/Line-Ups // Set CDU-DH1100- 32 | 1d | 2026-10-01 | 2026-10-01 | DH1100-A-EQP-103, DH1100-A-EQP-107 |  | -3d |
| DH1100-A-EQP-104 |  | Gallery 1102 - F110/Line-Ups // Condensate connections to Floor Drains | 10d | 2026-10-02 | 2026-10-16 | DH1100-A-EQP-108, DH1100-A-EQP-107, DH1100-A-EQP-103 |  | -3d |
| DH1100-A-EQP-116 |  | Gallery 1102 - F110/Line-Ups // Terminate CRAHU Electrical Connections | 5d | 2026-10-02 | 2026-10-08 | DH1100-A-EQP-110, DH1100-A-EQP-113 SS+2d |  | 11d |
| DH1100-A-EQP-119 |  | Gallery 1102 - F110/Line-Ups // Teminate all Misc Equipment and Chiller Controls | 10d | 2026-10-06 | 2026-10-20 | DH1100-A-EQP-117 SS+4d |  | 4d |
| DH1100-A-EQP-114 |  | Gallery 1102 - F110/Line-Ups // Condensate connections to Floor Drains | 10d | 2026-10-09 | 2026-10-23 | DH1100-A-EQP-104 SS+5d, DH1100-A-EQP-111 SS+5d |  | -3d |

| ID | WBS | Task | Duration | Start | Finish | Predecessors | Complete | Total float |
| --- | --- | --- | --- | --- | --- | --- | --- | --- |
| DH1100-A-EQP-115 |  | Gallery 1102 - F110/Line-Ups // Terminate Mod Panels | 1d | 2026-10-14 | 2026-10-14 | DH1100-A-EQP-109, DH1100-A-EQP-110, DH1100-A-EQP-113, DH1100-A-EQP-95 FF |  | -6d |
| DH1100-A-EQP-120 |  | Gallery 1102 - F110/Line-Ups // Electrical Gear FOD Inspection Pre-Start Up | 1d | 2026-10-21 | 2026-10-21 | DH1100-A-EQP-119, DH1100-A-EQP-116, DH1100-A-EQP-100 FF |  | 4d |
| DH1100-A-EQP-118 |  | Gallery 1102 - F110/Line-Ups // Mechanical Gear FOD Inspection Pre-Start Up | 3d | 2026-11-18 | 2026-11-20 | DH1100-A-EQP-111, DH1100-A-EQP-104, DH1100-A-EQP-114, DH1100-A-EQP-103 FF, DH1100-A-EQP-98 |  | -19d |
|  | 7 | **G110** |  | 2026-09-02 | 2026-11-20 |  |  |  |
| DH1100-A-EQP-125 |  | Gallery 1102 - G110/Line-Ups // Set MOD-G110-01 | 1d | 2026-09-02 A | 2026-09-11 A | DH1100-A-EQP-106 | 100% |  |
| DH1100-A-EQP-126 |  | Gallery 1102 - G110/Line-Ups // Set MOD-G110-02 | 1d | 2026-09-02 A | 2026-09-11 A | DH1100-A-EQP-125 SS | 100% |  |
| DH1100-A-EQP-121 |  | Gallery 1102 - G110/Line-Ups // Set CRAH-DH1100- 35 | 1d | 2026-09-08 A | 2026-09-23 A | DH1100-A-EQP-103 | 100% |  |
| DH1100-A-EQP-123 |  | Gallery 1102 - G110/Line-Ups // Set CRAH-DH1100- 36 | 1d | 2026-09-08 A | 2026-09-23 A | DH1100-A-EQP-121 SS | 100% |  |
| DH1100-A-EQP-129 |  | Gallery 1102 - G110/Line-Ups // Pull Feeder from SWD to MOD | 1d | 2026-09-24 A | 2026-09-30 | DH1100-A-EQP-126 |  | 2d |
| DH1100-A-EQP-130 |  | Gallery 1102 - G110/Line-Ups // Pull Cable Tray Feed from MOD to CRAHU's | 5d | 2026-09-24 A | 2026-10-06 | DH1100-A-EQP-126 |  | -7d |
| DH1100-A-EQP-132 |  | Gallery 1102 - G110/Line-Ups // Mount Electrial Gear for Chiller Controls | 10d | 2026-09-24 A | 2026-10-14 | DH1100-A-EQP-126 |  | 14d |
| DH1100-A-EQP-127 |  | Gallery 1102 - G110/Line-Ups // Set CDU-DH1100- 33 | 1d | 2026-09-30 | 2026-09-30 | DH1100-A-EQP-121 |  | -3d |
| DH1100-A-EQP-131 |  | Gallery 1102 - G110/Line-Ups // Mechanical Connections to CRAHU Units | 10d | 2026-09-30 | 2026-10-14 | DH1100-A-EQP-123 SS+5d |  | -1d |
| DH1100-A-EQP-137 |  | Gallery 1102 - G110/Line-Ups // Pull Feeder and Branch circuits to MIsc equipment and Chiller controls | 10d | 2026-09-30 | 2026-10-14 | DH1100-A-EQP-132 SS+4d |  | 14d |
| DH1100-A-EQP-128 |  | Gallery 1102 - G110/Line-Ups // Set CDU-DH1100- 34 | 1d | 2026-10-01 | 2026-10-01 | DH1100-A-EQP-123, DH1100-A-EQP-127 |  | -3d |
| DH1100-A-EQP-124 |  | Gallery 1102 - G110/Line-Ups // Condensate connections to Floor Drains | 10d | 2026-10-02 | 2026-10-16 | DH1100-A-EQP-128, DH1100-A-EQP-127, DH1100-A-EQP-123 |  | -3d |
| DH1100-A-EQP-139 |  | Gallery 1102 - G110/Line-Ups // Teminate all Misc Equipment and Chiller Controls | 10d | 2026-10-06 | 2026-10-20 | DH1100-A-EQP-137 SS+4d |  | 14d |
| DH1100-A-EQP-133 |  | Gallery 1102 - G110/Line-Ups // Pull Cable Tray Feed from MOD to CRAHU's | 5d | 2026-10-07 | 2026-10-14 | DH1100-A-EQP-130 |  | -7d |
| DH1100-A-EQP-134 |  | Gallery 1102 - G110/Line-Ups // Condensate connections to Floor Drains | 10d | 2026-10-09 | 2026-10-23 | DH1100-A-EQP-124 SS+5d, DH1100-A-EQP-131 SS+5d |  | -3d |
| DH1100-A-EQP-136 |  | Gallery 1102 - G110/Line-Ups // Terminate CRAHU Electrical Connections | 5d | 2026-10-09 | 2026-10-16 | DH1100-A-EQP-130, DH1100-A-EQP-133 SS+2d |  | 6d |
| DH1100-A-EQP-135 |  | Gallery 1102 - G110/Line-Ups // Terminate Mod Panels | 1d | 2026-10-15 | 2026-10-15 | DH1100-A-EQP-129, DH1100-A-EQP-130, DH1100-A-EQP-133, DH1100-A-EQP-115 FF |  | -7d |
| DH1100-A-EQP-140 |  | Gallery 1102 - G110/Line-Ups // Electrical Gear FOD Inspection Pre-Start Up | 1d | 2026-10-21 | 2026-10-21 | DH1100-A-EQP-139 SS, DH1100-A-EQP-136, DH1100-A-EQP-120 FF |  | 4d |
| DH1100-A-EQP-138 |  | Gallery 1102 - G110/Line-Ups // Mechanical Gear FOD Inspection Pre-Start Up | 3d | 2026-11-18 | 2026-11-20 | DH1100-A-EQP-131, DH1100-A-EQP-124, DH1100-A-EQP-134, DH1100-A-EQP-123, DH1100-A-EQP-118 FF |  | -19d |
|  | 8 | **H110** |  | 2026-09-03 | 2026-11-20 |  |  |  |
| DH1100-A-EQP-145 |  | Gallery 1102 - H110/Line-Ups // Set MOD-H110-01 | 1d | 2026-09-03 A | 2026-09-11 A | DH1100-A-EQP-126 FF | 100% |  |
| DH1100-A-EQP-146 |  | Gallery 1102 - H110/Line-Ups // Set MOD-H110-02 | 1d | 2026-09-03 A | 2026-09-11 A | DH1100-A-EQP-145 SS | 100% |  |
| DH1100-A-EQP-141 |  | Gallery 1102 - H110/Line-Ups // Set CRAH-DH1100- 37 | 1d | 2026-09-08 A | 2026-09-23 A | DH1100-A-EQP-123 SS | 100% |  |
| DH1100-A-EQP-143 |  | Gallery 1102 - H110/Line-Ups // Set CRAH-DH1100- 38 | 1d | 2026-09-08 A | 2026-09-23 A | DH1100-A-EQP-141 SS | 100% |  |
| DH1100-A-EQP-149 |  | Gallery 1102 - H110/Line-Ups // Pull Feeder from SWD to MOD | 1d | 2026-09-24 A | 2026-09-30 | DH1100-A-EQP-146 |  | 2d |
| DH1100-A-EQP-150 |  | Gallery 1102 - H110/Line-Ups // Pull Cable Tray Feed from MOD to CRAHU's | 5d | 2026-09-24 A | 2026-10-06 | DH1100-A-EQP-146 |  | -7d |
| DH1100-A-EQP-152 |  | Gallery 1102 - H110/Line-Ups // Mount Electrial Gear for Chiller Controls | 10d | 2026-09-24 A | 2026-10-14 | DH1100-A-EQP-146 |  | 4d |
| DH1100-A-EQP-147 |  | Gallery 1102 - H110/Line-Ups // Set CDU-DH1100- 35 | 1d | 2026-09-30 | 2026-09-30 | DH1100-A-EQP-141 |  | -3d |
| DH1100-A-EQP-151 |  | Gallery 1102 - H110/Line-Ups // Mechanical Connections to CRAHU Units | 10d | 2026-09-30 | 2026-10-14 | DH1100-A-EQP-143 SS+5d |  | -1d |
| DH1100-A-EQP-157 |  | Gallery 1102 - H110/Line-Ups // Pull Feeder and Branch circuits to MIsc equipment and Chiller controls | 10d | 2026-09-30 | 2026-10-14 | DH1100-A-EQP-152 SS+4d |  | 4d |
| DH1100-A-EQP-148 |  | Gallery 1102 - H110/Line-Ups // Set CDU-DH1100- 36 | 1d | 2026-10-01 | 2026-10-01 | DH1100-A-EQP-143, DH1100-A-EQP-147 |  | -3d |
| DH1100-A-EQP-144 |  | Gallery 1102 - H110/Line-Ups // Condensate connections to Floor Drains | 10d | 2026-10-02 | 2026-10-16 | DH1100-A-EQP-148, DH1100-A-EQP-147, DH1100-A-EQP-143 |  | -3d |
| DH1100-A-EQP-159 |  | Gallery 1102 - H110/Line-Ups // Teminate all Misc Equipment and Chiller Controls | 10d | 2026-10-06 | 2026-10-20 | DH1100-A-EQP-157 SS+4d |  | 4d |
| DH1100-A-EQP-153 |  | Gallery 1102 - H110/Line-Ups // Pull Cable Tray Feed from MOD to CRAHU's | 5d | 2026-10-07 | 2026-10-14 | DH1100-A-EQP-150 |  | -7d |
| DH1100-A-EQP-154 |  | Gallery 1102 - H110/Line-Ups // Condensate connections to Floor Drains | 10d | 2026-10-09 | 2026-10-23 | DH1100-A-EQP-144 SS+5d, DH1100-A-EQP-151 SS+5d |  | -3d |
| DH1100-A-EQP-156 |  | Gallery 1102 - H110/Line-Ups // Terminate CRAHU Electrical Connections | 5d | 2026-10-09 | 2026-10-16 | DH1100-A-EQP-150, DH1100-A-EQP-153 SS+2d |  | 6d |
| DH1100-A-EQP-155 |  | Gallery 1102 - H110/Line-Ups // Terminate Mod Panels | 1d | 2026-10-15 | 2026-10-15 | DH1100-A-EQP-149, DH1100-A-EQP-150, DH1100-A-EQP-153, DH1100-A-EQP-135 FF |  | -7d |
| DH1100-A-EQP-160 |  | Gallery 1102 - H110/Line-Ups // Electrical Gear FOD Inspection Pre-Start Up | 1d | 2026-10-21 | 2026-10-21 | DH1100-A-EQP-159, DH1100-A-EQP-156, DH1100-A-EQP-140 SS |  | 4d |
| DH1100-A-EQP-158 |  | Gallery 1102 - H110/Line-Ups // Mechanical Gear FOD Inspection Pre-Start Up | 3d | 2026-11-18 | 2026-11-20 | DH1100-A-EQP-151, DH1100-A-EQP-144, DH1100-A-EQP-154, DH1100-A-EQP-143, DH1100-A-EQP-138 FF |  | -19d |
|  | 9 | **J110** |  | 2026-09-04 | 2026-11-20 |  |  |  |
| DH1100-A-EQP-165 |  | Gallery 1102 - J110/Line-Ups // Set MOD-J110-01 | 1d | 2026-09-04 A | 2026-09-11 A | DH1100-A-EQP-146 FF | 100% |  |
| DH1100-A-EQP-166 |  | Gallery 1102 - J110/Line-Ups // Set MOD-J110-02 | 1d | 2026-09-04 A | 2026-09-11 A | DH1100-A-EQP-165 SS | 100% |  |
| DH1100-A-EQP-161 |  | Gallery 1102 - J110/Line-Ups // Set CRAH-DH1100- 39 | 1d | 2026-09-08 A | 2026-09-23 A | DH1100-A-EQP-143 SS | 100% |  |
| DH1100-A-EQP-163 |  | Gallery 1102 - J110/Line-Ups // Set CRAH-DH1100- 40 | 1d | 2026-09-08 A | 2026-09-23 A | DH1100-A-EQP-161 SS | 100% |  |
| DH1100-A-EQP-170 |  | Gallery 1102 - J110/Line-Ups // Pull Cable Tray Feed from MOD to CRAHU's | 5d | 2026-09-24 A | 2026-10-06 | DH1100-A-EQP-166 |  | -7d |
| DH1100-A-EQP-167 |  | Gallery 1102 - J110/Line-Ups // Set CDU-DH1100- 37 | 1d | 2026-09-30 | 2026-09-30 | DH1100-A-EQP-161 |  | -3d |
| DH1100-A-EQP-169 |  | Gallery 1102 - J110/Line-Ups // Pull Feeder from SWD to MOD | 1d | 2026-09-30 | 2026-09-30 | DH1100-A-EQP-166 |  | 2d |
| DH1100-A-EQP-171 |  | Gallery 1102 - J110/Line-Ups // Mechanical Connections to CRAHU Units | 10d | 2026-09-30 | 2026-10-14 | DH1100-A-EQP-163 SS+5d |  | -1d |
| DH1100-A-EQP-172 |  | Gallery 1102 - J110/Line-Ups // Mount Electrial Gear for Chiller Controls | 10d | 2026-09-30 | 2026-10-14 | DH1100-A-EQP-166 |  | 0d |
| DH1100-A-EQP-168 |  | Gallery 1102 - J110/Line-Ups // Set CDU-DH1100- 38 | 1d | 2026-10-01 | 2026-10-01 | DH1100-A-EQP-163, DH1100-A-EQP-167 |  | -3d |
| DH1100-A-EQP-164 |  | Gallery 1102 - J110/Line-Ups // Condensate connections to Floor Drains | 10d | 2026-10-02 | 2026-10-16 | DH1100-A-EQP-168, DH1100-A-EQP-167, DH1100-A-EQP-163 |  | -3d |
| DH1100-A-EQP-177 |  | Gallery 1102 - J110/Line-Ups // Pull Feeder and Branch circuits to MIsc equipment and Chiller controls | 10d | 2026-10-06 | 2026-10-20 | DH1100-A-EQP-172 SS+4d |  | 0d |
| DH1100-A-EQP-173 |  | Gallery 1102 - J110/Line-Ups // Pull Cable Tray Feed from MOD to CRAHU's | 5d | 2026-10-07 | 2026-10-14 | DH1100-A-EQP-170 |  | -7d |
| DH1100-A-EQP-174 |  | Gallery 1102 - J110/Line-Ups // Condensate connections to Floor Drains | 10d | 2026-10-09 | 2026-10-23 | DH1100-A-EQP-164 SS+5d, DH1100-A-EQP-171 SS+5d |  | -3d |
| DH1100-A-EQP-176 |  | Gallery 1102 - J110/Line-Ups // Terminate CRAHU Electrical Connections | 5d | 2026-10-09 | 2026-10-16 | DH1100-A-EQP-170, DH1100-A-EQP-173 SS+2d |  | 6d |
| DH1100-A-EQP-179 |  | Gallery 1102 - J110/Line-Ups // Teminate all Misc Equipment and Chiller Controls | 10d | 2026-10-13 | 2026-10-26 | DH1100-A-EQP-177 SS+4d |  | 0d |
| DH1100-A-EQP-175 |  | Gallery 1102 - J110/Line-Ups // Terminate Mod Panels | 1d | 2026-10-15 | 2026-10-15 | DH1100-A-EQP-169, DH1100-A-EQP-170, DH1100-A-EQP-173, DH1100-A-EQP-155 FF |  | -7d |
| DH1100-A-EQP-180 |  | Gallery 1102 - J110/Line-Ups // Electrical Gear FOD Inspection Pre-Start Up | 1d | 2026-10-27 | 2026-10-27 | DH1100-A-EQP-179, DH1100-A-EQP-176, DH1100-A-EQP-160 FF |  | 0d |
| DH1100-A-EQP-178 |  | Gallery 1102 - J110/Line-Ups // Mechanical Gear FOD Inspection Pre-Start Up | 3d | 2026-11-18 | 2026-11-20 | DH1100-A-EQP-171, DH1100-A-EQP-164, DH1100-A-EQP-174, DH1100-A-EQP-163, DH1100-A-EQP-158 FF |  | -19d |
|  | 10 | **K110** |  | 2026-09-08 | 2026-11-20 |  |  |  |
| DH1100-A-EQP-185 |  | Gallery 1102 - K110/Line-Ups // Set MOD-K110-01 | 1d | 2026-09-08 A | 2026-09-11 A | DH1100-A-EQP-166 FF | 100% |  |
| DH1100-A-EQP-186 |  | Gallery 1102 - K110/Line-Ups // Set MOD-K110-02 | 1d | 2026-09-08 A | 2026-09-11 A | DH1100-A-EQP-185 SS | 100% |  |
| DH1100-A-EQP-181 |  | Gallery 1102 - K110/Line-Ups // Set CRAH-DH1100- 41 | 1d | 2026-09-09 A | 2026-09-24 A | DH1100-A-EQP-163 SS | 100% |  |
| DH1100-A-EQP-183 |  | Gallery 1102 - K110/Line-Ups // Set CRAH-DH1100- 42 | 1d | 2026-09-09 A | 2026-09-24 A | DH1100-A-EQP-181 SS | 100% |  |
| DH1100-A-EQP-190 |  | Gallery 1102 - K110/Line-Ups // Pull Cable Tray Feed from MOD to CRAHU's | 5d | 2026-09-09 A | 2026-09-30 A | DH1100-A-EQP-186 | 100% |  |
| DH1100-A-EQP-197 |  | Gallery 1102 - K110/Line-Ups // Pull Feeder and Branch circuits to MIsc equipment and Chiller controls | 10d | 2026-09-29 A | 2026-10-14 | DH1100-A-EQP-186 |  | 5d |

| ID | WBS | Task | Duration | Start | Finish | Predecessors | Complete | Total float |
| --- | --- | --- | --- | --- | --- | --- | --- | --- |
| DH1100-A-EQP-187 |  | Gallery 1102 - K110/Line-Ups // Set CDU-DH1100- 39 | 1d | 2026-09-30 | 2026-09-30 | DH1100-A-EQP-181 |  | -3d |
| DH1100-A-EQP-189 |  | Gallery 1102 - K110/Line-Ups // Pull Feeder from SWD to MOD | 1d | 2026-09-30 | 2026-09-30 | DH1100-A-EQP-186 |  | 2d |
| DH1100-A-EQP-191 |  | Gallery 1102 - K110/Line-Ups // Mechanical Connections to CRAHU Units | 10d | 2026-09-30 | 2026-10-14 | DH1100-A-EQP-183 SS+5d |  | -1d |
| DH1100-A-EQP-192 |  | Gallery 1102 - K110/Line-Ups // Mount Electrial Gear for Chiller Controls | 8d | 2026-09-30 | 2026-10-09 | DH1100-A-EQP-186 |  | 3d |
| DH1100-A-EQP-193 |  | Gallery 1102 - K110/Line-Ups // Pull Cable Tray Feed from MOD to CRAHU's | 5d | 2026-09-30 | 2026-10-06 | DH1100-A-EQP-190 |  | -2d |
| DH1100-A-EQP-188 |  | Gallery 1102 - K110/Line-Ups // Set CDU-DH1100- 40 | 1d | 2026-10-01 | 2026-10-01 | DH1100-A-EQP-183, DH1100-A-EQP-187 |  | -3d |
| DH1100-A-EQP-184 |  | Gallery 1102 - K110/Line-Ups // Condensate connections to Floor Drains | 10d | 2026-10-02 | 2026-10-16 | DH1100-A-EQP-188, DH1100-A-EQP-187, DH1100-A-EQP-183 |  | -3d |
| DH1100-A-EQP-196 |  | Gallery 1102 - K110/Line-Ups // Terminate CRAHU Electrical Connections | 5d | 2026-10-02 | 2026-10-08 | DH1100-A-EQP-190, DH1100-A-EQP-193 SS+2d |  | 11d |
| DH1100-A-EQP-199 |  | Gallery 1102 - K110/Line-Ups // Teminate all Misc Equipment and Chiller Controls | 10d | 2026-10-07 | 2026-10-21 | DH1100-A-EQP-197 SS+4d, DH1100-A-EQP-192 SS+5d |  | 3d |
| DH1100-A-EQP-194 |  | Gallery 1102 - K110/Line-Ups // Condensate connections to Floor Drains | 10d | 2026-10-09 | 2026-10-23 | DH1100-A-EQP-184 SS+5d, DH1100-A-EQP-191 SS+5d |  | -3d |
| DH1100-A-EQP-195 |  | Gallery 1102 - K110/Line-Ups // Terminate Mod Panels | 1d | 2026-10-15 | 2026-10-15 | DH1100-A-EQP-189, DH1100-A-EQP-190, DH1100-A-EQP-193, DH1100-A-EQP-175 FF |  | -7d |
| DH1100-A-EQP-200 |  | Gallery 1102 - K110/Line-Ups // Electrical Gear FOD Inspection Pre-Start Up | 1d | 2026-10-27 | 2026-10-27 | DH1100-A-EQP-199, DH1100-A-EQP-196, DH1100-A-EQP-180 FF |  | 0d |
| DH1100-A-EQP-198 |  | Gallery 1102 - K110/Line-Ups // Mechanical Gear FOD Inspection Pre-Start Up | 3d | 2026-11-18 | 2026-11-20 | DH1100-A-EQP-191, DH1100-A-EQP-184, DH1100-A-EQP-194, DH1100-A-EQP-183, DH1100-A-EQP-178 FF |  | -19d |
|  | 11 | **R110** |  | 2026-09-09 | 2026-11-20 |  |  |  |
| DH1100-A-EQP-201 |  | Gallery 1102 - R110/Line-Ups // Set CRAH-DH1100- 43 | 1d | 2026-09-09 A | 2026-09-24 A | DH1100-A-EQP-183 SS | 100% |  |
| DH1100-A-EQP-203 |  | Gallery 1102 - R110/Line-Ups // Set CRAH-DH1100- 44 | 1d | 2026-09-09 A | 2026-09-24 A | DH1100-A-EQP-201 SS | 100% |  |
| DH1100-A-EQP-205 |  | Gallery 1102 - R110/Line-Ups // Set MOD-R110-01 | 1d | 2026-09-09 A | 2026-09-11 A | G1102.4790, DH1100-A-EQP-186 | 100% |  |
| DH1100-A-EQP-206 |  | Gallery 1102 - R110/Line-Ups // Set MOD-R110-02 | 1d | 2026-09-09 A | 2026-09-11 A | DH1100-A-EQP-205 SS, G1102.4790 | 100% |  |
| DH1100-A-EQP-210 |  | Gallery 1102 - R110/Line-Ups // Pull Cable Tray Feed from MOD to CRAHU's | 5d | 2026-09-16 A | 2026-09-22 A | DH1100-A-EQP-206 | 100% |  |
| DH1100-A-EQP-207 |  | Gallery 1102 - R110/Line-Ups // Set CDU-DH1100- 41 | 1d | 2026-09-30 | 2026-09-30 | DH1100-A-EQP-201 SS |  | -11d |
| DH1100-A-EQP-208 |  | Gallery 1102 - R110/Line-Ups // Set CDU-DH1100- 42 | 1d | 2026-09-30 | 2026-09-30 | DH1100-A-EQP-203 SS, DH1100-A-EQP-207 SS |  | -11d |
| DH1100-A-EQP-211 |  | Gallery 1102 - R110/Line-Ups // Mechanical Connections to CRAHU Units | 10d | 2026-09-30 | 2026-10-14 | DH1100-A-EQP-203 SS+1d |  | -10d |
| DH1100-A-EQP-212 |  | Gallery 1102 - R110/Line-Ups // Mount Electrial Gear for Chiller Controls | 5d | 2026-09-30 | 2026-10-06 | DH1100-A-EQP-206, DH1100-A-EQP-210 SS+2d |  | 5d |
| DH1100-A-EQP-213 |  | Gallery 1102 - R110/Line-Ups // Pull Cable Tray Feed from MOD to CRAHU's | 5d | 2026-09-30 | 2026-10-06 | DH1100-A-EQP-210 |  | -11d |
| DH1100-A-EQP-204 |  | Gallery 1102 - R110/Line-Ups // Condensate connections to Floor Drains | 10d | 2026-10-01 | 2026-10-15 | DH1100-A-EQP-208, DH1100-A-EQP-207, DH1100-A-EQP-203 |  | -11d |
| DH1100-A-EQP-214 |  | Gallery 1102 - R110/Line-Ups // Condensate connections to Floor Drains | 10d | 2026-10-01 | 2026-10-15 | DH1100-A-EQP-204 SS, DH1100-A-EQP-211 FF |  | -11d |
| DH1100-A-EQP-221 |  | Gallery 1102 - R110/Line-Ups // Set SWD-R110 | 1d | 2026-10-01 | 2026-10-01 | DH1100-A-EQP-208 |  | -1d |
| DH1100-A-EQP-216 |  | Gallery 1102 - R110/Line-Ups // Terminate CRAHU Electrical Connections | 5d | 2026-10-02 | 2026-10-08 | DH1100-A-EQP-210, DH1100-A-EQP-213 SS+2d |  | -11d |
| DH1100-A-EQP-222 |  | Gallery 1102 - R110/Line-Ups // Set SWD-TIE-R110 | 1d | 2026-10-02 | 2026-10-02 | DH1100-A-EQP-221 |  | -1d |
| DH1100-A-EQP-209 |  | Gallery 1102 - R110/Line-Ups // Pull Feeder from SWD to MOD | 1d | 2026-10-05 | 2026-10-05 | DH1100-A-EQP-206, DH1100-A-EQP-222 |  | -1d |
| DH1100-A-EQP-217 |  | Gallery 1102 - R110/Line-Ups // Pull Feeder and Branch circuits to MIsc equipment and Chiller controls | 10d | 2026-10-06 | 2026-10-20 | DH1100-A-EQP-212 SS+4d |  | 5d |
| DH1100-A-EQP-219 |  | Gallery 1102 - R110/Line-Ups // Teminate all Misc Equipment and Chiller Controls | 5d | 2026-10-13 | 2026-10-19 | DH1100-A-EQP-217 SS+4d |  | 5d |
| DH1100-A-EQP-215 |  | Gallery 1102 - R110/Line-Ups // Terminate Mod Panels | 1d | 2026-10-15 | 2026-10-15 | DH1100-A-EQP-209, DH1100-A-EQP-210, DH1100-A-EQP-213, DH1100-A-EQP-195 FF |  | -7d |
| DH1100-A-EQP-220 |  | Gallery 1102 - R110/Line-Ups // Electrical Gear FOD Inspection Pre-Start Up | 1d | 2026-10-27 | 2026-10-27 | DH1100-A-EQP-219, DH1100-A-EQP-216, DH1100-A-EQP-200 SS |  | 0d |
| DH1100-A-EQP-218 |  | Gallery 1102 - R110/Line-Ups // Mechanical Gear FOD Inspection Pre-Start Up | 3d | 2026-11-18 | 2026-11-20 | DH1100-A-EQP-211, DH1100-A-EQP-204, DH1100-A-EQP-214, DH1100-A-EQP-203, DH1100-A-EQP-198 FF |  | -19d |
|  | 12 | **Equipment Connections** |  | 2026-10-07 | 2026-10-21 |  |  |  |
|  | 1 | **CRAH** |  | 2026-10-09 | 2026-10-21 |  |  |  |
| DH1100.MG.A110.8678 |  | Gallery 1102 // DH 1100 / Elec Room // CRAH Duct Work Termination | 2d | 2026-10-09 | 2026-10-13 | DH1100-A-EQP-216 |  | -11d |
| DH1100.MG.A110.8677 |  | Gallery 1102 // DH 1100 / Elec Room // CRAH Chilled Water | 2d | 2026-10-14 | 2026-10-15 | DH1100.MG.A110.8678 |  | -11d |
| DH1100.MG.A110.8675 |  | Gallery 1102 // DH 1100 / Elec Room // CRAH Power Connections | 2d | 2026-10-16 | 2026-10-19 | DH1100.MG.A110.8677 |  | -11d |
| DH1100.MG.A110.8676 |  | Gallery 1102 // DH 1100 / Elec Room // CRAH LV Connections | 2d | 2026-10-20 | 2026-10-21 | DH1100.MG.A110.8675 |  | -11d |
|  | 2 | **CDU** |  | 2026-10-14 | 2026-10-21 |  |  |  |
| DH1100.MG.A110.8681 |  | Gallery 1102 // DH 1100 / Elec Room // CDU Chilled Water Connections | 2d | 2026-10-14 | 2026-10-15 | DH1100-A-EQP-214 FF |  | -11d |
| DH1100.MG.A110.8679 |  | Gallery 1102 // DH 1100 /Elec Room // CDU Power Connections | 2d | 2026-10-16 | 2026-10-19 | DH1100.MG.A110.8681 |  | -11d |
| DH1100.MG.A110.8680 |  | Gallery 1102 // DH 1100 / Elec Room // CDU Controls Connections | 2d | 2026-10-20 | 2026-10-21 | DH1100.MG.A110.8679 |  | -11d |
|  | 3 | **MOD** |  | 2026-10-07 | 2026-10-13 |  |  |  |
| DH1100.MG.A110.8682 |  | Gallery 1102 // DH 1100 / Elec Room // MOD Power Connections | 2d | 2026-10-07 | 2026-10-08 | DH1100-A-EQP-213 |  | -5d |
| DH1100.MG.A110.8683 |  | Gallery 1102 // DH 1100 / Elec Room // MOD LV Connections | 2d | 2026-10-09 | 2026-10-13 | DH1100.MG.A110.8682 |  | -5d |
|  | 4 | **Gallery 1103** |  | 2026-07-17 | 2026-11-02 |  |  |  |
|  | 1 | **Architectural** |  | 2026-07-17 | 2026-10-23 |  |  |  |
| G.1103.1040 |  | DH 1100/Gallery 1103 // Frame walls | 6d | 2026-07-17 A | 2026-07-24 A | G1102.4700 SS, A2060, STRUCTURE.7430 | 100% |  |
| G.1103.1050 |  | DH 1100/Gallery 1103 // Install Sheetrock Top Down | 6d | 2026-07-17 A | 2026-07-24 A | G.1103.1040 SS | 100% |  |
| B120001.3135 |  | DH 1100/Gallery 1103 // Install Overhead Cable Ladder / 36" Cable Tray - TFO | 5d | 2026-07-20 A | 2026-07-24 A | G.1103.1010 | 100% |  |
| B120001.3136 |  | DH 1100/Gallery 1103 // Install Overhead HAC - TFO | 5d | 2026-07-20 A | 2026-07-24 A | B120001.3135 | 100% |  |
| G.1103.1010 |  | DH 1100/Gallery 1103 // MEPF overhead layout | 5d | 2026-07-20 A | 2026-07-24 A | STRUCTURE.7380, SOG.1442 | 100% |  |
| G.1103.1030 |  | DH 1100/Gallery 1103 // MEPF high overhead install | 10d | 2026-07-27 A | 2026-08-07 A | G.1103.1050, G.1103.1010 SS, B120001.3136 | 100% |  |
| G.1103.1070 |  | DH 1100/Gallery 1103 // MEP rough in walls | 4d | 2026-07-27 A | 2026-07-30 A | G.1103.1050, G.1103.1040 | 100% |  |
| F.1000A.1186 |  | DH 1100/Gallery 1103 // Rough-In Security | 2d | 2026-08-07 A | 2026-08-12 A | G.1103.1030 | 100% |  |
| G.1103.1090 |  | DH 1100/Gallery 1103 // Install Balance of Sheetrock on walls | 2d | 2026-08-07 A | 2026-08-20 A | G.1103.1030 | 100% |  |
| G.1103.1080 |  | DH 1100/Gallery 1103 // In wall inspection | 1d | 2026-08-10 A | 2026-08-10 A | G.1103.1070 | 100% |  |
| G.1103.1100 |  | DH 1100/Gallery 1103 // Tape and finish walls | 5d | 2026-08-17 A | 2026-08-27 A | G.1103.1080, G.1103.1090 SS | 100% |  |
| G.1103.1110 |  | DH 1100/Gallery 1103 // Prime and Paint walls | 4d | 2026-08-21 A | 2026-09-16 A | G.1103.1100 FS+2d | 100% |  |
| G.1103.1060 |  | DH 1100/Gallery 1103 // Install wall door frames | 2d | 2026-08-27 A | 2026-09-01 A | G.1103.1100 | 100% |  |
| G.1103.1000 |  | DH 1100/Gallery 1103 // Seal concrete | 5d | 2026-08-28 A | 2026-09-02 A | G.1103.1100 | 100% |  |
| G.1103.1120 |  | DH 1100/Gallery 1103 // Touch up Walls and Final Paint | 5d | 2026-08-31 A | 2026-09-16 A | G.1103.1060, G.1103.1110 SS+3d | 100% |  |
| G.1103.1130 |  | DH 1100/Gallery 1103 // Install Trim and Devices | 2d | 2026-09-08 A | 2026-09-18 A | G.1103.1000, G.1103.1120 FF | 100% |  |
| G.1103.1141 |  | DH 1100/Gallery 1103 // Ready to Receive Equipment | 0d | 2026-09-16 A | 2026-09-16 A | G.1103.1120 | 100% |  |
| F.1000A.1187 |  | DH 1100/Gallery 1103 // Pull & Test Security Cable | 3d | 2026-09-30 | 2026-10-02 | F.1000A.1186 |  | 27d |
| F.1000A.1375 |  | DH 1100/Gallery 1103 // BMS & EPMS Rough-In | 2d | 2026-09-30 | 2026-10-01 | F.1000A.1186 FF, F.1000A.1186 SS |  | 37d |
| F.1000A.1188 |  | DH 1100/Gallery 1103 // Install Security Devices | 2d | 2026-10-05 | 2026-10-06 | F.1000A.1187 |  | 27d |

| ID | WBS | Task | Duration | Start | Finish | Predecessors | Complete | Total float |
| --- | --- | --- | --- | --- | --- | --- | --- | --- |
| F.1000A.1189 |  | DH 1100/Gallery 1103 // Mount & Terminate Security Devices | 5d | 2026-10-07 | 2026-10-14 | F.1000A.1188, G.1103.1110 |  | 27d |
| F.1000A.1190 |  | DH 1100/Gallery 1103 // Test Security Devices | 2d | 2026-10-15 | 2026-10-16 | F.1000A.1375 FF, F.1000A.1189, G.1103.1130 |  | 27d |
| G.1103.1140 |  | DH 1100/Gallery 1103 // Suffolk Pre Punch | 5d | 2026-10-19 | 2026-10-23 | G.1103.1141, F.1000A.1190 |  | 27d |
|  | 16 | **Raceway** |  |  |  |  |  |  |
|  | 3 | **Equipment Line-Ups** |  | 2026-09-10 | 2026-11-02 |  |  |  |
|  | 1 | **A110** |  | 2026-09-10 | 2026-10-28 |  |  |  |
| DH1100-B-EQP-1 |  | Gallery 1103 - A110/Line-Ups // Set CRAH-DH1100- 01 | 1d | 2026-09-10 A | 2026-09-15 A | DH1100.6360, G.1103.1141 | 100% |  |
| DH1100-B-EQP-4 |  | Gallery 1103 - A110/Line-Ups // Set CRAH-DH1100- 02 | 1d | 2026-09-10 A | 2026-09-15 A | DH1100-B-EQP-1 FF, DH1100-B-EQP-1 SS | 100% |  |
| DH1100-B-EQP-8 |  | Gallery 1103 - A110/Line-Ups // Pull Cable Tray Feed from MOD to CRAHU's | 3d | 2026-09-24 A | 2026-10-02 | DH1100-B-EQP-4 |  | 36d |
| DH1100-B-EQP-10 |  | Gallery 1103 - A110/Line-Ups // Mount Electrial Gear for Chiller Controls | 10d | 2026-09-30 | 2026-10-14 | DH1100-B-EQP-4 |  | 24d |
| DH1100-B-EQP-199 |  | Gallery 1103 - A110/Line-Ups // Set CDU-DH1100-01 | 1d | 2026-09-30 | 2026-09-30 | DH1100-B-EQP-4 |  | 38d |
| DH1100-B-EQP-3 |  | Gallery 1103 - A110/Line-Ups // Condensate connections to Floor Drains | 10d | 2026-09-30 | 2026-10-14 | DH1100-B-EQP-4, DH1100-B-EQP-1 SS |  | 26d |
| DH1100-B-EQP-9 |  | Gallery 1103 - A110/Line-Ups // Mechanical Connections to CRAHU Units | 5d | 2026-09-30 | 2026-10-06 | DH1100-B-EQP-4 SS+5d |  | 26d |
| DH1100-B-EQP-200 |  | Gallery 1103 - A110/Line-Ups // Set CDU-DH1100-02 | 1d | 2026-10-01 | 2026-10-01 | DH1100-B-EQP-199 |  | 38d |
| DH1100-B-EQP-7 |  | Gallery 1103 - A110/Line-Ups // Pull Feeder from SWD to MOD | 1d | 2026-10-02 | 2026-10-02 | DH1100-B-EQP-4, DH1100-B-EQP-200 |  | 38d |
| DH1100-B-EQP-13 |  | Gallery 1103 - A110/Line-Ups // Terminate MOD Panels | 1d | 2026-10-05 | 2026-10-05 | DH1100-B-EQP-7, DH1100-B-EQP-8 |  | 38d |
| DH1100-B-EQP-14 |  | Gallery 1103 - A110/Line-Ups // Terminate Electrical Connections - CRAHU | 3d | 2026-10-05 | 2026-10-07 | DH1100-B-EQP-8 |  | 36d |
| DH1100-B-EQP-15 |  | Gallery 1103 - A110/Line-Ups // Pull Feeder and Branch circuits to MIsc equipment and Chiller controls | 10d | 2026-10-06 | 2026-10-20 | DH1100-B-EQP-10 SS+4d |  | 24d |
| DH1100-B-EQP-12 |  | Gallery 1103 - A110/Line-Ups // Condensate connections to Floor Drains | 10d | 2026-10-07 | 2026-10-21 | DH1100-B-EQP-3 SS+5d, DH1100-B-EQP-9 SS+5d |  | 26d |
| DH1100-B-EQP-17 |  | Gallery 1103 - A110/Line-Ups // Teminate all Misc Equipment and Chiller Controls | 10d | 2026-10-13 | 2026-10-26 | DH1100-B-EQP-15 SS+4d |  | 24d |
| DH1100-B-EQP-16 |  | Gallery 1103 - A110/Line-Ups // Mechanical Gear FOD Inspection Pre-Start Up | 3d | 2026-10-22 | 2026-10-26 | DH1100-B-EQP-4, DH1100-B-EQP-1 SS, DH1100-B-EQP-9, DH1100-B-EQP-3, DH1100-B-EQP-12 |  | 26d |
| DH1100-B-EQP-18 |  | Gallery 1103 - A110/Line-Ups // Electrical Gear FOD Inspection Pre-Start Up | 2d | 2026-10-27 | 2026-10-28 | DH1100-B-EQP-13, DH1100-B-EQP-17, DH1100-B-EQP-14 |  | 24d |
|  | 2 | **B110** |  | 2026-09-10 | 2026-11-02 |  |  |  |
| DH1100-B-EQP-19 |  | Gallery 1103 - B110/Line-Ups // Set CRAH-DH1100- 03 | 1d | 2026-09-10 A | 2026-09-15 A | DH1100-B-EQP-4 SS | 100% |  |
| DH1100-B-EQP-22 |  | Gallery 1103 - B110/Line-Ups // Set CRAH-DH1100- 04 | 1d | 2026-09-10 A | 2026-09-15 A | DH1100-B-EQP-19 FF, DH1100-B-EQP-19 SS | 100% |  |
| DH1100-B-EQP-23 |  | Gallery 1103 - B110/Line-Ups // Set MOD B140-01 (Does No apply) | 1d | 2026-09-10 A | 2026-09-11 A | DH1100-B-EQP-22 FF | 100% |  |
| DH1100-B-EQP-24 |  | Gallery 1103 - B110/Line-Ups // Set MOD B140-02 (Does No apply) | 1d | 2026-09-10 A | 2026-09-11 A | DH1100-B-EQP-23 SS | 100% |  |
| DH1100-B-EQP-201 |  | Gallery 1103 - B110/Line-Ups // Set CDU-DH1100-03 | 1d | 2026-09-24 A | 2026-09-30 | DH1100-B-EQP-24 |  | 39d |
| DH1100-B-EQP-202 |  | Gallery 1103 - B110/Line-Ups // Set CDU-DH1100-04 | 1d | 2026-09-25 A | 2026-09-30 | DH1100-B-EQP-201 SS+1d |  | 39d |
| DH1100-B-EQP-20 |  | Gallery 1103 - B110/Line-Ups // Connect CRAH units | 10d | 2026-09-30 | 2026-10-14 | DH1100-B-EQP-22, DH1100-B-EQP-19 SS+5d |  | 21d |
| DH1100-B-EQP-26 |  | Gallery 1103 - B110/Line-Ups // Pull Cable Tray Feed from MOD to CRAHU's | 5d | 2026-09-30 | 2026-10-06 | DH1100-B-EQP-24 |  | 30d |
| DH1100-B-EQP-27 |  | Gallery 1103 - B110/Line-Ups // Mechanical Connections to CRAHU Units | 10d | 2026-09-30 | 2026-10-14 | DH1100-B-EQP-22 SS+5d |  | 26d |
| DH1100-B-EQP-28 |  | Gallery 1103 - B110/Line-Ups // Mount Electrial Gear for Chiller Controls | 10d | 2026-09-30 | 2026-10-14 | DH1100-B-EQP-24 |  | 24d |
| DH1100-B-EQP-25 |  | Gallery 1103 - B110/Line-Ups // Pull Feeder from SWD to MOD | 1d | 2026-10-01 | 2026-10-01 | DH1100-B-EQP-24, DH1100-B-EQP-202 |  | 39d |
| DH1100-B-EQP-33 |  | Gallery 1103 - B110/Line-Ups // Pull Feeder and Branch circuits to MIsc equipment and Chiller controls | 10d | 2026-10-06 | 2026-10-20 | DH1100-B-EQP-28 SS+4d |  | 24d |
| DH1100-B-EQP-21 |  | Gallery 1103 - B110/Line-Ups // Condensate connections to Floor Drains | 10d | 2026-10-07 | 2026-10-21 | DH1100-B-EQP-20 SS+5d |  | 21d |
| DH1100-B-EQP-29 |  | Gallery 1103 - B110/Line-Ups // Pull Cable Tray Feed from MOD to CRAHU's | 5d | 2026-10-07 | 2026-10-14 | DH1100-B-EQP-26 |  | 30d |
| DH1100-B-EQP-32 |  | Gallery 1103 - B110/Line-Ups // Terminate CRAHU Electrical Connections | 5d | 2026-10-09 | 2026-10-16 | DH1100-B-EQP-26, DH1100-B-EQP-29 SS+2d |  | 30d |
| DH1100-B-EQP-35 |  | Gallery 1103 - B110/Line-Ups // Teminate all Misc Equipment and Chiller Controls | 10d | 2026-10-13 | 2026-10-26 | DH1100-B-EQP-33 SS+4d |  | 24d |
| DH1100-B-EQP-30 |  | Gallery 1103 - B110/Line-Ups // Condensate connections to Floor Drains | 10d | 2026-10-15 | 2026-10-28 | DH1100-B-EQP-21 SS+5d, DH1100-B-EQP-27 SS+5d |  | 21d |
| DH1100-B-EQP-31 |  | Gallery 1103 - B110/Line-Ups // Terminat Mod Panels | 1d | 2026-10-15 | 2026-10-15 | DH1100-B-EQP-25, DH1100-B-EQP-26, DH1100-B-EQP-29 |  | 31d |
| DH1100-B-EQP-36 |  | Gallery 1103 - B110/Line-Ups // Electrical Gear FOD Inspection Pre-Start Up | 2d | 2026-10-27 | 2026-10-28 | DH1100-B-EQP-31, DH1100-B-EQP-35, DH1100-B-EQP-32 |  | 24d |
| DH1100-B-EQP-34 |  | Gallery 1103 - B110/Line-Ups // Mechanical Gear FOD Inspection Pre-Start Up | 3d | 2026-10-29 | 2026-11-02 | DH1100-B-EQP-20, DH1100-B-EQP-27, DH1100-B-EQP-21, DH1100-B-EQP-30 |  | 21d |
|  | 3 | **C110** |  | 2026-09-10 | 2026-11-02 |  |  |  |
| DH1100-B-EQP-37 |  | Gallery 1103 - C110/Line-Ups // Set CRAH-DH1100- 05 | 1d | 2026-09-10 A | 2026-09-16 A | DH1100-B-EQP-22 SS | 100% |  |
| DH1100-B-EQP-40 |  | Gallery 1103 - C110/Line-Ups // Set CRAH-DH1100- 06 | 1d | 2026-09-10 A | 2026-09-16 A | DH1100-B-EQP-37 FF, DH1100-B-EQP-37 SS | 100% |  |
| DH1100-B-EQP-41 |  | Gallery 1103 - C110/Line-Ups // Set MOD C140-01 (Does No apply) | 1d | 2026-09-10 A | 2026-09-11 A | DH1100-B-EQP-40 FF | 100% |  |
| DH1100-B-EQP-42 |  | Gallery 1103 - C110/Line-Ups // Set MOD C140-02 (Does No apply) | 1d | 2026-09-10 A | 2026-09-11 A | DH1100-B-EQP-41 SS | 100% |  |
| DH1100-B-EQP-44 |  | Gallery 1103 - C110/Line-Ups // Pull Cable Tray Feed from MOD to CRAHU's | 5d | 2026-09-24 A | 2026-10-06 | DH1100-B-EQP-42 |  | 30d |
| DH1100-B-EQP-46 |  | Gallery 1103 - C110/Line-Ups // Mount Electrial Gear for Chiller Controls | 10d | 2026-09-24 A | 2026-10-14 | DH1100-B-EQP-42 |  | 28d |
| DH1100-B-EQP-203 |  | Gallery 1103 - C110/Line-Ups // Set CDU-DH1100-05 | 1d | 2026-09-30 | 2026-09-30 | DH1100-B-EQP-42 |  | 38d |
| DH1100-B-EQP-38 |  | Gallery 1103 - C110/Line-Ups // Connect CRAH units | 10d | 2026-09-30 | 2026-10-14 | DH1100-B-EQP-40, DH1100-B-EQP-37 SS+5d |  | 21d |
| DH1100-B-EQP-45 |  | Gallery 1103 - C110/Line-Ups // Mechanical Connections to CRAHU Units | 10d | 2026-09-30 | 2026-10-14 | DH1100-B-EQP-40 SS+5d |  | 26d |
| DH1100-B-EQP-51 |  | Gallery 1103 - C110/Line-Ups // Pull Feeder and Branch circuits to MIsc equipment and Chiller controls | 10d | 2026-09-30 | 2026-10-14 | DH1100-B-EQP-46 SS+4d |  | 28d |
| DH1100-B-EQP-204 |  | Gallery 1103 - C110/Line-Ups // Set CDU-DH1100-06 | 1d | 2026-10-01 | 2026-10-01 | DH1100-B-EQP-203 |  | 38d |
| DH1100-B-EQP-43 |  | Gallery 1103 - C110/Line-Ups // Pull Feeder from SWD to MOD | 1d | 2026-10-02 | 2026-10-02 | DH1100-B-EQP-42, DH1100-B-EQP-203, DH1100-B-EQP-204 |  | 38d |
| DH1100-B-EQP-53 |  | Gallery 1103 - C110/Line-Ups // Teminate all Misc Equipment and Chiller Controls | 10d | 2026-10-06 | 2026-10-20 | DH1100-B-EQP-51 SS+4d |  | 28d |
| DH1100-B-EQP-39 |  | Gallery 1103 - C110/Line-Ups // Condensate connections to Floor Drains | 10d | 2026-10-07 | 2026-10-21 | DH1100-B-EQP-38 SS+5d |  | 21d |
| DH1100-B-EQP-47 |  | Gallery 1103 - C110/Line-Ups // Pull Cable Tray Feed from MOD to CRAHU's | 5d | 2026-10-07 | 2026-10-14 | DH1100-B-EQP-44 |  | 30d |
| DH1100-B-EQP-50 |  | Gallery 1103 - C110/Line-Ups // Terminate CRAHU Electrical Connections | 5d | 2026-10-09 | 2026-10-16 | DH1100-B-EQP-44, DH1100-B-EQP-47 SS+2d |  | 30d |
| DH1100-B-EQP-48 |  | Gallery 1103 - C110/Line-Ups // Condensate connections to Floor Drains | 10d | 2026-10-15 | 2026-10-28 | DH1100-B-EQP-39 SS+5d, DH1100-B-EQP-45 SS+5d |  | 21d |
| DH1100-B-EQP-49 |  | Gallery 1103 - C110/Line-Ups // Terminat Mod Panels | 1d | 2026-10-15 | 2026-10-15 | DH1100-B-EQP-43, DH1100-B-EQP-44, DH1100-B-EQP-47 |  | 31d |
| DH1100-B-EQP-54 |  | Gallery 1103 - C110/Line-Ups // Electrical Gear FOD Inspection Pre-Start Up | 2d | 2026-10-21 | 2026-10-22 | DH1100-B-EQP-49, DH1100-B-EQP-53, DH1100-B-EQP-50 |  | 28d |
| DH1100-B-EQP-52 |  | Gallery 1103 - C110/Line-Ups // Mechanical Gear FOD Inspection Pre-Start Up | 3d | 2026-10-29 | 2026-11-02 | DH1100-B-EQP-38, DH1100-B-EQP-45, DH1100-B-EQP-39, DH1100-B-EQP-48 |  | 21d |
|  | 4 | **D110** |  | 2026-09-11 | 2026-10-27 |  |  |  |
| DH1100-B-EQP-59 |  | Gallery 1103 - D110/Line-Ups // Set MOD D140-01 (Does No apply) | 1d | 2026-09-11 A | 2026-09-11 A | DH1100-B-EQP-58 FF | 100% |  |
| DH1100-B-EQP-60 |  | Gallery 1103 - D110/Line-Ups // Set MOD D140-02 (Does No apply) | 1d | 2026-09-11 A | 2026-09-11 A | DH1100-B-EQP-59 SS | 100% |  |
| DH1100-B-EQP-55 |  | Gallery 1103 - D110/Line-Ups // Set CRAH-DH1100- 07 | 1d | 2026-09-11 A | 2026-09-16 A | DH1100-B-EQP-40 | 100% |  |
| DH1100-B-EQP-58 |  | Gallery 1103 - D110/Line-Ups // Set CRAH-DH1100-08 | 1d | 2026-09-11 A | 2026-09-16 A | DH1100-B-EQP-55 FF, DH1100-B-EQP-55 SS | 100% |  |
| DH1100-B-EQP-205 |  | Gallery 1103 - D110/Line-Ups // Set CDU-DH1100-07 | 1d | 2026-09-24 A | 2026-09-30 | DH1100-B-EQP-60 |  | 39d |

| ID | WBS | Task | Duration | Start | Finish | Predecessors | Complete | Total float |
| --- | --- | --- | --- | --- | --- | --- | --- | --- |
| DH1100-B-EQP-56 |  | Gallery 1103 - D110/Line-Ups // Connect CRAH units | 10d | 2026-09-24 A | 2026-10-14 | DH1100-B-EQP-58, DH1100-B-EQP-55 SS+5d |  | 25d |
| DH1100-B-EQP-62 |  | Gallery 1103 - D110/Line-Ups // Pull Cable Tray Feed from MOD to CRAHU's | 5d | 2026-09-24 A | 2026-10-06 | DH1100-B-EQP-60 |  | 30d |
| DH1100-B-EQP-63 |  | Gallery 1103 - D110/Line-Ups // Mechanical Connections to CRAHU Units | 10d | 2026-09-24 A | 2026-10-14 | DH1100-B-EQP-58 SS+5d |  | 30d |
| DH1100-B-EQP-64 |  | Gallery 1103 - D110/Line-Ups // Mount Electrial Gear for Chiller Controls | 10d | 2026-09-24 A | 2026-10-14 | DH1100-B-EQP-60 |  | 28d |
| DH1100-B-EQP-206 |  | Gallery 1103 - D110/Line-Ups // Set CDU-DH1100-08 | 1d | 2026-09-25 A | 2026-09-30 | DH1100-B-EQP-205 SS+1d |  | 39d |
| DH1100-B-EQP-69 |  | Gallery 1103 - D110/Line-Ups // Pull Feeder and Branch circuits to MIsc equipment and Chiller controls | 10d | 2026-09-30 | 2026-10-14 | DH1100-B-EQP-64 SS+4d |  | 28d |
| DH1100-B-EQP-57 |  | Gallery 1103 - D110/Line-Ups // Condensate connections to Floor Drains | 10d | 2026-10-01 | 2026-10-15 | DH1100-B-EQP-56 SS+5d |  | 25d |
| DH1100-B-EQP-61 |  | Gallery 1103 - D110/Line-Ups // Pull Feeder from SWD to MOD | 1d | 2026-10-01 | 2026-10-01 | DH1100-B-EQP-60, DH1100-B-EQP-206 |  | 39d |
| DH1100-B-EQP-71 |  | Gallery 1103 - D110/Line-Ups // Teminate all Misc Equipment and Chiller Controls | 10d | 2026-10-06 | 2026-10-20 | DH1100-B-EQP-69 SS+4d |  | 28d |
| DH1100-B-EQP-65 |  | Gallery 1103 - D110/Line-Ups // Pull Cable Tray Feed from MOD to CRAHU's | 5d | 2026-10-07 | 2026-10-14 | DH1100-B-EQP-62 |  | 30d |
| DH1100-B-EQP-66 |  | Gallery 1103 - D110/Line-Ups // Condensate connections to Floor Drains | 10d | 2026-10-08 | 2026-10-22 | DH1100-B-EQP-57 SS+5d, DH1100-B-EQP-63 SS+5d |  | 25d |
| DH1100-B-EQP-68 |  | Gallery 1103 - D110/Line-Ups // Terminate CRAHU Electrical Connections | 5d | 2026-10-09 | 2026-10-16 | DH1100-B-EQP-62, DH1100-B-EQP-65 SS+2d |  | 30d |
| DH1100-B-EQP-67 |  | Gallery 1103 - D110/Line-Ups // Terminat Mod Panels | 1d | 2026-10-15 | 2026-10-15 | DH1100-B-EQP-61, DH1100-B-EQP-62, DH1100-B-EQP-65 |  | 31d |
| DH1100-B-EQP-72 |  | Gallery 1103 - D110/Line-Ups // Electrical Gear FOD Inspection Pre-Start Up | 2d | 2026-10-21 | 2026-10-22 | DH1100-B-EQP-67, DH1100-B-EQP-71, DH1100-B-EQP-68 |  | 28d |
| DH1100-B-EQP-70 |  | Gallery 1103 - D110/Line-Ups // Mechanical Gear FOD Inspection Pre-Start Up | 3d | 2026-10-23 | 2026-10-27 | DH1100-B-EQP-56, DH1100-B-EQP-63, DH1100-B-EQP-57, DH1100-B-EQP-66 |  | 25d |
|  | 5 | **E110** |  | 2026-09-11 | 2026-11-02 |  |  |  |
| DH1100-B-EQP-77 |  | Gallery 1103 - E110/Line-Ups // Set MOD E140-01 (Does No apply) | 1d | 2026-09-11 A | 2026-09-11 A | DH1100-B-EQP-76 FF | 100% |  |
| DH1100-B-EQP-78 |  | Gallery 1103 - E110/Line-Ups // Set MOD E140-02 (Does No apply) | 1d | 2026-09-11 A | 2026-09-11 A | DH1100-B-EQP-77 SS | 100% |  |
| DH1100-B-EQP-73 |  | Gallery 1103 - E110/Line-Ups // Set CRAH-DH1100- 09 | 1d | 2026-09-11 A | 2026-09-17 A | DH1100-B-EQP-58 SS | 100% |  |
| DH1100-B-EQP-76 |  | Gallery 1103 - E110/Line-Ups // Set CRAH-DH1100-10 | 1d | 2026-09-11 A | 2026-09-17 A | DH1100-B-EQP-73 FF, DH1100-B-EQP-73 SS | 100% |  |
| DH1100-B-EQP-207 |  | Gallery 1103 - E110/Line-Ups // Set CDU-DH1100-09 | 1d | 2026-09-30 | 2026-09-30 | DH1100-B-EQP-78 |  | 38d |
| DH1100-B-EQP-74 |  | Gallery 1103 - E110/Line-Ups // Connect CRAH units | 10d | 2026-09-30 | 2026-10-14 | DH1100-B-EQP-76, DH1100-B-EQP-73 SS+5d |  | 21d |
| DH1100-B-EQP-80 |  | Gallery 1103 - E110/Line-Ups // Pull Cable Tray Feed from MOD to CRAHU's | 5d | 2026-09-30 | 2026-10-06 | DH1100-B-EQP-78 |  | 30d |
| DH1100-B-EQP-81 |  | Gallery 1103 - E110/Line-Ups // Mechanical Connections to CRAHU Units | 10d | 2026-09-30 | 2026-10-14 | DH1100-B-EQP-76 SS+5d |  | 26d |
| DH1100-B-EQP-82 |  | Gallery 1103 - E110/Line-Ups // Mount Electrial Gear for Chiller Controls | 10d | 2026-09-30 | 2026-10-14 | DH1100-B-EQP-78 |  | 24d |
| DH1100-B-EQP-208 |  | Gallery 1103 - E110/Line-Ups // Set CDU-DH1100-10 | 1d | 2026-10-01 | 2026-10-01 | DH1100-B-EQP-207 |  | 38d |
| DH1100-B-EQP-79 |  | Gallery 1103 - E110/Line-Ups // Pull Feeder from SWD to MOD | 1d | 2026-10-02 | 2026-10-02 | DH1100-B-EQP-78, DH1100-B-EQP-208 |  | 38d |
| DH1100-B-EQP-87 |  | Gallery 1103 - E110/Line-Ups // Pull Feeder and Branch circuits to MIsc equipment and Chiller controls | 10d | 2026-10-06 | 2026-10-20 | DH1100-B-EQP-82 SS+4d |  | 24d |
| DH1100-B-EQP-75 |  | Gallery 1103 - E110/Line-Ups // Condensate connections to Floor Drains | 10d | 2026-10-07 | 2026-10-21 | DH1100-B-EQP-74 SS+5d |  | 21d |
| DH1100-B-EQP-83 |  | Gallery 1103 - E110/Line-Ups // Pull Cable Tray Feed from MOD to CRAHU's | 5d | 2026-10-07 | 2026-10-14 | DH1100-B-EQP-80 |  | 30d |
| DH1100-B-EQP-86 |  | Gallery 1103 - E110/Line-Ups // Terminate CRAHU Electrical Connections | 5d | 2026-10-09 | 2026-10-16 | DH1100-B-EQP-80, DH1100-B-EQP-83 SS+2d |  | 30d |
| DH1100-B-EQP-89 |  | Gallery 1103 - E110/Line-Ups // Teminate all Misc Equipment and Chiller Controls | 10d | 2026-10-13 | 2026-10-26 | DH1100-B-EQP-87 SS+4d |  | 24d |
| DH1100-B-EQP-84 |  | Gallery 1103 - E110/Line-Ups // Condensate connections to Floor Drains | 10d | 2026-10-15 | 2026-10-28 | DH1100-B-EQP-75 SS+5d, DH1100-B-EQP-81 SS+5d |  | 21d |
| DH1100-B-EQP-85 |  | Gallery 1103 - E110/Line-Ups // Terminat Mod Panels | 1d | 2026-10-15 | 2026-10-15 | DH1100-B-EQP-79, DH1100-B-EQP-80, DH1100-B-EQP-83 |  | 31d |
| DH1100-B-EQP-90 |  | Gallery 1103 - E110/Line-Ups // Electrical Gear FOD Inspection Pre-Start Up | 2d | 2026-10-27 | 2026-10-28 | DH1100-B-EQP-85, DH1100-B-EQP-89, DH1100-B-EQP-86 |  | 24d |
| DH1100-B-EQP-88 |  | Gallery 1103 - E110/Line-Ups // Mechanical Gear FOD Inspection Pre-Start Up | 3d | 2026-10-29 | 2026-11-02 | DH1100-B-EQP-74, DH1100-B-EQP-81, DH1100-B-EQP-75, DH1100-B-EQP-84 |  | 21d |
|  | 6 | **F110** |  | 2026-09-11 | 2026-11-02 |  |  |  |
| DH1100-B-EQP-95 |  | Gallery 1103 - F110/Line-Ups // Set MOD F140-01 (Does No apply) | 1d | 2026-09-11 A | 2026-09-11 A | DH1100-B-EQP-94 FF | 100% |  |
| DH1100-B-EQP-96 |  | Gallery 1103 - F110/Line-Ups // Set MOD F140-02 (Does No apply) | 1d | 2026-09-11 A | 2026-09-11 A | DH1100-B-EQP-95 SS | 100% |  |
| DH1100-B-EQP-91 |  | Gallery 1103 - F110/Line-Ups // Set CRAH-DH1100-11 | 1d | 2026-09-11 A | 2026-09-17 A | DH1100-B-EQP-76 SS | 100% |  |
| DH1100-B-EQP-94 |  | Gallery 1103 - F110/Line-Ups // Set CRAH-DH1100-12 | 1d | 2026-09-11 A | 2026-09-17 A | DH1100-B-EQP-91 FF, DH1100-B-EQP-91 SS | 100% |  |
| DH1100-B-EQP-100 |  | Gallery 1103 - F110/Line-Ups // Mount Electrial Gear for Chiller Controls | 10d | 2026-09-30 | 2026-10-14 | DH1100-B-EQP-96 |  | 24d |
| DH1100-B-EQP-209 |  | Gallery 1103 - F110/Line-Ups // Set CDU-DH1100-11 | 1d | 2026-09-30 | 2026-09-30 | DH1100-B-EQP-96 |  | 38d |
| DH1100-B-EQP-92 |  | Gallery 1103 - F110/Line-Ups // Connect CRAH units | 10d | 2026-09-30 | 2026-10-14 | DH1100-B-EQP-94, DH1100-B-EQP-91 SS+5d |  | 21d |
| DH1100-B-EQP-98 |  | Gallery 1103 - F110/Line-Ups // Pull Cable Tray Feed from MOD to CRAHU's | 5d | 2026-09-30 | 2026-10-06 | DH1100-B-EQP-96 |  | 30d |
| DH1100-B-EQP-99 |  | Gallery 1103 - F110/Line-Ups // Mechanical Connections to CRAHU Units | 10d | 2026-09-30 | 2026-10-14 | DH1100-B-EQP-94 SS+5d |  | 26d |
| DH1100-B-EQP-210 |  | Gallery 1103 - F110/Line-Ups // Set CDU-DH1100-12 | 1d | 2026-10-01 | 2026-10-01 | DH1100-B-EQP-209 |  | 38d |
| DH1100-B-EQP-97 |  | Gallery 1103 - F110/Line-Ups // Pull Feeder from SWD to MOD | 1d | 2026-10-02 | 2026-10-02 | DH1100-B-EQP-96, DH1100-B-EQP-210 |  | 38d |
| DH1100-B-EQP-105 |  | Gallery 1103 - F110/Line-Ups // Pull Feeder and Branch circuits to MIsc equipment and Chiller controls | 10d | 2026-10-06 | 2026-10-20 | DH1100-B-EQP-100 SS+4d |  | 24d |
| DH1100-B-EQP-101 |  | Gallery 1103 - F110/Line-Ups // Pull Cable Tray Feed from MOD to CRAHU's | 5d | 2026-10-07 | 2026-10-14 | DH1100-B-EQP-98 |  | 30d |
| DH1100-B-EQP-93 |  | Gallery 1103 - F110/Line-Ups // Condensate connections to Floor Drains | 10d | 2026-10-07 | 2026-10-21 | DH1100-B-EQP-92 SS+5d |  | 21d |
| DH1100-B-EQP-104 |  | Gallery 1103 - F110/Line-Ups // Terminate CRAHU Electrical Connections | 5d | 2026-10-09 | 2026-10-16 | DH1100-B-EQP-98, DH1100-B-EQP-101 SS+2d |  | 30d |
| DH1100-B-EQP-107 |  | Gallery 1103 - F110/Line-Ups // Teminate all Misc Equipment and Chiller Controls | 10d | 2026-10-13 | 2026-10-26 | DH1100-B-EQP-105 SS+4d |  | 24d |
| DH1100-B-EQP-102 |  | Gallery 1103 - F110/Line-Ups // Condensate connections to Floor Drains | 10d | 2026-10-15 | 2026-10-28 | DH1100-B-EQP-93 SS+5d, DH1100-B-EQP-99 SS+5d |  | 21d |
| DH1100-B-EQP-103 |  | Gallery 1103 - F110/Line-Ups // Terminat Mod Panels | 1d | 2026-10-15 | 2026-10-15 | DH1100-B-EQP-97, DH1100-B-EQP-98, DH1100-B-EQP-101 |  | 31d |
| DH1100-B-EQP-108 |  | Gallery 1103 - F110/Line-Ups // Electrical Gear FOD Inspection Pre-Start Up | 2d | 2026-10-27 | 2026-10-28 | DH1100-B-EQP-103, DH1100-B-EQP-107, DH1100-B-EQP-104 |  | 24d |
| DH1100-B-EQP-106 |  | Gallery 1103 - F110/Line-Ups // Mechanical Gear FOD Inspection Pre-Start Up | 3d | 2026-10-29 | 2026-11-02 | DH1100-B-EQP-92, DH1100-B-EQP-99, DH1100-B-EQP-93, DH1100-B-EQP-102 |  | 21d |
|  | 7 | **G110** |  | 2026-09-14 | 2026-11-02 |  |  |  |
| DH1100-B-EQP-113 |  | Gallery 1103 - G110/Line-Ups // Set MOD G140-01 (Does No apply) | 1d | 2026-09-14 A | 2026-09-14 A | DH1100-B-EQP-112 FF | 100% |  |
| DH1100-B-EQP-114 |  | Gallery 1103 - G110/Line-Ups // Set MOD G140-02 (Does No apply) | 1d | 2026-09-14 A | 2026-09-14 A | DH1100-B-EQP-113 SS | 100% |  |
| DH1100-B-EQP-109 |  | Gallery 1103 - G110/Line-Ups // Set CRAH-DH1100-13 | 1d | 2026-09-14 A | 2026-09-17 A | DH1100-B-EQP-94 | 100% |  |
| DH1100-B-EQP-112 |  | Gallery 1103 - G110/Line-Ups // Set CRAH-DH1100-14 | 1d | 2026-09-14 A | 2026-09-17 A | DH1100-B-EQP-109 FF, DH1100-B-EQP-109 SS | 100% |  |
| DH1100-B-EQP-110 |  | Gallery 1103 - G110/Line-Ups // Connect CRAH units | 10d | 2026-09-30 | 2026-10-14 | DH1100-B-EQP-112, DH1100-B-EQP-109 SS+5d |  | 21d |
| DH1100-B-EQP-116 |  | Gallery 1103 - G110/Line-Ups // Pull Cable Tray Feed from MOD to CRAHU's | 5d | 2026-09-30 | 2026-10-06 | DH1100-B-EQP-114 |  | 30d |
| DH1100-B-EQP-117 |  | Gallery 1103 - G110/Line-Ups // Mechanical Connections to CRAHU Units | 10d | 2026-09-30 | 2026-10-14 | DH1100-B-EQP-112 SS+5d |  | 26d |
| DH1100-B-EQP-118 |  | Gallery 1103 - G110/Line-Ups // Mount Electrial Gear for Chiller Controls | 10d | 2026-09-30 | 2026-10-14 | DH1100-B-EQP-114 |  | 24d |
| DH1100-B-EQP-211 |  | Gallery 1103 - G110/Line-Ups // Set CDU-DH1100-13 | 1d | 2026-09-30 | 2026-09-30 | DH1100-B-EQP-114 |  | 38d |
| DH1100-B-EQP-212 |  | Gallery 1103 - G110/Line-Ups // Set CDU-DH1100-14 | 1d | 2026-10-01 | 2026-10-01 | DH1100-B-EQP-211 |  | 38d |
| DH1100-B-EQP-115 |  | Gallery 1103 - G110/Line-Ups // Pull Feeder from SWD to MOD | 1d | 2026-10-02 | 2026-10-02 | DH1100-B-EQP-114, DH1100-B-EQP-212 |  | 38d |
| DH1100-B-EQP-123 |  | Gallery 1103 - G110/Line-Ups // Pull Feeder and Branch circuits to MIsc equipment and Chiller controls | 10d | 2026-10-06 | 2026-10-20 | DH1100-B-EQP-118 SS+4d |  | 24d |

| ID | WBS | Task | Duration | Start | Finish | Predecessors | Complete | Total float |
| --- | --- | --- | --- | --- | --- | --- | --- | --- |
| DH1100-B-EQP-111 |  | Gallery 1103 - G110/Line-Ups // Condensate connections to Floor Drains | 10d | 2026-10-07 | 2026-10-21 | DH1100-B-EQP-110 SS+5d |  | 21d |
| DH1100-B-EQP-119 |  | Gallery 1103 - G110/Line-Ups // Pull Cable Tray Feed from MOD to CRAHU's | 5d | 2026-10-07 | 2026-10-14 | DH1100-B-EQP-116 |  | 30d |
| DH1100-B-EQP-122 |  | Gallery 1103 - G110/Line-Ups // Terminate CRAHU Electrical Connections | 5d | 2026-10-09 | 2026-10-16 | DH1100-B-EQP-116, DH1100-B-EQP-119 SS+2d |  | 30d |
| DH1100-B-EQP-125 |  | Gallery 1103 - G110/Line-Ups // Teminate all Misc Equipment and Chiller Controls | 10d | 2026-10-13 | 2026-10-26 | DH1100-B-EQP-123 SS+4d |  | 24d |
| DH1100-B-EQP-120 |  | Gallery 1103 - G110/Line-Ups // Condensate connections to Floor Drains | 10d | 2026-10-15 | 2026-10-28 | DH1100-B-EQP-111 SS+5d, DH1100-B-EQP-117 SS+5d |  | 21d |
| DH1100-B-EQP-121 |  | Gallery 1103 - G110/Line-Ups // Terminat Mod Panels | 1d | 2026-10-15 | 2026-10-15 | DH1100-B-EQP-115, DH1100-B-EQP-116, DH1100-B-EQP-119 |  | 31d |
| DH1100-B-EQP-126 |  | Gallery 1103 - G110/Line-Ups // Electrical Gear FOD Inspection Pre-Start Up | 2d | 2026-10-27 | 2026-10-28 | DH1100-B-EQP-121, DH1100-B-EQP-125, DH1100-B-EQP-122 |  | 24d |
| DH1100-B-EQP-124 |  | Gallery 1103 - G110/Line-Ups // Mechanical Gear FOD Inspection Pre-Start Up | 3d | 2026-10-29 | 2026-11-02 | DH1100-B-EQP-110, DH1100-B-EQP-117, DH1100-B-EQP-111, DH1100-B-EQP-120 |  | 21d |
|  | 8 | **H110** |  | 2026-09-14 | 2026-11-02 |  |  |  |
| DH1100-B-EQP-131 |  | Gallery 1103 - H110/Line-Ups // Set MOD H140-01 (Does No apply) | 1d | 2026-09-14 A | 2026-09-14 A | DH1100-B-EQP-130 FF | 100% |  |
| DH1100-B-EQP-132 |  | Gallery 1103 - H110/Line-Ups // Set MOD H140-02 (Does No apply) | 1d | 2026-09-14 A | 2026-09-14 A | DH1100-B-EQP-131 SS | 100% |  |
| DH1100-B-EQP-127 |  | Gallery 1103 - H110/Line-Ups // Set CRAH-DH1100-15 | 1d | 2026-09-14 A | 2026-09-18 A | DH1100-B-EQP-112 SS | 100% |  |
| DH1100-B-EQP-130 |  | Gallery 1103 - H110/Line-Ups // Set CRAH-DH1100-16 | 1d | 2026-09-14 A | 2026-09-18 A | DH1100-B-EQP-127 FF, DH1100-B-EQP-127 SS | 100% |  |
| DH1100-B-EQP-128 |  | Gallery 1103 - H110/Line-Ups // Connect CRAH units | 10d | 2026-09-30 | 2026-10-14 | DH1100-B-EQP-130, DH1100-B-EQP-127 SS+5d |  | 21d |
| DH1100-B-EQP-134 |  | Gallery 1103 - H110/Line-Ups // Pull Cable Tray Feed from MOD to CRAHU's | 5d | 2026-09-30 | 2026-10-06 | DH1100-B-EQP-132 |  | 30d |
| DH1100-B-EQP-135 |  | Gallery 1103 - H110/Line-Ups // Mechanical Connections to CRAHU Units | 10d | 2026-09-30 | 2026-10-14 | DH1100-B-EQP-130 SS+5d |  | 26d |
| DH1100-B-EQP-136 |  | Gallery 1103 - H110/Line-Ups // Mount Electrial Gear for Chiller Controls | 10d | 2026-09-30 | 2026-10-14 | DH1100-B-EQP-132 |  | 24d |
| DH1100-B-EQP-213 |  | Gallery 1103 - H110/Line-Ups // Set CDU-DH1100-15 | 1d | 2026-09-30 | 2026-09-30 | DH1100-B-EQP-132 |  | 38d |
| DH1100-B-EQP-214 |  | Gallery 1103 - H110/Line-Ups // Set CDU-DH1100-16 | 1d | 2026-10-01 | 2026-10-01 | DH1100-B-EQP-213 |  | 38d |
| DH1100-B-EQP-133 |  | Gallery 1103 - H110/Line-Ups // Pull Feeder from SWD to MOD | 1d | 2026-10-02 | 2026-10-02 | DH1100-B-EQP-132, DH1100-B-EQP-214 |  | 38d |
| DH1100-B-EQP-141 |  | Gallery 1103 - H110/Line-Ups // Pull Feeder and Branch circuits to MIsc equipment and Chiller controls | 10d | 2026-10-06 | 2026-10-20 | DH1100-B-EQP-136 SS+4d |  | 24d |
| DH1100-B-EQP-129 |  | Gallery 1103 - H110/Line-Ups // Condensate connections to Floor Drains | 10d | 2026-10-07 | 2026-10-21 | DH1100-B-EQP-128 SS+5d |  | 21d |
| DH1100-B-EQP-137 |  | Gallery 1103 - H110/Line-Ups // Pull Cable Tray Feed from MOD to CRAHU's | 5d | 2026-10-07 | 2026-10-14 | DH1100-B-EQP-134 |  | 30d |
| DH1100-B-EQP-140 |  | Gallery 1103 - H110/Line-Ups // Terminate CRAHU Electrical Connections | 5d | 2026-10-09 | 2026-10-16 | DH1100-B-EQP-134, DH1100-B-EQP-137 SS+2d |  | 30d |
| DH1100-B-EQP-143 |  | Gallery 1103 - H110/Line-Ups // Teminate all Misc Equipment and Chiller Controls | 10d | 2026-10-13 | 2026-10-26 | DH1100-B-EQP-141 SS+4d |  | 24d |
| DH1100-B-EQP-138 |  | Gallery 1103 - H110/Line-Ups // Condensate connections to Floor Drains | 10d | 2026-10-15 | 2026-10-28 | DH1100-B-EQP-129 SS+5d, DH1100-B-EQP-135 SS+5d |  | 21d |
| DH1100-B-EQP-139 |  | Gallery 1103 - H110/Line-Ups // Terminat Mod Panels | 1d | 2026-10-15 | 2026-10-15 | DH1100-B-EQP-133, DH1100-B-EQP-134, DH1100-B-EQP-137 |  | 31d |
| DH1100-B-EQP-144 |  | Gallery 1103 - H110/Line-Ups // Electrical Gear FOD Inspection Pre-Start Up | 2d | 2026-10-27 | 2026-10-28 | DH1100-B-EQP-139, DH1100-B-EQP-143, DH1100-B-EQP-140 |  | 24d |
| DH1100-B-EQP-142 |  | Gallery 1103 - H110/Line-Ups // Mechanical Gear FOD Inspection Pre-Start Up | 3d | 2026-10-29 | 2026-11-02 | DH1100-B-EQP-128, DH1100-B-EQP-135, DH1100-B-EQP-129, DH1100-B-EQP-138 |  | 21d |
|  | 9 | **J110** |  | 2026-09-14 | 2026-11-02 |  |  |  |
| DH1100-B-EQP-149 |  | Gallery 1103 - J110/Line-Ups // Set MOD J140-01 (Does No apply) | 1d | 2026-09-14 A | 2026-09-14 A | DH1100-B-EQP-148 FF | 100% |  |
| DH1100-B-EQP-150 |  | Gallery 1103 - J110/Line-Ups // Set MOD J140-02 (Does No apply) | 1d | 2026-09-14 A | 2026-09-14 A | DH1100-B-EQP-149 SS | 100% |  |
| DH1100-B-EQP-145 |  | Gallery 1103 - J110/Line-Ups // Set CRAH-DH1100-17 | 1d | 2026-09-14 A | 2026-09-18 A | DH1100-B-EQP-130 SS | 100% |  |
| DH1100-B-EQP-148 |  | Gallery 1103 - J110/Line-Ups // Set CRAH-DH1100-18 | 1d | 2026-09-14 A | 2026-09-18 A | DH1100-B-EQP-145 FF, DH1100-B-EQP-145 SS | 100% |  |
| DH1100-B-EQP-152 |  | Gallery 1103 - J110/Line-Ups // Pull Cable Tray Feed from MOD to CRAHU's | 5d | 2026-09-24 A | 2026-10-06 | DH1100-B-EQP-150 |  | 30d |
| DH1100-B-EQP-154 |  | Gallery 1103 - J110/Line-Ups // Mount Electrial Gear for Chiller Controls | 10d | 2026-09-24 A | 2026-10-14 | DH1100-B-EQP-150 |  | 28d |
| DH1100-B-EQP-146 |  | Gallery 1103 - J110/Line-Ups // Connect CRAH units | 10d | 2026-09-30 | 2026-10-14 | DH1100-B-EQP-148, DH1100-B-EQP-145 SS+5d |  | 21d |
| DH1100-B-EQP-153 |  | Gallery 1103 - J110/Line-Ups // Mechanical Connections to CRAHU Units | 10d | 2026-09-30 | 2026-10-14 | DH1100-B-EQP-148 SS+5d |  | 26d |
| DH1100-B-EQP-159 |  | Gallery 1103 - J110/Line-Ups // Pull Feeder and Branch circuits to MIsc equipment and Chiller controls | 10d | 2026-09-30 | 2026-10-14 | DH1100-B-EQP-154 SS+4d |  | 28d |
| DH1100-B-EQP-215 |  | Gallery 1103 - J110/Line-Ups // Set CDU-DH1100-17 | 1d | 2026-09-30 | 2026-09-30 | DH1100-B-EQP-150 |  | 38d |
| DH1100-B-EQP-216 |  | Gallery 1103 - J110/Line-Ups // Set CDU-DH1100-18 | 1d | 2026-10-01 | 2026-10-01 | DH1100-B-EQP-215 |  | 38d |
| DH1100-B-EQP-151 |  | Gallery 1103 - J110/Line-Ups // Pull Feeder from SWD to MOD | 1d | 2026-10-02 | 2026-10-02 | DH1100-B-EQP-150, DH1100-B-EQP-216 |  | 38d |
| DH1100-B-EQP-161 |  | Gallery 1103 - J110/Line-Ups // Teminate all Misc Equipment and Chiller Controls | 10d | 2026-10-06 | 2026-10-20 | DH1100-B-EQP-159 SS+4d |  | 28d |
| DH1100-B-EQP-147 |  | Gallery 1103 - J110/Line-Ups // Condensate connections to Floor Drains | 10d | 2026-10-07 | 2026-10-21 | DH1100-B-EQP-146 SS+5d |  | 21d |
| DH1100-B-EQP-155 |  | Gallery 1103 - J110/Line-Ups // Pull Cable Tray Feed from MOD to CRAHU's | 5d | 2026-10-07 | 2026-10-14 | DH1100-B-EQP-152 |  | 30d |
| DH1100-B-EQP-158 |  | Gallery 1103 - J110/Line-Ups // Terminate CRAHU Electrical Connections | 5d | 2026-10-09 | 2026-10-16 | DH1100-B-EQP-152, DH1100-B-EQP-155 SS+2d |  | 30d |
| DH1100-B-EQP-156 |  | Gallery 1103 - J110/Line-Ups // Condensate connections to Floor Drains | 10d | 2026-10-15 | 2026-10-28 | DH1100-B-EQP-147 SS+5d, DH1100-B-EQP-153 SS+5d |  | 21d |
| DH1100-B-EQP-157 |  | Gallery 1103 - J110/Line-Ups // Terminat Mod Panels | 1d | 2026-10-15 | 2026-10-15 | DH1100-B-EQP-151, DH1100-B-EQP-152, DH1100-B-EQP-155 |  | 31d |
| DH1100-B-EQP-162 |  | Gallery 1103 - J110/Line-Ups // Electrical Gear FOD Inspection Pre-Start Up | 2d | 2026-10-21 | 2026-10-22 | DH1100-B-EQP-157, DH1100-B-EQP-161, DH1100-B-EQP-158 |  | 28d |
| DH1100-B-EQP-160 |  | Gallery 1103 - J110/Line-Ups // Mechanical Gear FOD Inspection Pre-Start Up | 3d | 2026-10-29 | 2026-11-02 | DH1100-B-EQP-146, DH1100-B-EQP-153, DH1100-B-EQP-147, DH1100-B-EQP-156 |  | 21d |
|  | 10 | **K110** |  | 2026-09-15 | 2026-11-02 |  |  |  |
| DH1100-B-EQP-167 |  | Gallery 1103 - K110/Line-Ups // Set MOD K140-01 (Does No apply) | 1d | 2026-09-15 A | 2026-09-15 A | DH1100-B-EQP-166 FF | 100% |  |
| DH1100-B-EQP-168 |  | Gallery 1103 - K110/Line-Ups // Set MOD K140-02 (Does No apply) | 1d | 2026-09-15 A | 2026-09-15 A | DH1100-B-EQP-167 SS | 100% |  |
| DH1100-B-EQP-163 |  | Gallery 1103 - K110/Line-Ups // Set CRAH-DH1100-19 | 1d | 2026-09-15 A | 2026-09-18 A | DH1100-B-EQP-148 | 100% |  |
| DH1100-B-EQP-166 |  | Gallery 1103 - K110/Line-Ups // Set CRAH-DH1100-20 | 1d | 2026-09-15 A | 2026-09-18 A | DH1100-B-EQP-163 FF, DH1100-B-EQP-163 SS | 100% |  |
| DH1100-B-EQP-170 |  | Gallery 1103 - K110/Line-Ups // Pull Cable Tray Feed from MOD to CRAHU's | 5d | 2026-09-24 A | 2026-10-06 | DH1100-B-EQP-168 |  | 30d |
| DH1100-B-EQP-172 |  | Gallery 1103 - K110/Line-Ups // Mount Electrial Gear for Chiller Controls | 10d | 2026-09-24 A | 2026-10-14 | DH1100-B-EQP-168 |  | 28d |
| DH1100-B-EQP-164 |  | Gallery 1103 - K110/Line-Ups // Connect CRAH units | 10d | 2026-09-30 | 2026-10-14 | DH1100-B-EQP-166, DH1100-B-EQP-163 SS+5d |  | 21d |
| DH1100-B-EQP-169 |  | Gallery 1103 - K110/Line-Ups // Pull Feeder from SWD to MOD | 1d | 2026-09-30 | 2026-09-30 | DH1100-B-EQP-168 |  | 40d |
| DH1100-B-EQP-171 |  | Gallery 1103 - K110/Line-Ups // Mechanical Connections to CRAHU Units | 10d | 2026-09-30 | 2026-10-14 | DH1100-B-EQP-166 SS+5d |  | 26d |
| DH1100-B-EQP-177 |  | Gallery 1103 - K110/Line-Ups // Pull Feeder and Branch circuits to MIsc equipment and Chiller controls | 10d | 2026-09-30 | 2026-10-14 | DH1100-B-EQP-172 SS+4d |  | 28d |
| DH1100-B-EQP-179 |  | Gallery 1103 - K110/Line-Ups // Teminate all Misc Equipment and Chiller Controls | 10d | 2026-10-06 | 2026-10-20 | DH1100-B-EQP-177 SS+4d |  | 28d |
| DH1100-B-EQP-165 |  | Gallery 1103 - K110/Line-Ups // Condensate connections to Floor Drains | 10d | 2026-10-07 | 2026-10-21 | DH1100-B-EQP-164 SS+5d |  | 21d |
| DH1100-B-EQP-173 |  | Gallery 1103 - K110/Line-Ups // Pull Cable Tray Feed from MOD to CRAHU's | 5d | 2026-10-07 | 2026-10-14 | DH1100-B-EQP-170 |  | 30d |
| DH1100-B-EQP-176 |  | Gallery 1103 - K110/Line-Ups // Terminate CRAHU Electrical Connections | 5d | 2026-10-09 | 2026-10-16 | DH1100-B-EQP-170, DH1100-B-EQP-173 SS+2d |  | 30d |
| DH1100-B-EQP-174 |  | Gallery 1103 - K110/Line-Ups // Condensate connections to Floor Drains | 10d | 2026-10-15 | 2026-10-28 | DH1100-B-EQP-165 SS+5d, DH1100-B-EQP-171 SS+5d |  | 21d |
| DH1100-B-EQP-175 |  | Gallery 1103 - K110/Line-Ups // Terminat Mod Panels | 1d | 2026-10-15 | 2026-10-15 | DH1100-B-EQP-169, DH1100-B-EQP-170, DH1100-B-EQP-173 |  | 31d |
| DH1100-B-EQP-180 |  | Gallery 1103 - K110/Line-Ups // Electrical Gear FOD Inspection Pre-Start Up | 2d | 2026-10-21 | 2026-10-22 | DH1100-B-EQP-175, DH1100-B-EQP-179, DH1100-B-EQP-176 |  | 28d |
| DH1100-B-EQP-178 |  | Gallery 1103 - K110/Line-Ups // Mechanical Gear FOD Inspection Pre-Start Up | 3d | 2026-10-29 | 2026-11-02 | DH1100-B-EQP-164, DH1100-B-EQP-171, DH1100-B-EQP-165, DH1100-B-EQP-174 |  | 21d |
|  | 11 | **R110** |  | 2026-09-15 | 2026-10-19 |  |  |  |

| ID | WBS | Task | Duration | Start | Finish | Predecessors | Complete | Total float |
| --- | --- | --- | --- | --- | --- | --- | --- | --- |
| DH1100-B-EQP-181 |  | Gallery 1103 - R110/Line-Ups // Set CRAH-DH1100-21 | 1d | 2026-09-15 A | 2026-09-18 A | DH1100-B-EQP-166 SS | 100% |  |
| DH1100-B-EQP-184 |  | Gallery 1103 - R110/Line-Ups // Set CRAH-DH1100-22 | 1d | 2026-09-15 A | 2026-09-18 A | DH1100-B-EQP-181 FF, DH1100-B-EQP-181 SS | 100% |  |
| DH1100-B-EQP-182 |  | Gallery 1103 - R110/Line-Ups // Connect CRAH units | 10d | 2026-09-30 | 2026-10-14 | DH1100-B-EQP-184, DH1100-B-EQP-181 SS+5d |  | -9d |
| DH1100-B-EQP-187 |  | Gallery 1103 - R110/Line-Ups // Pull Feeder from SWD to MOD | 1d | 2026-09-30 | 2026-09-30 | DH1100-B-EQP-184 |  | 0d |
| DH1100-B-EQP-188 |  | Gallery 1103 - R110/Line-Ups // Pull Cable Tray Feed from MOD to CRAHU's | 5d | 2026-09-30 | 2026-10-06 | DH1100-B-EQP-184 |  | -9d |
| DH1100-B-EQP-189 |  | Gallery 1103 - R110/Line-Ups // Mechanical Connections to CRAHU Units | 10d | 2026-09-30 | 2026-10-14 | DH1100-B-EQP-184 SS+3d |  | -12d |
| DH1100-B-EQP-190 |  | Gallery 1103 - R110/Line-Ups // Mount Electrial Gear for Chiller Controls | 10d | 2026-09-30 | 2026-10-14 | DH1100-B-EQP-184 |  | -8d |
| DH1100-B-EQP-195 |  | Gallery 1103 - R110/Line-Ups // Pull Feeder and Branch circuits to MIsc equipment and Chiller controls | 10d | 2026-09-30 | 2026-10-14 | DH1100-B-EQP-190 SS |  | -8d |
| DH1100-B-EQP-197 |  | Gallery 1103 - R110/Line-Ups // Teminate all Misc Equipment and Chiller Controls | 10d | 2026-09-30 | 2026-10-14 | DH1100-B-EQP-195 SS |  | -8d |
| DH1100-B-EQP-183 |  | Gallery 1103 - R110/Line-Ups // Condensate connections to Floor Drains | 5d | 2026-10-05 | 2026-10-09 | DH1100-B-EQP-182 SS+3d |  | -9d |
| DH1100-B-EQP-192 |  | Gallery 1103 - R110/Line-Ups // Condensate connections to Floor Drains | 5d | 2026-10-07 | 2026-10-14 | DH1100-B-EQP-183 SS+2d, DH1100-B-EQP-189 SS+2d |  | -9d |
| DH1100-B-EQP-193 |  | Gallery 1103 - R110/Line-Ups // Terminat Mod Panels | 1d | 2026-10-07 | 2026-10-07 | DH1100-B-EQP-187, DH1100-B-EQP-188 |  | -4d |
| DH1100-B-EQP-194 |  | Gallery 1103 - R110/Line-Ups // Terminate CRAHU Electrical Connections | 5d | 2026-10-07 | 2026-10-14 | DH1100-B-EQP-188 |  | -8d |
| DH1100-B-EQP-196 |  | Gallery 1103 - R110/Line-Ups // Mechanical Gear FOD Inspection Pre-Start Up | 3d | 2026-10-15 | 2026-10-19 | DH1100-B-EQP-182, DH1100-B-EQP-189, DH1100-B-EQP-183, DH1100-B-EQP-192 |  | -9d |
| DH1100-B-EQP-198 |  | Gallery 1103 - R110/Line-Ups // Electrical Gear FOD Inspection Pre-Start Up | 2d | 2026-10-15 | 2026-10-16 | DH1100-B-EQP-193, DH1100-B-EQP-197, DH1100-B-EQP-194 |  | -8d |
|  | 12 | **Equipment Connections** |  | 2026-10-07 | 2026-10-22 |  |  |  |
|  | 1 | **CRAH** |  | 2026-10-07 | 2026-10-19 |  |  |  |
| DH1100.MG.A110.8687 |  | Gallery 1103 // DH 1100 / Elec Room // CRAH Duct Work Termination | 2d | 2026-10-07 | 2026-10-08 | DH1100-B-EQP-188 |  | -9d |
| DH1100.MG.A110.8686 |  | Gallery 1103 // DH 1100 / Elec Room // CRAH Chilled Water | 2d | 2026-10-09 | 2026-10-13 | DH1100.MG.A110.8687 |  | -9d |
| DH1100.MG.A110.8684 |  | Gallery 1103 // DH 1100 / Elec Room // CRAH Power Connections | 2d | 2026-10-14 | 2026-10-15 | DH1100.MG.A110.8686 |  | -9d |
| DH1100.MG.A110.8685 |  | Gallery 1103 // DH 1100 / Elec Room // CRAH LV Connections | 2d | 2026-10-16 | 2026-10-19 | DH1100.MG.A110.8684 |  | -9d |
|  | 2 | **CDU** |  | 2026-10-15 | 2026-10-22 |  |  |  |
| DH1100.MG.A110.8690 |  | Gallery 1103 // DH 1100 / Elec Room // CDU Chilled Water Connections | 2d | 2026-10-15 | 2026-10-16 | DH1100-B-EQP-189 |  | -12d |
| DH1100.MG.A110.8688 |  | Gallery 1103 // DH 1100 /Elec Room // CDU Power Connections | 2d | 2026-10-19 | 2026-10-20 | DH1100.MG.A110.8690 |  | -12d |
| DH1100.MG.A110.8689 |  | Gallery 1103 // DH 1100 / Elec Room // CDU Controls Connections | 2d | 2026-10-21 | 2026-10-22 | DH1100.MG.A110.8688 |  | -12d |
|  | 3 | **MOD** |  | 2026-10-07 | 2026-10-13 |  |  |  |
| DH1100.MG.A110.8691 |  | Gallery 1103 // DH 1100 / Elec Room // MOD Power Connections | 2d | 2026-10-07 | 2026-10-08 | DH1100-B-EQP-188 |  | -5d |
| DH1100.MG.A110.8692 |  | Gallery 1103 // DH 1100 / Elec Room // MOD LV Connections | 2d | 2026-10-09 | 2026-10-13 | DH1100.MG.A110.8691 |  | -5d |
|  | 6 | **Corridors** |  | 2026-07-20 | 2026-10-16 |  |  |  |
|  | 1 | **Corridor 1000A** |  | 2026-07-20 | 2026-10-13 |  |  |  |
| DH1100.6430 |  | DH 1100/Corridor 1000A // Seal concrete | 1d | 2026-07-20 A | 2026-07-20 A | SOG.1442 | 100% |  |
| DH1100.6440 |  | DH 1100/Corridor 1000A // MEPF Overhead Hangers | 5d | 2026-07-24 A | 2026-08-07 A | STRUCTURE.7380 FS+1d, SOG.1442 | 100% |  |
| DH1100.6470 |  | DH 1100/Corridor 1000A // Frame walls | 3d | 2026-07-24 A | 2026-08-05 A | A2850, A2060, STRUCTURE.7430, DH1100.6430 | 100% |  |
| DH1100.6490 |  | DH 1100/Corridor 1000A // MEP rough in walls | 3d | 2026-08-07 A | 2026-08-11 A | DH1100.6440 | 100% |  |
| DH1100.6460 |  | DH 1100/Corridor 1000A // MEPF high overhead install | 3d | 2026-08-10 A | 2026-08-12 A | DH1100.6440 | 100% |  |
| DH1100.6480 |  | DH 1100/Corridor 1000A // Install wall door frames | 3d | 2026-08-10 A | 2026-08-12 A | DH1100.6470 SS+1d | 100% |  |
| DH1100.6550 |  | DH 1100/Corridor 1000A // Install Top Down Sheetrock | 4d | 2026-08-10 A | 2026-08-13 A | DH1100.6500 | 100% |  |
| DH1100.6500 |  | DH 1100/Corridor 1000A // In wall inspection | 1d | 2026-08-12 A | 2026-08-12 A | DH1100.6490 | 100% |  |
| DH1100.6510 |  | DH 1100/Corridor 1000A // Install Balance of Sheetrock on Walls | 5d | 2026-08-17 A | 2026-08-20 A | DH1100.6500, DH1100.6550 SS, DH1100.6460 | 100% |  |
| DH1100.6520 |  | DH 1100/Corridor 1000A // Tape and finish walls | 8d | 2026-08-19 A | 2026-08-24 A | DH1100.6510 SS | 100% |  |
| DH1100.6530 |  | DH 1100/Corridor 1000A // Prime and Paint first coat walls | 3d | 2026-08-25 A | 2026-09-01 A | DH1100.6520 | 100% |  |
| B120001.3137 |  | DH 1100/Corridor 1000A // Install Overhead Cable Ladder / 36" Cable Tray - TFO | 5d | 2026-09-30 | 2026-10-06 | DH1100.6440 |  | 39d |
| B120001.3138 |  | DH 1100/Corridor 1000A // Install Overhead HAC - TFO | 5d | 2026-09-30 | 2026-10-06 | B120001.3137 FF |  | 39d |
| DH1100.12119 |  | DH 1100/Corridor 1000A // Electrical Equipment Install | 7d | 2026-09-30 | 2026-10-08 | DH1100.8080 FF |  | -5d |
| DH1100.6590 |  | DH 1100/Corridor 1000A // Install lights and exit signs | 3d | 2026-09-30 | 2026-10-02 | DH1100.6480, DH1100.6530 |  | -5d |
| DH1100.8080 |  | DH 1100/Corridor 1000A // Final Coat Paint & Touchup Walls | 4d | 2026-10-05 | 2026-10-08 | DH1100.6590 |  | -5d |
| DH1100.12113 |  | DH 1100/Corridor 1000A // Ready to Receive Equipment | 0d | 2026-10-06 | 2026-10-06 | B120001.3138, DH1100.6530 FF |  | 39d |
| DH1100.6540 |  | DH 1100/Corridor 1000A // Install MEP Devices and Trim | 2d | 2026-10-09 | 2026-10-13 | DH1100.12119, DH1100.8080 |  | -5d |
|  | 3 | **Corridor 1000** |  | 2026-07-20 | 2026-10-16 |  |  |  |
| DH1100.12078 |  | DH 1100/Corridor 1000 // Seal concrete | 1d | 2026-07-20 A | 2026-07-20 A | DH1100.6430 | 100% |  |
| DH1100.12068 |  | DH 1100/Corridor 1000 // MEPF Overhead Hangers | 5d | 2026-07-24 A | 2026-08-07 A | DH1100.6440 SS | 100% |  |
| DH1100.12069 |  | DH 1100/Corridor 1000 // Frame walls | 3d | 2026-07-29 A | 2026-08-10 A | DH1100.6470, DH1100.12078 | 100% |  |
| B120001.3139 |  | DH 1100/Corridor 1000 // Install Overhead Cable Ladder / 36" Cable Tray - TFO | 5d | 2026-07-31 A | 2026-09-29 A | DH1100.12068 | 100% |  |
| DH1100.12070 |  | DH 1100/Corridor 1000 // Install Top Down Sheetrock | 3d | 2026-08-03 A | 2026-08-13 A | DH1100.12069 SS+3d | 100% |  |
| DH1100.12072 |  | DH 1100/Corridor 1000 // MEP rough in walls | 3d | 2026-08-11 A | 2026-08-13 A | DH1100.12070 FF | 100% |  |
| DH1100.12071 |  | DH 1100/Corridor 1000 // MEPF high overhead install | 3d | 2026-08-14 A | 2026-08-18 A | DH1100.12070 | 100% |  |
| DH1100.12073 |  | DH 1100/Corridor 1000 // In wall inspection | 1d | 2026-08-14 A | 2026-08-14 A | DH1100.12072 | 100% |  |
| DH1100.12074 |  | DH 1100/Corridor 1000 // Install Balance of Sheetrock on Walls | 5d | 2026-08-20 A | 2026-08-25 A | DH1100.12073, DH1100.12070 SS, DH1100.12071 | 100% |  |
| DH1100.12075 |  | DH 1100/Corridor 1000 // Tape and finish walls | 8d | 2026-09-04 A | 2026-09-15 A | DH1100.12074 | 100% |  |
| DH1100.12076 |  | DH 1100/Corridor 1000 // Install wall door frames | 3d | 2026-09-08 A | 2026-09-08 A | DH1100.12075 SS, DH1100.12069 SS+1d | 100% |  |
| DH1100.12077 |  | DH 1100/Corridor 1000 // Prime and Paint first coat walls | 3d | 2026-09-16 A | 2026-10-02 | DH1100.12075 |  | -8d |
| B120001.3140 |  | DH 1100/Corridor 1000 // Install Overhead HAC - TFO | 5d | 2026-09-30 | 2026-10-06 | B120001.3139 FF |  | 39d |
| DH1100.12079 |  | DH 1100/Corridor 1000 // Install lights and exit signs | 3d | 2026-10-05 | 2026-10-07 | DH1100.12076, DH1100.12077 |  | -8d |
| DH1100.12120 |  | DH 1100/Corridor 1000 // Electrical Equipment Install | 7d | 2026-10-05 | 2026-10-14 | DH1100.12080 FF |  | -8d |
| DH1100.12114 |  | DH 1100/Corridor 1000 // Ready to Receive Equipment | 0d | 2026-10-06 | 2026-10-06 | B120001.3140, DH1100.12077 FF |  | 39d |
| DH1100.12080 |  | DH 1100/Corridor 1000 // Final Coat Paint & Touchup Walls | 4d | 2026-10-08 | 2026-10-14 | DH1100.12079 |  | -8d |
| DH1100.12081 |  | DH 1100/Corridor 1000 // Install MEP Devices and Trim | 2d | 2026-10-15 | 2026-10-16 | DH1100.12120, DH1100.12080 |  | -8d |
|  | 2 | **Corridor 1000B** |  | 2026-07-20 | 2026-10-14 |  |  |  |
| DH1100.12092 |  | DH 1100/Corridor 1000B // Seal concrete | 1d | 2026-07-20 A | 2026-07-20 A | DH1100.12078 | 100% |  |
| DH1100.12082 |  | DH 1100/Corridor 1000B // MEPF Overhead Hangers | 5d | 2026-07-24 A | 2026-08-07 A | DH1100.12068 SS | 100% |  |

| ID | WBS | Task | Duration | Start | Finish | Predecessors | Complete | Total float |
| --- | --- | --- | --- | --- | --- | --- | --- | --- |
| DH1100.12083 |  | DH 1100/Corridor 1000B // Frame walls | 3d | 2026-08-03 A | 2026-08-13 A | DH1100.12069, DH1100.12092 | 100% |  |
| DH1100.12084 |  | DH 1100/Corridor 1000B // Install Top Down Sheetrock | 3d | 2026-08-06 A | 2026-08-13 A | DH1100.12083 SS | 100% |  |
| DH1100.12086 |  | DH 1100/Corridor 1000B // MEP rough in walls | 3d | 2026-08-11 A | 2026-08-13 A | DH1100.12084 FF | 100% |  |
| DH1100.12085 |  | DH 1100/Corridor 1000B // MEPF high overhead install | 3d | 2026-08-11 A | 2026-08-19 A | DH1100.12084 | 100% |  |
| DH1100.12087 |  | DH 1100/Corridor 1000B // In wall inspection | 1d | 2026-08-14 A | 2026-08-14 A | DH1100.12086 | 100% |  |
| DH1100.12088 |  | DH 1100/Corridor 1000B // Install Balance of Sheetrock on Walls | 5d | 2026-08-20 A | 2026-08-25 A | DH1100.12087, DH1100.12084 SS, DH1100.12085 | 100% |  |
| DH1100.12090 |  | DH 1100/Corridor 1000B // Install wall door frames | 3d | 2026-08-26 A | 2026-09-01 A | DH1100.12088, DH1100.12083 | 100% |  |
| DH1100.12095 |  | DH 1100/Corridor 1000B // Install MEP Devices and Trim | 2d | 2026-08-26 A | 2026-10-01 | DH1100.12088 |  | 2d |
| DH1100.12089 |  | DH 1100/Corridor 1000B // Tape and finish walls | 8d | 2026-09-09 A | 2026-09-30 | DH1100.12088 FF | 100% | -6d |
| DH1100.12091 |  | DH 1100/Corridor 1000B // Prime and Paint first coat walls | 3d | 2026-09-29 A | 2026-10-02 | DH1100.12089 SS+6d |  | -6d |
| B120001.3141 |  | DH 1100/Corridor 1000B // Install Overhead Cable Ladder / 36" Cable Tray - TFO | 5d | 2026-09-30 | 2026-10-06 | DH1100.12092, DH1100.12082 |  | 39d |
| B120001.3142 |  | DH 1100/Corridor 1000B // Install Overhead HAC - TFO | 5d | 2026-09-30 | 2026-10-06 | B120001.3141 FF |  | 39d |
| DH1100.12093 |  | DH 1100/Corridor 1000B // Install lights and exit signs | 3d | 2026-10-05 | 2026-10-07 | DH1100.12090, DH1100.12091 |  | -6d |
| DH1100.12121 |  | DH 1100/Corridor 1000B // Electrical Equipment Install | 7d | 2026-10-05 | 2026-10-14 | DH1100.12094 FF |  | -6d |
| DH1100.12115 |  | DH 1100/Corridor 1000B // Ready to Receive Equipment | 0d | 2026-10-06 | 2026-10-06 | B120001.3142, DH1100.12091 FF |  | 39d |
| DH1100.12094 |  | DH 1100/Corridor 1000B // Final Coat Paint & Touchup Walls | 4d | 2026-10-08 | 2026-10-14 | DH1100.12093 |  | -6d |
|  | 10 | **Flex 1000B1** |  | 2026-07-20 | 2026-10-22 |  |  |  |
| F.1000B..1000 |  | DH 1100/Flex 1000B1 // Seal Concrete | 5d | 2026-07-20 A | 2026-07-24 A | A2060, STRUCTURE.7430, DH1100.12092 | 100% |  |
| F.1000B..1010 |  | DH 1100/Flex 1000B1 // MEPF Layout of Overhead Supports | 2d | 2026-07-31 A | 2026-08-11 A | DH1100.12082, F.1000B..1000 | 100% |  |
| F.1000B..1040 |  | DH 1100/Flex 1000B1 // Frame Walls including Backing | 4d | 2026-08-04 A | 2026-08-14 A | F.1000B..1010 | 100% |  |
| F.1000B..1020 |  | DH 1100/Flex 1000B1 // MEPF Install High Overhead Systems | 6d | 2026-08-11 A | 2026-08-18 A | F.1000B..1010 | 100% |  |
| F.1000B..1060 |  | DH 1100/Flex 1000B1 // MEPF Install Rough Wall | 2d | 2026-08-12 A | 2026-08-20 A | F.1000B..1040, F.1000B..1020 | 100% |  |
| F.1000B..1080 |  | DH 1100/Flex 1000B1 // Rough Wall Inspspection (Approval to Close up) | 1d | 2026-08-14 A | 2026-08-20 A | F.1000B..1060 | 100% |  |
| F.1000B..1090 |  | DH 1100/Flex 1000B1 // Install Balance of Sheetrock | 3d | 2026-08-17 A | 2026-09-11 A | F.1000B..1080 | 100% |  |
| F.1000B..1100 |  | DH 1100/Flex 1000B1 // Tape and Finish Walls | 6d | 2026-08-20 A | 2026-09-18 A | F.1000B..1090 | 100% |  |
| F.1000B..1120 |  | DH 1100/Flex 1000B1 // Install MEPF Overhead Ceiling Rough | 3d | 2026-09-28 A | 2026-10-02 | F.1000B..1100 |  | -12d |
| F.1000B..1110 |  | DH 1100/Flex 1000B1 // Prime and First Coat of Paint | 2d | 2026-09-30 | 2026-10-01 | F.1000B..1100 |  | -11d |
| F.1000B..1050 |  | DH 1100/Flex 1000B1 // Install Door Frames | 1d | 2026-10-05 | 2026-10-05 | F.1000B..1040 FF, F.1000B..1120, F.1000B..1110 |  | -8d |
| F.1000B..1130 |  | DH 1100/Flex 1000B1 // Install Lighting, Fire Alarm & Fire Protection | 2d | 2026-10-05 | 2026-10-06 | F.1000B..1120, F.1000B..1110 |  | -12d |
| F.1000B..1140 |  | DH 1100/Flex 1000B1 // Wall Touch up Final Coat of Paint | 3d | 2026-10-07 | 2026-10-09 | F.1000B..1130 |  | -12d |
| F.1000B..1150 |  | DH 1100/Flex 1000B1 // Install Wall Base, Trim, and Devices | 3d | 2026-10-13 | 2026-10-15 | F.1000B..1140, F.1000B..1050 |  | -12d |
| F.1000B..1161 |  | DH 1100/Flex 1000B1 // Ready to Receive Equipment | 0d | 2026-10-15 | 2026-10-15 | F.1000B..1150 FF |  | -12d |
| F.1000B..1160 |  | DH 1100/Flex 1000B1 // Suffolk Pre Punch | 5d | 2026-10-16 | 2026-10-22 | F.1000B..1161 |  | -12d |
|  | 11 | **IDF 1000C2** |  | 2026-07-20 | 2026-10-16 |  |  |  |
| IDF.C2.1000 |  | DH 1100/IDF 1000B2 // Seal concrete | 5d | 2026-07-20 A | 2026-07-24 A | A2060, STRUCTURE.7430, F.1000B..1000 | 100% |  |
| IDF.C2.1010 |  | DH 1100/IDF 1000B2 // MEPF overhead layout | 5d | 2026-08-07 A | 2026-08-07 A | F.1000B..1010, IDF.C2.1000 | 100% |  |
| IDF.C2.1030 |  | DH 1100/IDF 1000B2 // Frame walls | 2d | 2026-08-10 A | 2026-08-11 A | IDF.C2.1010 | 100% |  |
| IDF.C2.1050 |  | DH 1100/IDF 1000B2 // Install Top Down Sheetrock | 2d | 2026-08-12 A | 2026-08-13 A | IDF.C2.1030 SS+3d | 100% |  |
| IDF.C2.1040 |  | DH 1100/IDF 1000B2 // Install wall door frames | 3d | 2026-08-12 A | 2026-09-01 A | IDF.C2.1030 SS+1d | 100% |  |
| IDF.C2.1060 |  | DH 1100/IDF 1000B2 // MEP rough in walls | 3d | 2026-08-17 A | 2026-08-19 A | IDF.C2.1030 | 100% |  |
| IDF.C2.1070 |  | DH 1100/IDF 1000B2 // In wall inspection | 1d | 2026-08-19 A | 2026-08-19 A | IDF.C2.1060 | 100% |  |
| IDF.C2.1080 |  | DH 1100/IDF 1000B2 // MEPF high overhead install | 3d | 2026-08-20 A | 2026-09-02 A | IDF.C2.1050 | 100% |  |
| IDF.C2.1090 |  | DH 1100/IDF 1000B2 // Install Balance of Sheetrock on Walls | 3d | 2026-08-20 A | 2026-08-24 A | IDF.C2.1070, IDF.C2.1050 SS | 100% |  |
| IDF.C2.1100 |  | DH 1100/IDF 1000B2 // Tape and finish walls | 5d | 2026-09-24 A | 2026-10-06 | IDF.C2.1040, IDF.C2.1090, IDF.C2.1080 |  | -8d |
| IDF.C2.1110 |  | DH 1100/IDF 1000B2 // Prime and Paint first coat walls | 3d | 2026-09-29 A | 2026-10-02 | IDF.C2.1100 SS+4d |  | -8d |
| IDF.C2.1120 |  | DH 1100/IDF 1000B2 // Install lights and exit signs | 3d | 2026-10-05 | 2026-10-07 | IDF.C2.1110 |  | -8d |
| IDF.C2.1130 |  | DH 1100/IDF 1000B2 // Final Coat Paint & Touchup Walls | 4d | 2026-10-08 | 2026-10-14 | IDF.C2.1120 |  | -8d |
| IDF.C2.1140 |  | DH 1100/IDF 1000B2 // Install MEP Devices and Trim | 2d | 2026-10-15 | 2026-10-16 | IDF.C2.1130 |  | -8d |
| IDF.C2.1141 |  | DH 1100/IDF 1000B2 // Ready to Receive Equipment | 0d | 2026-10-16 | 2026-10-16 | IDF.C2.1140 FF |  | -8d |
|  | 12 | **Preaction 1000B3** |  | 2026-07-20 | 2026-10-16 |  |  |  |
| PRE.C3.1000 |  | DH 1100/Preaction 1000B3 // Seal concrete | 5d | 2026-07-20 A | 2026-07-24 A | IDF.C2.1000 | 100% |  |
| PRE.C3.1010 |  | DH 1100/Preaction 1000B3 // MEPF overhead layout | 5d | 2026-08-10 A | 2026-08-14 A | IDF.C2.1010, PRE.C3.1000 | 100% |  |
| PRE.C3.1030 |  | DH 1100/Preaction 1000B3 // Frame walls | 5d | 2026-08-10 A | 2026-08-14 A | PRE.C3.1010 FF | 100% |  |
| PRE.C3.1050 |  | DH 1100/Preaction 1000B3 // Install Top Down Sheetrock | 2d | 2026-08-12 A | 2026-08-14 A | PRE.C3.1030 SS+3d | 100% |  |
| PRE.C3.1040 |  | DH 1100/Preaction 1000B3 // Install wall door frames | 3d | 2026-08-17 A | 2026-08-19 A | PRE.C3.1030 SS+1d | 100% |  |
| PRE.C3.1080 |  | DH 1100/Preaction 1000B3 // MEPF high overhead install | 3d | 2026-08-17 A | 2026-08-19 A | PRE.C3.1050 | 100% |  |
| PRE.C3.1060 |  | DH 1100/Preaction 1000B3 // MEP rough in walls | 3d | 2026-08-20 A | 2026-08-24 A | PRE.C3.1040 | 100% |  |
| PRE.C3.1070 |  | DH 1100/Preaction 1000B3 // In wall inspection | 1d | 2026-08-24 A | 2026-08-24 A | PRE.C3.1060 | 100% |  |
| PRE.C3.1090 |  | DH 1100/Preaction 1000B3 // Install Balance of Sheetrock on Walls | 3d | 2026-08-24 A | 2026-08-26 A | PRE.C3.1070, PRE.C3.1050 SS, PRE.C3.1080 | 100% |  |
| PRE.C3.1100 |  | DH 1100/Preaction 1000B3 // Tape and finish walls | 5d | 2026-09-24 A | 2026-10-06 | PRE.C3.1090 |  | -8d |
| PRE.C3.1110 |  | DH 1100/Preaction 1000B3 // Prime and Paint first coat walls | 3d | 2026-09-29 A | 2026-10-02 | PRE.C3.1100 SS+3d |  | -8d |
| PRE.C3.1120 |  | DH 1100/Preaction 1000B3 // Install lights and exit signs | 3d | 2026-10-05 | 2026-10-07 | PRE.C3.1110 |  | -8d |
| PRE.C3.1130 |  | DH 1100/Preaction 1000B3 // Final Coat Paint & Touchup Walls | 4d | 2026-10-08 | 2026-10-14 | PRE.C3.1120 |  | -8d |
| PRE.C3.1140 |  | DH 1100/Preaction 1000B3 // Install MEP Devices and Trim | 2d | 2026-10-15 | 2026-10-16 | PRE.C3.1130 |  | -8d |
| PRE.C3.1155 |  | DH 1100/Preaction 1000B3 // Ready to Receive Equipment | 0d | 2026-10-16 | 2026-10-16 | PRE.C3.1140 FF |  | -8d |
|  | 13 | **Restroom-Dock & Janitor** |  | 2026-07-20 | 2026-10-16 |  |  |  |
| RR.DJ.1000 |  | DH 1100 // RR-Doc-Jan Seal concrete | 5d | 2026-07-20 A | 2026-07-24 A | PRE.C3.1000 | 100% |  |
| RR.DJ.1010 |  | DH 1100 // RR-Doc-Jan MEPF overhead layout | 5d | 2026-08-03 A | 2026-08-03 A | PDU.1100.1010 | 100% |  |
| RR.DJ.1020 |  | DH 1100 // RR-Doc-Jan Layout walls | 5d | 2026-08-04 A | 2026-08-04 A | RR.DJ.1010, RR.DJ.1000 | 100% |  |
| RR.DJ.1030 |  | DH 1100 // RR-Doc-Jan Frame walls | 5d | 2026-08-05 A | 2026-08-11 A | RR.DJ.1020 | 100% |  |

| ID | WBS | Task | Duration | Start | Finish | Predecessors | Complete | Total float |
| --- | --- | --- | --- | --- | --- | --- | --- | --- |
| RR.DJ.1050 |  | DH 1100 // RR-Doc-Jan Install Top Down Sheetrock | 5d | 2026-08-07 A | 2026-08-13 A | RR.DJ.1030 SS+3d | 100% |  |
| RR.DJ.1060 |  | DH 1100 // RR-Doc-Jan MEP rough in walls | 3d | 2026-08-12 A | 2026-08-14 A | RR.DJ.1030 | 100% |  |
| RR.DJ.1070 |  | DH 1100 // RR-Doc-Jan In wall inspection | 1d | 2026-08-17 A | 2026-08-17 A | RR.DJ.1060 | 100% |  |
| RR.DJ.1040 |  | DH 1100 // RR-Doc-Jan Install wall door frames | 3d | 2026-08-17 A | 2026-09-10 A | RR.DJ.1030 FF | 100% |  |
| RR.DJ.1080 |  | DH 1100 // RR-Doc-Jan MEPF high overhead install | 3d | 2026-08-20 A | 2026-08-27 A | RR.DJ.1050 | 100% |  |
| RR.DJ.1090 |  | DH 1100 // RR-Doc-Jan Install Balance of Sheetrock on Walls | 5d | 2026-08-31 A | 2026-09-18 A | RR.DJ.1040 SS, RR.DJ.1070, RR.DJ.1050, RR.DJ.1080 | 100% |  |
| RR.DJ.1100 |  | DH 1100 // RR-Doc-Jan Tape and finish walls | 5d | 2026-09-24 A | 2026-10-06 | RR.DJ.1090 SS |  | -8d |
| RR.DJ.1110 |  | DH 1100 // RR-Doc-Jan Prime and Paint first coat walls | 3d | 2026-09-29 A | 2026-10-02 | RR.DJ.1100 SS+4d |  | -8d |
| RR.DJ.1120 |  | DH 1100 // RR-Doc-Jan Install lights and exit signs | 3d | 2026-10-05 | 2026-10-07 | RR.DJ.1110 |  | -8d |
| RR.DJ.1130 |  | DH 1100 // RR-Doc-Jan Final Coat Paint & Touchup Walls | 4d | 2026-10-08 | 2026-10-14 | RR.DJ.1120 |  | -8d |
| RR.DJ.1140 |  | DH 1100 // RR-Doc-Jan Install MEP Devices and Trim | 2d | 2026-10-15 | 2026-10-16 | RR.DJ.1130 |  | -8d |
|  | 1 | **1100 Energization, Start-up & Commissioning** |  | 2026-10-26 | 2027-02-09 |  |  |  |
|  | 1 | **Energization & L3 Prefunctional Testing** |  | 2026-10-26 | 2027-01-04 |  |  |  |
| DH1100.L3CX.000 |  | DH1100 L3 Start | 0d | 2026-10-26 | 2026-10-26 | DH1100.12121, ER.5101.1300, ER.5104.1280, ER.5104.1250, DH1100-A-EQP-215, ER.5101.1310, ER.5104.1140, ER.5104.1260, ER.5104.1310, PDU.1100.1712, DH1100.MG.A110.8676, DH1100.MG.A110.8680, DH1100.MG.A110.8683, DH1100-B-EQP-196, DH1100-B-EQP-198, DH1100.MG.A110.8685, DH1100.MG.A110.8689, DH1100.MG.A110.8692, DH1100.6540, DH1100.12081, DH1100.12095, IDF.C2.1141, F.1000B..1160, PRE.C3.1155, RR.DJ.1140 |  | -13d |
| DH1100.L3CX.BMS.001 |  | DH1100 L3 PTPs & SOOs – BMS | 40d | 2026-10-26 | 2026-12-22 | DH1100.L3CX.ELEC.01 SS |  | -13d |
| DH1100.L3CX.ELEC.01 |  | DH1100 L3 FTEs | 5d | 2026-10-26 | 2026-10-30 | DH1100.L3CX.000 SS |  | -13d |
| DH1100.L3CX.ELEC.002 |  | DH1100 L3 Startup / Pre-Functional – ELECTRICAL | 15d | 2026-11-02 | 2026-11-23 | DH1100.L3CX.ELEC.01, ER.5104.1310, DH1100-A-EQP-220 |  | -3d |
| DH1100.L3CX.MECH.001 |  | DH1100 L3 Startup / Pre-Functional – MECHANICAL | 20d | 2026-11-18 | 2026-12-16 | DH1100.L3CX.ELEC.01 SS+3d, ER.5104.1140, DH1100-A-EQP-218 SS |  | -19d |
| DH1100.L3CX.MECH.002 |  | DH1100 L3 TAB (Air, Water and Reports) – MECHANICAL | 10d | 2026-12-17 | 2026-12-31 | DH1100.L3CX.BMS.001 FF, DH1100.L3CX.MECH.001 |  | -19d |
| DH1100.L3CX.MECH.003 |  | DH1100 L3 FLS – MECHANICAL | 10d | 2026-12-17 | 2026-12-31 | DH1100.L3CX.ELEC.002, DH1100.L3CX.MECH.001, DH1100.L3CX.MECH.002 FF |  | -19d |
| DH1100.L3CX.009 |  | DH1100 L3 Cx Complete | 0d | 2027-01-04 | 2027-01-04 | DH1100.L3CX.MECH.003 FF, DH1100.L3CX.MECH.002 FF |  | -19d |
|  | 2 | **L4 Function Testing** |  | 2026-12-04 | 2027-01-11 |  |  |  |
| DH1100.L4CX.COMM.120 |  | DH1100 L4 Cx | 25d | 2026-12-04 | 2027-01-11 | DH1100.L3CX.009 FF+6d |  | -11d |
|  | 3 | **L5 Integrated System Testing (IST)** |  | 2026-12-18 | 2027-02-09 |  |  |  |
| DH1100.L5CX.COMM.170 |  | DH1100 L5 Integrated Systems Testing - IST | 20d | 2026-12-18 | 2027-01-19 | DH1100.L4CX.COMM.120 FF+5d |  | -11d |
| DH1100.A2110.CO |  | L5 Integrated System Testing (IST) // DH1100– Phase Closeout Period O&M / TRAINING/ CLOSEOUT DOCS | 15d | 2027-01-20 | 2027-02-09 | DH1100.L5CX.COMM.190 |  | 63d |
| DH1100.L5CX.COMM.190 |  | DH1100 – IST / L5 Cx Complete | 0d | 2027-01-20 | 2027-01-20 | DH1100.L5CX.COMM.170 |  | -11d |
|  | 1 | **Data Hall 1300** |  | 2026-05-05 | 2027-03-18 |  |  |  |
|  | 10 | **Exterior Build Out** |  | 2026-05-05 | 2026-11-18 |  |  |  |
|  | 9 | **Electrical Yard** |  | 2026-07-23 | 2026-09-18 |  |  |  |
|  | 3 | **Electrical** |  | 2026-07-23 | 2026-09-18 |  |  |  |
|  | 1 | **Underground** |  | 2026-07-23 | 2026-08-27 |  |  |  |
|  | 1 | **Column Line 3.0 - 3.9** |  | 2026-07-23 | 2026-08-27 |  |  |  |
| DH.1300 |  | DH1300/Electrical Yard-Underground // Excavate From MVG to Transformers | 10d | 2026-07-23 A | 2026-08-05 A | FDN.1240, B1200 SS+5d | 100% |  |
| B1200376 |  | DH1300/Electrical Yard-Underground // Install Raceway from MVG to Transformers | 10d | 2026-08-06 A | 2026-08-19 A | DH.1300 | 100% |  |
| B1200377 |  | DH1300/Electrical Yard-Underground // Backfill Raceways from MVG to Transformers | 6d | 2026-08-20 A | 2026-08-27 A | B1200376, B1200376 FF | 100% |  |
|  | 2 | **Column - Line 3.0 - 3.9** |  |  |  |  |  |  |
|  | 2 | **Pads** |  | 2026-08-28 | 2026-09-08 |  |  |  |
| B1200384 |  | DH1300/Electrical Yard-Pads // Excavate / Form / Rebar /pour-Finish Pads (House Gen & (9) Xfmr) 0.1 to 1.4 Line | 6d | 2026-08-28 A | 2026-09-02 A | DH.1300, B1200377 | 100% |  |
| B1200385 |  | DH1300/Electrical Yard-Pads // Pad Strip and Cure (House Gen & (9) Xfmr) 0.1 to 1.4 Line | 1d | 2026-09-03 A | 2026-09-03 A | B1200384 | 100% |  |
| B1200386 |  | DH1300/Electrical Yard-Pads // Excavate / Form / Rebar /pour-Finish Pads (16 Xfmrs) 1.4 to 1.8 Line | 6d | 2026-09-03 A | 2026-09-08 A | B1200384 | 100% |  |
| B1200387 |  | DH1300/Electrical Yard-Pads // Pad Strip and Cure (16 Xfmrs) 1.4 to 1.8 Line | 1d | 2026-09-04 A | 2026-09-04 A | B1200386, B1200385 | 100% |  |
|  | 3 | **Equipment** |  | 2026-09-17 | 2026-09-18 |  |  |  |
|  | 1 | **A130** |  | 2026-09-17 | 2026-09-17 |  |  |  |
| DH.13001 |  | DH1300/Electrical Yard // Set XFMR - XFMR-A130a | 1d | 2026-09-17 A | 2026-09-17 A | STRUCTURE.6900, B1200377, B1200387 | 100% |  |
| DH.13002 |  | DH1300/Electrical Yard // Set XFMR - XFMR-A130p | 1d | 2026-09-17 A | 2026-09-17 A | DH.13001 SS | 100% |  |
|  | 2 | **B130** |  | 2026-09-17 | 2026-09-17 |  |  |  |
| DH.13003 |  | DH1300/Electrical Yard // Set XFMR - XFMR-B130a | 1d | 2026-09-17 A | 2026-09-17 A | DH.13002 SS | 100% |  |
| DH.13004 |  | DH1300/Electrical Yard // Set XFMR - XFMR-B130p | 1d | 2026-09-17 A | 2026-09-17 A | DH.13003 SS | 100% |  |
|  | 3 | **C130** |  | 2026-09-17 | 2026-09-17 |  |  |  |
| DH.13005 |  | DH1300/Electrical Yard // Set XFMR - XFMR-C130a | 1d | 2026-09-17 A | 2026-09-17 A | DH.13004 SS | 100% |  |
| DH.13006 |  | DH1300/Electrical Yard // Set XFMR - XFMR-C130p | 1d | 2026-09-17 A | 2026-09-17 A | DH.13005 SS | 100% |  |
|  | 4 | **D130** |  | 2026-09-17 | 2026-09-17 |  |  |  |
| DH.13007 |  | DH1300/Electrical Yard // Set XFMR - XFMR-D130a | 1d | 2026-09-17 A | 2026-09-17 A | DH.13006 SS | 100% |  |
| DH.13008 |  | DH1300/Electrical Yard // Set XFMR - XFMR-D130p | 1d | 2026-09-17 A | 2026-09-17 A | DH.13007 SS | 100% |  |
|  | 5 | **E130** |  | 2026-09-17 | 2026-09-17 |  |  |  |
| DH.13000 |  | DH1300/Electrical Yard // Set XFMR - XFMR-E130p | 1d | 2026-09-17 A | 2026-09-17 A | DH.13009 SS | 100% |  |
| DH.13009 |  | DH1300/Electrical Yard // Set XFMR - XFMR-E130a | 1d | 2026-09-17 A | 2026-09-17 A | DH.13008 SS | 100% |  |
|  | 6 | **F130** |  | 2026-09-17 | 2026-09-17 |  |  |  |
| DH.160012096 |  | DH1300/Electrical Yard // Set XFMR - XFMR-F130a | 1d | 2026-09-17 A | 2026-09-17 A | DH.13000 SS | 100% |  |
| DH.160012097 |  | DH1300/Electrical Yard // Set XFMR - XFMR-F130p | 1d | 2026-09-17 A | 2026-09-17 A | DH.160012096 SS | 100% |  |
|  | 7 | **G130** |  | 2026-09-18 | 2026-09-18 |  |  |  |
| DH.160012098 |  | DH1300/Electrical Yard // Set XFMR - XFMR-G130a | 1d | 2026-09-18 A | 2026-09-18 A | DH.160012097 SS | 100% |  |
| DH.160012099 |  | DH1300/Electrical Yard // Set XFMR - XFMR-G130p | 1d | 2026-09-18 A | 2026-09-18 A | DH.160012098 | 100% |  |
|  | 8 | **H130** |  | 2026-09-18 | 2026-09-18 |  |  |  |
| DH.160012100 |  | DH1300/Electrical Yard // Set XFMR - XFMR-H130a | 1d | 2026-09-18 A | 2026-09-18 A | DH.160012099 SS | 100% |  |
| DH.160012101 |  | DH1300/Electrical Yard // Set XFMR - XFMR-H130p | 1d | 2026-09-18 A | 2026-09-18 A | DH.160012100 SS | 100% |  |
|  | 9 | **J130** |  | 2026-09-18 | 2026-09-18 |  |  |  |
| DH.160012102 |  | DH1300/Electrical Yard // Set XFMR - XFMR-J130a | 1d | 2026-09-18 A | 2026-09-18 A | DH.160012101 SS | 100% |  |
| DH.160012103 |  | DH1300/Electrical Yard // Set XFMR - XFMR-J130p | 1d | 2026-09-18 A | 2026-09-18 A | DH.160012102 SS | 100% |  |

| ID | WBS | Task | Duration | Start | Finish | Predecessors | Complete | Total float |
| --- | --- | --- | --- | --- | --- | --- | --- | --- |
|  | 10 | **K130** |  | 2026-09-18 | 2026-09-18 |  |  |  |
| DH.160012104 |  | DH1300/Electrical Yard // Set XFMR - XFMR-K130a | 1d | 2026-09-18 A | 2026-09-18 A | DH.160012103 SS | 100% |  |
| DH.160012105 |  | DH1300/Electrical Yard // Set XFMR - XFMR-K130p | 1d | 2026-09-18 A | 2026-09-18 A | DH.160012104 SS | 100% |  |
|  | 11 | **R130** |  | 2026-09-18 | 2026-09-18 |  |  |  |
| DH.160012106 |  | DH1300/Electrical Yard // Set XFMR - XFMR-R130a | 1d | 2026-09-18 A | 2026-09-18 A | DH.160012105 SS | 100% |  |
| DH.160012107 |  | DH1300/Electrical Yard // Set XFMR - XFMR-R130p | 1d | 2026-09-18 A | 2026-09-18 A | DH.160012106 SS | 100% |  |
|  | 1 | **Mechanical Yard** |  | 2026-05-05 | 2026-11-18 |  |  |  |
|  | 1 | **Pads** |  | 2026-05-05 | 2026-09-01 |  |  |  |
| A5748 |  | DH1300/Mechanical Yard-Pads // Excavate / Form / Rebar / Pour Chiller Pads | 15d | 2026-05-05 A | 2026-05-26 A | A5702, A5700 SS | 100% |  |
| A5750 |  | DH1300/Mechanical Yard-Pads // Excavate / Form / Rebar / Pour Support and TES Pads | 8d | 2026-07-08 A | 2026-07-17 A | A5748 | 100% |  |
| A5752 |  | DH1300/Mechanical Yard-Pads // Excavate / Form / Rebar / Pour Support and TES Pads (Column Lines 1.3 to 1.6) | 5d | 2026-08-03 A | 2026-08-07 A | A5748 SS, A5750 | 100% |  |
| A5753 |  | DH1300/Mechanical Yard-Pads // Excavate / Form / Rebar / Pour Support and TES Pads (Column Lines 1.6 to 1.9) | 5d | 2026-08-27 A | 2026-09-01 A | A5752 | 100% |  |
|  | 5 | **Equipment** |  | 2026-08-28 | 2026-11-02 |  |  |  |
|  | 1 | **A130** |  | 2026-08-28 | 2026-10-02 |  |  |  |
| DH.130012023 |  | DH1300/Mechanical Yard-A130 // Install CHWP | 1d | 2026-08-28 A | 2026-09-02 A | A5753 | 100% |  |
| DH.130012024 |  | DH1300/Mechanical Yard-A130 // Install Mechanical Piping Mains (Building -to Line) | 1d | 2026-08-31 A | 2026-09-16 A | DH.130012023 | 100% |  |
| DH.130012001 |  | DH1300/Mechanical Yard-A130 // Set Chiller - CHLR-1CY40-A130 | 1d | 2026-09-30 | 2026-09-30 | STRUCTURE.6900, A5750 |  | 49d |
| DH.130012002 |  | DH1300/Mechanical Yard-A130 // Set TES tank - TES-1CY40-A130 | 1d | 2026-10-01 | 2026-10-01 | DH.130012001 |  | 70d |
| DH.130012025 |  | DH1300/Mechanical Yard-A130 // Install Mechanical Chiller to Mains | 1d | 2026-10-02 | 2026-10-02 | DH.130012024, DH.130012002 |  | 70d |
|  | 2 | **B130** |  | 2026-08-31 | 2026-10-05 |  |  |  |
| DH.130012026 |  | DH1300/Mechanical Yard-B130 // Install CHWP | 1d | 2026-08-31 A | 2026-09-02 A | DH.130012023 | 100% |  |
| DH.130012027 |  | DH1300/Mechanical Yard-B130 // Install Mechanical Piping Mains (Building -to Line) | 1d | 2026-09-01 A | 2026-09-16 A | DH.130012026 | 100% |  |
| DH.130012003 |  | DH1300/Mechanical Yard-B130 // Set Chiller - CHLR-1CY40-B130 | 1d | 2026-10-01 | 2026-10-01 | DH.130012001 |  | 49d |
| DH.130012004 |  | DH1300/Mechanical Yard-B130 // Set TES tank - TES-1CY40-B130 | 1d | 2026-10-02 | 2026-10-02 | DH.130012003 |  | 69d |
| DH.130012028 |  | DH1300/Mechanical Yard-B130 // Install Mechanical Chiller to Mains | 1d | 2026-10-05 | 2026-10-05 | DH.130012027, DH.130012004 |  | 69d |
|  | 3 | **C130** |  | 2026-09-01 | 2026-10-06 |  |  |  |
| DH.130012029 |  | DH1300/Mechanical Yard-C130 // Install CHWP | 1d | 2026-09-01 A | 2026-09-02 A | DH.130012026 SS | 100% |  |
| DH.130012030 |  | DH1300/Mechanical Yard-C130 // Install Mechanical Piping Mains (Building -to Line) | 1d | 2026-09-02 A | 2026-09-16 A | DH.130012029 | 100% |  |
| DH.130012005 |  | DH1300/Mechanical Yard-C130 // Set Chiller - CHLR-1CY40-C130 | 1d | 2026-10-02 | 2026-10-02 | DH.130012003 |  | 49d |
| DH.130012006 |  | DH1300/Mechanical Yard-C130 // Set TES tank - TES-1CY40-C130 | 1d | 2026-10-05 | 2026-10-05 | DH.130012005 |  | 68d |
| DH.130012031 |  | DH1300/Mechanical Yard-C130 // Install Mechanical Chiller to Mains | 1d | 2026-10-06 | 2026-10-06 | DH.130012030, DH.130012006 |  | 68d |
|  | 4 | **D130** |  | 2026-09-02 | 2026-10-07 |  |  |  |
| DH.130012032 |  | DH1300/Mechanical Yard-D130 // Install CHWP | 1d | 2026-09-02 A | 2026-09-02 A | DH.130012029 SS | 100% |  |
| DH.130012033 |  | DH1300/Mechanical Yard-D130 // Install Mechanical Piping Mains (Building -to Line) | 1d | 2026-09-03 A | 2026-09-17 A | DH.130012032 | 100% |  |
| DH.130012007 |  | DH1300/Mechanical Yard-D130 // Set Chiller - CHLR-1CY40-D130 | 1d | 2026-10-05 | 2026-10-05 | DH.130012005 |  | 49d |
| DH.130012008 |  | DH1300/Mechanical Yard-D130 // Set TES tank - TES-1CY40-D130 | 1d | 2026-10-06 | 2026-10-06 | DH.130012007 |  | 67d |
| DH.130012034 |  | DH1300/Mechanical Yard-D130 // Install Mechanical Chiller to Mains | 1d | 2026-10-07 | 2026-10-07 | DH.130012033, DH.130012008 |  | 67d |
|  | 5 | **E130** |  | 2026-09-02 | 2026-10-08 |  |  |  |
| DH.130012035 |  | DH1300/Mechanical Yard-E130 // Install CHWP | 1d | 2026-09-02 A | 2026-09-02 A | DH.130012032 SS | 100% |  |
| DH.130012036 |  | DH1300/Mechanical Yard-E130 // Install Mechanical Piping Mains (Building -to Line) | 1d | 2026-09-04 A | 2026-09-17 A | DH.130012035 | 100% |  |
| DH.130012009 |  | DH1300/Mechanical Yard-E130 // Set Chiller - CHLR-1CY40-E130 | 1d | 2026-10-06 | 2026-10-06 | DH.130012007 |  | 49d |
| DH.130012010 |  | DH1300/Mechanical Yard-E130 // Set TES tank - TES-1CY40-E130 | 1d | 2026-10-07 | 2026-10-07 | DH.130012009 |  | 66d |
| DH.130012037 |  | DH1300/Mechanical Yard-E130 // Install Mechanical Chiller to Mains | 1d | 2026-10-08 | 2026-10-08 | DH.130012036, DH.130012010 |  | 66d |
|  | 6 | **F130** |  | 2026-09-04 | 2026-10-09 |  |  |  |
| DH.130012038 |  | DH1300/Mechanical Yard-F130 // Install CHWP | 1d | 2026-09-04 A | 2026-09-09 A | DH.130012035 | 100% |  |
| DH.130012039 |  | DH1300/Mechanical Yard-F130 // Install Mechanical Piping Mains (Building -to Line) | 1d | 2026-09-08 A | 2026-09-17 A | DH.130012038 | 100% |  |
| DH.130012011 |  | DH1300/Mechanical Yard-F130 // Set Chiller - CHLR-1CY40-F130 | 1d | 2026-10-07 | 2026-10-07 | DH.130012009 |  | 49d |
| DH.130012012 |  | DH1300/Mechanical Yard-F130 // Set TES tank - TES-1CY40-F130 | 1d | 2026-10-08 | 2026-10-08 | DH.130012011 |  | 65d |
| DH.130012040 |  | DH1300/Mechanical Yard-F130 // Install Mechanical Chiller to Mains | 1d | 2026-10-09 | 2026-10-09 | DH.130012039, DH.130012012 |  | 65d |
|  | 7 | **G130** |  | 2026-09-08 | 2026-10-13 |  |  |  |
| DH.130012041 |  | DH1300/Mechanical Yard-G130 // Install CHWP | 1d | 2026-09-08 A | 2026-09-09 A | DH.130012038 SS | 100% |  |
| DH.130012042 |  | DH1300/Mechanical Yard-G130 // Install Mechanical Piping Mains (Building -to Line) | 1d | 2026-09-09 A | 2026-09-18 A | DH.130012041 | 100% |  |
| DH.130012013 |  | DH1300/Mechanical Yard-G130 // Set Chiller - CHLR-1CY40-G130 | 1d | 2026-10-08 | 2026-10-08 | DH.130012011 |  | 49d |
| DH.130012014 |  | DH1300/Mechanical Yard-G130 // Set TES tank - TES-1CY40-G130 | 1d | 2026-10-09 | 2026-10-09 | DH.130012013 |  | 64d |
| DH.130012043 |  | DH1300/Mechanical Yard-G130 // Install Mechanical Chiller to Mains | 1d | 2026-10-13 | 2026-10-13 | DH.130012042, DH.130012014 |  | 64d |
|  | 8 | **H130** |  | 2026-09-09 | 2026-10-14 |  |  |  |
| DH.130012044 |  | DH1300/Mechanical Yard-H130 // Install CHWP | 1d | 2026-09-09 A | 2026-09-09 A | DH.130012041 SS | 100% |  |
| DH.130012045 |  | DH1300/Mechanical Yard-H130 // Install Mechanical Piping Mains (Building -to Line) | 1d | 2026-09-10 A | 2026-09-18 A | DH.130012044 | 100% |  |
| DH.130012015 |  | DH1300/Mechanical Yard-H130 // Set Chiller - CHLR-1CY40-H130 | 1d | 2026-10-09 | 2026-10-09 | DH.130012013 |  | 49d |
| DH.130012016 |  | DH1300/Mechanical Yard-H130 // Set TES tank - TES-1CY40-H130 | 1d | 2026-10-13 | 2026-10-13 | DH.130012015 |  | 63d |
| DH.130012046 |  | DH1300/Mechanical Yard-H130 // Install Mechanical Chiller to Mains | 1d | 2026-10-14 | 2026-10-14 | DH.130012045, DH.130012016 |  | 63d |
|  | 9 | **J130** |  | 2026-09-10 | 2026-10-15 |  |  |  |
| DH.130012047 |  | DH1300/Mechanical Yard-J130 // Install CHWP | 1d | 2026-09-10 A | 2026-09-10 A | DH.130012044 SS | 100% |  |
| DH.130012048 |  | DH1300/Mechanical Yard-J130 // Install Mechanical Piping Mains (Building -to Line) | 1d | 2026-09-11 A | 2026-09-18 A | DH.130012047 | 100% |  |
| DH.130012017 |  | DH1300/Mechanical Yard-J130 // Set Chiller - CHLR-1CY40-J130 | 1d | 2026-10-13 | 2026-10-13 | DH.130012015 |  | 49d |
| DH.130012018 |  | DH1300/Mechanical Yard-J130 // Set TES tank - TES-1CY40-J130 | 1d | 2026-10-14 | 2026-10-14 | DH.130012017 |  | 62d |
| DH.130012049 |  | DH1300/Mechanical Yard-J130 // Install Mechanical Chiller to Mains | 1d | 2026-10-15 | 2026-10-15 | DH.130012048, DH.130012018 |  | 62d |
|  | 10 | **K130** |  | 2026-09-10 | 2026-10-16 |  |  |  |
| DH.130012050 |  | DH1300/Mechanical Yard-K130 // Install CHWP | 1d | 2026-09-10 A | 2026-09-10 A | DH.130012047 SS | 100% |  |
| DH.130012051 |  | DH1300/Mechanical Yard-K130 // Install Mechanical Piping Mains (Building -to Line) | 1d | 2026-09-14 A | 2026-09-18 A | DH.130012050 | 100% |  |

| ID | WBS | Task | Duration | Start | Finish | Predecessors | Complete | Total float |
| --- | --- | --- | --- | --- | --- | --- | --- | --- |
| DH.130012019 |  | DH1300/Mechanical Yard-K130 // Set Chiller - CHLR-1CY40-K130 | 1d | 2026-10-14 | 2026-10-14 | DH.130012017 |  | 49d |
| DH.130012020 |  | DH1300/Mechanical Yard-K130 // Set TES tank - TES-1CY40-K130 | 1d | 2026-10-15 | 2026-10-15 | DH.130012019 |  | 61d |
| DH.130012052 |  | DH1300/Mechanical Yard-K130 // Install Mechanical Chiller to Mains | 1d | 2026-10-16 | 2026-10-16 | DH.130012051, DH.130012020 |  | 61d |
|  | 11 | **R130** |  | 2026-09-10 | 2026-10-19 |  |  |  |
| DH.130012053 |  | DH1300/Mechanical Yard-R130 // Install CHWP | 1d | 2026-09-10 A | 2026-09-10 A | DH.130012050 SS | 100% |  |
| DH.130012054 |  | DH1300/Mechanical Yard-R130 // Install Mechanical Piping Mains (Building -to Line) | 1d | 2026-09-15 A | 2026-09-18 A | DH.130012053 | 100% |  |
| DH.130012021 |  | DH1300/Mechanical Yard-R130 // Set Chiller - CHLR-1CY40-R130 | 1d | 2026-10-15 | 2026-10-15 | DH.130012019 |  | 49d |
| DH.130012022 |  | DH1300/Mechanical Yard-R130 // Set TES tank - TES-1CY40-R130 | 1d | 2026-10-16 | 2026-10-16 | DH.130012021 |  | 60d |
| DH.130012055 |  | DH1300/Mechanical Yard-R130 // Install Mechanical Chiller to Mains | 1d | 2026-10-19 | 2026-10-19 | DH.130012054, DH.130012022 |  | 60d |
|  | 12 | **Test & Flushing** |  | 2026-10-20 | 2026-11-02 |  |  |  |
| A5736 |  | DH1300/Mechanical Yard-Test & Flushing // Line Test & Checking | 2d | 2026-10-20 | 2026-10-21 | DH.130012025, DH.130012028, DH.130012031, DH.130012034, DH.130012037, DH.130012040, DH.130012043, DH.130012046, DH.130012049, DH.130012052, DH.130012055 |  | 60d |
| A5738 |  | DH1300/Mechanical Yard-Test & Flushing // Electrical & Controls Testing / Checking | 3d | 2026-10-22 | 2026-10-26 | A5736 |  | 60d |
| A5737 |  | DH1300/Mechanical Yard-Test & Flushing // Fill, Flush & Purge | 5d | 2026-10-27 | 2026-11-02 | A5738 |  | 60d |
|  | 2 | **Electrical & Controls** |  | 2026-05-27 | 2026-11-18 |  |  |  |
| A5754 |  | DH1300/Electrical & Controls // Excavate Raceways from Building to Chiller Pad | 8d | 2026-05-27 A | 2026-06-05 A | DH.13002, A5753, A5750, A5748 SS | 100% |  |
| A5755 |  | DH1300/Electrical & Controls // Install Raceway from Building To Chiller Pad | 8d | 2026-07-22 A | 2026-07-31 A | A5754 SS+4d | 100% |  |
| A5756 |  | DH1300/Electrical & Controls // Backfill Chiller Raceways from Building to Chiller Pad | 8d | 2026-08-03 A | 2026-08-12 A | A5754, A5755 | 100% |  |
| A5767 |  | DH1300/Electrical & Controls // Mechanical CWP Support Caisson Footings | 10d | 2026-08-13 A | 2026-08-26 A | A5756 | 100% |  |
| A5759 |  | DH1300/Electrical & Controls // Raceway connections to Chiller units | 6d | 2026-10-16 | 2026-10-23 | DH.130012021, DH.130012019, DH.130012017, DH.130012015, DH.130012013, DH.130012011, DH.130012009, DH.130012007, DH.130012005, DH.130012003, DH.130012001 |  | 49d |
| A5761 |  | DH1300/Electrical & Controls // Install Panels and Raceways to CHWP | 10d | 2026-10-16 | 2026-10-29 | A5759 SS |  | 49d |
| A5762 |  | DH1300/Electrical & Controls // Install Controls conduits and wire to Chiller units | 12d | 2026-10-16 | 2026-11-02 | A5761 SS |  | 49d |
| A5765 |  | DH1300/Electrical & Controls // Pull and Terminate Feeders to Chiller units | 6d | 2026-10-26 | 2026-11-02 | A5759, A5756 SS |  | 49d |
| A5768 |  | DH1300/Electrical & Controls // Chiller units Ready to Energize | 6d | 2026-11-03 | 2026-11-10 | A5765, A5762, A5761, A5756 SS |  | 49d |
| A5769 |  | DH1300/Electrical & Controls // Fine Grade Install Landscape Fabric & Install Rock | 5d | 2026-11-12 | 2026-11-18 | A5767, A5762, A5768 |  | 49d |
|  | 2 | **Roof - RTUs** |  | 2026-08-04 | 2026-10-21 |  |  |  |
|  | 1 | **Column Lines 1.2 thru 2.0** |  | 2026-08-04 | 2026-10-21 |  |  |  |
| DH.130012058 |  | DH1300/Roof - RTUs // - RTU-RT- 08 | 1d | 2026-08-04 A | 2026-08-07 A | B12000.12064 | 100% |  |
| DH.130012057 |  | DH1300/Roof - RTUs // - RTU-RT- 09 | 1d | 2026-08-06 A | 2026-08-11 A | DH.130012058 SS+2d | 100% |  |
| DH.130012064 |  | DH1300/Roof - RTUs // - RTU-RT- 010 | 1d | 2026-08-07 A | 2026-08-12 A | DH.130012057 | 100% |  |
| DH.130012059 |  | DH1300/Roof - RTUs // Install Mechanical Piping | 15d | 2026-08-19 A | 2026-09-09 A | DH.130012064, DH.130012058 | 100% |  |
| DH.130012056 |  | DH1300/Roof - RTUs // Install heat trace system | 15d | 2026-09-30 | 2026-10-21 | DH.130012059 |  | 68d |
| DH.13007841 |  | DH1300/Roof - RTUs // Install Electrical Conduit and Controls Piping | 15d | 2026-09-30 | 2026-10-21 | DH.130012064, DH.130012059 |  | 55d |
|  | 1 | **Interior Build Out** |  | 2026-08-03 | 2027-03-18 |  |  |  |
|  | 9 | **Flex 1000C10** |  | 2026-08-03 | 2026-11-10 |  |  |  |
| DH.1300.1010 |  | DH1300/Flex 1000C10 // MEPF Layout of Overhead Supports | 2d | 2026-08-03 A | 2026-08-06 A | STRUCTURE.7450, SOG.1454 | 100% |  |
| DH.1300.1040 |  | DH1300/Flex 1000C10 // Frame Walls including Backing | 4d | 2026-08-05 A | 2026-09-03 A | DH.1300.1010 | 100% |  |
| DH.1300.1070 |  | DH1300/Flex 1000C10 // Install Top Down Sheet Rock | 5d | 2026-09-08 A | 2026-09-30 | DH.1300.1040 | 100% | 21d |
| DH.1300.1060 |  | DH1300/Flex 1000C10 // MEPF Install Rough Wall | 2d | 2026-09-09 A | 2026-09-30 | DH.1300.1040 | 50% | 19d |
| DH.1300.1020 |  | DH1300/Flex 1000C10 // MEPF Install High Overhead Systems | 6d | 2026-09-30 | 2026-10-07 | DH.1300.1010 |  | 26d |
| DH.1300.1080 |  | DH1300/Flex 1000C10 // Rough Wall Inspspection (Approval to Close up) | 1d | 2026-10-01 | 2026-10-01 | DH.1300.1060 |  | 19d |
| DH.1300.1090 |  | DH1300/Flex 1000C10 // Install Balance of Sheetrock | 3d | 2026-10-02 | 2026-10-06 | DH.1300.1080, DH.1300.1070 |  | 19d |
| DH.1300.1100 |  | DH1300/Flex 1000C10 // Tape and Finish Walls | 6d | 2026-10-07 | 2026-10-15 | DH.1300.1090 |  | 19d |
| DH.1300.1120 |  | DH1300/Flex 1000C10 // Install MEPF Overhead Ceiling Rough | 3d | 2026-10-08 | 2026-10-13 | DH.1300.1020 |  | 26d |
| DH.1300.1130 |  | DH1300/Flex 1000C10 // Install Lighting, Fire Alarm & Fire Protection | 2d | 2026-10-14 | 2026-10-15 | DH.1300.1120 |  | 26d |
| DH.1300.1000 |  | DH1300/Flex 1000C10 // Seal Concrete | 5d | 2026-10-16 | 2026-10-22 | DH.1300.1100 |  | 19d |
| DH.1300.1050 |  | DH1300/Flex 1000C10 // Install Door Frames | 1d | 2026-10-16 | 2026-10-16 | DH.1300.1040 FF, DH.1300.1100 |  | 25d |
| DH.1300.1110 |  | DH1300/Flex 1000C10 // Prime and First Coat of Paint | 2d | 2026-10-23 | 2026-10-26 | DH.1300.1000, DH.1300.1100 |  | 19d |
| DH.1300.1140 |  | DH1300/Flex 1000C10 // Wall Touch up Final Coat of Paint | 3d | 2026-10-27 | 2026-10-29 | DH.1300.1110, DH.1300.1130, DH.1300.1050 |  | 19d |
| DH.1300.1150 |  | DH1300/Flex 1000C10 // Install Wall Base, Trim, and Devices | 3d | 2026-10-30 | 2026-11-03 | DH.1300.1140 |  | 19d |
| DH.1300.3067 |  | DH1300/Flex 1000C10 // Ready to Receive Equipment | 0d | 2026-11-03 | 2026-11-03 | DH.1300.1150 FF |  | 19d |
| DH.1300.1160 |  | DH1300/Flex 1000C10 // Suffolk Pre Punch | 5d | 2026-11-04 | 2026-11-10 | DH.1300.3067 |  | 54d |
|  | 7 | **Electrical Room #5301** |  | 2026-08-04 | 2026-12-11 |  |  |  |
| B120001.3046 |  | DH1300/Electrical Room #5301 // Seal Concrete | 2d | 2026-08-04 A | 2026-08-05 A | SOG.1454 | 100% |  |
| B120001.3036 |  | DH1300/Electrical Room #5301 // MEPF Layout of Overhead Supports | 2d | 2026-08-05 A | 2026-08-06 A | B120001.3046 | 100% |  |
| B120001.3038 |  | DH1300/Electrical Room #5301 // Frame Walls including Backing | 4d | 2026-08-07 A | 2026-09-25 A | B120001.3036 | 100% |  |
| B120001.3041 |  | DH1300/Electrical Room #5301 // Install Top Down Sheet Rock | 5d | 2026-09-28 A | 2026-10-06 | B120001.3038 SS+2d |  | 2d |
| B120001.3040 |  | DH1300/Electrical Room #5301 // MEPF Install Rough Wall | 2d | 2026-09-29 A | 2026-10-01 | B120001.3038 |  | 1d |
| B120001.3037 |  | DH1300/Electrical Room #5301 // MEPF Install High Overhead Systems | 6d | 2026-09-30 | 2026-10-07 | B120001.3036 |  | 21d |
| B120001.3143 |  | DH1300/Electrical Room #5301 // Install Overhead Cable Ladder / 36" Cable Tray - TFO | 5d | 2026-09-30 | 2026-10-06 | B120001.3036, A5669 |  | 33d |
| DH.1300.1220 |  | DH1300/Electrical Room #5301 // Pull Cable Tray Feeders (CRAHU/CDU) | 10d | 2026-09-30 | 2026-10-14 |  |  | 11d |
| DH.1300.1190 |  | DH1300/Electrical Room #5301 // Install Elect Equipment Skids | 4d | 2026-10-01 | 2026-10-06 | ARC-DEL-ACT-01 |  | 175d |
| B120001.3042 |  | DH1300/Electrical Room #5301 // Rough Wall Inspspection (Approval to Close up) | 1d | 2026-10-02 | 2026-10-02 | B120001.3040 |  | 1d |
| B120001.3044 |  | DH1300/Electrical Room #5301 // Install Balance of Sheetrock | 3d | 2026-10-05 | 2026-10-07 | B120001.3042, B120001.3041 FF |  | 1d |
| B120001.3043 |  | DH1300/Electrical Room #5301 // Install Overhead Buss duct | 2d | 2026-10-08 | 2026-10-09 | B120001.3037, B120001.3041 |  | 30d |
| B120001.3045 |  | DH1300/Electrical Room #5301 // Tape and Finish Walls | 6d | 2026-10-08 | 2026-10-16 | B120001.3044 |  | 1d |
| B120001.3144 |  | DH1300/Electrical Room #5301 // Install Overhead HAC - TFO | 5d | 2026-10-08 | 2026-10-15 | B120001.3143 FF, B120001.3037 |  | 27d |
| DH.1300.1180 |  | DH1300/Electrical Room #5301 // Install Cable Tray | 3d | 2026-10-08 | 2026-10-13 | B120001.3037 |  | 29d |
| F.1000A.1216 |  | DH1300/Electrical Room #5301 // Rough-In Security | 2d | 2026-10-08 | 2026-10-09 | B120001.3037 |  | 21d |
| F.1000A.1435 |  | DH1300/Electrical Room #5301 // BMS & EPMS Rough-In | 2d | 2026-10-08 | 2026-10-09 | F.1000A.1216 FF, F.1000A.1216 SS |  | 33d |
| F.1000A.1217 |  | DH1300/Electrical Room #5301 // Pull & Test Security Cable | 3d | 2026-10-13 | 2026-10-15 | F.1000A.1216 |  | 21d |

| ID | WBS | Task | Duration | Start | Finish | Predecessors | Complete | Total float | Constraint |
| --- | --- | --- | --- | --- | --- | --- | --- | --- | --- |
| DH.1300.1320 |  | DH1300/Electrical Room #5301 // Buss Duct Tie In to Elect Gear | 3d | 2026-10-16 | 2026-10-20 | B120001.3043, B120001.3144 |  | 27d |  |
| F.1000A.1218 |  | DH1300/Electrical Room #5301 // Install Security Devices | 2d | 2026-10-16 | 2026-10-19 | F.1000A.1217 |  | 21d |  |
| B120001.3047 |  | DH1300/Electrical Room #5301 // Prime and First Coat of Paint | 2d | 2026-10-19 | 2026-10-20 | B120001.3045 |  | 1d |  |
| B120001.3108 |  | DH1300/Electrical Room #5301 // Room Ready to Receive Equipment | 0d | 2026-10-20 | 2026-10-20 | B120001.3047 FF |  | 1d |  |
| F.1000A.1219 |  | DH1300/Electrical Room #5301 // Mount & Terminate Security Devices | 5d | 2026-10-21 | 2026-10-27 | F.1000A.1218, B120001.3047 |  | 20d |  |
| DH.1300.1210 |  | DH1300/Electrical Room #5301 // Pull Cable Buss Feeders | 6d | 2026-10-29 | 2026-11-05 | DH.1300.1200 FF |  | -6d |  |
| DH.1300.3069 |  | DH1300/Electrical Room #5301 // DH1300 - OFCI Skid Ship Date (11/2/2026) First Shipment | 0d | 2026-11-02 | 2026-11-02 | B120001.3108 FF |  | -7d | finish on or after 2026-11-02 |
| ER.5101.3055 |  | DH1300/Electrical Room #5301 // Set Skid - SKID-A130 | 1d | 2026-11-02 | 2026-11-02 | B120001.3108, DH.1300.3069 |  | -7d |  |
| ER.5101.3056 |  | DH1300/Electrical Room #5301 // Set Skid - SKID-B130 | 1d | 2026-11-02 | 2026-11-02 | ER.5101.3055 SS |  | -7d |  |
| ER.5101.3057 |  | DH1300/Electrical Room #5301 // Set Skid - SKID-C130 | 1d | 2026-11-02 | 2026-11-02 | ER.5101.3056 SS |  | -7d |  |
| ER.5101.3058 |  | DH1300/Electrical Room #5301 // Set Skid - SKID-D130 | 1d | 2026-11-02 | 2026-11-02 | ER.5101.3057 SS |  | -7d |  |
| ER.5101.3059 |  | DH1300/Electrical Room #5301 // Set Skid - SKID-E130 | 1d | 2026-11-02 | 2026-11-02 | ER.5101.3058 SS |  | -7d |  |
| DH.1300.1200 |  | DH1300/Electrical Room #5301 // Install Cable Buss From Exterior | 3d | 2026-11-03 | 2026-11-05 | ER.5101.3059 |  | -6d |  |
| DH.1300.1250 |  | DH1300/Electrical Room #5301 // Set CRAH-ER5301- 01 | 1d | 2026-11-03 | 2026-11-03 | ER.5101.3059, ER.5101.3059 SS |  | -7d |  |
| DH.1300.3031 |  | DH1300/Electrical Room #5301 // Set CRAH-ER5301- 02 | 1d | 2026-11-03 | 2026-11-03 | DH.1300.1250 SS |  | -7d |  |
| DH.1300.3032 |  | DH1300/Electrical Room #5301 // Set CRAH-ER5301- 03 | 1d | 2026-11-03 | 2026-11-03 | DH.1300.3031 SS |  | -7d |  |
| DH.1300.3033 |  | DH1300/Electrical Room #5301 // Set CRAH-ER5301- 04 | 1d | 2026-11-03 | 2026-11-03 | DH.1300.3032 SS |  | -7d |  |
| DH.1300.3034 |  | DH1300/Electrical Room #5301 // Set CRAH-ER5301- 05 | 1d | 2026-11-03 | 2026-11-03 | DH.1300.3033 SS |  | -7d |  |
| DH.1300.3035 |  | DH1300/Electrical Room #5301 // Set CRAH-ER5301- 06 | 1d | 2026-11-04 | 2026-11-04 | DH.1300.3034 |  | -7d |  |
| DH.1300.1260 |  | DH1300/Electrical Room #5301 // Mechanical Connections to CRAHU | 5d | 2026-11-05 | 2026-11-12 | DH.1300.3035 |  | -7d |  |
| DH.1300.1230 |  | DH1300/Electrical Room #5301 // Terminate Cable Buss Feeders | 3d | 2026-11-06 | 2026-11-10 | DH.1300.1210 |  | 12d |  |
| ER.5101.3097 |  | DH1300/Electrical Room #5301 // Set PDU - PDU-R130-01 | 1d | 2026-11-06 | 2026-11-06 | DH.1300.1210, DH.1300.3034 |  | -6d |  |
| ER.5101.3103 |  | DH1300/Electrical Room #5301 // Set UPS - UPS-R130 | 1d | 2026-11-06 | 2026-11-06 | ER.5101.3097 SS |  | -6d |  |
| DH.1300.1240 |  | DH1300/Electrical Room #5301 // Land and Terminate Cabel Tray Feeders In Gear | 10d | 2026-11-09 | 2026-11-23 | DH.1300.1220, ER.5101.3103 |  | -6d |  |
| DH.1300.1270 |  | DH1300/Electrical Room #5301 // Install Condensate lines from CRAHU's | 2d | 2026-11-13 | 2026-11-16 | DH.1300.1260 |  | -7d |  |
| DH.1300.1280 |  | DH1300/Electrical Room #5301 // Install Elec Feeders to CRAHU's | 3d | 2026-11-13 | 2026-11-17 | DH.1300.1260, DH.1300.1180 |  | 8d |  |
| B120001.3039 |  | DH1300/Electrical Room #5301 // Install Door Frames | 1d | 2026-11-17 | 2026-11-17 | B120001.3038 FF, DH.1300.1270 |  | -7d |  |
| DH.1300.1290 |  | DH1300/Electrical Room #5301 // Pull Misc Feeder and Branch Circuits | 10d | 2026-11-18 | 2026-12-02 | DH.1300.1240 SS+5d, B120001.3039 |  | -7d |  |
| F.1000A.1220 |  | DH1300/Electrical Room #5301 // Test Security Devices | 2d | 2026-11-18 | 2026-11-19 | F.1000A.1435 FF, F.1000A.1219, B120001.3039 |  | 6d |  |
| DH.1300.1330 |  | DH1300/Electrical Room #5301 // Mechanical Equipment Pre-Start up | 2d | 2026-11-24 | 2026-11-25 | DH.1300.1280, DH.1300.1270, DH.1300.1260, DH.1300.1240 |  | 4d |  |
| DH.1300.1300 |  | DH1300/Electrical Room #5301 // Land and Terminate Misc Feeder and Branch Circuits | 10d | 2026-11-25 | 2026-12-09 | DH.1300.1290 SS+5d |  | -7d |  |
| DH.1300.1310 |  | DH1300/Electrical Room #5301 // Final FOD Check of all Panels | 2d | 2026-12-10 | 2026-12-11 | DH.1300.1230, DH.1300.1240, DH.1300.1320, DH.1300.1300, F.1000A.1220 |  | -7d |  |
|  | 2 | **Electrcal Room #5304** |  | 2026-08-06 | 2026-12-14 |  |  |  |  |
| B120001.3081 |  | DH1300/Electrical Room #5304 // Seal Concrete | 2d | 2026-08-06 A | 2026-08-07 A | B120001.3046 | 100% |  |  |
| B120001.3072 |  | DH1300/Electrical Room #5304 // MEPF Layout of Overhead Supports | 2d | 2026-08-07 A | 2026-08-10 A | B120001.3081 | 100% |  |  |
| B120001.3073 |  | DH1300/Electrical Room #5304 // Frame Walls including Backing | 4d | 2026-08-11 A | 2026-09-25 A | B120001.3072 | 100% |  |  |
| B120001.3075 |  | DH1300/Electrical Room #5304 // MEPF Install Rough Wall | 2d | 2026-08-17 A | 2026-09-29 A | B120001.3073 | 100% |  |  |
| B120001.3083 |  | DH1300/Electrical Room #5304 // Install Door Frames | 1d | 2026-09-25 A | 2026-09-25 A | B120001.3073 FF | 100% |  |  |
| B120001.3076 |  | DH1300/Electrical Room #5304 // Install Top Down Sheet Rock | 5d | 2026-09-28 A | 2026-10-06 | B120001.3073 SS+2d |  | 6d |  |
| B120001.3074 |  | DH1300/Electrical Room #5304 // MEPF Install High Overhead Systems | 6d | 2026-09-30 | 2026-10-07 | B120001.3072 |  | 11d |  |
| B120001.3077 |  | DH1300/Electrical Room #5304 // Rough Wall Inspection (Approval to Close up) | 1d | 2026-09-30 | 2026-09-30 | B120001.3075 |  | 7d |  |
| B120001.3145 |  | DH1300/Electrical Room #5304 // Install Overhead Cable Ladder / 36" Cable Tray - TFO | 5d | 2026-09-30 | 2026-10-06 | B120001.3072 |  | 17d |  |
| B120001.3079 |  | DH1300/Electrical Room #5304 // Install Balance of Sheetrock | 3d | 2026-10-02 | 2026-10-06 | B120001.3077, B120001.3076 FF |  | 6d |  |
| B120001.3080 |  | DH1300/Electrical Room #5304 // Tape and Finish Walls | 6d | 2026-10-07 | 2026-10-15 | B120001.3079 |  | 6d |  |
| B120001.3146 |  | DH1300/Electrical Room #5304 // Install Overhead HAC - TFO | 5d | 2026-10-07 | 2026-10-14 | B120001.3145 |  | 17d |  |
| B120001.3078 |  | DH1300/Electrical Room #5304 // Install Overhead Buss duct | 2d | 2026-10-08 | 2026-10-09 | B120001.3074, B120001.3076 |  | 12d |  |
| DH.1300.3042 |  | DH1300/Electrical Room #5304 // Install Cable Tray | 3d | 2026-10-08 | 2026-10-13 | B120001.3074 |  | 11d |  |
| F.1000A.1221 |  | DH1300/Electrical Room #5304 // Rough-In Security | 2d | 2026-10-15 | 2026-10-16 | B120001.3072, B120001.3146 |  | 17d |  |
| F.1000A.1445 |  | DH1300/Electrical Room #5304 // BMS & EPMS Rough-In | 2d | 2026-10-15 | 2026-10-16 | F.1000A.1221 FF, F.1000A.1221 SS |  | 29d |  |
| B120001.3082 |  | DH1300/Electrical Room #5304 // Prime and First Coat of Paint | 2d | 2026-10-16 | 2026-10-19 | B120001.3080 |  | 6d |  |
| F.1000A.1222 |  | DH1300/Electrical Room #5304 // Pull & Test Security Cable | 3d | 2026-10-19 | 2026-10-21 | F.1000A.1221 |  | 17d |  |
| B120001.3109 |  | DH1300/Electrical Room #5304 // Room Ready to Receive Equipment | 0d | 2026-10-19 | 2026-10-19 | B120001.3082 FF |  | 6d |  |
| F.1000A.1223 |  | DH1300/Electrical Room #5304 // Install Security Devices | 2d | 2026-10-22 | 2026-10-23 | F.1000A.1222 |  | 17d |  |
| F.1000A.1224 |  | DH1300/Electrical Room #5304 // Mount & Terminate Security Devices | 5d | 2026-10-26 | 2026-10-30 | F.1000A.1223, B120001.3082 |  | 17d |  |
| F.1000A.1225 |  | DH1300/Electrical Room #5304 // Test Security Devices | 2d | 2026-11-02 | 2026-11-03 | F.1000A.1445 FF, F.1000A.1224, B120001.3083 |  | 17d |  |
| DH.1300.3048 |  | DH1300/Electrical Room #5304 // Set CRAH-ER5304- 01 | 1d | 2026-11-09 | 2026-11-09 | B120001.3082, ER.5101.3064 SS |  | 4d |  |
| DH.1300.3049 |  | DH1300/Electrical Room #5304 // Set CRAH-ER5304- 02 | 1d | 2026-11-09 | 2026-11-09 | DH.1300.3048 SS |  | 4d |  |
| DH.1300.3050 |  | DH1300/Electrical Room #5304 // Set CRAH-ER5304- 03 | 1d | 2026-11-09 | 2026-11-09 | DH.1300.3049 SS |  | 4d |  |
| DH.1300.3071 |  | DH1300/Electrical Room #5304 // DH1300 - OFCI Skid Ship Date (11/7/2026) 2ND Shipment | 0d | 2026-11-09 | 2026-11-09 | B120001.3109 FF |  | -8d | finish on or after 2026-11-07 |
| ER.5101.3060 |  | DH1300/Electrical Room #5304 // Set Skid - SKID-F130 | 1d | 2026-11-09 | 2026-11-09 | ER.5101.3059 SS, DH.1300.3071 |  | -8d |  |
| ER.5101.3061 |  | DH1300/Electrical Room #5304 // Set Skid - SKID-G130 | 1d | 2026-11-09 | 2026-11-09 | ER.5101.3060 SS |  | -8d |  |
| ER.5101.3062 |  | DH1300/Electrical Room #5304 // Set Skid - SKID-H130 | 1d | 2026-11-09 | 2026-11-09 | ER.5101.3061 SS |  | -8d |  |
| ER.5101.3063 |  | DH1300/Electrical Room #5304 // Set Skid - SKID-J130 | 1d | 2026-11-09 | 2026-11-09 | ER.5101.3062 SS |  | -8d |  |
| ER.5101.3064 |  | DH1300/Electrical Room #5304 // Set Skid - SKID-K130 | 1d | 2026-11-09 | 2026-11-09 | ER.5101.3063 SS |  | -8d |  |
| DH.1300.3044 |  | DH1300/Electrical Room #5304 // Install Cable Buss From Exterior | 3d | 2026-11-10 | 2026-11-13 | ER.5101.3064, DH.1300.3042 |  | -8d |  |
| DH.1300.3045 |  | DH1300/Electrical Room #5304 // Buss Duct Tie In to Elect Gear | 3d | 2026-11-10 | 2026-11-13 | ER.5101.3064, DH.1300.3042, B120001.3078 |  | -8d |  |
| DH.1300.3047 |  | DH1300/Electrical Room #5304 // Pull Cable Tray Feeders (CRAHU/CDU) | 10d | 2026-11-10 | 2026-11-24 | ER.5101.3064, DH.1300.3042 |  | -5d |  |
| DH.1300.3051 |  | DH1300/Electrical Room #5304 // Set CRAH-ER5304- 04 | 1d | 2026-11-10 | 2026-11-10 | DH.1300.3050 |  | 4d |  |
| DH.1300.3052 |  | DH1300/Electrical Room #5304 // Set CRAH-ER5304- 05 | 1d | 2026-11-10 | 2026-11-10 | DH.1300.3051 SS |  | 4d |  |
| DH.1300.3053 |  | DH1300/Electrical Room #5304 // Set CRAH-ER5304- 06 | 1d | 2026-11-10 | 2026-11-10 | DH.1300.3052 SS |  | 4d |  |

| ID | WBS | Task | Duration | Start | Finish | Predecessors | Complete | Total float |
| --- | --- | --- | --- | --- | --- | --- | --- | --- |
| DH.1300.3054 |  | DH1300/Electrical Room #5304 // Land and Terminate Cabel Tray Feeders In Gear | 10d | 2026-11-10 | 2026-11-24 | DH.1300.3047 FF |  | -5d |
| DH.1300.3055 |  | DH1300/Electrical Room #5304 // Mechanical Connections to CRAHU | 5d | 2026-11-12 | 2026-11-18 | DH.1300.3053 |  | 4d |
| DH.1300.3046 |  | DH1300/Electrical Room #5304 // Pull Cable Buss Feeders | 6d | 2026-11-16 | 2026-11-23 | DH.1300.3044, DH.1300.3045 |  | -8d |
| DH.1300.3057 |  | DH1300/Electrical Room #5304 // Install Condensate lines from CRAHU's | 3d | 2026-11-19 | 2026-11-23 | DH.1300.3055 |  | 4d |
| DH.1300.3058 |  | DH1300/Electrical Room #5304 // Install Elec Feeders to CRAHU's | 3d | 2026-11-19 | 2026-11-23 | DH.1300.3055, DH.1300.3042 |  | 4d |
| DH.1300.3060 |  | DH1300/Electrical Room #5304 // Pull Misc Feeder and Branch Circuits | 10d | 2026-11-23 | 2026-12-07 | DH.1300.3054 SS+5d, B120001.3083, DH.1300.3046 SS+5d |  | -8d |
| DH.1300.3056 |  | DH1300/Electrical Room #5304 // Terminate Cable Buss Feeders | 3d | 2026-11-24 | 2026-11-27 | DH.1300.3046, ER.5101.3064 |  | 1d |
| DH.1300.3059 |  | DH1300/Electrical Room #5304 // Mechanical Equipment Pre-Start up | 2d | 2026-11-25 | 2026-11-27 | DH.1300.3058, DH.1300.3057, DH.1300.3055, DH.1300.3054 |  | 3d |
| DH.1300.3061 |  | DH1300/Electrical Room #5304 // Land and Terminate Misc Feeder and Branch Circuits | 10d | 2026-11-27 | 2026-12-10 | DH.1300.3060 SS+3d |  | -8d |
| DH.1300.3062 |  | DH1300/Electrical Room #5304 // Final FOD Check of all Panels | 2d | 2026-12-11 | 2026-12-14 | DH.1300.3056, DH.1300.3054, DH.1300.3045, DH.1300.3061, F.1000A.1225 |  | -8d |
|  | 3 | **Data Hall 1300** |  | 2026-08-07 | 2026-12-10 |  |  |  |
| DH.13006270 |  | DH 1300 // MEPF overhead layout | 3d | 2026-08-07 A | 2026-08-11 A | B120001.3036 | 100% |  |
| DH.13006280 |  | DH 1300 // Layout walls | 3d | 2026-08-10 A | 2026-08-12 A | DH.13006270 SS+1d | 100% |  |
| DH.13006300 |  | DH 1300 // Frame walls | 10d | 2026-09-17 A | 2026-10-08 | DH.13006280 | 30% | -8d |
| DH.13006290 |  | DH 1300 // MEPF high overhead install | 10d | 2026-09-30 | 2026-10-14 | DH.13006270 |  | 2d |
| DH.130012067 |  | DH 1300 // Install 1-Side Sheet Rock (DH-Side) | 3d | 2026-10-09 | 2026-10-14 | DH.13006300 |  | -6d |
| DH.13006320 |  | DH 1300 // MEP rough in walls | 5d | 2026-10-09 | 2026-10-16 | DH.13006300 |  | -8d |
| B120001.3147 |  | DH 1300 // Install Overhead Cable Ladder / 36" Cable Tray - TFO | 5d | 2026-10-15 | 2026-10-21 | DH.13006270, DH.13006290 |  | 49d |
| DH.13007800 |  | DH 1300 // Install Ceiling supports (rods/wires) no grid | 5d | 2026-10-15 | 2026-10-21 | DH.13006300 SS, DH.13006290 |  | 2d |
| DH.13006360 |  | DH 1300 // Tape and finish walls | 15d | 2026-10-19 | 2026-11-06 | DH.13006320, DH.130012067, DH.13006300 SS |  | -8d |
| B120001.3148 |  | DH 1300 // Install Overhead HAC - TFO | 5d | 2026-10-22 | 2026-10-28 | B120001.3147 |  | 49d |
| DH.13006220 |  | DH 1300 // Install ceiling grid system | 8d | 2026-10-22 | 2026-11-02 | DH.13007800 |  | 2d |
| F.1000A.1226 |  | DH 1300 // Rough-In Security | 2d | 2026-10-29 | 2026-10-30 | DH.13006290, B120001.3148 |  | 49d |
| F.1000A.1455 |  | DH 1300 // BMS & EPMS Rough-In | 2d | 2026-10-29 | 2026-10-30 | F.1000A.1226 FF, F.1000A.1226 SS |  | 61d |
| F.1000A.1227 |  | DH 1300 // Pull & Test Security Cable | 3d | 2026-11-02 | 2026-11-04 | F.1000A.1226 |  | 49d |
| DH.13006250 |  | DH 1300 // Install overhead MEP and lighting | 5d | 2026-11-03 | 2026-11-09 | DH.13006220 |  | 2d |
| F.1000A.1228 |  | DH 1300 // Install Security Devices | 2d | 2026-11-05 | 2026-11-06 | F.1000A.1227 |  | 49d |
| DH.13006260 |  | DH 1300 // Polish concrete | 2d | 2026-11-09 | 2026-11-10 | DH.13006360 |  | 4d |
| DH.13006310 |  | DH 1300 // Install wall door frames | 3d | 2026-11-09 | 2026-11-12 | DH.13006300 FF, DH.13006360 |  | 8d |
| DH.13006410 |  | DH 1300 // Prime and 1st coat of Paint | 5d | 2026-11-09 | 2026-11-16 | DH.13006360 |  | 1d |
| DH.13006240 |  | DH 1300 // Install ceiling grid tiles | 3d | 2026-11-10 | 2026-11-13 | DH.13006220 SS+3d, DH.13006250 |  | 2d |
| DH.13007790 |  | DH 1300 // Final Paint & Touch up walls | 5d | 2026-11-17 | 2026-11-23 | DH.13006410, DH.13006220, DH.13006240, DH.13006260 |  | 1d |
| F.1000A.1229 |  | DH 1300 // Mount & Terminate Security Devices | 5d | 2026-11-17 | 2026-11-23 | F.1000A.1228, DH.13006410 |  | 44d |
| DH.13007810 |  | DH 1300 // Install MEPF Trim and Finishes | 5d | 2026-11-24 | 2026-12-01 | DH.13007790, DH.13006310 |  | 1d |
| DH.160012144 |  | DH 1300 // Ready to Receive Equipment | 0d | 2026-12-01 | 2026-12-01 | DH.13007810 FF |  | 1d |
| F.1000A.1230 |  | DH 1300 // Test Security Devices | 2d | 2026-12-02 | 2026-12-03 | F.1000A.1455 FF, F.1000A.1229, DH.13007810 |  | 39d |
| DH.13007820 |  | DH 1300 // Suffolk Pre Punch | 5d | 2026-12-04 | 2026-12-10 | DH.160012144, F.1000A.1230 |  | 52d |
|  | 15 | **PDU Gallery** |  | 2026-08-03 | 2026-10-23 |  |  |  |
| DH.13000.1000 |  | DH1300/PDU Gallery // Seal concrete | 2d | 2026-08-03 A | 2026-08-06 A | SOG.1454 | 100% |  |
| DH.13000.1010 |  | DH1300/PDU Gallery // MEPF overhead layout | 5d | 2026-08-05 A | 2026-09-11 A | DH.13000.1000 | 100% |  |
| DH.13000.1040 |  | DH1300/PDU Gallery // Frame walls | 5d | 2026-09-18 A | 2026-10-06 | DH.13000.1010 |  | 32d |
| DH.13000.1030 |  | DH1300/PDU Gallery // MEPF high overhead install | 3d | 2026-09-30 | 2026-10-02 | DH.13000.1010 SS |  | 28d |
| DH.13000.1110 |  | DH1300/PDU Gallery // Install Cable Tray (From Elec Rm 5301 to CRAHU Gallery) | 2d | 2026-09-30 | 2026-10-01 | DH.13000.1010 |  | 26d |
| DH.13000.1711 |  | DH1300/PDU Gallery // MEP rough in walls | 3d | 2026-10-02 | 2026-10-06 | DH.13000.1110 |  | 26d |
| DH.13000.1070 |  | DH1300/PDU Gallery // In wall inspection | 1d | 2026-10-07 | 2026-10-07 | DH.13000.1711, DH.13000.1030 |  | 26d |
| DH.13000.1060 |  | DH1300/PDU Gallery // Install Sheetrock Top Down | 3d | 2026-10-08 | 2026-10-13 | DH.13000.1040 SS, DH.13000.1070 |  | 26d |
| DH.13000.1080 |  | DH1300/PDU Gallery // Install sheetrock on walls (Balance) | 5d | 2026-10-14 | 2026-10-20 | DH.13000.1060 |  | 26d |
| DH.13000.1050 |  | DH1300/PDU Gallery // Install wall door frames | 1d | 2026-10-21 | 2026-10-21 | DH.13000.1040, DH.13000.1080 |  | 28d |
| DH.13000.1090 |  | DH1300/PDU Gallery // Tape and finish walls | 1d | 2026-10-21 | 2026-10-21 | DH.13000.1080 |  | 26d |
| DH.13000.1100 |  | DH1300/PDU Gallery // Paint walls | 2d | 2026-10-22 | 2026-10-23 | DH.13000.1090 |  | 26d |
| DH.13000.1712 |  | DH1300/PDU Gallery // Ready to Receive Equipment | 0d | 2026-10-23 | 2026-10-23 | DH.13000.1100 FF, DH.13000.1110 FF, DH.13000.1050 FF |  | 26d |
|  | 14 | **CRAH/CDU Galleries** |  | 2026-08-03 | 2026-12-24 |  |  |  |
|  | 2 | **Gallery 1302** |  | 2026-08-03 | 2026-12-16 |  |  |  |
|  | 4 | **Architectural** |  | 2026-08-03 | 2026-11-24 |  |  |  |
| DH.1300660 |  | DH 1300/Gallery 1302 // Seal concrete | 2d | 2026-08-03 A | 2026-09-03 A | DH.13000.1000 SS | 100% |  |
| DH.1300670 |  | DH 1300/Gallery 1302 // MEPF overhead layout | 5d | 2026-08-05 A | 2026-08-11 A | DH.13000.1000 SS | 100% |  |
| DH.1300700 |  | DH 1300/Gallery 1302 // Frame walls | 6d | 2026-08-12 A | 2026-09-28 A | DH.1300670, DH.1300660 | 100% |  |
| DH.1300720 |  | DH 1300/Gallery 1302 // Install Sheetrock Top Down | 6d | 2026-09-29 A | 2026-10-07 | DH.1300700 SS+2d |  | -6d |
| DH.1300690 |  | DH 1300/Gallery 1302 // MEPF high overhead install | 8d | 2026-09-30 | 2026-10-09 | DH.1300720 FF, DH.1300670 |  | -8d |
| B120001.3149 |  | DH 1300/Gallery 1302 // Install Overhead Cable Ladder / 36" Cable Tray - TFO | 5d | 2026-10-13 | 2026-10-19 | DH.1300690 |  | 46d |
| DH.1300730 |  | DH 1300/Gallery 1302 // MEP rough in walls | 4d | 2026-10-13 | 2026-10-16 | DH.1300750 SS, DH.1300720 |  | 5d |
| DH.1300750 |  | DH 1300/Gallery 1302 // Install Balance of Sheetrock on walls | 6d | 2026-10-13 | 2026-10-20 | DH.1300690 |  | -8d |
| DH.1300740 |  | DH 1300/Gallery 1302 // In wall inspection | 1d | 2026-10-19 | 2026-10-19 | DH.1300730 |  | 5d |
| B120001.3150 |  | DH 1300/Gallery 1302 // Install Overhead HAC - TFO | 5d | 2026-10-20 | 2026-10-26 | B120001.3149 |  | 46d |
| DH.1300770 |  | DH 1300/Gallery 1302 // Tape and finish walls | 8d | 2026-10-21 | 2026-10-30 | DH.1300750 |  | -8d |
| F.1000A.1276 |  | DH 1300/Gallery 1302 // Rough-In Security | 2d | 2026-10-27 | 2026-10-28 | DH.1300690, B120001.3150 |  | 46d |
| F.1000A.1465 |  | DH 1300/Gallery 1302 // BMS & EPMS Rough-In | 2d | 2026-10-27 | 2026-10-28 | F.1000A.1276 FF, F.1000A.1276 SS |  | 58d |
| F.1000A.1277 |  | DH 1300/Gallery 1302 // Pull & Test Security Cable | 3d | 2026-10-29 | 2026-11-02 | F.1000A.1276 |  | 46d |
| DH.1300710 |  | DH 1300/Gallery 1302 // Install wall door frames | 1d | 2026-11-02 | 2026-11-02 | DH.1300740, DH.1300770, DH.1300700 FF |  | -4d |
| DH.1300790 |  | DH 1300/Gallery 1302 // Prime and Paint walls | 4d | 2026-11-02 | 2026-11-05 | DH.1300770 |  | -8d |

| ID | WBS | Task | Duration | Start | Finish | Predecessors | Total float |
| --- | --- | --- | --- | --- | --- | --- | --- |
| DH.1300800 |  | DH 1300/Gallery 1302 // Touch up Walls and Fianl Paint | 5d | 2026-11-02 | 2026-11-06 | DH.1300790 FF+1d | -8d |
| F.1000A.1278 |  | DH 1300/Gallery 1302 // Install Security Devices | 2d | 2026-11-03 | 2026-11-04 | F.1000A.1277 | 46d |
| DH.1300810 |  | DH 1300/Gallery 1302 // Install Trim and Devices | 2d | 2026-11-04 | 2026-11-05 | DH.1300790 FF | -7d |
| F.1000A.1279 |  | DH 1300/Gallery 1302 // Mount & Terminate Security Devices | 5d | 2026-11-06 | 2026-11-13 | F.1000A.1278, DH.1300790 | 45d |
| DH.160012145 |  | DH 1300/Gallery 1302 // Ready to Receive Equipment | 0d | 2026-11-06 | 2026-11-06 | DH.1300710, DH.1300810 FF, DH.1300800 | -8d |
| F.1000A.1280 |  | DH 1300/Gallery 1302 // Test Security Devices | 2d | 2026-11-16 | 2026-11-17 | F.1000A.1465 FF, F.1000A.1279, DH.1300810 | 45d |
| DH.1300820 |  | DH 1300/Gallery 1302 // Suffolk Pre Punch | 5d | 2026-11-18 | 2026-11-24 | DH.1300810, DH.160012145, F.1000A.1280 | 45d |
|  | 16 | **Raceway** |  |  |  |  |  |
|  | 3 | **Equipment Line-Ups** |  | 2026-11-09 | 2026-12-16 |  |  |
|  | 1 | **A130** |  | 2026-11-09 | 2026-12-11 |  |  |
| DH.1300A-EQP-1 |  | Gallery 1302 - A130/Line-Ups // Set CRAH-DH1300- 01 | 1d | 2026-11-09 | 2026-11-09 | DH.13006360, DH.160012145 | -8d |
| DH.1300A-EQP-3 |  | Gallery 1302 - A130/Line-Ups // Set CRAH-DH1300- 02 | 1d | 2026-11-09 | 2026-11-09 | DH.1300A-EQP-1 SS | -8d |
| DH.1300A-EQP-5 |  | Gallery 1302 - A130/Line-Ups // Set MOD-A130-01 | 1d | 2026-11-09 | 2026-11-09 | DH.1300A-EQP-3 FF | 35d |
| DH.1300A-EQP-6 |  | Gallery 1302 - A130/Line-Ups // Set MOD-A130-02 | 1d | 2026-11-09 | 2026-11-09 | DH.1300A-EQP-5 SS | 35d |
| DH.1300A-EQP-10 |  | Gallery 1302 - A130/Line-Ups // Pull Cable Tray Feed from MOD to CRAHU's | 5d | 2026-11-10 | 2026-11-17 | DH.1300A-EQP-6 | 41d |
| DH.1300A-EQP-12 |  | Gallery 1302 - A130/Line-Ups // Mount Electrial Gear for Chiller Controls | 10d | 2026-11-10 | 2026-11-24 | DH.1300A-EQP-6 | 35d |
| DH.1300A-EQP-7 |  | Gallery 1302 - A130/Line-Ups // Set CDU-DH1300- 01 | 1d | 2026-11-10 | 2026-11-10 | DH.1300A-EQP-1 | 35d |
| DH.1300A-EQP-9 |  | Gallery 1302 - A130/Line-Ups // Pull Feeder from SWD to MOD | 1d | 2026-11-10 | 2026-11-10 | DH.1300A-EQP-6 | 51d |
| DH.1300A-EQP-8 |  | Gallery 1302 - A130/Line-Ups // Set CDU-DH1300- 02 | 1d | 2026-11-12 | 2026-11-12 | DH.1300A-EQP-3, DH.1300A-EQP-7 | 35d |
| DH.1300A-EQP-4 |  | Gallery 1302 - A130/Line-Ups // Condensate connections to Floor Drains | 10d | 2026-11-13 | 2026-11-27 | DH.1300A-EQP-8, DH.1300A-EQP-7, DH.1300A-EQP-3 | 35d |
| DH.1300A-EQP-11 |  | Gallery 1302 - A130/Line-Ups // Mechanical Connections to CRAHU Units | 10d | 2026-11-17 | 2026-12-01 | DH.1300A-EQP-3 SS+5d | 33d |
| DH.1300A-EQP-17 |  | Gallery 1302 - A130/Line-Ups // Pull Feeder and Branch circuits to MIsc equipment and Chiller controls | 10d | 2026-11-17 | 2026-12-01 | DH.1300A-EQP-12 SS+4d | 35d |
| DH.1300A-EQP-13 |  | Gallery 1302 - A130/Line-Ups // Pull Cable Tray Feed from MOD to CRAHU's | 5d | 2026-11-18 | 2026-11-24 | DH.1300A-EQP-10 | 41d |
| DH.1300A-EQP-16 |  | Gallery 1302 - A130/Line-Ups // Terminate CRAHU Electrical Connections | 5d | 2026-11-20 | 2026-11-27 | DH.1300A-EQP-10, DH.1300A-EQP-13 SS+2d | 41d |
| DH.1300A-EQP-19 |  | Gallery 1302 - A130/Line-Ups // Teminate all Misc Equipment and Chiller Controls | 10d | 2026-11-23 | 2026-12-07 | DH.1300A-EQP-17 SS+4d | 35d |
| DH.1300A-EQP-14 |  | Gallery 1302 - A130/Line-Ups // Condensate connections to Floor Drains | 10d | 2026-11-24 | 2026-12-08 | DH.1300A-EQP-4 SS+5d, DH.1300A-EQP-11 SS+5d, DH.13007841 | 33d |
| DH.1300A-EQP-15 |  | Gallery 1302 - A130/Line-Ups // Terminate Mod Panels | 1d | 2026-11-25 | 2026-11-25 | DH.1300A-EQP-9, DH.1300A-EQP-10, DH.1300A-EQP-13 | 42d |
| DH.1300A-EQP-20 |  | Gallery 1302 - A130/Line-Ups // Electrical Gear FOD Inspection Pre-Start Up | 2d | 2026-12-08 | 2026-12-09 | DH.1300A-EQP-15, DH.1300A-EQP-19, DH.1300A-EQP-16 | 35d |
| DH.1300A-EQP-18 |  | Gallery 1302 - A130/Line-Ups // Mechanical Gear FOD Inspection Pre-Start Up | 3d | 2026-12-09 | 2026-12-11 | DH.1300A-EQP-11, DH.1300A-EQP-4, DH.1300A-EQP-14, DH.1300A-EQP-3 | 33d |
|  | 2 | **B130** |  | 2026-11-09 | 2026-12-11 |  |  |
| DH.1300A-EQP-21 |  | Gallery 1302 - B130/Line-Ups // Set CRAH-DH1300- 03 | 1d | 2026-11-09 | 2026-11-09 | DH.1300A-EQP-3 SS | -8d |
| DH.1300A-EQP-23 |  | Gallery 1302 - B130/Line-Ups // Set CRAH-DH1300- 04 | 1d | 2026-11-09 | 2026-11-09 | DH.1300A-EQP-21 SS | -8d |
| DH.1300A-EQP-25 |  | Gallery 1302 - B130/Line-Ups // Set MOD-B130-01 | 1d | 2026-11-09 | 2026-11-09 | DH.1300A-EQP-23 FF | 35d |
| DH.1300A-EQP-26 |  | Gallery 1302 - B130/Line-Ups // Set MOD-B130-02 | 1d | 2026-11-09 | 2026-11-09 | DH.1300A-EQP-25 SS | 35d |
| DH.1300A-EQP-27 |  | Gallery 1302 - B130/Line-Ups // Set CDU-DH1300- 03 | 1d | 2026-11-10 | 2026-11-10 | DH.1300A-EQP-21 | 35d |
| DH.1300A-EQP-29 |  | Gallery 1302 - B130/Line-Ups // Pull Feeder from SWD to MOD | 1d | 2026-11-10 | 2026-11-10 | DH.1300A-EQP-26 | 51d |
| DH.1300A-EQP-30 |  | Gallery 1302 - B130/Line-Ups // Pull Cable Tray Feed from MOD to CRAHU's | 5d | 2026-11-10 | 2026-11-17 | DH.1300A-EQP-26 | 41d |
| DH.1300A-EQP-32 |  | Gallery 1302 - B130/Line-Ups // Mount Electrial Gear for Chiller Controls | 10d | 2026-11-10 | 2026-11-24 | DH.1300A-EQP-26 | 35d |
| DH.1300A-EQP-28 |  | Gallery 1302 - B130/Line-Ups // Set CDU-DH1300- 04 | 1d | 2026-11-12 | 2026-11-12 | DH.1300A-EQP-23, DH.1300A-EQP-27 | 35d |
| DH.1300A-EQP-24 |  | Gallery 1302 - B130/Line-Ups // Condensate connections to Floor Drains | 10d | 2026-11-13 | 2026-11-27 | DH.1300A-EQP-28, DH.1300A-EQP-27, DH.1300A-EQP-23 | 35d |
| DH.1300A-EQP-31 |  | Gallery 1302 - B130/Line-Ups // Mechanical Connections to CRAHU Units | 10d | 2026-11-17 | 2026-12-01 | DH.1300A-EQP-23 SS+5d | 33d |
| DH.1300A-EQP-37 |  | Gallery 1302 - B130/Line-Ups // Pull Feeder and Branch circuits to MIsc equipment and Chiller controls | 10d | 2026-11-17 | 2026-12-01 | DH.1300A-EQP-32 SS+4d | 35d |
| DH.1300A-EQP-33 |  | Gallery 1302 - B130/Line-Ups // Pull Cable Tray Feed from MOD to CRAHU's | 5d | 2026-11-18 | 2026-11-24 | DH.1300A-EQP-30 | 41d |
| DH.1300A-EQP-36 |  | Gallery 1302 - B130/Line-Ups // Terminate CRAHU Electrical Connections | 5d | 2026-11-20 | 2026-11-27 | DH.1300A-EQP-30, DH.1300A-EQP-33 SS+2d | 41d |
| DH.1300A-EQP-39 |  | Gallery 1302 - B130/Line-Ups // Teminate all Misc Equipment and Chiller Controls | 10d | 2026-11-23 | 2026-12-07 | DH.1300A-EQP-37 SS+4d | 35d |
| DH.1300A-EQP-34 |  | Gallery 1302 - B130/Line-Ups // Condensate connections to Floor Drains | 10d | 2026-11-24 | 2026-12-08 | DH.1300A-EQP-24 SS+5d, DH.1300A-EQP-31 SS+5d | 33d |
| DH.1300A-EQP-35 |  | Gallery 1302 - B130/Line-Ups // Terminate Mod Panels | 1d | 2026-11-25 | 2026-11-25 | DH.1300A-EQP-29, DH.1300A-EQP-30, DH.1300A-EQP-33 | 42d |
| DH.1300A-EQP-40 |  | Gallery 1302 - B130/Line-Ups // Electrical Gear FOD Inspection Pre-Start Up | 2d | 2026-12-08 | 2026-12-09 | DH.1300A-EQP-35, DH.1300A-EQP-39, DH.1300A-EQP-36 | 35d |
| DH.1300A-EQP-38 |  | Gallery 1302 - B130/Line-Ups // Mechanical Gear FOD Inspection Pre-Start Up | 3d | 2026-12-09 | 2026-12-11 | DH.1300A-EQP-31, DH.1300A-EQP-24, DH.1300A-EQP-34, DH.1300A-EQP-23 | 33d |
|  | 3 | **C130** |  | 2026-11-09 | 2026-12-11 |  |  |
| DH.1300A-EQP-41 |  | Gallery 1302 - C130/Line-Ups // Set CRAH-DH1300- 05 | 1d | 2026-11-09 | 2026-11-09 | DH.1300A-EQP-23 SS | -8d |
| DH.1300A-EQP-43 |  | Gallery 1302 - C130/Line-Ups // Set CRAH-DH1300- 06 | 1d | 2026-11-09 | 2026-11-09 | DH.1300A-EQP-41 SS | -8d |
| DH.1300A-EQP-45 |  | Gallery 1302 - C130/Line-Ups // Set MOD-C130-01 | 1d | 2026-11-09 | 2026-11-09 | DH.1300A-EQP-43 FF | 35d |
| DH.1300A-EQP-46 |  | Gallery 1302 - C130/Line-Ups // Set MOD-C130-02 | 1d | 2026-11-09 | 2026-11-09 | DH.1300A-EQP-45 SS | 35d |
| DH.1300A-EQP-47 |  | Gallery 1302 - C130/Line-Ups // Set CDU-DH1300- 05 | 1d | 2026-11-10 | 2026-11-10 | DH.1300A-EQP-41 | 35d |
| DH.1300A-EQP-49 |  | Gallery 1302 - C130/Line-Ups // Pull Feeder from SWD to MOD | 1d | 2026-11-10 | 2026-11-10 | DH.1300A-EQP-46 | 51d |
| DH.1300A-EQP-50 |  | Gallery 1302 - C130/Line-Ups // Pull Cable Tray Feed from MOD to CRAHU's | 5d | 2026-11-10 | 2026-11-17 | DH.1300A-EQP-46 | 41d |
| DH.1300A-EQP-52 |  | Gallery 1302 - C130/Line-Ups // Mount Electrial Gear for Chiller Controls | 10d | 2026-11-10 | 2026-11-24 | DH.1300A-EQP-46 | 35d |
| DH.1300A-EQP-48 |  | Gallery 1302 - C130/Line-Ups // Set CDU-DH1300- 06 | 1d | 2026-11-12 | 2026-11-12 | DH.1300A-EQP-43, DH.1300A-EQP-47 | 35d |
| DH.1300A-EQP-44 |  | Gallery 1302 - C130/Line-Ups // Condensate connections to Floor Drains | 10d | 2026-11-13 | 2026-11-27 | DH.1300A-EQP-48, DH.1300A-EQP-47, DH.1300A-EQP-43 | 35d |
| DH.1300A-EQP-51 |  | Gallery 1302 - C130/Line-Ups // Mechanical Connections to CRAHU Units | 10d | 2026-11-17 | 2026-12-01 | DH.1300A-EQP-43 SS+5d | 33d |
| DH.1300A-EQP-57 |  | Gallery 1302 - C130/Line-Ups // Pull Feeder and Branch circuits to MIsc equipment and Chiller controls | 10d | 2026-11-17 | 2026-12-01 | DH.1300A-EQP-52 SS+4d | 35d |
| DH.1300A-EQP-53 |  | Gallery 1302 - C130/Line-Ups // Pull Cable Tray Feed from MOD to CRAHU's | 5d | 2026-11-18 | 2026-11-24 | DH.1300A-EQP-50 | 41d |
| DH.1300A-EQP-56 |  | Gallery 1302 - C130/Line-Ups // Terminate CRAHU Electrical Connections | 5d | 2026-11-20 | 2026-11-27 | DH.1300A-EQP-50, DH.1300A-EQP-53 SS+2d | 41d |
| DH.1300A-EQP-59 |  | Gallery 1302 - C130/Line-Ups // Teminate all Misc Equipment and Chiller Controls | 10d | 2026-11-23 | 2026-12-07 | DH.1300A-EQP-57 SS+4d | 35d |
| DH.1300A-EQP-54 |  | Gallery 1302 - C130/Line-Ups // Condensate connections to Floor Drains | 10d | 2026-11-24 | 2026-12-08 | DH.1300A-EQP-44 SS+5d, DH.1300A-EQP-51 SS+5d | 33d |
| DH.1300A-EQP-55 |  | Gallery 1302 - C130/Line-Ups // Terminate Mod Panels | 1d | 2026-11-25 | 2026-11-25 | DH.1300A-EQP-49, DH.1300A-EQP-50, DH.1300A-EQP-53 | 42d |
| DH.1300A-EQP-60 |  | Gallery 1302 - C130/Line-Ups // Electrical Gear FOD Inspection Pre-Start Up | 2d | 2026-12-08 | 2026-12-09 | DH.1300A-EQP-55, DH.1300A-EQP-59, DH.1300A-EQP-56 | 35d |
| DH.1300A-EQP-58 |  | Gallery 1302 - C130/Line-Ups // Mechanical Gear FOD Inspection Pre-Start Up | 3d | 2026-12-09 | 2026-12-11 | DH.1300A-EQP-51, DH.1300A-EQP-44, DH.1300A-EQP-54, DH.1300A-EQP-43 | 33d |
|  | 4 | **D130** |  | 2026-11-10 | 2026-12-14 |  |  |

| ID | WBS | Task | Duration | Start | Finish | Predecessors | Total float |
| --- | --- | --- | --- | --- | --- | --- | --- |
| DH.1300A-EQP-61 |  | Gallery 1302 - D130/Line-Ups // Set CRAH-DH1300- 07 | 1d | 2026-11-10 | 2026-11-10 | DH.1300A-EQP-43 | -8d |
| DH.1300A-EQP-63 |  | Gallery 1302 - D130/Line-Ups // Set CRAH-DH1300- 08 | 1d | 2026-11-10 | 2026-11-10 | DH.1300A-EQP-61 SS | -8d |
| DH.1300A-EQP-65 |  | Gallery 1302 - D130/Line-Ups // Set MOD-D130-01 | 1d | 2026-11-10 | 2026-11-10 | DH.1300A-EQP-63 FF | 34d |
| DH.1300A-EQP-66 |  | Gallery 1302 - D130/Line-Ups // Set MOD-D130-02 | 1d | 2026-11-10 | 2026-11-10 | DH.1300A-EQP-65 SS | 34d |
| DH.1300A-EQP-67 |  | Gallery 1302 - D130/Line-Ups // Set CDU-DH1300- 07 | 1d | 2026-11-12 | 2026-11-12 | DH.1300A-EQP-61 | 34d |
| DH.1300A-EQP-69 |  | Gallery 1302 - D130/Line-Ups // Pull Feeder from SWD to MOD | 1d | 2026-11-12 | 2026-11-12 | DH.1300A-EQP-66 | 50d |
| DH.1300A-EQP-70 |  | Gallery 1302 - D130/Line-Ups // Pull Cable Tray Feed from MOD to CRAHU's | 5d | 2026-11-12 | 2026-11-18 | DH.1300A-EQP-66 | 40d |
| DH.1300A-EQP-72 |  | Gallery 1302 - D130/Line-Ups // Mount Electrial Gear for Chiller Controls | 10d | 2026-11-12 | 2026-11-25 | DH.1300A-EQP-66 | 34d |
| DH.1300A-EQP-68 |  | Gallery 1302 - D130/Line-Ups // Set CDU-DH1300- 08 | 1d | 2026-11-13 | 2026-11-13 | DH.1300A-EQP-63, DH.1300A-EQP-67 | 34d |
| DH.1300A-EQP-64 |  | Gallery 1302 - D130/Line-Ups // Condensate connections to Floor Drains | 10d | 2026-11-16 | 2026-11-30 | DH.1300A-EQP-68, DH.1300A-EQP-67, DH.1300A-EQP-63 | 34d |
| DH.1300A-EQP-71 |  | Gallery 1302 - D130/Line-Ups // Mechanical Connections to CRAHU Units | 10d | 2026-11-18 | 2026-12-02 | DH.1300A-EQP-63 SS+5d | 32d |
| DH.1300A-EQP-77 |  | Gallery 1302 - D130/Line-Ups // Pull Feeder and Branch circuits to MIsc equipment and Chiller controls | 10d | 2026-11-18 | 2026-12-02 | DH.1300A-EQP-72 SS+4d | 34d |
| DH.1300A-EQP-73 |  | Gallery 1302 - D130/Line-Ups // Pull Cable Tray Feed from MOD to CRAHU's | 5d | 2026-11-19 | 2026-11-25 | DH.1300A-EQP-70 | 40d |
| DH.1300A-EQP-76 |  | Gallery 1302 - D130/Line-Ups // Terminate CRAHU Electrical Connections | 5d | 2026-11-23 | 2026-11-30 | DH.1300A-EQP-70, DH.1300A-EQP-73 SS+2d | 40d |
| DH.1300A-EQP-79 |  | Gallery 1302 - D130/Line-Ups // Teminate all Misc Equipment and Chiller Controls | 10d | 2026-11-24 | 2026-12-08 | DH.1300A-EQP-77 SS+4d | 34d |
| DH.1300A-EQP-74 |  | Gallery 1302 - D130/Line-Ups // Condensate connections to Floor Drains | 10d | 2026-11-25 | 2026-12-09 | DH.1300A-EQP-64 SS+5d, DH.1300A-EQP-71 SS+5d | 32d |
| DH.1300A-EQP-75 |  | Gallery 1302 - D130/Line-Ups // Terminate Mod Panels | 1d | 2026-11-27 | 2026-11-27 | DH.1300A-EQP-69, DH.1300A-EQP-70, DH.1300A-EQP-73 | 41d |
| DH.1300A-EQP-80 |  | Gallery 1302 - D130/Line-Ups // Electrical Gear FOD Inspection Pre-Start Up | 2d | 2026-12-09 | 2026-12-10 | DH.1300A-EQP-75, DH.1300A-EQP-79, DH.1300A-EQP-76 | 34d |
| DH.1300A-EQP-78 |  | Gallery 1302 - D130/Line-Ups // Mechanical Gear FOD Inspection Pre-Start Up | 3d | 2026-12-10 | 2026-12-14 | DH.1300A-EQP-71, DH.1300A-EQP-64, DH.1300A-EQP-74, DH.1300A-EQP-63 | 32d |
|  | 5 | **E130** |  | 2026-11-10 | 2026-12-14 |  |  |
| DH.1300A-EQP-81 |  | Gallery 1302 - D130/Line-Ups // Set CRAH-DH1300- 09 | 1d | 2026-11-10 | 2026-11-10 | DH.1300A-EQP-63 SS | -8d |
| DH.1300A-EQP-83 |  | Gallery 1302 - D130/Line-Ups // Set CRAH-DH1300- 10 | 1d | 2026-11-10 | 2026-11-10 | DH.1300A-EQP-81 SS | -8d |
| DH.1300A-EQP-85 |  | Gallery 1302 - D130/Line-Ups // Set MOD-E130-01 | 1d | 2026-11-10 | 2026-11-10 | DH.1300A-EQP-83 FF | 34d |
| DH.1300A-EQP-86 |  | Gallery 1302 - D130/Line-Ups // Set MOD-E130-02 | 1d | 2026-11-10 | 2026-11-10 | DH.1300A-EQP-85 SS | 34d |
| DH.1300A-EQP-87 |  | Gallery 1302 - D130/Line-Ups // Set CDU-DH1300- 09 | 1d | 2026-11-12 | 2026-11-12 | DH.1300A-EQP-81 | 34d |
| DH.1300A-EQP-89 |  | Gallery 1302 - D130/Line-Ups // Pull Feeder from SWD to MOD | 1d | 2026-11-12 | 2026-11-12 | DH.1300A-EQP-86 | 50d |
| DH.1300A-EQP-90 |  | Gallery 1302 - D130/Line-Ups // Pull Cable Tray Feed from MOD to CRAHU's | 5d | 2026-11-12 | 2026-11-18 | DH.1300A-EQP-86 | 40d |
| DH.1300A-EQP-92 |  | Gallery 1302 - D130/Line-Ups // Mount Electrial Gear for Chiller Controls | 10d | 2026-11-12 | 2026-11-25 | DH.1300A-EQP-86 | 34d |
| DH.1300A-EQP-88 |  | Gallery 1302 - D130/Line-Ups // Set CDU-DH1300- 10 | 1d | 2026-11-13 | 2026-11-13 | DH.1300A-EQP-83, DH.1300A-EQP-87 | 34d |
| DH.1300A-EQP-84 |  | Gallery 1302 - D130/Line-Ups // Condensate connections to Floor Drains | 10d | 2026-11-16 | 2026-11-30 | DH.1300A-EQP-88, DH.1300A-EQP-87, DH.1300A-EQP-83 | 34d |
| DH.1300A-EQP-91 |  | Gallery 1302 - D130/Line-Ups // Mechanical Connections to CRAHU Units | 10d | 2026-11-18 | 2026-12-02 | DH.1300A-EQP-83 SS+5d | 32d |
| DH.1300A-EQP-97 |  | Gallery 1302 - D130/Line-Ups // Pull Feeder and Branch circuits to MIsc equipment and Chiller controls | 10d | 2026-11-18 | 2026-12-02 | DH.1300A-EQP-92 SS+4d | 34d |
| DH.1300A-EQP-93 |  | Gallery 1302 - D130/Line-Ups // Pull Cable Tray Feed from MOD to CRAHU's | 5d | 2026-11-19 | 2026-11-25 | DH.1300A-EQP-90 | 40d |
| DH.1300A-EQP-96 |  | Gallery 1302 - D130/Line-Ups // Terminate CRAHU Electrical Connections | 5d | 2026-11-23 | 2026-11-30 | DH.1300A-EQP-90, DH.1300A-EQP-93 SS+2d | 40d |
| DH.1300A-EQP-99 |  | Gallery 1302 - D130/Line-Ups // Teminate all Misc Equipment and Chiller Controls | 10d | 2026-11-24 | 2026-12-08 | DH.1300A-EQP-97 SS+4d | 34d |
| DH.1300A-EQP-94 |  | Gallery 1302 - D130/Line-Ups // Condensate connections to Floor Drains | 10d | 2026-11-25 | 2026-12-09 | DH.1300A-EQP-84 SS+5d, DH.1300A-EQP-91 SS+5d | 32d |
| DH.1300A-EQP-95 |  | Gallery 1302 - D130/Line-Ups // Terminate Mod Panels | 1d | 2026-11-27 | 2026-11-27 | DH.1300A-EQP-89, DH.1300A-EQP-90, DH.1300A-EQP-93 | 41d |
| DH.1300A-EQP-100 |  | Gallery 1302 - D130/Line-Ups // Electrical Gear FOD Inspection Pre-Start Up | 2d | 2026-12-09 | 2026-12-10 | DH.1300A-EQP-95, DH.1300A-EQP-99, DH.1300A-EQP-96 | 34d |
| DH.1300A-EQP-98 |  | Gallery 1302 - D130/Line-Ups // Mechanical Gear FOD Inspection Pre-Start Up | 3d | 2026-12-10 | 2026-12-14 | DH.1300A-EQP-91, DH.1300A-EQP-84, DH.1300A-EQP-94, DH.1300A-EQP-83 | 32d |
|  | 6 | **F130** |  | 2026-11-10 | 2026-12-14 |  |  |
| DH.1300A-EQP-101 |  | Gallery 1302 - F130/Line-Ups // Set CRAH-DH1300- 11 | 1d | 2026-11-10 | 2026-11-10 | DH.1300A-EQP-83 SS | -8d |
| DH.1300A-EQP-103 |  | Gallery 1302 - F130/Line-Ups // Set CRAH-DH1300- 12 | 1d | 2026-11-10 | 2026-11-10 | DH.1300A-EQP-101 SS | -8d |
| DH.1300A-EQP-105 |  | Gallery 1302 - F130/Line-Ups // Set MOD-F130-01 | 1d | 2026-11-10 | 2026-11-10 | DH.1300A-EQP-103 FF | 34d |
| DH.1300A-EQP-106 |  | Gallery 1302 - F130/Line-Ups // Set MOD-F130-02 | 1d | 2026-11-10 | 2026-11-10 | DH.1300A-EQP-105 SS | 34d |
| DH.1300A-EQP-107 |  | Gallery 1302 - F130/Line-Ups // Set CDU-DH1300- 11 | 1d | 2026-11-12 | 2026-11-12 | DH.1300A-EQP-101 | 34d |
| DH.1300A-EQP-109 |  | Gallery 1302 - F130/Line-Ups // Pull Feeder from SWD to MOD | 1d | 2026-11-12 | 2026-11-12 | DH.1300A-EQP-106 | 50d |
| DH.1300A-EQP-110 |  | Gallery 1302 - F130/Line-Ups // Pull Cable Tray Feed from MOD to CRAHU's | 5d | 2026-11-12 | 2026-11-18 | DH.1300A-EQP-106 | 40d |
| DH.1300A-EQP-112 |  | Gallery 1302 - F130/Line-Ups // Mount Electrial Gear for Chiller Controls | 10d | 2026-11-12 | 2026-11-25 | DH.1300A-EQP-106 | 34d |
| DH.1300A-EQP-108 |  | Gallery 1302 - F130/Line-Ups // Set CDU-DH1300- 12 | 1d | 2026-11-13 | 2026-11-13 | DH.1300A-EQP-103, DH.1300A-EQP-107 | 34d |
| DH.1300A-EQP-104 |  | Gallery 1302 - F130/Line-Ups // Condensate connections to Floor Drains | 10d | 2026-11-16 | 2026-11-30 | DH.1300A-EQP-108, DH.1300A-EQP-107, DH.1300A-EQP-103 | 34d |
| DH.1300A-EQP-111 |  | Gallery 1302 - F130/Line-Ups // Mechanical Connections to CRAHU Units | 10d | 2026-11-18 | 2026-12-02 | DH.1300A-EQP-103 SS+5d | 32d |
| DH.1300A-EQP-117 |  | Gallery 1302 - F130/Line-Ups // Pull Feeder and Branch circuits to MIsc equipment and Chiller controls | 10d | 2026-11-18 | 2026-12-02 | DH.1300A-EQP-112 SS+4d | 34d |
| DH.1300A-EQP-113 |  | Gallery 1302 - F130/Line-Ups // Pull Cable Tray Feed from MOD to CRAHU's | 5d | 2026-11-19 | 2026-11-25 | DH.1300A-EQP-110 | 40d |
| DH.1300A-EQP-116 |  | Gallery 1302 - F130/Line-Ups // Terminate CRAHU Electrical Connections | 5d | 2026-11-23 | 2026-11-30 | DH.1300A-EQP-110, DH.1300A-EQP-113 SS+2d | 40d |
| DH.1300A-EQP-119 |  | Gallery 1302 - F130/Line-Ups // Teminate all Misc Equipment and Chiller Controls | 10d | 2026-11-24 | 2026-12-08 | DH.1300A-EQP-117 SS+4d | 34d |
| DH.1300A-EQP-114 |  | Gallery 1302 - F130/Line-Ups // Condensate connections to Floor Drains | 10d | 2026-11-25 | 2026-12-09 | DH.1300A-EQP-104 SS+5d, DH.1300A-EQP-111 SS+5d | 32d |
| DH.1300A-EQP-115 |  | Gallery 1302 - F130/Line-Ups // Terminate Mod Panels | 1d | 2026-11-27 | 2026-11-27 | DH.1300A-EQP-109, DH.1300A-EQP-110, DH.1300A-EQP-113 | 41d |
| DH.1300A-EQP-120 |  | Gallery 1302 - F130/Line-Ups // Electrical Gear FOD Inspection Pre-Start Up | 2d | 2026-12-09 | 2026-12-10 | DH.1300A-EQP-115, DH.1300A-EQP-119, DH.1300A-EQP-116 | 34d |
| DH.1300A-EQP-118 |  | Gallery 1302 - F130/Line-Ups // Mechanical Gear FOD Inspection Pre-Start Up | 3d | 2026-12-10 | 2026-12-14 | DH.1300A-EQP-111, DH.1300A-EQP-104, DH.1300A-EQP-114, DH.1300A-EQP-103 | 32d |
|  | 7 | **G130** |  | 2026-11-12 | 2026-12-15 |  |  |
| DH.1300A-EQP-121 |  | Gallery 1302 - G130/Line-Ups // Set CRAH-DH1300- 13 | 1d | 2026-11-12 | 2026-11-12 | DH.1300A-EQP-103 | -8d |
| DH.1300A-EQP-123 |  | Gallery 1302 - G130/Line-Ups // Set CRAH-DH1300- 14 | 1d | 2026-11-12 | 2026-11-12 | DH.1300A-EQP-121 SS | -8d |
| DH.1300A-EQP-125 |  | Gallery 1302 - G130/Line-Ups // Set MOD-G130-01 | 1d | 2026-11-12 | 2026-11-12 | DH.1300A-EQP-123 FF | 33d |
| DH.1300A-EQP-126 |  | Gallery 1302 - G130/Line-Ups // Set MOD-G130-02 | 1d | 2026-11-12 | 2026-11-12 | DH.1300A-EQP-125 SS | 33d |
| DH.1300A-EQP-127 |  | Gallery 1302 - G130/Line-Ups // Set CDU-DH1300- 13 | 1d | 2026-11-13 | 2026-11-13 | DH.1300A-EQP-121 | 33d |
| DH.1300A-EQP-129 |  | Gallery 1302 - G130/Line-Ups // Pull Feeder from SWD to MOD | 1d | 2026-11-13 | 2026-11-13 | DH.1300A-EQP-126 | 49d |
| DH.1300A-EQP-130 |  | Gallery 1302 - G130/Line-Ups // Pull Cable Tray Feed from MOD to CRAHU's | 5d | 2026-11-13 | 2026-11-19 | DH.1300A-EQP-126 | 39d |
| DH.1300A-EQP-132 |  | Gallery 1302 - G130/Line-Ups // Mount Electrial Gear for Chiller Controls | 10d | 2026-11-13 | 2026-11-27 | DH.1300A-EQP-126 | 33d |
| DH.1300A-EQP-128 |  | Gallery 1302 - G130/Line-Ups // Set CDU-DH1300- 14 | 1d | 2026-11-16 | 2026-11-16 | DH.1300A-EQP-123, DH.1300A-EQP-127 | 33d |
| DH.1300A-EQP-124 |  | Gallery 1302 - G130/Line-Ups // Condensate connections to Floor Drains | 10d | 2026-11-17 | 2026-12-01 | DH.1300A-EQP-128, DH.1300A-EQP-127, DH.1300A-EQP-123 | 33d |

| ID | WBS | Task | Duration | Start | Finish | Predecessors | Total float |
| --- | --- | --- | --- | --- | --- | --- | --- |
| DH.1300A-EQP-131 |  | Gallery 1302 - G130/Line-Ups // Mechanical Connections to CRAHU Units | 10d | 2026-11-19 | 2026-12-03 | DH.1300A-EQP-123 SS+5d | 31d |
| DH.1300A-EQP-137 |  | Gallery 1302 - G130/Line-Ups // Pull Feeder and Branch circuits to MIsc equipment and Chiller controls | 10d | 2026-11-19 | 2026-12-03 | DH.1300A-EQP-132 SS+4d | 33d |
| DH.1300A-EQP-133 |  | Gallery 1302 - G130/Line-Ups // Pull Cable Tray Feed from MOD to CRAHU's | 5d | 2026-11-20 | 2026-11-27 | DH.1300A-EQP-130 | 39d |
| DH.1300A-EQP-136 |  | Gallery 1302 - G130/Line-Ups // Terminate CRAHU Electrical Connections | 5d | 2026-11-24 | 2026-12-01 | DH.1300A-EQP-130, DH.1300A-EQP-133 SS+2d | 39d |
| DH.1300A-EQP-139 |  | Gallery 1302 - G130/Line-Ups // Teminate all Misc Equipment and Chiller Controls | 10d | 2026-11-25 | 2026-12-09 | DH.1300A-EQP-137 SS+4d | 33d |
| DH.1300A-EQP-134 |  | Gallery 1302 - G130/Line-Ups // Condensate connections to Floor Drains | 10d | 2026-11-27 | 2026-12-10 | DH.1300A-EQP-124 SS+5d, DH.1300A-EQP-131 SS+5d | 31d |
| DH.1300A-EQP-135 |  | Gallery 1302 - G130/Line-Ups // Terminate Mod Panels | 1d | 2026-11-30 | 2026-11-30 | DH.1300A-EQP-129, DH.1300A-EQP-130, DH.1300A-EQP-133 | 40d |
| DH.1300A-EQP-140 |  | Gallery 1302 - G130/Line-Ups // Electrical Gear FOD Inspection Pre-Start Up | 2d | 2026-12-10 | 2026-12-11 | DH.1300A-EQP-135, DH.1300A-EQP-139, DH.1300A-EQP-136 | 33d |
| DH.1300A-EQP-138 |  | Gallery 1302 - G130/Line-Ups // Mechanical Gear FOD Inspection Pre-Start Up | 3d | 2026-12-11 | 2026-12-15 | DH.1300A-EQP-131, DH.1300A-EQP-124, DH.1300A-EQP-134, DH.1300A-EQP-123 | 31d |
|  | 8 | **H130** |  | 2026-11-12 | 2026-12-15 |  |  |
| DH.1300A-EQP-141 |  | Gallery 1302 - H130/Line-Ups // Set CRAH-DH1300- 15 | 1d | 2026-11-12 | 2026-11-12 | DH.1300A-EQP-123 SS | -8d |
| DH.1300A-EQP-143 |  | Gallery 1302 - H130/Line-Ups // Set CRAH-DH1300- 16 | 1d | 2026-11-12 | 2026-11-12 | DH.1300A-EQP-141 SS | -8d |
| DH.1300A-EQP-145 |  | Gallery 1302 - H130/Line-Ups // Set MOD-H130-01 | 1d | 2026-11-12 | 2026-11-12 | DH.1300A-EQP-143 FF | 33d |
| DH.1300A-EQP-146 |  | Gallery 1302 - H130/Line-Ups // Set MOD-H130-02 | 1d | 2026-11-12 | 2026-11-12 | DH.1300A-EQP-145 SS | 33d |
| DH.1300A-EQP-147 |  | Gallery 1302 - H130/Line-Ups // Set CDU-DH1300- 15 | 1d | 2026-11-13 | 2026-11-13 | DH.1300A-EQP-141 | 33d |
| DH.1300A-EQP-149 |  | Gallery 1302 - H130/Line-Ups // Pull Feeder from SWD to MOD | 1d | 2026-11-13 | 2026-11-13 | DH.1300A-EQP-146 | 49d |
| DH.1300A-EQP-150 |  | Gallery 1302 - H130/Line-Ups // Pull Cable Tray Feed from MOD to CRAHU's | 5d | 2026-11-13 | 2026-11-19 | DH.1300A-EQP-146 | 39d |
| DH.1300A-EQP-152 |  | Gallery 1302 - H130/Line-Ups // Mount Electrial Gear for Chiller Controls | 10d | 2026-11-13 | 2026-11-27 | DH.1300A-EQP-146 | 33d |
| DH.1300A-EQP-148 |  | Gallery 1302 - H130/Line-Ups // Set CDU-DH1300- 16 | 1d | 2026-11-16 | 2026-11-16 | DH.1300A-EQP-143, DH.1300A-EQP-147 | 33d |
| DH.1300A-EQP-144 |  | Gallery 1302 - H130/Line-Ups // Condensate connections to Floor Drains | 10d | 2026-11-17 | 2026-12-01 | DH.1300A-EQP-148, DH.1300A-EQP-147, DH.1300A-EQP-143 | 33d |
| DH.1300A-EQP-151 |  | Gallery 1302 - H130/Line-Ups // Mechanical Connections to CRAHU Units | 10d | 2026-11-19 | 2026-12-03 | DH.1300A-EQP-143 SS+5d | 31d |
| DH.1300A-EQP-157 |  | Gallery 1302 - H130/Line-Ups // Pull Feeder and Branch circuits to MIsc equipment and Chiller controls | 10d | 2026-11-19 | 2026-12-03 | DH.1300A-EQP-152 SS+4d | 33d |
| DH.1300A-EQP-153 |  | Gallery 1302 - H130/Line-Ups // Pull Cable Tray Feed from MOD to CRAHU's | 5d | 2026-11-20 | 2026-11-27 | DH.1300A-EQP-150 | 39d |
| DH.1300A-EQP-156 |  | Gallery 1302 - H130/Line-Ups // Terminate CRAHU Electrical Connections | 5d | 2026-11-24 | 2026-12-01 | DH.1300A-EQP-150, DH.1300A-EQP-153 SS+2d | 39d |
| DH.1300A-EQP-159 |  | Gallery 1302 - H130/Line-Ups // Teminate all Misc Equipment and Chiller Controls | 10d | 2026-11-25 | 2026-12-09 | DH.1300A-EQP-157 SS+4d | 33d |
| DH.1300A-EQP-154 |  | Gallery 1302 - H130/Line-Ups // Condensate connections to Floor Drains | 10d | 2026-11-27 | 2026-12-10 | DH.1300A-EQP-144 SS+5d, DH.1300A-EQP-151 SS+5d | 31d |
| DH.1300A-EQP-155 |  | Gallery 1302 - H130/Line-Ups // Terminate Mod Panels | 1d | 2026-11-30 | 2026-11-30 | DH.1300A-EQP-149, DH.1300A-EQP-150, DH.1300A-EQP-153 | 40d |
| DH.1300A-EQP-160 |  | Gallery 1302 - H130/Line-Ups // Electrical Gear FOD Inspection Pre-Start Up | 2d | 2026-12-10 | 2026-12-11 | DH.1300A-EQP-155, DH.1300A-EQP-159, DH.1300A-EQP-156 | 33d |
| DH.1300A-EQP-158 |  | Gallery 1302 - H130/Line-Ups // Mechanical Gear FOD Inspection Pre-Start Up | 3d | 2026-12-11 | 2026-12-15 | DH.1300A-EQP-151, DH.1300A-EQP-144, DH.1300A-EQP-154, DH.1300A-EQP-143 | 31d |
|  | 9 | **J130** |  | 2026-11-12 | 2026-12-15 |  |  |
| DH.1300A-EQP-161 |  | Gallery 1302 - J130/Line-Ups // Set CRAH-DH1300- 17 | 1d | 2026-11-12 | 2026-11-12 | DH.1300A-EQP-143 SS | -8d |
| DH.1300A-EQP-163 |  | Gallery 1302 - J130/Line-Ups // Set CRAH-DH1300- 18 | 1d | 2026-11-12 | 2026-11-12 | DH.1300A-EQP-161 SS | -8d |
| DH.1300A-EQP-165 |  | Gallery 1302 - J130/Line-Ups // Set MOD-J130-01 | 1d | 2026-11-12 | 2026-11-12 | DH.1300A-EQP-163 FF | 33d |
| DH.1300A-EQP-166 |  | Gallery 1302 - J130/Line-Ups // Set MOD-J130-02 | 1d | 2026-11-12 | 2026-11-12 | DH.1300A-EQP-165 SS | 33d |
| DH.1300A-EQP-167 |  | Gallery 1302 - J130/Line-Ups // Set CDU-DH1300- 17 | 1d | 2026-11-13 | 2026-11-13 | DH.1300A-EQP-161 | 33d |
| DH.1300A-EQP-169 |  | Gallery 1302 - J130/Line-Ups // Pull Feeder from SWD to MOD | 1d | 2026-11-13 | 2026-11-13 | DH.1300A-EQP-166 | 49d |
| DH.1300A-EQP-170 |  | Gallery 1302 - J130/Line-Ups // Pull Cable Tray Feed from MOD to CRAHU's | 5d | 2026-11-13 | 2026-11-19 | DH.1300A-EQP-166 | 39d |
| DH.1300A-EQP-172 |  | Gallery 1302 - J130/Line-Ups // Mount Electrial Gear for Chiller Controls | 10d | 2026-11-13 | 2026-11-27 | DH.1300A-EQP-166 | 33d |
| DH.1300A-EQP-168 |  | Gallery 1302 - J130/Line-Ups // Set CDU-DH1300- 18 | 1d | 2026-11-16 | 2026-11-16 | DH.1300A-EQP-163, DH.1300A-EQP-167 | 33d |
| DH.1300A-EQP-164 |  | Gallery 1302 - J130/Line-Ups // Condensate connections to Floor Drains | 10d | 2026-11-17 | 2026-12-01 | DH.1300A-EQP-168, DH.1300A-EQP-167, DH.1300A-EQP-163 | 33d |
| DH.1300A-EQP-171 |  | Gallery 1302 - J130/Line-Ups // Mechanical Connections to CRAHU Units | 10d | 2026-11-19 | 2026-12-03 | DH.1300A-EQP-163 SS+5d | 31d |
| DH.1300A-EQP-177 |  | Gallery 1302 - J130/Line-Ups // Pull Feeder and Branch circuits to MIsc equipment and Chiller controls | 10d | 2026-11-19 | 2026-12-03 | DH.1300A-EQP-172 SS+4d | 33d |
| DH.1300A-EQP-173 |  | Gallery 1302 - J130/Line-Ups // Pull Cable Tray Feed from MOD to CRAHU's | 5d | 2026-11-20 | 2026-11-27 | DH.1300A-EQP-170 | 39d |
| DH.1300A-EQP-176 |  | Gallery 1302 - J130/Line-Ups // Terminate CRAHU Electrical Connections | 5d | 2026-11-24 | 2026-12-01 | DH.1300A-EQP-170, DH.1300A-EQP-173 SS+2d | 39d |
| DH.1300A-EQP-179 |  | Gallery 1302 - J130/Line-Ups // Teminate all Misc Equipment and Chiller Controls | 10d | 2026-11-25 | 2026-12-09 | DH.1300A-EQP-177 SS+4d | 33d |
| DH.1300A-EQP-174 |  | Gallery 1302 - J130/Line-Ups // Condensate connections to Floor Drains | 10d | 2026-11-27 | 2026-12-10 | DH.1300A-EQP-164 SS+5d, DH.1300A-EQP-171 SS+5d | 31d |
| DH.1300A-EQP-175 |  | Gallery 1302 - J130/Line-Ups // Terminate Mod Panels | 1d | 2026-11-30 | 2026-11-30 | DH.1300A-EQP-169, DH.1300A-EQP-170, DH.1300A-EQP-173 | 40d |
| DH.1300A-EQP-180 |  | Gallery 1302 - J130/Line-Ups // Electrical Gear FOD Inspection Pre-Start Up | 2d | 2026-12-10 | 2026-12-11 | DH.1300A-EQP-175, DH.1300A-EQP-179, DH.1300A-EQP-176 | 33d |
| DH.1300A-EQP-178 |  | Gallery 1302 - J130/Line-Ups // Mechanical Gear FOD Inspection Pre-Start Up | 3d | 2026-12-11 | 2026-12-15 | DH.1300A-EQP-171, DH.1300A-EQP-164, DH.1300A-EQP-174, DH.1300A-EQP-163 | 31d |
|  | 10 | **K130** |  | 2026-11-13 | 2026-12-16 |  |  |
| DH.1300A-EQP-181 |  | Gallery 1302 - K130/Line-Ups // Set CRAH-DH1300- 19 | 1d | 2026-11-13 | 2026-11-13 | DH.1300A-EQP-163 | -8d |
| DH.1300A-EQP-183 |  | Gallery 1302 - K130/Line-Ups // Set CRAH-DH1300- 20 | 1d | 2026-11-13 | 2026-11-13 | DH.1300A-EQP-181 SS | -8d |
| DH.1300A-EQP-185 |  | Gallery 1302 - K130/Line-Ups // Set MOD-K130-01 | 1d | 2026-11-13 | 2026-11-13 | DH.1300A-EQP-183 FF | 32d |
| DH.1300A-EQP-186 |  | Gallery 1302 - K130/Line-Ups // Set MOD-K130-02 | 1d | 2026-11-13 | 2026-11-13 | DH.1300A-EQP-185 SS | 32d |
| DH.1300A-EQP-187 |  | Gallery 1302 - K130/Line-Ups // Set CDU-DH1300- 19 | 1d | 2026-11-16 | 2026-11-16 | DH.1300A-EQP-181 | 32d |
| DH.1300A-EQP-189 |  | Gallery 1302 - K130/Line-Ups // Pull Feeder from SWD to MOD | 1d | 2026-11-16 | 2026-11-16 | DH.1300A-EQP-186 | 48d |
| DH.1300A-EQP-190 |  | Gallery 1302 - K130/Line-Ups // Pull Cable Tray Feed from MOD to CRAHU's | 5d | 2026-11-16 | 2026-11-20 | DH.1300A-EQP-186 | 38d |
| DH.1300A-EQP-192 |  | Gallery 1302 - K130/Line-Ups // Mount Electrial Gear for Chiller Controls | 10d | 2026-11-16 | 2026-11-30 | DH.1300A-EQP-186 | 32d |
| DH.1300A-EQP-188 |  | Gallery 1302 - K130/Line-Ups // Set CDU-DH1300- 20 | 1d | 2026-11-17 | 2026-11-17 | DH.1300A-EQP-183, DH.1300A-EQP-187 | 32d |
| DH.1300A-EQP-184 |  | Gallery 1302 - K130/Line-Ups // Condensate connections to Floor Drains | 10d | 2026-11-18 | 2026-12-02 | DH.1300A-EQP-188, DH.1300A-EQP-187, DH.1300A-EQP-183 | 32d |
| DH.1300A-EQP-191 |  | Gallery 1302 - K130/Line-Ups // Mechanical Connections to CRAHU Units | 10d | 2026-11-20 | 2026-12-04 | DH.1300A-EQP-183 SS+5d | 30d |
| DH.1300A-EQP-197 |  | Gallery 1302 - K130/Line-Ups // Pull Feeder and Branch circuits to MIsc equipment and Chiller controls | 10d | 2026-11-20 | 2026-12-04 | DH.1300A-EQP-192 SS+4d | 32d |
| DH.1300A-EQP-193 |  | Gallery 1302 - K130/Line-Ups // Pull Cable Tray Feed from MOD to CRAHU's | 5d | 2026-11-23 | 2026-11-30 | DH.1300A-EQP-190 | 38d |
| DH.1300A-EQP-196 |  | Gallery 1302 - K130/Line-Ups // Terminate CRAHU Electrical Connections | 5d | 2026-11-25 | 2026-12-02 | DH.1300A-EQP-190, DH.1300A-EQP-193 SS+2d | 38d |
| DH.1300A-EQP-199 |  | Gallery 1302 - K130/Line-Ups // Teminate all Misc Equipment and Chiller Controls | 10d | 2026-11-27 | 2026-12-10 | DH.1300A-EQP-197 SS+4d | 32d |
| DH.1300A-EQP-194 |  | Gallery 1302 - K130/Line-Ups // Condensate connections to Floor Drains | 10d | 2026-11-30 | 2026-12-11 | DH.1300A-EQP-184 SS+5d, DH.1300A-EQP-191 SS+5d | 30d |
| DH.1300A-EQP-195 |  | Gallery 1302 - K130/Line-Ups // Terminate Mod Panels | 1d | 2026-12-01 | 2026-12-01 | DH.1300A-EQP-189, DH.1300A-EQP-190, DH.1300A-EQP-193 | 39d |
| DH.1300A-EQP-200 |  | Gallery 1302 - K130/Line-Ups // Electrical Gear FOD Inspection Pre-Start Up | 2d | 2026-12-11 | 2026-12-14 | DH.1300A-EQP-195, DH.1300A-EQP-199, DH.1300A-EQP-196 | 32d |
| DH.1300A-EQP-198 |  | Gallery 1302 - K130/Line-Ups // Mechanical Gear FOD Inspection Pre-Start Up | 3d | 2026-12-14 | 2026-12-16 | DH.1300A-EQP-191, DH.1300A-EQP-184, DH.1300A-EQP-194, DH.1300A-EQP-183 | 30d |
|  | 11 | **R130** |  | 2026-11-13 | 2026-12-14 |  |  |

| ID | WBS | Task | Duration | Start | Finish | Predecessors | Complete | Total float |
| --- | --- | --- | --- | --- | --- | --- | --- | --- |
| DH.1300A-EQP-201 |  | Gallery 1302 - R130/Line-Ups // Set CRAH-DH1300- 21 | 1d | 2026-11-13 | 2026-11-13 | DH.1300A-EQP-183 SS |  | -8d |
| DH.1300A-EQP-203 |  | Gallery 1302 - R130/Line-Ups // Set CRAH-DH1300- 22 | 1d | 2026-11-13 | 2026-11-13 | DH.1300A-EQP-201 SS |  | -8d |
| DH.1300A-EQP-205 |  | Gallery 1302 - R130/Line-Ups // Set MOD-R130-01 | 1d | 2026-11-13 | 2026-11-13 | DH.1300A-EQP-203 FF |  | -8d |
| DH.1300A-EQP-206 |  | Gallery 1302 - R130/Line-Ups // Set MOD-R130-02 | 1d | 2026-11-13 | 2026-11-13 | DH.1300A-EQP-205 SS |  | -8d |
| DH.1300A-EQP-207 |  | Gallery 1302 - R130/Line-Ups // Set CDU-DH1300- 21 | 1d | 2026-11-16 | 2026-11-16 | DH.1300A-EQP-201 |  | -8d |
| DH.1300A-EQP-210 |  | Gallery 1302 - R130/Line-Ups // Pull Cable Tray Feed from MOD to CRAHU's | 5d | 2026-11-16 | 2026-11-20 | DH.1300A-EQP-206 |  | -2d |
| DH.1300A-EQP-211 |  | Gallery 1302 - R130/Line-Ups // Mechanical Connections to CRAHU Units | 10d | 2026-11-16 | 2026-11-30 | DH.1300A-EQP-203 |  | -6d |
| DH.1300A-EQP-212 |  | Gallery 1302 - R130/Line-Ups // Mount Electrial Gear for Chiller Controls | 10d | 2026-11-16 | 2026-11-30 | DH.1300A-EQP-206 |  | -8d |
| DH.1300A-EQP-208 |  | Gallery 1302 - R130/Line-Ups // Set CDU-DH1300- 22 | 1d | 2026-11-17 | 2026-11-17 | DH.1300A-EQP-203, DH.1300A-EQP-207 |  | -8d |
| DH.1300A-EQP-204 |  | Gallery 1302 - R130/Line-Ups // Condensate connections to Floor Drains | 10d | 2026-11-18 | 2026-12-02 | DH.1300A-EQP-208, DH.1300A-EQP-207, DH.1300A-EQP-203 |  | -8d |
| DH.1300A-EQP-221 |  | Gallery 1302 - R130/Line-Ups // Set SWD-R130 | 1d | 2026-11-18 | 2026-11-18 | DH.1300A-EQP-208 |  | 3d |
| DH.1300A-EQP-222 |  | Gallery 1302 - R130/Line-Ups // Set SWD-TIE-R130 | 1d | 2026-11-19 | 2026-11-19 | DH.1300A-EQP-221 |  | 3d |
| DH.1300A-EQP-209 |  | Gallery 1302 - R130/Line-Ups // Pull Feeder from SWD to MOD | 1d | 2026-11-20 | 2026-11-20 | DH.1300A-EQP-206, DH.1300A-EQP-222 |  | 3d |
| DH.1300A-EQP-217 |  | Gallery 1302 - R130/Line-Ups // Pull Feeder and Branch circuits to MIsc equipment and Chiller controls | 10d | 2026-11-20 | 2026-12-04 | DH.1300A-EQP-212 SS+4d |  | -8d |
| DH.1300A-EQP-213 |  | Gallery 1302 - R130/Line-Ups // Pull Cable Tray Feed from MOD to CRAHU's | 5d | 2026-11-23 | 2026-11-30 | DH.1300A-EQP-210 |  | -2d |
| DH.1300A-EQP-214 |  | Gallery 1302 - R130/Line-Ups // Condensate connections to Floor Drains | 10d | 2026-11-25 | 2026-12-09 | DH.1300A-EQP-204 SS+5d, DH.1300A-EQP-211 SS+5d |  | -8d |
| DH.1300A-EQP-216 |  | Gallery 1302 - R130/Line-Ups // Terminate CRAHU Electrical Connections | 5d | 2026-11-25 | 2026-12-02 | DH.1300A-EQP-210, DH.1300A-EQP-213 SS+2d |  | -2d |
| DH.1300A-EQP-219 |  | Gallery 1302 - R130/Line-Ups // Teminate all Misc Equipment and Chiller Controls | 10d | 2026-11-27 | 2026-12-10 | DH.1300A-EQP-217 SS+4d |  | -8d |
| DH.1300A-EQP-215 |  | Gallery 1302 - R130/Line-Ups // Terminate Mod Panels | 1d | 2026-12-01 | 2026-12-01 | DH.1300A-EQP-209, DH.1300A-EQP-210, DH.1300A-EQP-213 |  | -1d |
| DH.1300A-EQP-218 |  | Gallery 1302 - R130/Line-Ups // Mechanical Gear FOD Inspection Pre-Start Up | 3d | 2026-12-10 | 2026-12-14 | DH.1300A-EQP-211, DH.1300A-EQP-204, DH.1300A-EQP-214, DH.1300A-EQP-203 |  | -8d |
| DH.1300A-EQP-220 |  | Gallery 1302 - R130/Line-Ups // Electrical Gear FOD Inspection Pre-Start Up | 2d | 2026-12-11 | 2026-12-14 | DH.1300A-EQP-215, DH.1300A-EQP-219, DH.1300A-EQP-216 |  | -8d |
|  | 12 | **Equipment Connections** |  | 2026-11-23 | 2026-12-14 |  |  |  |
|  | 1 | **CRAH** |  | 2026-11-23 | 2026-12-03 |  |  |  |
| DH1300.MG.A110.8687 |  | Gallery 1302 // DH 1300 / Elec Room // CRAH Duct Work Termination | 2d | 2026-11-23 | 2026-11-24 | DH.1300A-EQP-210 |  | -1d |
| DH1300.MG.A110.8686 |  | Gallery 1302 // DH 1300 / Elec Room // CRAH Chilled Water | 2d | 2026-11-25 | 2026-11-27 | DH1300.MG.A110.8687 |  | -1d |
| DH1300.MG.A110.8684 |  | Gallery 1302 // DH 1300 / Elec Room // CRAH Power Connections | 2d | 2026-11-30 | 2026-12-01 | DH1300.MG.A110.8686 |  | -1d |
| DH1300.MG.A110.8685 |  | Gallery 1302 // DH 1300 / Elec Room // CRAH LV Connections | 2d | 2026-12-02 | 2026-12-03 | DH1300.MG.A110.8684 |  | -1d |
|  | 2 | **CDU** |  | 2026-12-11 | 2026-12-14 |  |  |  |
| DH1300.MG.A110.8688 |  | Gallery 1302 // DH 1300 /Elec Room // CDU Power Connections | 2d | 2026-12-11 | 2026-12-14 | DH1300.MG.A110.8690 SS |  | -8d |
| DH1300.MG.A110.8689 |  | Gallery 1302 // DH 11300 / Elec Room // CDU Controls Connections | 2d | 2026-12-11 | 2026-12-14 | DH1300.MG.A110.8688 SS |  | -8d |
| DH1300.MG.A110.8690 |  | Gallery 1302 // DH 1300 / Elec Room // CDU Chilled Water Connections | 2d | 2026-12-11 | 2026-12-14 | DH.1300A-EQP-219 |  | -8d |
|  | 3 | **MOD** |  | 2026-11-23 | 2026-11-27 |  |  |  |
| DH1300.MG.A110.8691 |  | Gallery 1302 // DH 1300 / Elec Room // MOD Power Connections | 2d | 2026-11-23 | 2026-11-24 | DH.1300A-EQP-209 |  | 3d |
| DH1300.MG.A110.8692 |  | Gallery 1302 // DH 1300 / Elec Room // MOD LV Connections | 2d | 2026-11-25 | 2026-11-27 | DH1300.MG.A110.8691 |  | 3d |
|  | 4 | **Gallery 1303** |  | 2026-08-05 | 2026-12-24 |  |  |  |
|  | 1 | **Architectural** |  | 2026-08-05 | 2026-12-02 |  |  |  |
| DH.13001010 |  | DH 1300/Gallery 1303 // MEPF overhead layout | 5d | 2026-08-05 A | 2026-08-11 A | DH.1300670 SS | 100% |  |
| DH.13001000 |  | DH 1300/Gallery 1303 // Seal concrete | 2d | 2026-08-06 A | 2026-08-07 A | DH.13001010 SS | 100% |  |
| DH.13001040 |  | DH 1300/Gallery 1303 // Frame walls | 6d | 2026-09-21 A | 2026-10-07 | DH.13000.1010 |  | -8d |
| DH.13001050 |  | DH 1300/Gallery 1303 // Install Sheetrock Top Down | 6d | 2026-09-30 | 2026-10-07 | DH.13001040 SS+3d |  | -8d |
| DH.13001030 |  | DH 1300/Gallery 1303 // MEPF high overhead install | 10d | 2026-10-06 | 2026-10-20 | DH.13001050 SS+4d, DH.13001010 |  | -8d |
| DH.13001070 |  | DH 1300/Gallery 1303 // MEP rough in walls | 4d | 2026-10-13 | 2026-10-16 | DH.13001050, DH.13001090 SS, DH.13001040 |  | -8d |
| DH.13001090 |  | DH 1300/Gallery 1303 // Install Balance of Sheetrock on walls | 6d | 2026-10-13 | 2026-10-20 | DH.13001030 FF |  | -8d |
| DH.13001080 |  | DH 1300/Gallery 1303 // In wall inspection | 1d | 2026-10-19 | 2026-10-19 | DH.13001070 |  | -8d |
| DH.13001100 |  | DH 1300/Gallery 1303 // Tape and finish walls | 8d | 2026-10-20 | 2026-10-29 | DH.13001080, DH.13001090 SS+4d |  | -8d |
| B120001.3151 |  | DH 1300/Gallery 1303 // Install Overhead Cable Ladder / 36" Cable Tray - TFO | 5d | 2026-10-21 | 2026-10-27 | DH.13001030 |  | 40d |
| DH.13001110 |  | DH 1300/Gallery 1303 // Prime and Paint walls | 4d | 2026-10-26 | 2026-10-29 | DH.13001100 SS+4d |  | -6d |
| B120001.3152 |  | DH 1300/Gallery 1303 // Install Overhead HAC - TFO | 5d | 2026-10-28 | 2026-11-03 | B120001.3151 |  | 40d |
| DH.13001060 |  | DH 1300/Gallery 1303 // Install wall door frames | 2d | 2026-10-30 | 2026-11-02 | DH.13001100 |  | -8d |
| DH.13001120 |  | DH 1300/Gallery 1303 // Touch up Walls and Fianl Paint | 5d | 2026-11-03 | 2026-11-09 | DH.13001060, DH.13001110 |  | -8d |
| F.1000A.1281 |  | DH 1300/Gallery 1303 // Rough-In Security | 2d | 2026-11-04 | 2026-11-05 | DH.13001030, B120001.3152 |  | 40d |
| F.1000A.1475 |  | DH 1300/Gallery 1303 // BMS & EPMS Rough-In | 2d | 2026-11-04 | 2026-11-05 | F.1000A.1281 FF, F.1000A.1281 SS |  | 52d |
| DH.13001130 |  | DH 1300/Gallery 1303 // Install Trim and Devices | 2d | 2026-11-06 | 2026-11-09 | DH.13001120 FF |  | -8d |
| F.1000A.1282 |  | DH 1300/Gallery 1303 // Pull & Test Security Cable | 3d | 2026-11-06 | 2026-11-10 | F.1000A.1281 |  | 40d |
| DH.160012146 |  | DH 1300/Gallery 1303 // Ready to Receive Equipment | 0d | 2026-11-09 | 2026-11-09 | DH.13001130 FF |  | -8d |
| F.1000A.1283 |  | DH 1300/Gallery 1303 // Install Security Devices | 2d | 2026-11-12 | 2026-11-13 | F.1000A.1282 |  | 40d |
| F.1000A.1284 |  | DH 1300/Gallery 1303 // Mount & Terminate Security Devices | 5d | 2026-11-16 | 2026-11-20 | F.1000A.1283, DH.13001110 |  | 40d |
| F.1000A.1285 |  | DH 1300/Gallery 1303 // Test Security Devices | 2d | 2026-11-23 | 2026-11-24 | F.1000A.1475 FF, F.1000A.1284, DH.13001130 |  | 40d |
| DH.13001140 |  | DH 1300/Gallery 1303 // Suffolk Pre Punch | 5d | 2026-11-25 | 2026-12-02 | DH.160012146, F.1000A.1285 |  | 40d |
|  | 16 | **Raceway** |  |  |  |  |  |  |
|  | 3 | **Equipment Line-Ups** |  | 2026-10-01 | 2026-12-24 |  |  |  |
|  | 1 | **A130** |  | 2026-11-10 | 2026-12-14 |  |  |  |
| DH.1300B-EQP-1 |  | Gallery 1303 - A130/Line-Ups // Set CRAH-DH1300- 23 | 1d | 2026-11-10 | 2026-11-10 | DH.13006360, DH.160012146 |  | -8d |
| DH.1300B-EQP-4 |  | Gallery 1303 - A130/Line-Ups // Set CRAH-DH1300- 24 | 1d | 2026-11-10 | 2026-11-10 | DH.1300B-EQP-1 FF, DH.1300B-EQP-1 SS |  | -8d |
| DH.1300B-EQP-5 |  | Gallery 1303 - A130/Line-Ups // Set MOD A140-01 (Does No apply) | 1d | 2026-11-10 | 2026-11-10 | DH.1300B-EQP-4 FF |  | 34d |
| DH.1300B-EQP-6 |  | Gallery 1303 - A130/Line-Ups // Set MOD A140-02 (Does No apply) | 1d | 2026-11-10 | 2026-11-10 | DH.1300B-EQP-5 SS |  | 34d |
| DH.1300B-EQP-10 |  | Gallery 1303 - A130/Line-Ups // Mount Electrial Gear for Chiller Controls | 10d | 2026-11-12 | 2026-11-25 | DH.1300B-EQP-6 |  | 34d |
| DH.1300B-EQP-199 |  | Gallery 1303 - A130/Line-Ups // Set CDU-DH1300-23 | 1d | 2026-11-12 | 2026-11-12 | DH.1300B-EQP-6 |  | 48d |
| DH.1300B-EQP-3 |  | Gallery 1303 - A130/Line-Ups // Condensate connections to Floor Drains | 10d | 2026-11-12 | 2026-11-25 | DH.1300B-EQP-4, DH.1300B-EQP-1 SS |  | 36d |
| DH.1300B-EQP-8 |  | Gallery 1303 - A130/Line-Ups // Pull Cable Tray Feed from MOD to CRAHU's | 3d | 2026-11-12 | 2026-11-16 | DH.1300B-EQP-6 |  | 46d |

| ID | WBS | Task | Duration | Start | Finish | Predecessors | Total float |
| --- | --- | --- | --- | --- | --- | --- | --- |
| DH.1300B-EQP-200 |  | Gallery 1303 - A130/Line-Ups // Set CDU-DH1300-24 | 1d | 2026-11-13 | 2026-11-13 | DH.1300B-EQP-199 | 48d |
| DH.1300B-EQP-7 |  | Gallery 1303 - A130/Line-Ups // Pull Feeder from SWD to MOD | 1d | 2026-11-16 | 2026-11-16 | DH.1300B-EQP-6, DH.1300B-EQP-200 | 48d |
| DH.1300B-EQP-13 |  | Gallery 1303 - A130/Line-Ups // Terminate MOD Panels | 1d | 2026-11-17 | 2026-11-17 | DH.1300B-EQP-7, DH.1300B-EQP-8 | 48d |
| DH.1300B-EQP-14 |  | Gallery 1303 - A130/Line-Ups // Terminate Electrical Connections - CRAHU | 3d | 2026-11-17 | 2026-11-19 | DH.1300B-EQP-8 | 46d |
| DH.1300B-EQP-15 |  | Gallery 1303 - A130/Line-Ups // Pull Feeder and Branch circuits to MIsc equipment and Chiller controls | 10d | 2026-11-18 | 2026-12-02 | DH.1300B-EQP-10 SS+4d | 34d |
| DH.1300B-EQP-9 |  | Gallery 1303 - A130/Line-Ups // Mechanical Connections to CRAHU Units | 5d | 2026-11-18 | 2026-11-24 | DH.1300B-EQP-4 SS+5d | 32d |
| DH.1300B-EQP-17 |  | Gallery 1303 - A130/Line-Ups // Teminate all Misc Equipment and Chiller Controls | 10d | 2026-11-24 | 2026-12-08 | DH.1300B-EQP-15 SS+4d | 34d |
| DH.1300B-EQP-12 |  | Gallery 1303 - A130/Line-Ups // Condensate connections to Floor Drains | 10d | 2026-11-25 | 2026-12-09 | DH.1300B-EQP-3 SS+5d, DH.1300B-EQP-9 SS+5d | 32d |
| DH.1300B-EQP-18 |  | Gallery 1303 - A130/Line-Ups // Electrical Gear FOD Inspection Pre-Start Up | 2d | 2026-12-09 | 2026-12-10 | DH.1300B-EQP-13, DH.1300B-EQP-17, DH.1300B-EQP-14 | 34d |
| DH.1300B-EQP-16 |  | Gallery 1303 - A130/Line-Ups // Mechanical Gear FOD Inspection Pre-Start Up | 3d | 2026-12-10 | 2026-12-14 | DH.1300B-EQP-4, DH.1300B-EQP-1 SS, DH.1300B-EQP-9, DH.1300B-EQP-3, DH.1300B-EQP-12 | 32d |
|  | 2 | **B130** |  | 2026-11-10 | 2026-12-21 |  |  |
| DH.1300B-EQP-19 |  | Gallery 1303 - B130/Line-Ups // Set CRAH-DH1300- 25 | 1d | 2026-11-10 | 2026-11-10 | DH.1300B-EQP-4 SS | -8d |
| DH.1300B-EQP-22 |  | Gallery 1303 - B130/Line-Ups // Set CRAH-DH1300- 26 | 1d | 2026-11-10 | 2026-11-10 | DH.1300B-EQP-19 FF, DH.1300B-EQP-19 SS | -8d |
| DH.1300B-EQP-23 |  | Gallery 1303 - B130/Line-Ups // Set MOD B140-01 (Does No apply) | 1d | 2026-11-10 | 2026-11-10 | DH.1300B-EQP-22 FF | 34d |
| DH.1300B-EQP-24 |  | Gallery 1303 - B130/Line-Ups // Set MOD B140-02 (Does No apply) | 1d | 2026-11-10 | 2026-11-10 | DH.1300B-EQP-23 SS | 34d |
| DH.1300B-EQP-201 |  | Gallery 1303 - B130/Line-Ups // Set CDU-DH1300-25 | 1d | 2026-11-12 | 2026-11-12 | DH.1300B-EQP-24 | 48d |
| DH.1300B-EQP-26 |  | Gallery 1303 - B130/Line-Ups // Pull Cable Tray Feed from MOD to CRAHU's | 5d | 2026-11-12 | 2026-11-18 | DH.1300B-EQP-24 | 40d |
| DH.1300B-EQP-28 |  | Gallery 1303 - B130/Line-Ups // Mount Electrial Gear for Chiller Controls | 10d | 2026-11-12 | 2026-11-25 | DH.1300B-EQP-24 | 34d |
| DH.1300B-EQP-202 |  | Gallery 1303 - B130/Line-Ups // Set CDU-DH1300-26 | 1d | 2026-11-13 | 2026-11-13 | DH.1300B-EQP-201, DH.1300B-EQP-201 FF | 48d |
| DH.1300B-EQP-25 |  | Gallery 1303 - B130/Line-Ups // Pull Feeder from SWD to MOD | 1d | 2026-11-16 | 2026-11-16 | DH.1300B-EQP-24, DH.1300B-EQP-202 | 48d |
| DH.1300B-EQP-20 |  | Gallery 1303 - B130/Line-Ups // Connect CRAH units | 10d | 2026-11-18 | 2026-12-02 | DH.1300B-EQP-22, DH.1300B-EQP-19 SS+5d | 27d |
| DH.1300B-EQP-27 |  | Gallery 1303 - B130/Line-Ups // Mechanical Connections to CRAHU Units | 10d | 2026-11-18 | 2026-12-02 | DH.1300B-EQP-22 SS+5d | 32d |
| DH.1300B-EQP-33 |  | Gallery 1303 - B130/Line-Ups // Pull Feeder and Branch circuits to MIsc equipment and Chiller controls | 10d | 2026-11-18 | 2026-12-02 | DH.1300B-EQP-28 SS+4d | 34d |
| DH.1300B-EQP-29 |  | Gallery 1303 - B130/Line-Ups // Pull Cable Tray Feed from MOD to CRAHU's | 5d | 2026-11-19 | 2026-11-25 | DH.1300B-EQP-26 | 40d |
| DH.1300B-EQP-32 |  | Gallery 1303 - B130/Line-Ups // Terminate CRAHU Electrical Connections | 5d | 2026-11-23 | 2026-11-30 | DH.1300B-EQP-26, DH.1300B-EQP-29 SS+2d | 40d |
| DH.1300B-EQP-35 |  | Gallery 1303 - B130/Line-Ups // Teminate all Misc Equipment and Chiller Controls | 10d | 2026-11-24 | 2026-12-08 | DH.1300B-EQP-33 SS+4d | 34d |
| DH.1300B-EQP-21 |  | Gallery 1303 - B130/Line-Ups // Condensate connections to Floor Drains | 10d | 2026-11-25 | 2026-12-09 | DH.1300B-EQP-20 SS+5d | 27d |
| DH.1300B-EQP-31 |  | Gallery 1303 - B130/Line-Ups // Terminat Mod Panels | 1d | 2026-11-27 | 2026-11-27 | DH.1300B-EQP-25, DH.1300B-EQP-26, DH.1300B-EQP-29 | 41d |
| DH.1300B-EQP-30 |  | Gallery 1303 - B130/Line-Ups // Condensate connections to Floor Drains | 10d | 2026-12-03 | 2026-12-16 | DH.1300B-EQP-21 SS+5d, DH.1300B-EQP-27 SS+5d | 27d |
| DH.1300B-EQP-36 |  | Gallery 1303 - B130/Line-Ups // Electrical Gear FOD Inspection Pre-Start Up | 2d | 2026-12-09 | 2026-12-10 | DH.1300B-EQP-31, DH.1300B-EQP-35, DH.1300B-EQP-32 | 34d |
| DH.1300B-EQP-34 |  | Gallery 1303 - B130/Line-Ups // Mechanical Gear FOD Inspection Pre-Start Up | 3d | 2026-12-17 | 2026-12-21 | DH.1300B-EQP-20, DH.1300B-EQP-27, DH.1300B-EQP-21, DH.1300B-EQP-30 | 27d |
|  | 3 | **C130** |  | 2026-11-10 | 2026-12-21 |  |  |
| DH.1300B-EQP-37 |  | Gallery 1303 - C130/Line-Ups // Set CRAH-DH1300- 27 | 1d | 2026-11-10 | 2026-11-10 | DH.1300B-EQP-22 SS | -8d |
| DH.1300B-EQP-40 |  | Gallery 1303 - C130/Line-Ups // Set CRAH-DH1300- 28 | 1d | 2026-11-10 | 2026-11-10 | DH.1300B-EQP-37 FF, DH.1300B-EQP-37 SS | -8d |
| DH.1300B-EQP-41 |  | Gallery 1303 - C130/Line-Ups // Set MOD C140-01 (Does No apply) | 1d | 2026-11-10 | 2026-11-10 | DH.1300B-EQP-40 FF | 34d |
| DH.1300B-EQP-42 |  | Gallery 1303 - C130/Line-Ups // Set MOD C140-02 (Does No apply) | 1d | 2026-11-10 | 2026-11-10 | DH.1300B-EQP-41 SS | 34d |
| DH.1300B-EQP-203 |  | Gallery 1303 - C130/Line-Ups // Set CDU-DH1300-27 | 1d | 2026-11-12 | 2026-11-12 | DH.1300B-EQP-42 | 48d |
| DH.1300B-EQP-44 |  | Gallery 1303 - C130/Line-Ups // Pull Cable Tray Feed from MOD to CRAHU's | 5d | 2026-11-12 | 2026-11-18 | DH.1300B-EQP-42 | 40d |
| DH.1300B-EQP-46 |  | Gallery 1303 - C130/Line-Ups // Mount Electrial Gear for Chiller Controls | 10d | 2026-11-12 | 2026-11-25 | DH.1300B-EQP-42 | 34d |
| DH.1300B-EQP-204 |  | Gallery 1303 - C130/Line-Ups // Set CDU-DH1300-28 | 1d | 2026-11-13 | 2026-11-13 | DH.1300B-EQP-203, DH.1300B-EQP-203 FF | 48d |
| DH.1300B-EQP-43 |  | Gallery 1303 - C130/Line-Ups // Pull Feeder from SWD to MOD | 1d | 2026-11-16 | 2026-11-16 | DH.1300B-EQP-42, DH.1300B-EQP-204 | 48d |
| DH.1300B-EQP-38 |  | Gallery 1303 - C130/Line-Ups // Connect CRAH units | 10d | 2026-11-18 | 2026-12-02 | DH.1300B-EQP-40, DH.1300B-EQP-37 SS+5d | 27d |
| DH.1300B-EQP-45 |  | Gallery 1303 - C130/Line-Ups // Mechanical Connections to CRAHU Units | 10d | 2026-11-18 | 2026-12-02 | DH.1300B-EQP-40 SS+5d | 32d |
| DH.1300B-EQP-51 |  | Gallery 1303 - C130/Line-Ups // Pull Feeder and Branch circuits to MIsc equipment and Chiller controls | 10d | 2026-11-18 | 2026-12-02 | DH.1300B-EQP-46 SS+4d | 34d |
| DH.1300B-EQP-47 |  | Gallery 1303 - C130/Line-Ups // Pull Cable Tray Feed from MOD to CRAHU's | 5d | 2026-11-19 | 2026-11-25 | DH.1300B-EQP-44 | 40d |
| DH.1300B-EQP-50 |  | Gallery 1303 - C130/Line-Ups // Terminate CRAHU Electrical Connections | 5d | 2026-11-23 | 2026-11-30 | DH.1300B-EQP-44, DH.1300B-EQP-47 SS+2d | 40d |
| DH.1300B-EQP-53 |  | Gallery 1303 - C130/Line-Ups // Teminate all Misc Equipment and Chiller Controls | 10d | 2026-11-24 | 2026-12-08 | DH.1300B-EQP-51 SS+4d | 34d |
| DH.1300B-EQP-39 |  | Gallery 1303 - C130/Line-Ups // Condensate connections to Floor Drains | 10d | 2026-11-25 | 2026-12-09 | DH.1300B-EQP-38 SS+5d | 27d |
| DH.1300B-EQP-49 |  | Gallery 1303 - C130/Line-Ups // Terminat Mod Panels | 1d | 2026-11-27 | 2026-11-27 | DH.1300B-EQP-43, DH.1300B-EQP-44, DH.1300B-EQP-47 | 41d |
| DH.1300B-EQP-48 |  | Gallery 1303 - C130/Line-Ups // Condensate connections to Floor Drains | 10d | 2026-12-03 | 2026-12-16 | DH.1300B-EQP-39 SS+5d, DH.1300B-EQP-45 SS+5d | 27d |
| DH.1300B-EQP-54 |  | Gallery 1303 - C130/Line-Ups // Electrical Gear FOD Inspection Pre-Start Up | 2d | 2026-12-09 | 2026-12-10 | DH.1300B-EQP-49, DH.1300B-EQP-53, DH.1300B-EQP-50 | 34d |
| DH.1300B-EQP-52 |  | Gallery 1303 - C130/Line-Ups // Mechanical Gear FOD Inspection Pre-Start Up | 3d | 2026-12-17 | 2026-12-21 | DH.1300B-EQP-38, DH.1300B-EQP-45, DH.1300B-EQP-39, DH.1300B-EQP-48 | 27d |
|  | 4 | **D130** |  | 2026-11-12 | 2026-12-22 |  |  |
| DH.1300B-EQP-55 |  | Gallery 1303 - D130/Line-Ups // Set CRAH-DH1300- 29 | 1d | 2026-11-12 | 2026-11-12 | DH.1300B-EQP-40 | -8d |
| DH.1300B-EQP-58 |  | Gallery 1303 - D130/Line-Ups // Set CRAH-DH1300-30 | 1d | 2026-11-12 | 2026-11-12 | DH.1300B-EQP-55 FF, DH.1300B-EQP-55 SS | -8d |
| DH.1300B-EQP-59 |  | Gallery 1303 - D130/Line-Ups // Set MOD D140-01 (Does No apply) | 1d | 2026-11-12 | 2026-11-12 | DH.1300B-EQP-58 FF | 33d |
| DH.1300B-EQP-60 |  | Gallery 1303 - D130/Line-Ups // Set MOD D140-02 (Does No apply) | 1d | 2026-11-12 | 2026-11-12 | DH.1300B-EQP-59 SS | 33d |
| DH.1300B-EQP-205 |  | Gallery 1303 - D130/Line-Ups // Set CDU-DH1300-29 | 1d | 2026-11-13 | 2026-11-13 | DH.1300B-EQP-60 | 47d |
| DH.1300B-EQP-62 |  | Gallery 1303 - D130/Line-Ups // Pull Cable Tray Feed from MOD to CRAHU's | 5d | 2026-11-13 | 2026-11-19 | DH.1300B-EQP-60 | 39d |
| DH.1300B-EQP-64 |  | Gallery 1303 - D130/Line-Ups // Mount Electrial Gear for Chiller Controls | 10d | 2026-11-13 | 2026-11-27 | DH.1300B-EQP-60 | 33d |
| DH.1300B-EQP-206 |  | Gallery 1303 - D130/Line-Ups // Set CDU-DH1300-30 | 1d | 2026-11-16 | 2026-11-16 | DH.1300B-EQP-205 | 47d |
| DH.1300B-EQP-61 |  | Gallery 1303 - D130/Line-Ups // Pull Feeder from SWD to MOD | 1d | 2026-11-17 | 2026-11-17 | DH.1300B-EQP-60, DH.1300B-EQP-206 | 47d |
| DH.1300B-EQP-56 |  | Gallery 1303 - D130/Line-Ups // Connect CRAH units | 10d | 2026-11-19 | 2026-12-03 | DH.1300B-EQP-58, DH.1300B-EQP-55 SS+5d | 26d |
| DH.1300B-EQP-63 |  | Gallery 1303 - D130/Line-Ups // Mechanical Connections to CRAHU Units | 10d | 2026-11-19 | 2026-12-03 | DH.1300B-EQP-58 SS+5d | 31d |
| DH.1300B-EQP-69 |  | Gallery 1303 - D130/Line-Ups // Pull Feeder and Branch circuits to MIsc equipment and Chiller controls | 10d | 2026-11-19 | 2026-12-03 | DH.1300B-EQP-64 SS+4d | 33d |
| DH.1300B-EQP-65 |  | Gallery 1303 - D130/Line-Ups // Pull Cable Tray Feed from MOD to CRAHU's | 5d | 2026-11-20 | 2026-11-27 | DH.1300B-EQP-62 | 39d |
| DH.1300B-EQP-68 |  | Gallery 1303 - D130/Line-Ups // Terminate CRAHU Electrical Connections | 5d | 2026-11-24 | 2026-12-01 | DH.1300B-EQP-62, DH.1300B-EQP-65 SS+2d | 39d |
| DH.1300B-EQP-71 |  | Gallery 1303 - D130/Line-Ups // Teminate all Misc Equipment and Chiller Controls | 10d | 2026-11-25 | 2026-12-09 | DH.1300B-EQP-69 SS+4d | 33d |
| DH.1300B-EQP-57 |  | Gallery 1303 - D130/Line-Ups // Condensate connections to Floor Drains | 10d | 2026-11-27 | 2026-12-10 | DH.1300B-EQP-56 SS+5d | 26d |
| DH.1300B-EQP-67 |  | Gallery 1303 - D130/Line-Ups // Terminat Mod Panels | 1d | 2026-11-30 | 2026-11-30 | DH.1300B-EQP-61, DH.1300B-EQP-62, DH.1300B-EQP-65 | 40d |

| ID | WBS | Task | Duration | Start | Finish | Predecessors | Total float |
| --- | --- | --- | --- | --- | --- | --- | --- |
| DH.1300B-EQP-66 |  | Gallery 1303 - D130/Line-Ups // Condensate connections to Floor Drains | 10d | 2026-12-04 | 2026-12-17 | DH.1300B-EQP-57 SS+5d, DH.1300B-EQP-63 SS+5d | 26d |
| DH.1300B-EQP-72 |  | Gallery 1303 - D130/Line-Ups // Electrical Gear FOD Inspection Pre-Start Up | 2d | 2026-12-10 | 2026-12-11 | DH.1300B-EQP-67, DH.1300B-EQP-71, DH.1300B-EQP-68 | 33d |
| DH.1300B-EQP-70 |  | Gallery 1303 - D130/Line-Ups // Mechanical Gear FOD Inspection Pre-Start Up | 3d | 2026-12-18 | 2026-12-22 | DH.1300B-EQP-56, DH.1300B-EQP-63, DH.1300B-EQP-57, DH.1300B-EQP-66 | 26d |
|  | 5 | **E130** |  | 2026-11-12 | 2026-12-22 |  |  |
| DH.1300B-EQP-73 |  | Gallery 1303 - E130/Line-Ups // Set CRAH-DH1300- 31 | 1d | 2026-11-12 | 2026-11-12 | DH.1300B-EQP-58 SS | -8d |
| DH.1300B-EQP-76 |  | Gallery 1303 - E130/Line-Ups // Set CRAH-DH1300-32 | 1d | 2026-11-12 | 2026-11-12 | DH.1300B-EQP-73 FF, DH.1300B-EQP-73 SS | -8d |
| DH.1300B-EQP-77 |  | Gallery 1303 - E130/Line-Ups // Set MOD E140-01 (Does No apply) | 1d | 2026-11-12 | 2026-11-12 | DH.1300B-EQP-76 FF | 33d |
| DH.1300B-EQP-78 |  | Gallery 1303 - E130/Line-Ups // Set MOD E140-02 (Does No apply) | 1d | 2026-11-12 | 2026-11-12 | DH.1300B-EQP-77 SS | 33d |
| DH.1300B-EQP-207 |  | Gallery 1303 - E130/Line-Ups // Set CDU-DH1300-31 | 1d | 2026-11-13 | 2026-11-13 | DH.1300B-EQP-78 | 47d |
| DH.1300B-EQP-80 |  | Gallery 1303 - E130/Line-Ups // Pull Cable Tray Feed from MOD to CRAHU's | 5d | 2026-11-13 | 2026-11-19 | DH.1300B-EQP-78 | 39d |
| DH.1300B-EQP-82 |  | Gallery 1303 - E130/Line-Ups // Mount Electrial Gear for Chiller Controls | 10d | 2026-11-13 | 2026-11-27 | DH.1300B-EQP-78 | 33d |
| DH.1300B-EQP-208 |  | Gallery 1303 - E130/Line-Ups // Set CDU-DH1300-32 | 1d | 2026-11-16 | 2026-11-16 | DH.1300B-EQP-207 | 47d |
| DH.1300B-EQP-79 |  | Gallery 1303 - E130/Line-Ups // Pull Feeder from SWD to MOD | 1d | 2026-11-17 | 2026-11-17 | DH.1300B-EQP-78, DH.1300B-EQP-208 | 47d |
| DH.1300B-EQP-74 |  | Gallery 1303 - E130/Line-Ups // Connect CRAH units | 10d | 2026-11-19 | 2026-12-03 | DH.1300B-EQP-76, DH.1300B-EQP-73 SS+5d | 26d |
| DH.1300B-EQP-81 |  | Gallery 1303 - E130/Line-Ups // Mechanical Connections to CRAHU Units | 10d | 2026-11-19 | 2026-12-03 | DH.1300B-EQP-76 SS+5d | 31d |
| DH.1300B-EQP-87 |  | Gallery 1303 - E130/Line-Ups // Pull Feeder and Branch circuits to MIsc equipment and Chiller controls | 10d | 2026-11-19 | 2026-12-03 | DH.1300B-EQP-82 SS+4d | 33d |
| DH.1300B-EQP-83 |  | Gallery 1303 - E130/Line-Ups // Pull Cable Tray Feed from MOD to CRAHU's | 5d | 2026-11-20 | 2026-11-27 | DH.1300B-EQP-80 | 39d |
| DH.1300B-EQP-86 |  | Gallery 1303 - E130/Line-Ups // Terminate CRAHU Electrical Connections | 5d | 2026-11-24 | 2026-12-01 | DH.1300B-EQP-80, DH.1300B-EQP-83 SS+2d | 39d |
| DH.1300B-EQP-89 |  | Gallery 1303 - E130/Line-Ups // Teminate all Misc Equipment and Chiller Controls | 10d | 2026-11-25 | 2026-12-09 | DH.1300B-EQP-87 SS+4d | 33d |
| DH.1300B-EQP-75 |  | Gallery 1303 - E130/Line-Ups // Condensate connections to Floor Drains | 10d | 2026-11-27 | 2026-12-10 | DH.1300B-EQP-74 SS+5d | 26d |
| DH.1300B-EQP-85 |  | Gallery 1303 - E130/Line-Ups // Terminat Mod Panels | 1d | 2026-11-30 | 2026-11-30 | DH.1300B-EQP-79, DH.1300B-EQP-80, DH.1300B-EQP-83 | 40d |
| DH.1300B-EQP-84 |  | Gallery 1303 - E130/Line-Ups // Condensate connections to Floor Drains | 10d | 2026-12-04 | 2026-12-17 | DH.1300B-EQP-75 SS+5d, DH.1300B-EQP-81 SS+5d | 26d |
| DH.1300B-EQP-90 |  | Gallery 1303 - E130/Line-Ups // Electrical Gear FOD Inspection Pre-Start Up | 2d | 2026-12-10 | 2026-12-11 | DH.1300B-EQP-85, DH.1300B-EQP-89, DH.1300B-EQP-86 | 33d |
| DH.1300B-EQP-88 |  | Gallery 1303 - E130/Line-Ups // Mechanical Gear FOD Inspection Pre-Start Up | 3d | 2026-12-18 | 2026-12-22 | DH.1300B-EQP-74, DH.1300B-EQP-81, DH.1300B-EQP-75, DH.1300B-EQP-84 | 26d |
|  | 6 | **F130** |  | 2026-11-12 | 2026-12-22 |  |  |
| DH.1300B-EQP-91 |  | Gallery 1303 - F130/Line-Ups // Set CRAH-DH1300-33 | 1d | 2026-11-12 | 2026-11-12 | DH.1300B-EQP-76 SS | -8d |
| DH.1300B-EQP-94 |  | Gallery 1303 - F130/Line-Ups // Set CRAH-DH1300-34 | 1d | 2026-11-13 | 2026-11-13 | DH.1300B-EQP-91 | -8d |
| DH.1300B-EQP-95 |  | Gallery 1303 - F130/Line-Ups // Set MOD F140-01 (Does No apply) | 1d | 2026-11-13 | 2026-11-13 | DH.1300B-EQP-94 FF | 32d |
| DH.1300B-EQP-96 |  | Gallery 1303 - F130/Line-Ups // Set MOD F140-02 (Does No apply) | 1d | 2026-11-13 | 2026-11-13 | DH.1300B-EQP-95 SS | 32d |
| DH.1300B-EQP-100 |  | Gallery 1303 - F130/Line-Ups // Mount Electrial Gear for Chiller Controls | 10d | 2026-11-16 | 2026-11-30 | DH.1300B-EQP-96 | 32d |
| DH.1300B-EQP-209 |  | Gallery 1303 - F130/Line-Ups // Set CDU-DH1300-33 | 1d | 2026-11-16 | 2026-11-16 | DH.1300B-EQP-96 | 46d |
| DH.1300B-EQP-98 |  | Gallery 1303 - F130/Line-Ups // Pull Cable Tray Feed from MOD to CRAHU's | 5d | 2026-11-16 | 2026-11-20 | DH.1300B-EQP-96 | 38d |
| DH.1300B-EQP-210 |  | Gallery 1303 - F130/Line-Ups // Set CDU-DH1300-34 | 1d | 2026-11-17 | 2026-11-17 | DH.1300B-EQP-209 | 46d |
| DH.1300B-EQP-97 |  | Gallery 1303 - F130/Line-Ups // Pull Feeder from SWD to MOD | 1d | 2026-11-18 | 2026-11-18 | DH.1300B-EQP-96, DH.1300B-EQP-210 | 46d |
| DH.1300B-EQP-92 |  | Gallery 1303 - F130/Line-Ups // Connect CRAH units | 10d | 2026-11-19 | 2026-12-03 | DH.1300B-EQP-94, DH.1300B-EQP-91 SS+5d | 26d |
| DH.1300B-EQP-105 |  | Gallery 1303 - F130/Line-Ups // Pull Feeder and Branch circuits to MIsc equipment and Chiller controls | 10d | 2026-11-20 | 2026-12-04 | DH.1300B-EQP-100 SS+4d | 32d |
| DH.1300B-EQP-99 |  | Gallery 1303 - F130/Line-Ups // Mechanical Connections to CRAHU Units | 10d | 2026-11-20 | 2026-12-04 | DH.1300B-EQP-94 SS+5d | 30d |
| DH.1300B-EQP-101 |  | Gallery 1303 - F130/Line-Ups // Pull Cable Tray Feed from MOD to CRAHU's | 5d | 2026-11-23 | 2026-11-30 | DH.1300B-EQP-98 | 38d |
| DH.1300B-EQP-104 |  | Gallery 1303 - F130/Line-Ups // Terminate CRAHU Electrical Connections | 5d | 2026-11-25 | 2026-12-02 | DH.1300B-EQP-98, DH.1300B-EQP-101 SS+2d | 38d |
| DH.1300B-EQP-107 |  | Gallery 1303 - F130/Line-Ups // Teminate all Misc Equipment and Chiller Controls | 10d | 2026-11-27 | 2026-12-10 | DH.1300B-EQP-105 SS+4d | 32d |
| DH.1300B-EQP-93 |  | Gallery 1303 - F130/Line-Ups // Condensate connections to Floor Drains | 10d | 2026-11-27 | 2026-12-10 | DH.1300B-EQP-92 SS+5d | 26d |
| DH.1300B-EQP-103 |  | Gallery 1303 - F130/Line-Ups // Terminat Mod Panels | 1d | 2026-12-01 | 2026-12-01 | DH.1300B-EQP-97, DH.1300B-EQP-98, DH.1300B-EQP-101 | 39d |
| DH.1300B-EQP-102 |  | Gallery 1303 - F130/Line-Ups // Condensate connections to Floor Drains | 10d | 2026-12-04 | 2026-12-17 | DH.1300B-EQP-93 SS+5d, DH.1300B-EQP-99 SS+5d | 26d |
| DH.1300B-EQP-108 |  | Gallery 1303 - F130/Line-Ups // Electrical Gear FOD Inspection Pre-Start Up | 2d | 2026-12-11 | 2026-12-14 | DH.1300B-EQP-103, DH.1300B-EQP-107, DH.1300B-EQP-104 | 32d |
| DH.1300B-EQP-106 |  | Gallery 1303 - F130/Line-Ups // Mechanical Gear FOD Inspection Pre-Start Up | 3d | 2026-12-18 | 2026-12-22 | DH.1300B-EQP-92, DH.1300B-EQP-99, DH.1300B-EQP-93, DH.1300B-EQP-102 | 26d |
|  | 7 | **G130** |  | 2026-11-13 | 2026-12-23 |  |  |
| DH.1300B-EQP-109 |  | Gallery 1303 - G130/Line-Ups // Set CRAH-DH1300-35 | 1d | 2026-11-13 | 2026-11-13 | DH.1300B-EQP-94 SS | -8d |
| DH.1300B-EQP-112 |  | Gallery 1303 - G130/Line-Ups // Set CRAH-DH1300-36 | 1d | 2026-11-13 | 2026-11-13 | DH.1300B-EQP-109 FF, DH.1300B-EQP-109 SS | -8d |
| DH.1300B-EQP-113 |  | Gallery 1303 - G130/Line-Ups // Set MOD G140-01 (Does No apply) | 1d | 2026-11-13 | 2026-11-13 | DH.1300B-EQP-112 FF | 27d |
| DH.1300B-EQP-114 |  | Gallery 1303 - G130/Line-Ups // Set MOD G140-02 (Does No apply) | 1d | 2026-11-13 | 2026-11-13 | DH.1300B-EQP-113 SS | 27d |
| DH.1300B-EQP-115 |  | Gallery 1303 - G130/Line-Ups // Pull Feeder from SWD to MOD | 1d | 2026-11-16 | 2026-11-16 | DH.1300B-EQP-114, DH.1300B-EQP-112 | 48d |
| DH.1300B-EQP-118 |  | Gallery 1303 - G130/Line-Ups // Mount Electrial Gear for Chiller Controls | 10d | 2026-11-16 | 2026-11-30 | DH.1300B-EQP-114 | 32d |
| DH.1300B-EQP-211 |  | Gallery 1303 - G130/Line-Ups // Set CDU-DH1300-35 | 1d | 2026-11-16 | 2026-11-16 | DH.1300B-EQP-114 | 27d |
| DH.1300B-EQP-212 |  | Gallery 1303 - G130/Line-Ups // Set CDU-DH1300-36 | 1d | 2026-11-17 | 2026-11-17 | DH.1300B-EQP-211 | 27d |
| DH.1300B-EQP-116 |  | Gallery 1303 - G130/Line-Ups // Pull Cable Tray Feed from MOD to CRAHU's | 5d | 2026-11-18 | 2026-11-24 | DH.1300B-EQP-114, DH.1300B-EQP-212 | 36d |
| DH.1300B-EQP-110 |  | Gallery 1303 - G130/Line-Ups // Connect CRAH units | 10d | 2026-11-20 | 2026-12-04 | DH.1300B-EQP-112, DH.1300B-EQP-109 SS+5d, DH.1300B-EQP-212 | 25d |
| DH.1300B-EQP-117 |  | Gallery 1303 - G130/Line-Ups // Mechanical Connections to CRAHU Units | 10d | 2026-11-20 | 2026-12-04 | DH.1300B-EQP-112 SS+5d | 30d |
| DH.1300B-EQP-123 |  | Gallery 1303 - G130/Line-Ups // Pull Feeder and Branch circuits to MIsc equipment and Chiller controls | 10d | 2026-11-20 | 2026-12-04 | DH.1300B-EQP-118 SS+4d | 32d |
| DH.1300B-EQP-119 |  | Gallery 1303 - G130/Line-Ups // Pull Cable Tray Feed from MOD to CRAHU's | 5d | 2026-11-25 | 2026-12-02 | DH.1300B-EQP-116 | 36d |
| DH.1300B-EQP-125 |  | Gallery 1303 - G130/Line-Ups // Teminate all Misc Equipment and Chiller Controls | 10d | 2026-11-27 | 2026-12-10 | DH.1300B-EQP-123 SS+4d | 32d |
| DH.1300B-EQP-111 |  | Gallery 1303 - G130/Line-Ups // Condensate connections to Floor Drains | 10d | 2026-11-30 | 2026-12-11 | DH.1300B-EQP-110 SS+5d | 25d |
| DH.1300B-EQP-122 |  | Gallery 1303 - G130/Line-Ups // Terminate CRAHU Electrical Connections | 5d | 2026-11-30 | 2026-12-04 | DH.1300B-EQP-116, DH.1300B-EQP-119 SS+2d | 36d |
| DH.1300B-EQP-121 |  | Gallery 1303 - G130/Line-Ups // Terminat Mod Panels | 1d | 2026-12-03 | 2026-12-03 | DH.1300B-EQP-115, DH.1300B-EQP-116, DH.1300B-EQP-119 | 37d |
| DH.1300B-EQP-120 |  | Gallery 1303 - G130/Line-Ups // Condensate connections to Floor Drains | 10d | 2026-12-07 | 2026-12-18 | DH.1300B-EQP-111 SS+5d, DH.1300B-EQP-117 SS+5d | 25d |
| DH.1300B-EQP-126 |  | Gallery 1303 - G130/Line-Ups // Electrical Gear FOD Inspection Pre-Start Up | 2d | 2026-12-11 | 2026-12-14 | DH.1300B-EQP-121, DH.1300B-EQP-125, DH.1300B-EQP-122 | 32d |
| DH.1300B-EQP-124 |  | Gallery 1303 - G130/Line-Ups // Mechanical Gear FOD Inspection Pre-Start Up | 3d | 2026-12-21 | 2026-12-23 | DH.1300B-EQP-110, DH.1300B-EQP-117, DH.1300B-EQP-111, DH.1300B-EQP-120 | 25d |
|  | 8 | **H130** |  | 2026-11-13 | 2026-12-23 |  |  |
| DH.1300B-EQP-127 |  | Gallery 1303 - H130/Line-Ups // Set CRAH-DH1300-37 | 1d | 2026-11-13 | 2026-11-13 | DH.1300B-EQP-112 SS | -8d |
| DH.1300B-EQP-130 |  | Gallery 1303 - H130/Line-Ups // Set CRAH-DH1300-38 | 1d | 2026-11-13 | 2026-11-13 | DH.1300B-EQP-127 FF, DH.1300B-EQP-127 SS | -8d |
| DH.1300B-EQP-131 |  | Gallery 1303 - H130/Line-Ups // Set MOD H140-01 | 1d | 2026-11-13 | 2026-11-13 | DH.1300B-EQP-130 FF | 32d |

| ID | WBS | Task | Duration | Start | Finish | Predecessors | Total float |
| --- | --- | --- | --- | --- | --- | --- | --- |
| DH.1300B-EQP-132 |  | Gallery 1303 - H130/Line-Ups // Set MOD H140-02 | 1d | 2026-11-13 | 2026-11-13 | DH.1300B-EQP-131 SS | 32d |
| DH.1300B-EQP-134 |  | Gallery 1303 - H130/Line-Ups // Pull Cable Tray Feed from MOD to CRAHU's | 5d | 2026-11-16 | 2026-11-20 | DH.1300B-EQP-132 | 38d |
| DH.1300B-EQP-136 |  | Gallery 1303 - H130/Line-Ups // Mount Electrial Gear for Chiller Controls | 10d | 2026-11-16 | 2026-11-30 | DH.1300B-EQP-132 | 32d |
| DH.1300B-EQP-213 |  | Gallery 1303 - H130/Line-Ups // Set CDU-DH1300-37 | 1d | 2026-11-16 | 2026-11-16 | DH.1300B-EQP-132 | 46d |
| DH.1300B-EQP-214 |  | Gallery 1303 - H130/Line-Ups // Set CDU-DH1300-38 | 1d | 2026-11-17 | 2026-11-17 | DH.1300B-EQP-213 | 46d |
| DH.1300B-EQP-133 |  | Gallery 1303 - H130/Line-Ups // Pull Feeder from SWD to MOD | 1d | 2026-11-18 | 2026-11-18 | DH.1300B-EQP-132, DH.1300B-EQP-214 | 46d |
| DH.1300B-EQP-128 |  | Gallery 1303 - H130/Line-Ups // Connect CRAH units | 10d | 2026-11-20 | 2026-12-04 | DH.1300B-EQP-130, DH.1300B-EQP-127 SS+5d | 25d |
| DH.1300B-EQP-135 |  | Gallery 1303 - H130/Line-Ups // Mechanical Connections to CRAHU Units | 10d | 2026-11-20 | 2026-12-04 | DH.1300B-EQP-130 SS+5d | 30d |
| DH.1300B-EQP-141 |  | Gallery 1303 - H130/Line-Ups // Pull Feeder and Branch circuits to MIsc equipment and Chiller controls | 10d | 2026-11-20 | 2026-12-04 | DH.1300B-EQP-136 SS+4d | 32d |
| DH.1300B-EQP-137 |  | Gallery 1303 - H130/Line-Ups // Pull Cable Tray Feed from MOD to CRAHU's | 5d | 2026-11-23 | 2026-11-30 | DH.1300B-EQP-134 | 38d |
| DH.1300B-EQP-140 |  | Gallery 1303 - H130/Line-Ups // Terminate CRAHU Electrical Connections | 5d | 2026-11-25 | 2026-12-02 | DH.1300B-EQP-134, DH.1300B-EQP-137 SS+2d | 38d |
| DH.1300B-EQP-143 |  | Gallery 1303 - H130/Line-Ups // Teminate all Misc Equipment and Chiller Controls | 10d | 2026-11-27 | 2026-12-10 | DH.1300B-EQP-141 SS+4d | 32d |
| DH.1300B-EQP-129 |  | Gallery 1303 - H130/Line-Ups // Condensate connections to Floor Drains | 10d | 2026-11-30 | 2026-12-11 | DH.1300B-EQP-128 SS+5d | 25d |
| DH.1300B-EQP-139 |  | Gallery 1303 - H130/Line-Ups // Terminat Mod Panels | 1d | 2026-12-01 | 2026-12-01 | DH.1300B-EQP-133, DH.1300B-EQP-134, DH.1300B-EQP-137 | 39d |
| DH.1300B-EQP-138 |  | Gallery 1303 - H130/Line-Ups // Condensate connections to Floor Drains | 10d | 2026-12-07 | 2026-12-18 | DH.1300B-EQP-129 SS+5d, DH.1300B-EQP-135 SS+5d | 25d |
| DH.1300B-EQP-144 |  | Gallery 1303 - H130/Line-Ups // Electrical Gear FOD Inspection Pre-Start Up | 2d | 2026-12-11 | 2026-12-14 | DH.1300B-EQP-139, DH.1300B-EQP-143, DH.1300B-EQP-140 | 32d |
| DH.1300B-EQP-142 |  | Gallery 1303 - H130/Line-Ups // Mechanical Gear FOD Inspection Pre-Start Up | 3d | 2026-12-21 | 2026-12-23 | DH.1300B-EQP-128, DH.1300B-EQP-135, DH.1300B-EQP-129, DH.1300B-EQP-138 | 25d |
|  | 9 | **J130** |  | 2026-11-13 | 2026-12-23 |  |  |
| DH.1300B-EQP-145 |  | Gallery 1303 - J130/Line-Ups // Set CRAH-DH1300-39 | 1d | 2026-11-13 | 2026-11-13 | DH.1300B-EQP-130 SS | -8d |
| DH.1300B-EQP-148 |  | Gallery 1303 - J130/Line-Ups // Set CRAH-DH1300-40 | 1d | 2026-11-13 | 2026-11-13 | DH.1300B-EQP-145 FF, DH.1300B-EQP-145 SS | -8d |
| DH.1300B-EQP-149 |  | Gallery 1303 - J130/Line-Ups // Set MOD J140-01 | 1d | 2026-11-13 | 2026-11-13 | DH.1300B-EQP-148 FF | 32d |
| DH.1300B-EQP-150 |  | Gallery 1303 - J130/Line-Ups // Set MOD J140-02 | 1d | 2026-11-13 | 2026-11-13 | DH.1300B-EQP-149 SS | 32d |
| DH.1300B-EQP-152 |  | Gallery 1303 - J130/Line-Ups // Pull Cable Tray Feed from MOD to CRAHU's | 5d | 2026-11-16 | 2026-11-20 | DH.1300B-EQP-150 | 38d |
| DH.1300B-EQP-154 |  | Gallery 1303 - J130/Line-Ups // Mount Electrial Gear for Chiller Controls | 10d | 2026-11-16 | 2026-11-30 | DH.1300B-EQP-150 | 32d |
| DH.1300B-EQP-215 |  | Gallery 1303 - J130/Line-Ups // Set CDU-DH1300-39 | 1d | 2026-11-16 | 2026-11-16 | DH.1300B-EQP-150 | 46d |
| DH.1300B-EQP-216 |  | Gallery 1303 - J130/Line-Ups // Set CDU-DH1300-40 | 1d | 2026-11-17 | 2026-11-17 | DH.1300B-EQP-215 | 46d |
| DH.1300B-EQP-151 |  | Gallery 1303 - J130/Line-Ups // Pull Feeder from SWD to MOD | 1d | 2026-11-18 | 2026-11-18 | DH.1300B-EQP-150, DH.1300B-EQP-216 | 46d |
| DH.1300B-EQP-146 |  | Gallery 1303 - J130/Line-Ups // Connect CRAH units | 10d | 2026-11-20 | 2026-12-04 | DH.1300B-EQP-148, DH.1300B-EQP-145 SS+5d | 25d |
| DH.1300B-EQP-153 |  | Gallery 1303 - J130/Line-Ups // Mechanical Connections to CRAHU Units | 10d | 2026-11-20 | 2026-12-04 | DH.1300B-EQP-148 SS+5d | 30d |
| DH.1300B-EQP-159 |  | Gallery 1303 - J130/Line-Ups // Pull Feeder and Branch circuits to MIsc equipment and Chiller controls | 10d | 2026-11-20 | 2026-12-04 | DH.1300B-EQP-154 SS+4d | 32d |
| DH.1300B-EQP-155 |  | Gallery 1303 - J130/Line-Ups // Pull Cable Tray Feed from MOD to CRAHU's | 5d | 2026-11-23 | 2026-11-30 | DH.1300B-EQP-152 | 38d |
| DH.1300B-EQP-158 |  | Gallery 1303 - J130/Line-Ups // Terminate CRAHU Electrical Connections | 5d | 2026-11-25 | 2026-12-02 | DH.1300B-EQP-152, DH.1300B-EQP-155 SS+2d | 38d |
| DH.1300B-EQP-161 |  | Gallery 1303 - J130/Line-Ups // Teminate all Misc Equipment and Chiller Controls | 10d | 2026-11-27 | 2026-12-10 | DH.1300B-EQP-159 SS+4d | 32d |
| DH.1300B-EQP-147 |  | Gallery 1303 - J130/Line-Ups // Condensate connections to Floor Drains | 10d | 2026-11-30 | 2026-12-11 | DH.1300B-EQP-146 SS+5d | 25d |
| DH.1300B-EQP-157 |  | Gallery 1303 - J130/Line-Ups // Terminat Mod Panels | 1d | 2026-12-01 | 2026-12-01 | DH.1300B-EQP-151, DH.1300B-EQP-152, DH.1300B-EQP-155 | 39d |
| DH.1300B-EQP-156 |  | Gallery 1303 - J130/Line-Ups // Condensate connections to Floor Drains | 10d | 2026-12-07 | 2026-12-18 | DH.1300B-EQP-147 SS+5d, DH.1300B-EQP-153 SS+5d | 25d |
| DH.1300B-EQP-162 |  | Gallery 1303 - J130/Line-Ups // Electrical Gear FOD Inspection Pre-Start Up | 2d | 2026-12-11 | 2026-12-14 | DH.1300B-EQP-157, DH.1300B-EQP-161, DH.1300B-EQP-158 | 32d |
| DH.1300B-EQP-160 |  | Gallery 1303 - J130/Line-Ups // Mechanical Gear FOD Inspection Pre-Start Up | 3d | 2026-12-21 | 2026-12-23 | DH.1300B-EQP-146, DH.1300B-EQP-153, DH.1300B-EQP-147, DH.1300B-EQP-156 | 25d |
|  | 10 | **K130** |  | 2026-11-16 | 2026-12-24 |  |  |
| DH.1300B-EQP-163 |  | Gallery 1303 - K130/Line-Ups // Set CRAH-DH1300-41 | 1d | 2026-11-16 | 2026-11-16 | DH.1300B-EQP-148 | -8d |
| DH.1300B-EQP-166 |  | Gallery 1303 - K130/Line-Ups // Set CRAH-DH1300-42 | 1d | 2026-11-16 | 2026-11-16 | DH.1300B-EQP-163 FF, DH.1300B-EQP-163 SS | -8d |
| DH.1300B-EQP-167 |  | Gallery 1303 - K130/Line-Ups // Set MOD K140-01 (Does No apply) | 1d | 2026-11-16 | 2026-11-16 | DH.1300B-EQP-166 FF | 31d |
| DH.1300B-EQP-168 |  | Gallery 1303 - K130/Line-Ups // Set MOD K140-02 (Does No apply) | 1d | 2026-11-16 | 2026-11-16 | DH.1300B-EQP-167 SS | 31d |
| DH.1300B-EQP-169 |  | Gallery 1303 - K130/Line-Ups // Pull Feeder from SWD to MOD | 1d | 2026-11-17 | 2026-11-17 | DH.1300B-EQP-168 | 47d |
| DH.1300B-EQP-170 |  | Gallery 1303 - K130/Line-Ups // Pull Cable Tray Feed from MOD to CRAHU's | 5d | 2026-11-17 | 2026-11-23 | DH.1300B-EQP-168 | 37d |
| DH.1300B-EQP-172 |  | Gallery 1303 - K130/Line-Ups // Mount Electrial Gear for Chiller Controls | 10d | 2026-11-17 | 2026-12-01 | DH.1300B-EQP-168 | 31d |
| DH.1300B-EQP-164 |  | Gallery 1303 - K130/Line-Ups // Connect CRAH units | 10d | 2026-11-23 | 2026-12-07 | DH.1300B-EQP-166, DH.1300B-EQP-163 SS+5d | 24d |
| DH.1300B-EQP-171 |  | Gallery 1303 - K130/Line-Ups // Mechanical Connections to CRAHU Units | 10d | 2026-11-23 | 2026-12-07 | DH.1300B-EQP-166 SS+5d | 29d |
| DH.1300B-EQP-177 |  | Gallery 1303 - K130/Line-Ups // Pull Feeder and Branch circuits to MIsc equipment and Chiller controls | 10d | 2026-11-23 | 2026-12-07 | DH.1300B-EQP-172 SS+4d | 31d |
| DH.1300B-EQP-173 |  | Gallery 1303 - K130/Line-Ups // Pull Cable Tray Feed from MOD to CRAHU's | 5d | 2026-11-24 | 2026-12-01 | DH.1300B-EQP-170 | 37d |
| DH.1300B-EQP-176 |  | Gallery 1303 - K130/Line-Ups // Terminate CRAHU Electrical Connections | 5d | 2026-11-27 | 2026-12-03 | DH.1300B-EQP-170, DH.1300B-EQP-173 SS+2d | 37d |
| DH.1300B-EQP-179 |  | Gallery 1303 - K130/Line-Ups // Teminate all Misc Equipment and Chiller Controls | 10d | 2026-11-30 | 2026-12-11 | DH.1300B-EQP-177 SS+4d | 31d |
| DH.1300B-EQP-165 |  | Gallery 1303 - K130/Line-Ups // Condensate connections to Floor Drains | 10d | 2026-12-01 | 2026-12-14 | DH.1300B-EQP-164 SS+5d | 24d |
| DH.1300B-EQP-175 |  | Gallery 1303 - K130/Line-Ups // Terminat Mod Panels | 1d | 2026-12-02 | 2026-12-02 | DH.1300B-EQP-169, DH.1300B-EQP-170, DH.1300B-EQP-173 | 38d |
| DH.1300B-EQP-174 |  | Gallery 1303 - K130/Line-Ups // Condensate connections to Floor Drains | 10d | 2026-12-08 | 2026-12-21 | DH.1300B-EQP-165 SS+5d, DH.1300B-EQP-171 SS+5d | 24d |
| DH.1300B-EQP-180 |  | Gallery 1303 - K130/Line-Ups // Electrical Gear FOD Inspection Pre-Start Up | 2d | 2026-12-14 | 2026-12-15 | DH.1300B-EQP-175, DH.1300B-EQP-179, DH.1300B-EQP-176 | 31d |
| DH.1300B-EQP-178 |  | Gallery 1303 - K130/Line-Ups // Mechanical Gear FOD Inspection Pre-Start Up | 3d | 2026-12-22 | 2026-12-24 | DH.1300B-EQP-164, DH.1300B-EQP-171, DH.1300B-EQP-165, DH.1300B-EQP-174 | 24d |
|  | 11 | **R130** |  | 2026-10-01 | 2026-12-14 |  |  |
| DH.1300B-EQP-192 |  | Gallery 1303 - R130/Line-Ups // Condensate connections to Floor Drains | 10d | 2026-10-01 | 2026-10-15 | ARC-DEL-ACT-01 | 169d |
| DH.1300B-EQP-181 |  | Gallery 1303 - R130/Line-Ups // Set CRAH-DH1300-43 | 1d | 2026-11-16 | 2026-11-16 | DH.1300B-EQP-166 SS | -8d |
| DH.1300B-EQP-184 |  | Gallery 1303 - R130/Line-Ups // Set CRAH-DH1300-44 | 1d | 2026-11-16 | 2026-11-16 | DH.1300B-EQP-181 FF, DH.1300B-EQP-181 SS | -7d |
| DH.1300B-EQP-185 |  | Gallery 1303 - R130/Line-Ups // Set MOD R140-01 (No Apply) | 1d | 2026-11-16 | 2026-11-16 | DH.1300B-EQP-184 FF | -7d |
| DH.1300B-EQP-186 |  | Gallery 1303 - R130/Line-Ups // Set MOD R140-02 (Does No apply) | 1d | 2026-11-16 | 2026-11-16 | DH.1300B-EQP-185 SS | -7d |
| DH.1300B-EQP-187 |  | Gallery 1303 - R130/Line-Ups // Pull Feeder from SWD to MOD | 1d | 2026-11-17 | 2026-11-17 | DH.1300B-EQP-186 | 6d |
| DH.1300B-EQP-188 |  | Gallery 1303 - R130/Line-Ups // Pull Cable Tray Feed from MOD to CRAHU's | 5d | 2026-11-17 | 2026-11-23 | DH.1300B-EQP-186 | -7d |
| DH.1300B-EQP-190 |  | Gallery 1303 - R130/Line-Ups // Mount Electrial Gear for Chiller Controls | 10d | 2026-11-17 | 2026-12-01 | DH.1300B-EQP-186 | -5d |
| DH.1300B-EQP-195 |  | Gallery 1303 - R130/Line-Ups // Pull Feeder and Branch circuits to MIsc equipment and Chiller controls | 10d | 2026-11-17 | 2026-12-01 | DH.1300B-EQP-190 SS | -5d |
| DH.1300B-EQP-197 |  | Gallery 1303 - R130/Line-Ups // Teminate all Misc Equipment and Chiller Controls | 10d | 2026-11-17 | 2026-12-01 | DH.1300B-EQP-195 SS | -5d |
| DH.1300B-EQP-182 |  | Gallery 1303 - R130/Line-Ups // Connect CRAH units | 10d | 2026-11-18 | 2026-12-02 | DH.1300B-EQP-184, DH.1300B-EQP-181 SS+2d | -8d |
| DH.1300B-EQP-189 |  | Gallery 1303 - R130/Line-Ups // Mechanical Connections to CRAHU Units | 10d | 2026-11-23 | 2026-12-07 | DH.1300B-EQP-184 SS+5d | -6d |

| ID | WBS | Task | Duration | Start | Finish | Predecessors | Complete | Total float |
| --- | --- | --- | --- | --- | --- | --- | --- | --- |
| DH.1300B-EQP-191 |  | Gallery 1303 - R130/Line-Ups // Pull Cable Tray Feed from MOD to CRAHU's | 5d | 2026-11-24 | 2026-12-01 | DH.1300B-EQP-188 |  | -7d |
| DH.1300B-EQP-183 |  | Gallery 1303 - R130/Line-Ups // Condensate connections to Floor Drains | 10d | 2026-11-25 | 2026-12-09 | DH.1300B-EQP-182 SS+5d |  | -8d |
| DH.1300B-EQP-194 |  | Gallery 1303 - R130/Line-Ups // Terminate CRAHU Electrical Connections | 5d | 2026-11-27 | 2026-12-03 | DH.1300B-EQP-188, DH.1300B-EQP-191 SS+2d |  | -3d |
| DH.1300B-EQP-193 |  | Gallery 1303 - R130/Line-Ups // Terminat Mod Panels | 1d | 2026-12-02 | 2026-12-02 | DH.1300B-EQP-187, DH.1300B-EQP-188, DH.1300B-EQP-191 |  | -2d |
| DH.1300B-EQP-198 |  | Gallery 1303 - R130/Line-Ups // Electrical Gear FOD Inspection Pre-Start Up | 2d | 2026-12-04 | 2026-12-07 | DH.1300B-EQP-193, DH.1300B-EQP-197, DH.1300B-EQP-194 |  | -3d |
| DH.1300B-EQP-196 |  | Gallery 1303 - R130/Line-Ups // Mechanical Gear FOD Inspection Pre-Start Up | 3d | 2026-12-10 | 2026-12-14 | DH.1300B-EQP-182, DH.1300B-EQP-189, DH.1300B-EQP-183 |  | -8d |
|  | 12 | **Equipment Connections** |  | 2026-11-18 | 2026-12-11 |  |  |  |
|  | 1 | **CRAH** |  | 2026-12-02 | 2026-12-11 |  |  |  |
| DH1300-004 |  | Gallery 1303 // DH 1300 / Elec Room // CRAH Duct Work Termination | 2d | 2026-12-02 | 2026-12-03 | DH.1300B-EQP-191 |  | -7d |
| DH1300-003 |  | Gallery 1303 // DH 1300 / Elec Room // CRAH Chilled Water | 2d | 2026-12-04 | 2026-12-07 | DH1300-004 |  | -7d |
| DH1300-001 |  | Gallery 1303 // DH 1300 / Elec Room // CRAH Power Connections | 2d | 2026-12-08 | 2026-12-09 | DH1300-003 |  | -7d |
| DH1300-002 |  | Gallery 1303 // DH 1300 / Elec Room // CRAH LV Connections | 2d | 2026-12-10 | 2026-12-11 | DH1300-001 |  | -7d |
|  | 2 | **CDU** |  | 2026-12-02 | 2026-12-09 |  |  |  |
| DH1300-007 |  | Gallery 1303 // DH 1300 / Elec Room // CDU Chilled Water Connections | 2d | 2026-12-02 | 2026-12-03 | DH.1300B-EQP-197 |  | -5d |
| DH1300-005 |  | Gallery 1303 // DH 1300 /Elec Room // CDU Power Connections | 2d | 2026-12-04 | 2026-12-07 | DH1300-007 |  | -5d |
| DH1300-006 |  | Gallery 1303 // DH 1300 / Elec Room // CDU Controls Connections | 2d | 2026-12-08 | 2026-12-09 | DH1300-005 |  | -5d |
|  | 3 | **MOD** |  | 2026-11-18 | 2026-11-23 |  |  |  |
| DH1300-008 |  | Gallery 1303 // DH 1300 / Elec Room // MOD Power Connections | 2d | 2026-11-18 | 2026-11-19 | DH.1300B-EQP-187 |  | 6d |
| DH1300-009 |  | Gallery 1303 // DH 1300 / Elec Room // MOD LV Connections | 2d | 2026-11-20 | 2026-11-23 | DH1300-008 |  | 6d |
|  | 6 | **Corridors** |  | 2026-08-05 | 2026-12-01 |  |  |  |
|  | 1 | **Corridor 1000A** |  | 2026-08-05 | 2026-12-01 |  |  |  |
| DH.13006430 |  | DH 1300/Corridor 1000A (No Apply) // Seal concrete | 1d | 2026-08-05 A | 2026-08-05 A | DH.13001000 | 100% |  |
| DH.13006440 |  | DH 1300/Corridor 1000A (No Apply)// MEPF Overhead Hangers | 5d | 2026-08-10 A | 2026-09-14 A | DH.13006430 | 100% |  |
| DH.13006470 |  | DH 1300/Corridor 1000A (No Apply)// Frame walls | 3d | 2026-08-27 A | 2026-09-28 A | DH.13001040 SS, DH.13006440 | 100% |  |
| DH.13006550 |  | DH 1300/Corridor 1000A (No Apply)// Install Top Down Sheetrock | 3d | 2026-09-29 A | 2026-10-02 | DH.13006470 SS+3d |  | 8d |
| B120001.3153 |  | DH 1300/Corridor 1000A (No Apply)// Install Overhead Cable Ladder / 36" Cable Tray - TFO | 5d | 2026-09-30 | 2026-10-06 | DH.13006440 |  | 1d |
| B120001.3154 |  | DH 1300/Corridor 1000A (No Apply)// Install Overhead HAC - TFO | 5d | 2026-10-07 | 2026-10-14 | B120001.3153 |  | 1d |
| DH.13006460 |  | DH 1300/Corridor 1000A (No Apply)// MEPF high overhead install | 3d | 2026-10-15 | 2026-10-19 | DH.13006550, B120001.3154 |  | 1d |
| DH.13006490 |  | DH 1300/Corridor 1000A (No Apply) // MEP rough in walls | 3d | 2026-10-20 | 2026-10-22 | DH.13006460 |  | 1d |
| DH.13006500 |  | DH 1300/Corridor 1000A (No Apply) // In wall inspection | 1d | 2026-10-23 | 2026-10-23 | DH.13006490 |  | 1d |
| DH.13006510 |  | DH 1300/Corridor 1000A (No Apply) // Install Balance of Sheetrock on Walls | 5d | 2026-10-26 | 2026-10-30 | DH.13006500, DH.13006550 SS, DH.13006460 |  | 1d |
| DH.13006520 |  | DH 1300/Corridor 1000A (No Apply) // Tape and finish walls | 8d | 2026-11-02 | 2026-11-12 | DH.13006510 |  | 1d |
| DH.13006480 |  | DH 1300/Corridor 1000A (No Apply) // Install wall door frames | 3d | 2026-11-13 | 2026-11-17 | DH.13006520, DH.13006470 |  | 1d |
| DH.13006530 |  | DH 1300/Corridor 1000A (No Apply) // Prime and Paint first coat walls | 3d | 2026-11-13 | 2026-11-17 | DH.13006520 |  | 1d |
| DH.13006590 |  | DH 1300/Corridor 1000A (No Apply) // Install lights and exit signs | 3d | 2026-11-18 | 2026-11-20 | DH.13006480, DH.13006530 |  | 1d |
| DH.13008080 |  | DH 1300/Corridor 1000A (No Apply) // Final Coat Paint & Touchup Walls | 4d | 2026-11-23 | 2026-11-27 | DH.13006590 |  | 1d |
| DH.13006540 |  | DH 1300/Corridor 1000A (No Apply) // Install MEP Devices and Trim | 2d | 2026-11-30 | 2026-12-01 | DH.13008080 |  | 1d |
| DH.160012147 |  | DH 1300/Corridor 1000A (No Apply) // Ready to Receve Equipment | 0d | 2026-12-01 | 2026-12-01 | DH.13006540 FF |  | 1d |
|  | 3 | **Corridor 1000** |  | 2026-08-06 | 2026-12-01 |  |  |  |
| DH.130012078 |  | DH 1300/Corridor 1000 // Seal concrete | 1d | 2026-08-06 A | 2026-08-06 A | DH.13006430 | 100% |  |
| DH.130012068 |  | DH 1300/Corridor 1000 // MEPF Overhead Hangers | 5d | 2026-08-11 A | 2026-09-14 A | DH.130012078 | 100% |  |
| DH.130012071 |  | DH 1300/Corridor 1000 // MEPF high overhead install | 3d | 2026-09-24 A | 2026-10-02 | DH.130012068 |  | 1d |
| DH.130012069 |  | DH 1300/Corridor 1000 // Frame walls | 3d | 2026-09-29 A | 2026-10-02 | DH.13006470 |  | 9d |
| B120001.3155 |  | DH 1300/Corridor 1000 // Install Overhead Cable Ladder / 36" Cable Tray - TFO | 5d | 2026-10-05 | 2026-10-09 | DH.130012071 |  | 1d |
| B120001.3156 |  | DH 1300/Corridor 1000 // Install Overhead HAC - TFO | 5d | 2026-10-13 | 2026-10-19 | B120001.3155 |  | 1d |
| DH.130012072 |  | DH 1300/Corridor 1000 // MEP rough in walls | 3d | 2026-10-20 | 2026-10-22 | DH.130012071, B120001.3156 |  | 1d |
| DH.130012073 |  | DH 1300/Corridor 1000 // In wall inspection | 1d | 2026-10-23 | 2026-10-23 | DH.130012072 |  | 1d |
| DH.130012070 |  | DH 1300/Corridor 1000 // Install Top Down Sheetrock | 3d | 2026-10-26 | 2026-10-28 | DH.130012069 SS+3d, DH.130012073 |  | 1d |
| DH.130012074 |  | DH 1300/Corridor 1000 // Install Balance of Sheetrock on Walls | 5d | 2026-10-26 | 2026-10-30 | DH.130012070 SS, DH.130012071 |  | 1d |
| DH.130012075 |  | DH 1300/Corridor 1000 // Tape and finish walls | 8d | 2026-11-02 | 2026-11-12 | DH.130012074 |  | 1d |
| DH.130012076 |  | DH 1300/Corridor 1000 // Install wall door frames | 3d | 2026-11-13 | 2026-11-17 | DH.130012075, DH.130012069 SS+1d |  | 1d |
| DH.130012077 |  | DH 1300/Corridor 1000 // Prime and Paint first coat walls | 3d | 2026-11-13 | 2026-11-17 | DH.130012075 |  | 1d |
| DH.130012079 |  | DH 1300/Corridor 1000 // Install lights and exit signs | 3d | 2026-11-18 | 2026-11-20 | DH.130012076, DH.130012077 |  | 1d |
| DH.130012080 |  | DH 1300/Corridor 1000 // Final Coat Paint & Touchup Walls | 4d | 2026-11-23 | 2026-11-27 | DH.130012079 |  | 1d |
| DH.130012081 |  | DH 1300/Corridor 1000 // Install MEP Devices and Trim | 2d | 2026-11-30 | 2026-12-01 | DH.130012080 |  | 1d |
| DH.160012148 |  | DH 1300/Corridor 1000 // Ready To Receive Equipment | 0d | 2026-12-01 | 2026-12-01 | DH.130012081 FF |  | 1d |
|  | 2 | **Corridor 1000D** |  | 2026-08-06 | 2026-12-01 |  |  |  |
| DH.130012092 |  | DH 1300/Corridor 1000D // Seal concrete | 1d | 2026-08-06 A | 2026-08-06 A | DH.130012078 | 100% |  |
| DH.130012082 |  | DH 1300/Corridor 1000D // MEPF Overhead Hangers | 5d | 2026-08-12 A | 2026-09-14 A | DH.130012092 | 100% |  |
| DH.130012085 |  | DH 1300/Corridor 1000D // MEPF high overhead install | 3d | 2026-09-24 A | 2026-10-02 | DH.130012082 |  | 8d |
| B120001.3157 |  | DH 1300/Corridor 1000D // Install Overhead Cable Ladder / 36" Cable Tray - TFO | 5d | 2026-09-30 | 2026-10-06 | DH.130012082 |  | 1d |
| DH.130012083 |  | DH 1300/Corridor 1000D // Frame walls | 3d | 2026-10-05 | 2026-10-07 | DH.130012069 |  | 9d |
| B120001.3158 |  | DH 1300/Corridor 1000D // Install Overhead HAC - TFO | 5d | 2026-10-07 | 2026-10-14 | B120001.3157 |  | 1d |
| DH.130012086 |  | DH 1300/Corridor 1000D // MEP rough in walls | 3d | 2026-10-15 | 2026-10-19 | DH.130012085, B120001.3158 |  | 1d |
| DH.130012087 |  | DH 1300/Corridor 1000D // In wall inspection | 1d | 2026-10-20 | 2026-10-20 | DH.130012086 |  | 1d |
| DH.130012084 |  | DH 1300/Corridor 1000D // Install Top Down Sheetrock | 3d | 2026-10-21 | 2026-10-23 | DH.130012083 SS+3d, DH.130012087 |  | 1d |
| DH.130012088 |  | DH 1300/Corridor 1000D // Install Balance of Sheetrock on Walls | 5d | 2026-10-26 | 2026-10-30 | DH.130012087, DH.130012085, DH.130012084 |  | 1d |
| DH.130012089 |  | DH 1300/Corridor 1000D // Tape and finish walls | 8d | 2026-11-02 | 2026-11-12 | DH.130012088 |  | 1d |
| DH.130012090 |  | DH 1300/Corridor 1000D // Install wall door frames | 3d | 2026-11-13 | 2026-11-17 | DH.130012089, DH.130012083 SS+1d |  | 1d |
| DH.130012091 |  | DH 1300/Corridor 1000D // Prime and Paint first coat walls | 3d | 2026-11-13 | 2026-11-17 | DH.130012089 |  | 1d |

| ID | WBS | Task | Duration | Start | Finish | Predecessors | Complete | Total float |
| --- | --- | --- | --- | --- | --- | --- | --- | --- |
| DH.130012093 |  | DH 1300/Corridor 1000D // Install lights and exit signs | 3d | 2026-11-18 | 2026-11-20 | DH.130012090, DH.130012091 |  | 1d |
| DH.130012094 |  | DH 1300/Corridor 1000D // Final Coat Paint & Touchup Walls | 4d | 2026-11-23 | 2026-11-27 | DH.130012093 |  | 1d |
| DH.130012095 |  | DH 1300/Corridor 1000D // Install MEP Devices and Trim | 2d | 2026-11-30 | 2026-12-01 | DH.130012094 |  | 1d |
| DH.160012149 |  | DH 1300/Corridor 1000D // Ready to Receive Equipment | 0d | 2026-12-01 | 2026-12-01 | DH.130012095 FF |  | 1d |
|  | 10 | **Flex 1000D1** |  | 2026-08-06 | 2026-11-13 |  |  |  |
| DH.1300..1000 |  | DH 1300/Flex 1000D1 // Seal Concrete | 5d | 2026-08-06 A | 2026-08-12 A | DH.130012092 | 100% |  |
| DH.1300..1010 |  | DH 1300/Flex 1000D1 // MEPF Layout of Overhead Supports | 2d | 2026-08-19 A | 2026-09-09 A | DH.1300..1000 | 100% |  |
| DH.1300..1020 |  | DH 1300/Flex 1000D1 // MEPF Install High Overhead Systems | 6d | 2026-09-14 A | 2026-10-02 | DH.1300..1010 | 50% | 22d |
| DH.1300..1040 |  | DH 1300/Flex 1000D1 // Frame Walls including Backing | 4d | 2026-09-24 A | 2026-10-05 | DH.1300..1010 |  | 17d |
| DH.1300..1120 |  | DH 1300/Flex 1000D1 // Install MEPF Overhead Ceiling Rough | 3d | 2026-09-24 A | 2026-10-02 | DH.1300..1010 |  | 73d |
| DH.1300..1060 |  | DH 1300/Flex 1000D1 // MEPF Install Rough Wall | 2d | 2026-10-06 | 2026-10-07 | DH.1300..1040 |  | 19d |
| DH.1300..1070 |  | DH 1300/Flex 1000D1 // Install Top Down Sheet Rock | 5d | 2026-10-06 | 2026-10-13 | DH.1300..1040 |  | 17d |
| DH.1300..1080 |  | DH 1300/Flex 1000D1 // Rough Wall Inspspection (Approval to Close up) | 1d | 2026-10-08 | 2026-10-08 | DH.1300..1060, DH.1300..1020 |  | 19d |
| DH.1300..1090 |  | DH 1300/Flex 1000D1 // Install Balance of Sheetrock | 3d | 2026-10-14 | 2026-10-16 | DH.1300..1080, DH.1300..1070 |  | 17d |
| DH.1300..1100 |  | DH 1300/Flex 1000D1 // Tape and Finish Walls | 6d | 2026-10-19 | 2026-10-26 | DH.1300..1090 |  | 17d |
| DH.1300..1110 |  | DH 1300/Flex 1000D1 // Prime and First Coat of Paint | 2d | 2026-10-27 | 2026-10-28 | DH.1300..1100 |  | 17d |
| DH.1300..1130 |  | DH 1300/Flex 1000D1 // Install Lighting, Fire Alarm & Fire Protection | 2d | 2026-10-29 | 2026-10-30 | DH.1300..1120, DH.1300..1110 |  | 56d |
| DH.1300..1140 |  | DH 1300/Flex 1000D1 // Wall Touch up Final Coat of Paint | 3d | 2026-10-29 | 2026-11-02 | DH.1300..1110 |  | 17d |
| DH.1300..1050 |  | DH 1300/Flex 1000D1 // Install Door Frames | 1d | 2026-11-03 | 2026-11-03 | DH.1300..1040 FF, DH.1300..1120, DH.1300..1140 |  | 54d |
| DH.1300..1150 |  | DH 1300/Flex 1000D1 // Install Wall Base, Trim, and Devices | 3d | 2026-11-03 | 2026-11-05 | DH.1300..1140 |  | 17d |
| DH.1300..1161 |  | DH 1300/Flex 1000D1 // Ready to Receive Equipment | 0d | 2026-11-05 | 2026-11-05 | DH.1300..1150 FF, DH.1300..1110 FF |  | 17d |
| DH.1300..1160 |  | DH 1300/Flex 1000D1 // Suffolk Pre Punch | 5d | 2026-11-06 | 2026-11-13 | DH.1300..1050, DH.1300..1161, DH.1300..1130 |  | 52d |
|  | 11 | **IDF 1000D2** |  |  |  |  |  |  |
|  | 12 | **Preaction 1000D3** |  |  |  |  |  |  |
|  | 13 | **Restroom-Dock & Janitor** |  | 2026-08-12 | 2026-11-25 |  |  |  |
| DH.1300010 |  | DH 1300/Restroom-Dock & Janitor // RR-Doc-Jan MEPF overhead layout | 5d | 2026-08-12 A | 2026-09-18 A | DH.13000.1010 | 100% |  |
| DH.1300020 |  | DH 1300/Restroom-Dock & Janitor // RR-Doc-Jan Layout walls | 5d | 2026-08-19 A | 2026-09-25 A | DH.1300010 | 100% |  |
| DH.1300030 |  | DH 1300/Restroom-Dock & Janitor // RR-Doc-Jan Frame walls | 5d | 2026-09-28 A | 2026-10-06 | DH.1300020 |  | -9d |
| DH.1300050 |  | DH 1300/Restroom-Dock & Janitor // RR-Doc-Jan Install Top Down Sheetrock | 5d | 2026-10-01 | 2026-10-07 | DH.1300030 SS+3d |  | 7d |
| DH.1300040 |  | DH 1300/Restroom-Dock & Janitor // RR-Doc-Jan Install wall door frames | 3d | 2026-10-07 | 2026-10-09 | DH.1300030 |  | 4d |
| DH.1300080 |  | DH 1300/Restroom-Dock & Janitor // RR-Doc-Jan MEPF high overhead install | 3d | 2026-10-08 | 2026-10-13 | DH.1300050 |  | 7d |
| DH.1300060 |  | DH 1300/Restroom-Dock & Janitor // RR-Doc-Jan MEP rough in walls | 3d | 2026-10-13 | 2026-10-15 | DH.1300040 |  | 4d |
| DH.1300070 |  | DH 1300/Restroom-Dock & Janitor // RR-Doc-Jan In wall inspection | 1d | 2026-10-16 | 2026-10-16 | DH.1300060 |  | 4d |
| DH.1300090 |  | DH 1300/Restroom-Dock & Janitor // RR-Doc-Jan Install Balance of Sheetrock on Walls | 5d | 2026-10-19 | 2026-10-23 | DH.1300070, DH.1300050 SS, DH.1300080 |  | 4d |
| DH.1300100 |  | DH 1300/Restroom-Dock & Janitor // RR-Doc-Jan Tape and finish walls | 8d | 2026-10-26 | 2026-11-04 | DH.1300090 |  | 4d |
| DH.1300000 |  | DH 1300/Restroom-Dock & Janitor // RR-Doc-Jan Seal concrete | 5d | 2026-11-05 | 2026-11-12 | DH.1300100 |  | 4d |
| DH.1300110 |  | DH 1300/Restroom-Dock & Janitor // RR-Doc-Jan Prime and Paint first coat walls | 3d | 2026-11-05 | 2026-11-09 | DH.1300100 |  | 6d |
| DH.1300120 |  | DH 1300/Restroom-Dock & Janitor // RR-Doc-Jan Install lights and exit signs | 3d | 2026-11-13 | 2026-11-17 | DH.1300110, DH.1300000 |  | 4d |
| DH.1300130 |  | DH 1300/Restroom-Dock & Janitor // RR-Doc-Jan Final Coat Paint & Touchup Walls | 4d | 2026-11-18 | 2026-11-23 | DH.1300120 |  | 4d |
| DH.1300140 |  | DH 1300/Restroom-Dock & Janitor // RR-Doc-Jan Install MEP Devices and Trim | 2d | 2026-11-24 | 2026-11-25 | DH.1300130 |  | 4d |
|  | 1 | **NO MAME** |  | 2026-12-15 | 2027-03-18 |  |  |  |
|  | 1 | **Energization & L3 Prefunctional Testing** |  | 2026-12-15 | 2027-02-12 |  |  |  |
| DH1300.L3CX.59 |  | DH1300 L3 Start | 0d | 2026-12-15 | 2026-12-15 | DH.1300.3067, DH.1300.1180, B120001.3108, DH.1300.1240, DH.1300.1330, DH.1300.1300, DH.1300.1310, DH.1300.3042, B120001.3109, DH.1300.3054, DH.1300.3059, DH.1300.3061, DH.1300.3062, DH.160012144, DH.13000.1110, DH.13000.1712, DH.160012145, DH.1300A-EQP-215, DH.1300A-EQP-220, DH.1300A-EQP-218, DH1300.MG.A110.8685, DH1300.MG.A110.8689, DH1300.MG.A110.8692, DH.160012146, DH.1300B-EQP-198, DH.1300B-EQP-196, DH1300-002, DH1300-006, DH1300-009, DH.13006540, DH.160012147, DH.130012081, DH.160012148, DH.130012095, DH.160012149, DH.1300..1161, DH.1300140 |  | -8d |
| DH1300.L3CX.BMS.21 |  | DH1300 L3 PTPs & SOOs – BMS | 40d | 2026-12-15 | 2027-02-11 | DH1300.L3CX.ELEC.83 SS |  | -8d |
| DH1300.L3CX.ELEC.83 |  | DH1300 L3 FTEs | 5d | 2026-12-15 | 2026-12-21 | DH1300.L3CX.59 SS |  | -8d |
| DH1300.L3CX.MECH.63 |  | DH1300 L3 Startup / Pre-Functional – MECHANICAL | 20d | 2026-12-18 | 2027-01-19 | DH1300.L3CX.ELEC.83 SS+3d |  | -1d |
| DH1300.L3CX.ELEC.73 |  | DH1300 L3 Startup / Pre-Functional – ELECTRICAL | 15d | 2026-12-22 | 2027-01-13 | DH1300.L3CX.ELEC.83 |  | 2d |
| DH1300.L3CX.MECH.73 |  | DH1300 L3 TAB (Air, Water and Reports) – MECHANICAL | 10d | 2027-01-29 | 2027-02-11 | DH1300.L3CX.BMS.21 FF, DH1300.L3CX.MECH.63 |  | -8d |
| DH1300.L3CX.MECH.83 |  | DH1300 L3 FLS – MECHANICAL | 10d | 2027-01-29 | 2027-02-11 | DH1300.L3CX.ELEC.73, DH1300.L3CX.MECH.63, DH1300.L3CX.MECH.73 FF |  | -8d |
| DH1300.L3CX.49 |  | DH1300 L3 Cx Complete | 0d | 2027-02-12 | 2027-02-12 | DH1300.L3CX.MECH.83 FF, DH1300.L3CX.MECH.73 FF |  | -8d |
|  | 2 | **L4 Function Testing** |  | 2027-01-12 | 2027-02-17 |  |  |  |
| DH1300.L4CX.COMM.150 |  | DH1300 L4 Cx | 25d | 2027-01-12 | 2027-02-17 | DH1300.L3CX.49 FF+3d |  | 1d |
|  | 3 | **L5 Integrated System Testing (IST)** |  | 2027-01-28 | 2027-03-18 |  |  |  |
| DH1300.L5CX.COMM.240 |  | DH1300 L5 Integrated Systems Testing - IST | 20d | 2027-01-28 | 2027-02-25 | DH1300.L4CX.COMM.150 FF+6d |  | 1d |
| DH1300.A2110.CO |  | DH 1300/L5 Integrated System Testing (IST) // DH1300– Phase Closeout Period O&M / TRAINING/ CLOSEOUT DOCS | 15d | 2027-02-26 | 2027-03-18 | DH1300.L5CX.COMM.250 |  | 37d |
| DH1300.L5CX.COMM.250 |  | DH1300 – IST / L5 Cx Complete | 0d | 2027-02-26 | 2027-02-26 | DH1300.L5CX.COMM.240 |  | 1d |
|  | 2 | **Commissioning & Start Up** |  |  |  |  |  |  |
|  | 2 | **Data Hall 1500** |  | 2026-06-25 | 2027-05-21 |  |  |  |
|  | 10 | **Exterior Build Out** |  | 2026-06-25 | 2027-01-04 |  |  |  |
|  | 9 | **Electrical Yard** |  | 2026-09-17 | 2026-12-14 |  |  |  |
|  | 3 | **Electrical** |  | 2026-09-17 | 2026-12-14 |  |  |  |
|  | 1 | **Underground** |  | 2026-09-17 | 2026-10-22 |  |  |  |
|  | 1 | **Column Line 5.0 - 5.9** |  | 2026-09-17 | 2026-10-22 |  |  |  |
| DH.1500 |  | DH1500/Electrical Yard-Underground // Excavate From MVG to Transformers | 10d | 2026-09-17 A | 2026-09-23 A | FDN.1248, STRUCTURE.7020, STRUCTURE.7510 | 100% |  |
| B1200380 |  | DH1500/Electrical Yard-Underground // Install Raceway from MVG to Transformers | 10d | 2026-09-30 | 2026-10-14 | DH.1500 |  | 9d |
| B1200381 |  | DH1500/Electrical Yard-Underground // Backfill Raceways from MVG to Transformers | 6d | 2026-10-15 | 2026-10-22 | B1200380, B1200380 FF |  | 9d |
|  | 2 | **Column-Line 5.0 - 5.9** |  |  |  |  |  |  |
|  | 2 | **Pads** |  | 2026-10-23 | 2026-11-10 |  |  |  |
| B1200392 |  | DH1500/Electrical Yard-Pads // Excavate / Form / Rebar /pour-Finish Pads (House Gen & (9) Xfmr) 0.1 to 1.4 Line | 6d | 2026-10-23 | 2026-10-30 | B1200386, B1200381 |  | 15.88d |
| B1200393 |  | DH1500/Electrical Yard-Pads // Pad Strip and Cure (House Gen & (9) Xfmr) 0.1 to 1.4 Line | 1d | 2026-11-02 | 2026-11-02 | B1200392 |  | 20.88d |

| ID | WBS | Task | Duration | Start | Finish | Predecessors | Complete | Total float |
| --- | --- | --- | --- | --- | --- | --- | --- | --- |
| B1200394 |  | DH1500/Electrical Yard-Pads // Excavate / Form / Rebar /pour-Finish Pads (16 Xfmrs) 1.4 to 1.8 Line | 6d | 2026-11-02 | 2026-11-09 | B1200392 |  | 15.88d |
| B1200395 |  | DH1500/Electrical Yard-Pads // Pad Strip and Cure (16 Xfmrs) 1.4 to 1.8 Line | 1d | 2026-11-10 | 2026-11-10 | B1200394, B1200393 |  | 15.88d |
|  | 3 | **Equipment** |  | 2026-11-12 | 2026-12-14 |  |  |  |
|  | 1 | **A150** |  | 2026-11-12 | 2026-11-13 |  |  |  |
| DH.15001 |  | DH1500/Electrical Yard // Set XFMR - XFMR-A150a | 1d | 2026-11-12 | 2026-11-12 | STRUCTURE.6980, B1200395 |  | 15.88d |
| DH.15002 |  | DH1500/Electrical Yard // Set XFMR - XFMR-A150p | 1d | 2026-11-13 | 2026-11-13 | DH.15001 |  | 15.88d |
|  | 2 | **B150** |  | 2026-11-16 | 2026-11-17 |  |  |  |
| DH.15003 |  | DH1500/Electrical Yard // Set XFMR - XFMR-B150a | 1d | 2026-11-16 | 2026-11-16 | DH.15002 |  | 15.88d |
| DH.15004 |  | DH1500/Electrical Yard // Set XFMR - XFMR-B150p | 1d | 2026-11-17 | 2026-11-17 | DH.15003 |  | 15.88d |
|  | 3 | **C150** |  | 2026-11-18 | 2026-11-19 |  |  |  |
| DH.15005 |  | DH1500/Electrical Yard // Set XFMR - XFMR-C150a | 1d | 2026-11-18 | 2026-11-18 | DH.15004 |  | 15.88d |
| DH.15006 |  | DH1500/Electrical Yard // Set XFMR - XFMR-C150p | 1d | 2026-11-19 | 2026-11-19 | DH.15005 |  | 15.88d |
|  | 4 | **D150** |  | 2026-11-20 | 2026-11-23 |  |  |  |
| DH.15007 |  | DH1500/Electrical Yard // Set XFMR - XFMR-D150a | 1d | 2026-11-20 | 2026-11-20 | DH.15006 |  | 15.88d |
| DH.15008 |  | DH1500/Electrical Yard // Set XFMR - XFMR-D150p | 1d | 2026-11-23 | 2026-11-23 | DH.15007 |  | 15.88d |
|  | 5 | **E150** |  | 2026-11-24 | 2026-11-25 |  |  |  |
| DH.15009 |  | DH1500/Electrical Yard // Set XFMR - XFMR-E150a | 1d | 2026-11-24 | 2026-11-24 | DH.15008 |  | 15.88d |
| DH.15000 |  | DH1500/Electrical Yard // Set XFMR - XFMR-E150p | 1d | 2026-11-25 | 2026-11-25 | DH.15009 |  | 15.88d |
|  | 6 | **F150** |  | 2026-11-27 | 2026-11-30 |  |  |  |
| DH.160012120 |  | DH1500/Electrical Yard // Set XFMR - XFMR-F150a | 1d | 2026-11-27 | 2026-11-27 | DH.15000 |  | 29.88d |
| DH.160012121 |  | DH1500/Electrical Yard // Set XFMR - XFMR-F150p | 1d | 2026-11-30 | 2026-11-30 | DH.160012120 |  | 29.88d |
|  | 7 | **G150** |  | 2026-12-01 | 2026-12-02 |  |  |  |
| DH.160012122 |  | DH1500/Electrical Yard // Set XFMR - XFMR-G150a | 1d | 2026-12-01 | 2026-12-01 | DH.160012121 |  | 29.88d |
| DH.160012123 |  | DH1500/Electrical Yard // Set XFMR - XFMR-G150p | 1d | 2026-12-02 | 2026-12-02 | DH.160012122 |  | 29.88d |
|  | 8 | **H150** |  | 2026-12-03 | 2026-12-04 |  |  |  |
| DH.160012124 |  | DH1500/Electrical Yard // Set XFMR - XFMR-H150a | 1d | 2026-12-03 | 2026-12-03 | DH.160012123 |  | 29.88d |
| DH.160012125 |  | DH1500/Electrical Yard // Set XFMR - XFMR-H150p | 1d | 2026-12-04 | 2026-12-04 | DH.160012124 |  | 29.88d |
|  | 9 | **J150** |  | 2026-12-07 | 2026-12-08 |  |  |  |
| DH.160012126 |  | DH1500/Electrical Yard // Set XFMR - XFMR-J150a | 1d | 2026-12-07 | 2026-12-07 | DH.160012125 |  | 29.88d |
| DH.160012127 |  | DH1500/Electrical Yard // Set XFMR - XFMR-J150p | 1d | 2026-12-08 | 2026-12-08 | DH.160012126 |  | 29.88d |
|  | 10 | **K150** |  | 2026-12-09 | 2026-12-10 |  |  |  |
| DH.160012128 |  | DH1500/Electrical Yard // Set XFMR - XFMR-K150a | 1d | 2026-12-09 | 2026-12-09 | DH.160012127 |  | 29.88d |
| DH.160012129 |  | DH1500/Electrical Yard // Set XFMR - XFMR-K150p | 1d | 2026-12-10 | 2026-12-10 | DH.160012128 |  | 29.88d |
|  | 11 | **R150** |  | 2026-12-11 | 2026-12-14 |  |  |  |
| DH.160012130 |  | DH1500/Electrical Yard // Set XFMR - XFMR-R150a | 1d | 2026-12-11 | 2026-12-11 | DH.160012129 |  | 29.88d |
| DH.160012131 |  | DH1500/Electrical Yard // Set XFMR - XFMR-R150p | 1d | 2026-12-14 | 2026-12-14 | DH.160012130 |  | 29.88d |
|  | 1 | **Mechanical Yard** |  | 2026-06-25 | 2027-01-04 |  |  |  |
|  | 1 | **Pads** |  | 2026-06-25 | 2026-09-02 |  |  |  |
| A5796 |  | DH1500/Mechanical Yard-Pads // Excavate / Form / Rebar / Pour Chiller Pads | 8d | 2026-06-25 A | 2026-07-07 A | A5772, A5772 SS | 100% |  |
| A5877 |  | DH1500/Mechanical Yard-Pads // Excavate / Form / Rebar / TES Tank Pads | 8d | 2026-07-22 A | 2026-07-27 A | A5796 | 100% |  |
| A5798 |  | DH1500/Mechanical Yard-Pads // Excavate / Form / Rebar / Pour Support and TES Pads (Column Lines 1 to 1.3) | 5d | 2026-08-03 A | 2026-08-07 A | A5877, A5796 | 100% |  |
| A5801 |  | DH1500/Mechanical Yard-Pads // Excavate / Form / Rebar / Pour Support and TES Pads (Column Lines 1.6 to 1.9) | 5d | 2026-08-27 A | 2026-09-02 A | A5796 SS, A5798 | 100% |  |
|  | 5 | **Equipment** |  | 2026-11-27 | 2027-01-04 |  |  |  |
|  | 1 | **A150** |  | 2026-11-27 | 2026-12-03 |  |  |  |
| DH.150012001 |  | DH1500/Mechanical Yard-A150 // Set Chiller - CHLR-1CY40-A150 | 1d | 2026-11-27 | 2026-11-27 | STRUCTURE.6980, FDN.1248, DH.15000 |  | 15.88d |
| DH.150012002 |  | DH1500/Mechanical Yard-A150 // Set TES tank - TES-1CY40-A150 | 1d | 2026-11-30 | 2026-11-30 | DH.150012001 |  | 67.88d |
| DH.150012023 |  | DH1500/Mechanical Yard-A150 // Install CHWP | 1d | 2026-12-01 | 2026-12-01 | DH.150012002 |  | 67.88d |
| DH.150012024 |  | DH1500/Mechanical Yard-A150 // Install Mechanical Piping Mains (Building -to Line) | 1d | 2026-12-02 | 2026-12-02 | DH.150012023 |  | 67.88d |
| DH.150012025 |  | DH1500/Mechanical Yard-A150 // Install Mechanical Chiller to Mains | 1d | 2026-12-03 | 2026-12-03 | DH.150012024 |  | 67.88d |
|  | 2 | **B150** |  | 2026-11-30 | 2026-12-04 |  |  |  |
| DH.150012003 |  | DH1500/Mechanical Yard-B150 // Set Chiller - CHLR-1CY40-B150 | 1d | 2026-11-30 | 2026-11-30 | DH.150012001 |  | 15.88d |
| DH.150012004 |  | DH1500/Mechanical Yard-B150 // Set TES tank - TES-1CY40-B150 | 1d | 2026-12-01 | 2026-12-01 | DH.150012003 |  | 66.88d |
| DH.150012026 |  | DH1500/Mechanical Yard-B150 // Install CHWP | 1d | 2026-12-02 | 2026-12-02 | DH.150012004 |  | 66.88d |
| DH.150012027 |  | DH1500/Mechanical Yard-B150 // Install Mechanical Piping Mains (Building -to Line) | 1d | 2026-12-03 | 2026-12-03 | DH.150012026 |  | 66.88d |
| DH.150012028 |  | DH1500/Mechanical Yard-B150 // Install Mechanical Chiller to Mains | 1d | 2026-12-04 | 2026-12-04 | DH.150012027 |  | 66.88d |
|  | 3 | **C150** |  | 2026-12-01 | 2026-12-07 |  |  |  |
| DH.150012005 |  | DH1500/Mechanical Yard-C150 // Set Chiller - CHLR-1CY40-C150 | 1d | 2026-12-01 | 2026-12-01 | DH.150012003 |  | 15.88d |
| DH.150012006 |  | DH1500/Mechanical Yard-C150 // Set TES tank - TES-1CY40-C150 | 1d | 2026-12-02 | 2026-12-02 | DH.150012005 |  | 65.88d |
| DH.150012029 |  | DH1500/Mechanical Yard-C150 // Install CHWP | 1d | 2026-12-03 | 2026-12-03 | DH.150012006 |  | 65.88d |
| DH.150012030 |  | DH1500/Mechanical Yard-C150 // Install Mechanical Piping Mains (Building -to Line) | 1d | 2026-12-04 | 2026-12-04 | DH.150012029 |  | 65.88d |
| DH.150012031 |  | DH1500/Mechanical Yard-C150 // Install Mechanical Chiller to Mains | 1d | 2026-12-07 | 2026-12-07 | DH.150012030 |  | 65.88d |
|  | 4 | **D150** |  | 2026-12-02 | 2026-12-08 |  |  |  |
| DH.150012007 |  | DH1500/Mechanical Yard-D150 // Set Chiller - CHLR-1CY40-D150 | 1d | 2026-12-02 | 2026-12-02 | DH.150012005 |  | 15.88d |
| DH.150012008 |  | DH1500/Mechanical Yard-D150 // Set TES tank - TES-1CY40-D150 | 1d | 2026-12-03 | 2026-12-03 | DH.150012007 |  | 64.88d |
| DH.150012032 |  | DH1500/Mechanical Yard-D150 // Install CHWP | 1d | 2026-12-04 | 2026-12-04 | DH.150012008 |  | 64.88d |
| DH.150012033 |  | DH1500/Mechanical Yard-D150 // Install Mechanical Piping Mains (Building -to Line) | 1d | 2026-12-07 | 2026-12-07 | DH.150012032 |  | 64.88d |
| DH.150012034 |  | DH1500/Mechanical Yard-D150 // Install Mechanical Chiller to Mains | 1d | 2026-12-08 | 2026-12-08 | DH.150012033 |  | 64.88d |
|  | 5 | **E150** |  | 2026-12-03 | 2026-12-09 |  |  |  |
| DH.150012009 |  | DH1500/Mechanical Yard-E150 // Set Chiller - CHLR-1CY40-E150 | 1d | 2026-12-03 | 2026-12-03 | DH.150012007 |  | 15.88d |
| DH.150012010 |  | DH1500/Mechanical Yard-E150 // Set TES tank - TES-1CY40-E150 | 1d | 2026-12-04 | 2026-12-04 | DH.150012009 |  | 63.88d |

| ID | WBS | Task | Duration | Start | Finish | Predecessors | Complete | Total float |
| --- | --- | --- | --- | --- | --- | --- | --- | --- |
| DH.150012035 |  | DH1500/Mechanical Yard-E150 // Install CHWP | 1d | 2026-12-07 | 2026-12-07 | DH.150012010 |  | 63.88d |
| DH.150012036 |  | DH1500/Mechanical Yard-E150 // Install Mechanical Piping Mains (Building -to Line) | 1d | 2026-12-08 | 2026-12-08 | DH.150012035 |  | 63.88d |
| DH.150012037 |  | DH1500/Mechanical Yard-E150 // Install Mechanical Chiller to Mains | 1d | 2026-12-09 | 2026-12-09 | DH.150012036 |  | 63.88d |
|  | 6 | **F150** |  | 2026-12-04 | 2026-12-10 |  |  |  |
| DH.150012011 |  | DH1500/Mechanical Yard-F150 // Set Chiller - CHLR-1CY40-F150 | 1d | 2026-12-04 | 2026-12-04 | DH.150012009 |  | 15.88d |
| DH.150012012 |  | DH1500/Mechanical Yard-F150 // Set TES tank - TES-1CY40-F150 | 1d | 2026-12-07 | 2026-12-07 | DH.150012011 |  | 62.88d |
| DH.150012038 |  | DH1500/Mechanical Yard-F150 // Install CHWP | 1d | 2026-12-08 | 2026-12-08 | DH.150012012 |  | 62.88d |
| DH.150012039 |  | DH1500/Mechanical Yard-F150 // Install Mechanical Piping Mains (Building -to Line) | 1d | 2026-12-09 | 2026-12-09 | DH.150012038 |  | 62.88d |
| DH.150012040 |  | DH1500/Mechanical Yard-F150 // Install Mechanical Chiller to Mains | 1d | 2026-12-10 | 2026-12-10 | DH.150012039 |  | 62.88d |
|  | 7 | **G150** |  | 2026-12-07 | 2026-12-11 |  |  |  |
| DH.150012013 |  | DH1500/Mechanical Yard-G150 // Set Chiller - CHLR-1CY40-G150 | 1d | 2026-12-07 | 2026-12-07 | DH.150012011 |  | 15.88d |
| DH.150012014 |  | DH1500/Mechanical Yard-G150 // Set TES tank - TES-1CY40-G150 | 1d | 2026-12-08 | 2026-12-08 | DH.150012013 |  | 61.88d |
| DH.150012041 |  | DH1500/Mechanical Yard-G150 // Install CHWP | 1d | 2026-12-09 | 2026-12-09 | DH.150012014 |  | 61.88d |
| DH.150012042 |  | DH1500/Mechanical Yard-G150 // Install Mechanical Piping Mains (Building -to Line) | 1d | 2026-12-10 | 2026-12-10 | DH.150012041 |  | 61.88d |
| DH.150012043 |  | DH1500/Mechanical Yard-G150 // Install Mechanical Chiller to Mains | 1d | 2026-12-11 | 2026-12-11 | DH.150012042 |  | 61.88d |
|  | 8 | **H150** |  | 2026-12-08 | 2026-12-14 |  |  |  |
| DH.150012015 |  | DH1500/Mechanical Yard-H150 // Set Chiller - CHLR-1CY40-H150 | 1d | 2026-12-08 | 2026-12-08 | DH.150012013 |  | 15.88d |
| DH.150012016 |  | DH1500/Mechanical Yard-H150 // Set TES tank - TES-1CY40-H150 | 1d | 2026-12-09 | 2026-12-09 | DH.150012015 |  | 60.88d |
| DH.150012044 |  | DH1500/Mechanical Yard-H150 // Install CHWP | 1d | 2026-12-10 | 2026-12-10 | DH.150012016 |  | 60.88d |
| DH.150012045 |  | DH1500/Mechanical Yard-H150 // Install Mechanical Piping Mains (Building -to Line) | 1d | 2026-12-11 | 2026-12-11 | DH.150012044 |  | 60.88d |
| DH.150012046 |  | DH1500/Mechanical Yard-H150 // Install Mechanical Chiller to Mains | 1d | 2026-12-14 | 2026-12-14 | DH.150012045 |  | 60.88d |
|  | 9 | **J150** |  | 2026-12-09 | 2026-12-15 |  |  |  |
| DH.150012017 |  | DH1500/Mechanical Yard-J150 // Set Chiller - CHLR-1CY40-J150 | 1d | 2026-12-09 | 2026-12-09 | DH.150012015 |  | 15.88d |
| DH.150012018 |  | DH1500/Mechanical Yard-J150 // Set TES tank - TES-1CY40-J150 | 1d | 2026-12-10 | 2026-12-10 | DH.150012017 |  | 59.88d |
| DH.150012047 |  | DH1500/Mechanical Yard-J150 // Install CHWP | 1d | 2026-12-11 | 2026-12-11 | DH.150012018 |  | 59.88d |
| DH.150012048 |  | DH1500/Mechanical Yard-J150 // Install Mechanical Piping Mains (Building -to Line) | 1d | 2026-12-14 | 2026-12-14 | DH.150012047 |  | 59.88d |
| DH.150012049 |  | DH1500/Mechanical Yard-J150 // Install Mechanical Chiller to Mains | 1d | 2026-12-15 | 2026-12-15 | DH.150012048 |  | 59.88d |
|  | 10 | **K150** |  | 2026-12-10 | 2026-12-16 |  |  |  |
| DH.150012019 |  | DH1500/Mechanical Yard-K150 // Set Chiller - CHLR-1CY40-K150 | 1d | 2026-12-10 | 2026-12-10 | DH.150012017 |  | 15.88d |
| DH.150012020 |  | DH1500/Mechanical Yard-K150 // Set TES tank - TES-1CY40-K150 | 1d | 2026-12-11 | 2026-12-11 | DH.150012019 |  | 58.88d |
| DH.150012050 |  | DH1500/Mechanical Yard-K150 // Install CHWP | 1d | 2026-12-14 | 2026-12-14 | DH.150012020 |  | 58.88d |
| DH.150012051 |  | DH1500/Mechanical Yard-K150 // Install Mechanical Piping Mains (Building -to Line) | 1d | 2026-12-15 | 2026-12-15 | DH.150012050 |  | 58.88d |
| DH.150012052 |  | DH1500/Mechanical Yard-K150 // Install Mechanical Chiller to Mains | 1d | 2026-12-16 | 2026-12-16 | DH.150012051 |  | 58.88d |
|  | 11 | **R150** |  | 2026-12-11 | 2026-12-17 |  |  |  |
| DH.150012021 |  | DH1500/Mechanical Yard-R150 // Set Chiller - CHLR-1CY40-R150 | 1d | 2026-12-11 | 2026-12-11 | DH.150012019 |  | 15.88d |
| DH.150012022 |  | DH1500/Mechanical Yard-R150 // Set TES tank - TES-1CY40-R150 | 1d | 2026-12-14 | 2026-12-14 | DH.150012021 |  | 15.88d |
| DH.150012053 |  | DH1500/Mechanical Yard-R150 // Install CHWP | 1d | 2026-12-15 | 2026-12-15 | DH.150012022 |  | 15.88d |
| DH.150012054 |  | DH1500/Mechanical Yard-R150 // Install Mechanical Piping Mains (Building -to Line) | 1d | 2026-12-16 | 2026-12-16 | DH.150012053 |  | 15.88d |
| DH.150012055 |  | DH1500/Mechanical Yard-R150 // Install Mechanical Chiller to Mains | 1d | 2026-12-17 | 2026-12-17 | DH.150012054 |  | 15.88d |
|  | 12 | **Test & Flushing** |  | 2026-12-18 | 2027-01-04 |  |  |  |
| A5742 |  | DH1500/Mechanical Yard-Test & Flushing // Line Test & Checking | 2d | 2026-12-18 | 2026-12-21 | DH.150012055, DH.150012052, DH.150012049, DH.150012046, DH.150012043, DH.150012040, DH.150012037, DH.150012034, DH.150012031, DH.150012028, DH.150012025 |  | 60.88d |
| A5744 |  | DH1500/Mechanical Yard-Test & Flushing // Electrical & Controls Testing / Checking | 3d | 2026-12-22 | 2026-12-24 | A5742 |  | 60.88d |
| A5743 |  | DH1500/Mechanical Yard-Test & Flushing // Fill, Flush & Purge | 5d | 2026-12-28 | 2027-01-04 | A5744 |  | 60.88d |
|  | 2 | **Electrical & Controls** |  | 2026-09-01 | 2026-11-13 |  |  |  |
| A5802 |  | DH1500/Electrical & Controls // Excavate Raceways from Building to Chiller Pad | 8d | 2026-09-01 A | 2026-10-02 | A5801 SS, A5796 | 62% | 93.88d |
| A5803 |  | DH1500/Electrical & Controls // Install Raceway from Building To Chiller Pad | 8d | 2026-09-03 A | 2026-10-05 | A5802 SS+4d | 50% | 93.88d |
| A5804 |  | DH1500/Electrical & Controls // Backfill Chiller Raceways from Building to Chiller Pad | 8d | 2026-10-05 | 2026-10-15 | A5802 |  | 94.88d |
| A5807 |  | DH1500/Electrical & Controls // Raceway connections to Chiller units | 6d | 2026-10-06 | 2026-10-14 | A5803, A5804 SS |  | 93.88d |
| A5809 |  | DH1500/Electrical & Controls // Install Panels and Raceways to CHWP | 10d | 2026-10-06 | 2026-10-20 | A5807 SS |  | 93.88d |
| A5810 |  | DH1500/Electrical & Controls // Install Controls conduits and wire to Chiller units | 12d | 2026-10-06 | 2026-10-22 | A5809 SS |  | 93.88d |
| A5813 |  | DH1500/Electrical & Controls // Pull and Terminate Feeders to Chiller units | 6d | 2026-10-15 | 2026-10-22 | A5807, A5804 SS |  | 97.88d |
| A5815 |  | DH1500/Electrical & Controls // Mechanical CWP Support Caisson Footings | 10d | 2026-10-23 | 2026-11-05 | A5810 |  | 93.88d |
| A5816 |  | DH1500/Electrical & Controls // Chiller units Ready to Energize | 6d | 2026-10-23 | 2026-10-30 | A5813, A5810, A5809 |  | 97.88d |
| A5817 |  | DH1500/Electrical & Controls // Fine Grade Install Landscape Fabric & Install Rock | 5d | 2026-11-06 | 2026-11-13 | A5815, A5810, A5816 |  | 93.88d |
|  | 2 | **Roof - RTUs** |  | 2026-08-12 | 2026-10-21 |  |  |  |
|  | 1 | **Column Lines 1.2 thru 2.0** |  | 2026-08-12 | 2026-10-21 |  |  |  |
| DH.150012057 |  | DH1500/Roof - RTUs // - RTU-RT- 015 | 1d | 2026-08-12 A | 2026-08-12 A | DH.150012058 SS+2d | 100% |  |
| DH.150012058 |  | DH1500/Roof - RTUs // - RTU-RT- 014 | 1d | 2026-08-12 A | 2026-08-12 A | DH.140012064 | 100% |  |
| DH.150012064 |  | DH1500/Roof - RTUs // - RTU-RT- 016 | 1d | 2026-08-12 A | 2026-08-12 A | DH.150012057 | 100% |  |
| DH.150012059 |  | DH1500/Roof - RTUs // Install Mechanical Piping | 15d | 2026-09-01 A | 2026-09-22 A | DH.150012064, DH.150012058 | 100% |  |
| DH.150012056 |  | DH1500/Roof - RTUs // Install heat trace system | 15d | 2026-09-30 | 2026-10-21 | DH.150012059 |  | 109.88d |
| DH.15007841 |  | DH1500/Roof - RTUs // Install Electrical Conduit and Controls Piping | 15d | 2026-09-30 | 2026-10-21 | DH.150012064, DH.150012059 |  | 96.88d |
|  | 1 | **Interior Build Out** |  | 2026-09-30 | 2027-05-21 |  |  |  |
|  | 9 | **Flex 1000E10** |  | 2026-09-30 | 2026-12-18 |  |  |  |
| DH.1500.1000 |  | DH1500/Flex 1000E10 // Seal Concrete | 2d | 2026-09-30 | 2026-10-01 | SOG.1466 |  | 12.88d |
| DH.1500.1010 |  | DH1500/Flex 1000E10 // MEPF Layout of Overhead Supports | 2d | 2026-10-02 | 2026-10-05 | STRUCTURE.7510, DH.1500.1000 |  | 12.88d |
| B120001.3179 |  | DH1500/Flex 1000E10 // Install Overhead Cable Ladder / 36" Cable Tray - TFO | 5d | 2026-10-06 | 2026-10-13 | DH.1500.1010, A5683 |  | 32.88d |
| DH.1500.1040 |  | DH1500/Flex 1000E10 // Frame Walls including Backing | 4d | 2026-10-06 | 2026-10-09 | DH.1500.1010 |  | 44.88d |
| B120001.3180 |  | DH1500/Flex 1000E10 // Install Overhead HAC - TFO | 5d | 2026-10-14 | 2026-10-20 | B120001.3179 |  | 32.88d |
| DH.1500.1020 |  | DH1500/Flex 1000E10 // MEPF Install High Overhead Systems | 6d | 2026-10-21 | 2026-10-28 | DH.1500.1010, B120001.3180 |  | 32.88d |

| ID | WBS | Task | Duration | Start | Finish | Predecessors | Total float | Constraint |
| --- | --- | --- | --- | --- | --- | --- | --- | --- |
| DH.1500.1060 |  | DH1500/Flex 1000E10 // MEPF Install Rough Wall | 2d | 2026-10-29 | 2026-10-30 | DH.1500.1040, DH.1500.1020 | 32.88d |  |
| DH.1500.1080 |  | DH1500/Flex 1000E10 // Rough Wall Inspspection (Approval to Close up) | 1d | 2026-11-02 | 2026-11-02 | DH.1500.1060 | 32.88d |  |
| DH.1500.1070 |  | DH1500/Flex 1000E10 // Install Top Down Sheet Rock | 5d | 2026-11-03 | 2026-11-09 | DH.1500.1040 SS+2d, DH.1500.1080 | 32.88d |  |
| DH.1500.1090 |  | DH1500/Flex 1000E10 // Install Balance of Sheetrock | 3d | 2026-11-10 | 2026-11-13 | DH.1500.1070 | 32.88d |  |
| DH.1500.1100 |  | DH1500/Flex 1000E10 // Tape and Finish Walls | 6d | 2026-11-16 | 2026-11-23 | DH.1500.1090 | 32.88d |  |
| DH.1500.1110 |  | DH1500/Flex 1000E10 // Prime and First Coat of Paint | 2d | 2026-11-24 | 2026-11-25 | DH.1500.1100 | 32.88d |  |
| DH.1500.1120 |  | DH1500/Flex 1000E10 // Install MEPF Overhead Ceiling Rough | 3d | 2026-11-27 | 2026-12-01 | DH.1500.1110 | 32.88d |  |
| DH.1500.1130 |  | DH1500/Flex 1000E10 // Install Lighting, Fire Alarm & Fire Protection | 2d | 2026-12-02 | 2026-12-03 | DH.1500.1120 | 32.88d |  |
| DH.1500.1140 |  | DH1500/Flex 1000E10 // Wall Touch up Final Coat of Paint | 3d | 2026-12-04 | 2026-12-08 | DH.1500.1130 | 32.88d |  |
| DH.1500.1050 |  | DH1500/Flex 1000E10 // Install Door Frames | 1d | 2026-12-09 | 2026-12-09 | DH.1500.1040 FF, DH.1500.1140 | 71.88d |  |
| DH.1500.1150 |  | DH1500/Flex 1000E10 // Install Wall Base, Trim, and Devices | 3d | 2026-12-09 | 2026-12-11 | DH.1500.1140 | 32.88d |  |
| DH.1500.3057 |  | DH1500/Flex 1000E10 // Ready to Receive Equipment | 0d | 2026-12-11 | 2026-12-11 | DH.1500.1150 | 32.88d |  |
| DH.1500.1160 |  | DH1500/Flex 1000E10 // Suffolk Pre Punch | 5d | 2026-12-14 | 2026-12-18 | DH.1500.1050, DH.1500.3057 | 69.88d |  |
|  | 7 | **Electrical Room #5501** |  | 2026-10-06 | 2027-02-11 |  |  |  |
| B120001.3057 |  | DH1500/Electrical Room #5501 // MEPF Layout of Overhead Supports | 2d | 2026-10-06 | 2026-10-07 | DH.1500.1010 | 12.88d |  |
| B120001.3060 |  | DH1500/Electrical Room #5501 // MEPF Install High Overhead Systems | 6d | 2026-10-08 | 2026-10-16 | B120001.3057 | 32.88d |  |
| B120001.3181 |  | DH1500/Electrical Room #5501 // Install Overhead Cable Ladder / 36" Cable Tray - TFO | 5d | 2026-10-08 | 2026-10-15 | B120001.3057 | 23.88d |  |
| DH.1400.3036 |  | DH1500/Electrical Room #5501 // Install Overhead Buss duct | 2d | 2026-10-08 | 2026-10-09 | B120001.3057 | 31.88d |  |
| B120001.3182 |  | DH1500/Electrical Room #5501 // Install Overhead HAC - TFO | 5d | 2026-10-16 | 2026-10-22 | B120001.3181 | 23.88d |  |
| DH.1300.3040 |  | DH1500/Electrical Room #5501 // Install Cable Tray | 3d | 2026-10-19 | 2026-10-21 | B120001.3060 | 32.88d |  |
| F.1000A.1246 |  | DH1500/Electrical Room #5501 // Rough-In Security | 2d | 2026-10-19 | 2026-10-20 | B120001.3060 | 98.88d |  |
| F.1000A.1535 |  | DH1500/Electrical Room #5501 // BMS & EPMS Rough-In | 2d | 2026-10-19 | 2026-10-20 | F.1000A.1246 FF, F.1000A.1246 SS | 110.88d |  |
| F.1000A.1247 |  | DH1500/Electrical Room #5501 // Pull & Test Security Cable | 3d | 2026-10-21 | 2026-10-23 | F.1000A.1246 | 98.88d |  |
| DH.1400.3037 |  | DH1500/Electrical Room #5501 // Install Cable Tray | 3d | 2026-10-23 | 2026-10-27 | DH.1400.3036, B120001.3182 | 23.88d |  |
| F.1000A.1248 |  | DH1500/Electrical Room #5501 // Install Security Devices | 2d | 2026-10-26 | 2026-10-27 | F.1000A.1247 | 98.88d |  |
| B120001.3058 |  | DH1500/Electrical Room #5501 // Frame Walls including Backing | 4d | 2026-10-28 | 2026-11-02 | B120001.3057, DH.1400.3037 | 23.88d |  |
| DH.1400.3039 |  | DH1500/Electrical Room #5501 // Install Cable Buss From Exterior | 3d | 2026-10-28 | 2026-10-30 | DH.1300.3040, DH.1400.3037 | 28.88d |  |
| DH.1500.1170 |  | DH1500/Electrical Room #5501 // Install Overhead Buss duct | 2d | 2026-11-02 | 2026-11-03 | DH.1400.3039 | 28.88d |  |
| B120001.3061 |  | DH1500/Electrical Room #5501 // MEPF Install Rough Wall | 2d | 2026-11-03 | 2026-11-04 | B120001.3058 | 25.88d |  |
| B120001.3062 |  | DH1500/Electrical Room #5501 // Install Top Down Sheet Rock | 5d | 2026-11-03 | 2026-11-09 | B120001.3058 | 23.88d |  |
| DH.1500.1180 |  | DH1500/Electrical Room #5501 // Install Cable Tray | 3d | 2026-11-03 | 2026-11-05 | DH.1500.1170 SS+1d | 28.88d |  |
| B120001.3063 |  | DH1500/Electrical Room #5501 // Rough Wall Inspspection (Approval to Close up) | 1d | 2026-11-05 | 2026-11-05 | B120001.3061 | 25.88d |  |
| B120001.3064 |  | DH1500/Electrical Room #5501 // Install Balance of Sheetrock | 3d | 2026-11-10 | 2026-11-13 | B120001.3063, B120001.3062 | 23.88d |  |
| ER.5101.3108 |  | DH1500/Electrical Room #5501 // Room Ready to Receive Equipment | 0d | 2026-11-13 | 2026-11-13 | B120001.3064, DH.1500.1170 | 23.88d |  |
| DH.1500.1220 |  | DH1500/Electrical Room #5501 // Pull Cable Tray Feeders (CRAHU/CDU) | 10d | 2026-11-16 | 2026-11-30 | DH.1500.1180, B120001.3064 | 29.88d |  |
| DH.1500.1290 |  | DH1500/Electrical Room #5501 // Pull Misc Feeder and Branch Circuits | 10d | 2026-11-16 | 2026-11-30 | DH.1500.1180, B120001.3064 | 29.88d |  |
| DH.1500.1300 |  | DH1500/Electrical Room #5501 // Land and Terminate Misc Feeder and Branch Circuits | 10d | 2026-12-01 | 2026-12-14 | DH.1500.1290 | 29.88d |  |
| ER.5101.3075 |  | DH1500/Electrical Room #5501 // Set Skid - SKID-A150 | 1d | 2027-01-04 | 2027-01-04 | DH.1500.1170, DH.1500.1180, ER.5101.3108, ER.5101.3110 | -8.12d |  |
| ER.5101.3076 |  | DH1500/Electrical Room #5501 // Set Skid - SKID-B150 | 1d | 2027-01-04 | 2027-01-04 | ER.5101.3075 SS | -8.12d |  |
| ER.5101.3110 |  | DH1500/Electrical Room #5501 // DH1500 - OFCI Skid Ship Date (01/04/2027) First Shipment | 0d | 2027-01-04 | 2027-01-04 | ER.5101.3108 FF | -8.12d | finish on or after 2027-01-04 |
| ER.5101.3077 |  | DH1500/Electrical Room #5501 // Set Skid - SKID-C150 | 1d | 2027-01-05 | 2027-01-05 | ER.5101.3076 | -8.12d |  |
| ER.5101.3078 |  | DH1500/Electrical Room #5501 // Set Skid - SKID-D150 | 1d | 2027-01-06 | 2027-01-06 | ER.5101.3077 | -8.12d |  |
| ER.5101.3079 |  | DH1500/Electrical Room #5501 // Set Skid - SKID-E150 | 1d | 2027-01-06 | 2027-01-06 | ER.5101.3078 SS | -8.12d |  |
| DH.1500.1200 |  | DH1500/Electrical Room #5501 // Install Cable Buss From Exterior | 3d | 2027-01-07 | 2027-01-11 | ER.5101.3079, DH.1500.1180, B120001.3064 | 2.88d |  |
| DH.1500.1250 |  | DH1500/Electrical Room #5501 // Set CRAH-ER5501- 01 | 1d | 2027-01-07 | 2027-01-07 | DH.1400.3039, ER.5101.3079 | -8.12d |  |
| DH.1500.1320 |  | DH1500/Electrical Room #5501 // Buss Duct Tie In to Elect Gear | 3d | 2027-01-07 | 2027-01-11 | ER.5101.3079, DH.1500.1170, DH.1500.1180, B120001.3064 | 11.88d |  |
| DH.1500.3031 |  | DH1500/Electrical Room #5501 // Set CRAH-ER5501- 02 | 1d | 2027-01-07 | 2027-01-07 | DH.1500.1250 SS | -8.12d |  |
| DH.1500.3032 |  | DH1500/Electrical Room #5501 // Set CRAH-ER5501- 03 | 1d | 2027-01-07 | 2027-01-07 | DH.1500.3031 SS | -8.12d |  |
| DH.1500.3033 |  | DH1500/Electrical Room #5501 // Set CRAH-ER5501- 04 | 1d | 2027-01-08 | 2027-01-08 | DH.1500.3032 | -8.12d |  |
| DH.1500.3034 |  | DH1500/Electrical Room #5501 // Set CRAH-ER5501- 05 | 1d | 2027-01-08 | 2027-01-08 | DH.1500.3033 SS | -8.12d |  |
| DH.1500.3035 |  | DH1500/Electrical Room #5501 // Set CRAH-ER5501- 06 | 1d | 2027-01-08 | 2027-01-08 | DH.1500.3034 SS | -8.12d |  |
| ER.5101.3099 |  | DH1500/Electrical Room #5501 // Set PDU - PDU-R150-01 | 1d | 2027-01-11 | 2027-01-11 | DH.1500.3035 | -8.12d |  |
| DH.1500.1210 |  | DH1500/Electrical Room #5501 // Pull Cable Buss Feeders | 6d | 2027-01-12 | 2027-01-20 | DH.1500.1200 | 2.88d |  |
| ER.5101.3105 |  | DH1500/Electrical Room #5501 // Set UPS - UPS-R150 | 1d | 2027-01-12 | 2027-01-12 | ER.5101.3099 | -8.12d |  |
| DH.1500.1260 |  | DH1500/Electrical Room #5501 // Mechanical Connections to CRAHU | 5d | 2027-01-13 | 2027-01-20 | DH.1500.3035, DH.1500.1250, ER.5101.3105 | -8.12d |  |
| DH.1500.1230 |  | DH1500/Electrical Room #5501 // Terminate Cable Buss Feeders | 3d | 2027-01-21 | 2027-01-25 | DH.1500.1210 | 2.88d |  |
| DH.1500.1270 |  | DH1500/Electrical Room #5501 // Install Condensate lines from CRAHU's | 2d | 2027-01-21 | 2027-01-22 | DH.1500.1260, DH.1500.3034 | 3.88d |  |
| DH.1500.1280 |  | DH1500/Electrical Room #5501 // Install Elec Feeders to CRAHU's | 3d | 2027-01-21 | 2027-01-25 | DH.1500.1260, DH.1500.1180 | -8.12d |  |
| B120001.3059 |  | DH1500/Electrical Room #5501 // Install Door Frames | 1d | 2027-01-26 | 2027-01-26 | B120001.3058 FF, DH.1500.1280 | -8.12d |  |
| DH.1500.1240 |  | DH1500/Electrical Room #5501 // Land and Terminate Cabel Tray Feeders In Gear | 10d | 2027-01-27 | 2027-02-09 | DH.1500.1220, B120001.3059 | -8.12d |  |
| F.1000A.1249 |  | DH1500/Electrical Room #5501 // Mount & Terminate Security Devices | 5d | 2027-01-27 | 2027-02-02 | F.1000A.1248, B120001.3059 | 38.88d |  |
| F.1000A.1250 |  | DH1500/Electrical Room #5501 // Test Security Devices | 2d | 2027-02-03 | 2027-02-04 | F.1000A.1535 FF, F.1000A.1249 | 38.88d |  |
| DH.1500.1310 |  | DH1500/Electrical Room #5501 // Final FOD Check of all Panels | 2d | 2027-02-10 | 2027-02-11 | DH.1500.1230, DH.1500.1240, DH.1500.1320, DH.1500.1300 | -8.12d |  |
| DH.1500.1330 |  | DH1500/Electrical Room #5501 // Mechanical Equipment Pre-Start up | 2d | 2027-02-10 | 2027-02-11 | DH.1500.1280, DH.1500.1270, DH.1500.1260, DH.1500.1240 | -8.12d |  |
|  | 2 | **Electrcal Room #5504** |  | 2026-10-08 | 2027-02-16 |  |  |  |
| B120001.3092 |  | DH1500/Electrical Room #5504 // MEPF Layout of Overhead Supports | 2d | 2026-10-08 | 2026-10-09 | B120001.3057 | 22.88d |  |
| B120001.3094 |  | DH1500/Electrical Room #5504 // MEPF Install High Overhead Systems | 6d | 2026-10-13 | 2026-10-20 | B120001.3092 | 42.88d |  |
| B120001.3183 |  | DH1500/Electrical Room #5504 // Install Overhead Cable Ladder / 36" Cable Tray - TFO | 5d | 2026-10-13 | 2026-10-19 | B120001.3092 | 22.88d |  |
| DH.1400.3064 |  | DH1500/Electrical Room #5504 // Install Overhead Buss duct | 2d | 2026-10-13 | 2026-10-14 | B120001.3092 | 31.88d |  |
| B120001.3184 |  | DH1500/Electrical Room #5504 // Install Overhead HAC - TFO | 5d | 2026-10-20 | 2026-10-26 | B120001.3183 | 22.88d |  |

| ID | WBS | Task | Duration | Start | Finish | Predecessors | Total float | Constraint |
| --- | --- | --- | --- | --- | --- | --- | --- | --- |
| DH.1300.3066 |  | DH1500/Electrical Room #5504 // Install Cable Tray | 3d | 2026-10-21 | 2026-10-23 | B120001.3094 | 42.88d |  |
| F.1000A.1251 |  | DH1500/Electrical Room #5504 // Rough-In Security | 2d | 2026-10-21 | 2026-10-22 | B120001.3094 | 96.88d |  |
| F.1000A.1545 |  | DH1500/Electrical Room #5504 // BMS & EPMS Rough-In | 2d | 2026-10-21 | 2026-10-22 | F.1000A.1251 FF, F.1000A.1251 SS | 108.88d |  |
| F.1000A.1252 |  | DH1500/Electrical Room #5504 // Pull & Test Security Cable | 3d | 2026-10-23 | 2026-10-27 | F.1000A.1251 | 96.88d |  |
| DH.1400.3065 |  | DH1500/Electrical Room #5504 // Install Cable Tray | 3d | 2026-10-27 | 2026-10-29 | DH.1400.3064 SS+1d, B120001.3184 | 22.88d |  |
| B120001.3093 |  | DH1500/Electrical Room #5504 // Frame Walls including Backing | 4d | 2026-10-30 | 2026-11-04 | B120001.3092, DH.1400.3065 | 22.88d |  |
| B120001.3095 |  | DH1500/Electrical Room #5504 // MEPF Install Rough Wall | 2d | 2026-11-05 | 2026-11-06 | B120001.3093 | 22.88d |  |
| B120001.3097 |  | DH1500/Electrical Room #5504 // Rough Wall Inspspection (Approval to Close up) | 1d | 2026-11-09 | 2026-11-09 | B120001.3095 | 22.88d |  |
| B120001.3096 |  | DH1500/Electrical Room #5504 // Install Top Down Sheet Rock | 5d | 2026-11-10 | 2026-11-17 | B120001.3093 SS+2d, B120001.3097 | 22.88d |  |
| B120001.3098 |  | DH1500/Electrical Room #5504 // Install Balance of Sheetrock | 3d | 2026-11-18 | 2026-11-20 | B120001.3096 | 22.88d |  |
| DH.1400.3071 |  | DH1500/Electrical Room #5504 // Room Ready to Receive Equipment | 0d | 2026-11-20 | 2026-11-20 | B120001.3098 | 22.88d |  |
| ER.5101.3080 |  | DH1500/Electrical Room #5504 // Set Skid - SKID-F150 | 1d | 2027-01-11 | 2027-01-11 | ER.5101.3079, ER.5101.3112 | -9.12d |  |
| ER.5101.3081 |  | DH1500/Electrical Room #5504 // Set Skid - SKID-G150 | 1d | 2027-01-11 | 2027-01-11 | ER.5101.3080 SS | -9.12d |  |
| ER.5101.3082 |  | DH1500/Electrical Room #5504 // Set Skid - SKID-H150 | 1d | 2027-01-11 | 2027-01-11 | ER.5101.3081 SS | -9.12d |  |
| ER.5101.3083 |  | DH1500/Electrical Room #5504 // Set Skid - SKID-J150 | 1d | 2027-01-11 | 2027-01-11 | ER.5101.3082 SS | -9.12d |  |
| ER.5101.3084 |  | DH1500/Electrical Room #5504 // Set Skid - SKID-K150 | 1d | 2027-01-11 | 2027-01-11 | ER.5101.3083 SS | -9.12d |  |
| ER.5101.3112 |  | DH1500/Electrical Room #5504 // DH1500 - OFCI Skid Ship Date (01/09/2027) 2ND Shipment | 0d | 2027-01-11 | 2027-01-11 | DH.1400.3071 FF | -9.12d | finish on or after 2027-01-09 |
| DH.1400.3066 |  | DH1500/Electrical Room #5504 // Install Cable Buss From Exterior | 3d | 2027-01-12 | 2027-01-14 | ER.5101.3084, DH.1300.3066, DH.1400.3065 | -9.12d |  |
| DH.1500.3036 |  | DH1500/Electrical Room #5504 // Set CRAH-ER5504- 01 | 1d | 2027-01-15 | 2027-01-15 | DH.1400.3066, ER.5101.3084 | -9.12d |  |
| DH.1500.3037 |  | DH1500/Electrical Room #5504 // Install Overhead Buss duct | 2d | 2027-01-15 | 2027-01-19 | DH.1400.3066 | -9.12d |  |
| DH.1500.3040 |  | DH1500/Electrical Room #5504 // Install Cable Tray | 3d | 2027-01-15 | 2027-01-20 | DH.1500.3037 SS | -9.12d |  |
| DH.1500.3038 |  | DH1500/Electrical Room #5504 // Set CRAH-ER5504- 02 | 1d | 2027-01-19 | 2027-01-19 | DH.1500.3036 | -9.12d |  |
| DH.1500.3039 |  | DH1500/Electrical Room #5504 // Set CRAH-ER5504- 03 | 1d | 2027-01-19 | 2027-01-19 | DH.1500.3038 FF | -9.12d |  |
| DH.1500.3041 |  | DH1500/Electrical Room #5504 // Set CRAH-ER5504- 04 | 1d | 2027-01-19 | 2027-01-19 | DH.1500.3039 FF | -9.12d |  |
| DH.1500.3042 |  | DH1500/Electrical Room #5504 // Set CRAH-ER5504- 05 | 1d | 2027-01-20 | 2027-01-20 | DH.1500.3041 | -9.12d |  |
| DH.1500.3043 |  | DH1500/Electrical Room #5504 // Set CRAH-ER5504- 06 | 1d | 2027-01-20 | 2027-01-20 | DH.1500.3042 FF | -9.12d |  |
| DH.1500.3044 |  | DH1500/Electrical Room #5504 // Mechanical Connections to CRAHU | 5d | 2027-01-21 | 2027-01-27 | DH.1500.3043, DH.1500.3036 | -2.12d |  |
| DH.1500.3047 |  | DH1500/Electrical Room #5504 // Install Cable Buss From Exterior | 3d | 2027-01-21 | 2027-01-25 | ER.5101.3084, DH.1500.3040, B120001.3098, DH.1500.3037 | -6.12d |  |
| DH.1500.3048 |  | DH1500/Electrical Room #5504 // Buss Duct Tie In to Elect Gear | 3d | 2027-01-21 | 2027-01-25 | DH.1500.3037, DH.1500.3040, B120001.3098 | 2.88d |  |
| DH.1500.3050 |  | DH1500/Electrical Room #5504 // Pull Cable Tray Feeders (CRAHU/CDU) | 10d | 2027-01-21 | 2027-02-03 | DH.1500.3040, B120001.3098, DH.1500.3037, DH.1500.3043 | -9.12d |  |
| DH.1500.3051 |  | DH1500/Electrical Room #5504 // Pull Misc Feeder and Branch Circuits | 10d | 2027-01-21 | 2027-02-03 | DH.1500.3040, B120001.3098, DH.1500.3037 | -9.12d |  |
| DH.1500.3049 |  | DH1500/Electrical Room #5504 // Pull Cable Buss Feeders | 6d | 2027-01-26 | 2027-02-02 | DH.1500.3047 | -6.12d |  |
| DH.1500.3045 |  | DH1500/Electrical Room #5504 // Install Condensate lines from CRAHU's | 2d | 2027-01-28 | 2027-01-29 | DH.1500.3044, DH.1500.3042 | -1.12d |  |
| DH.1500.3046 |  | DH1500/Electrical Room #5504 // Install Elec Feeders to CRAHU's | 3d | 2027-01-28 | 2027-02-01 | DH.1500.3044, DH.1500.3040 | -2.12d |  |
| DH.1500.3053 |  | DH1500/Electrical Room #5504 // Land and Terminate Cabel Tray Feeders In Gear | 10d | 2027-01-28 | 2027-02-10 | DH.1500.3050 SS+5d | -9.12d |  |
| DH.1500.3054 |  | DH1500/Electrical Room #5504 // Land and Terminate Misc Feeder and Branch Circuits | 10d | 2027-01-28 | 2027-02-10 | DH.1500.3051 SS+5d | -9.12d |  |
| B120001.3099 |  | DH1500/Electrical Room #5504 // Install Door Frames | 1d | 2027-02-02 | 2027-02-02 | B120001.3093 FF, DH.1500.3046 | 31.88d |  |
| DH.1500.3052 |  | DH1500/Electrical Room #5504 // Terminate Cable Buss Feeders | 3d | 2027-02-03 | 2027-02-05 | DH.1500.3049 | -6.12d |  |
| F.1000A.1253 |  | DH1500/Electrical Room #5504 // Install Security Devices | 2d | 2027-02-03 | 2027-02-04 | F.1000A.1252, B120001.3099 | 31.88d |  |
| F.1000A.1254 |  | DH1500/Electrical Room #5504 // Mount & Terminate Security Devices | 5d | 2027-02-05 | 2027-02-11 | F.1000A.1253, B120001.3099 | 31.88d |  |
| DH.1500.3055 |  | DH1500/Electrical Room #5504 // Final FOD Check of all Panels | 2d | 2027-02-11 | 2027-02-12 | DH.1500.3052, DH.1500.3053, DH.1500.3048, DH.1500.3054 | -9.12d |  |
| DH.1500.3056 |  | DH1500/Electrical Room #5504 // Mechanical Equipment Pre-Start up | 2d | 2027-02-11 | 2027-02-12 | DH.1500.3046, DH.1500.3045, DH.1500.3044, DH.1500.3053 | -9.12d |  |
| F.1000A.1255 |  | DH1500/Electrical Room #5504 // Test Security Devices | 2d | 2027-02-12 | 2027-02-16 | F.1000A.1545 FF, F.1000A.1254, DH.1500.3053 | 31.88d |  |
|  | 3 | **Data Hall 1500** |  | 2026-10-08 | 2027-01-07 |  |  |  |
| DH.15006270 |  | DH 1500 // MEPF overhead layout | 3d | 2026-10-08 | 2026-10-13 | STRUCTURE.7510, B120001.3057 | 12.88d |  |
| DH.15006300 |  | DH 1500 // Frame walls | 10d | 2026-10-08 | 2026-10-22 | DH.15006270 SS | 12.88d |  |
| B120001.3185 |  | DH 1500 // Install Overhead Cable Ladder / 36" Cable Tray - TFO | 5d | 2026-10-14 | 2026-10-20 | DH.15006270 | 22.88d |  |
| B120001.3186 |  | DH 1500 // Install Overhead HAC - TFO | 5d | 2026-10-21 | 2026-10-27 | B120001.3185 | 22.88d |  |
| DH.15006320 |  | DH 1500 // MEP rough in walls | 5d | 2026-10-23 | 2026-10-29 | DH.15006300 | 12.88d |  |
| DH.15006290 |  | DH 1500 // MEPF high overhead install | 10d | 2026-10-28 | 2026-11-10 | DH.15006270, B120001.3186 | 22.88d |  |
| DH.150012067 |  | DH 1500 // Install 1-Side Sheet Rock (DH-Side) | 3d | 2026-10-30 | 2026-11-03 | DH.15006300, DH.15006320 | 12.88d |  |
| DH.15006360 |  | DH 1500 // Tape and finish walls | 15d | 2026-11-04 | 2026-11-25 | DH.150012067, DH.15006300 SS | 12.88d |  |
| DH.15007800 |  | DH 1500 // Install Ceiling supports (rods/wires) no grid | 5d | 2026-11-12 | 2026-11-18 | DH.15006300 SS, DH.15006290 | 22.88d |  |
| F.1000A.1256 |  | DH 1500 // Rough-In Security | 2d | 2026-11-12 | 2026-11-13 | DH.15006290 | 81.88d |  |
| F.1000A.1555 |  | DH 1500 // BMS & EPMS Rough-In | 2d | 2026-11-12 | 2026-11-13 | F.1000A.1256 FF, F.1000A.1256 SS | 93.88d |  |
| F.1000A.1257 |  | DH 1500 // Pull & Test Security Cable | 3d | 2026-11-16 | 2026-11-18 | F.1000A.1256 | 81.88d |  |
| DH.15006220 |  | DH 1500 // Install ceiling grid system | 8d | 2026-11-19 | 2026-12-01 | DH.15007800 | 22.88d |  |
| DH.15006260 |  | DH 1500 // Polish concrete | 5d | 2026-11-27 | 2026-12-03 | DH.15006360 | 28.88d |  |
| DH.15006410 |  | DH 1500 // Prime and 1st coat of Paint | 5d | 2026-11-27 | 2026-12-03 | DH.15006360 | 28.88d |  |
| DH.15006250 |  | DH 1500 // Install overhead MEP and lighting | 5d | 2026-12-02 | 2026-12-08 | DH.15006220 | 22.88d |  |
| DH.15006310 |  | DH 1500 // Install wall door frames | 3d | 2026-12-04 | 2026-12-08 | DH.15006300 FF, DH.15006410 | 30.88d |  |
| DH.15006240 |  | DH 1500 // Install ceiling grid tiles | 3d | 2026-12-09 | 2026-12-11 | DH.15006220 SS+3d, DH.15006250 | 22.88d |  |
| F.1000A.1258 |  | DH 1500 // Install Security Devices | 2d | 2026-12-09 | 2026-12-10 | F.1000A.1257, DH.15006310 | 68.88d |  |
| F.1000A.1259 |  | DH 1500 // Mount & Terminate Security Devices | 5d | 2026-12-11 | 2026-12-17 | F.1000A.1258, DH.15006410 | 68.88d |  |
| DH.15007790 |  | DH 1500 // Final Paint & Touch up walls | 5d | 2026-12-14 | 2026-12-18 | DH.15006410, DH.15006220, DH.15006240, DH.15006260 | 22.88d |  |
| DH.15007810 |  | DH 1500 // Install MEPF Trim and Finishes | 5d | 2026-12-21 | 2026-12-28 | DH.15007790, DH.15006310 | 22.88d |  |
| DH.160012156 |  | DH 1500 // Room Ready to Receive Equipment | 0d | 2026-12-28 | 2026-12-28 | DH.15007810 FF | 22.88d |  |
| F.1000A.1260 |  | DH 1500 // Test Security Devices | 2d | 2026-12-29 | 2026-12-30 | F.1000A.1555 FF, F.1000A.1259, DH.15007810 | 62.88d |  |
| DH.15007820 |  | DH 1500 // Data Hall 1500 Suffolk Pre Punch | 5d | 2026-12-31 | 2027-01-07 | DH.160012156, F.1000A.1260 | 79d |  |
|  | 15 | **PDU Gallery** |  | 2026-09-30 | 2026-12-02 |  |  |  |

| ID | WBS | Task | Duration | Start | Finish | Predecessors | Total float |
| --- | --- | --- | --- | --- | --- | --- | --- |
| DH.15000.1000 |  | DH1500/PDU Gallery // Seal concrete | 2d | 2026-09-30 | 2026-10-01 | SOG.1466 | 13.88d |
| DH.15000.1010 |  | DH1500/PDU Gallery // MEPF overhead layout | 5d | 2026-10-14 | 2026-10-20 | DH.15006270 | 39.88d |
| B120001.3207 |  | DH1500/PDU Gallery // Install Overhead Cable Ladder / 36" Cable Tray - TFO | 5d | 2026-10-21 | 2026-10-27 | DH.15000.1010 | 39.88d |
| DH.15000.1040 |  | DH1500/PDU Gallery // Frame walls | 5d | 2026-10-21 | 2026-10-27 | DH.15000.1010 | 47.88d |
| B120001.3208 |  | DH1500/PDU Gallery // Install Overhead HAC - TFO | 5d | 2026-10-28 | 2026-11-03 | B120001.3207 | 39.88d |
| DH.15000.1030 |  | DH1500/PDU Gallery // MEPF high overhead install | 3d | 2026-11-04 | 2026-11-06 | DH.15000.1010 SS, B120001.3208 | 39.88d |
| DH.15000.1711 |  | DH1500/PDU Gallery // MEP rough in walls | 3d | 2026-11-09 | 2026-11-12 | DH.15000.1040, DH.15000.1030 | 39.88d |
| DH.15000.1070 |  | DH1500/PDU Gallery // In wall inspection | 1d | 2026-11-13 | 2026-11-13 | DH.15000.1711, DH.15000.1010 | 39.88d |
| DH.15000.1060 |  | DH1500/PDU Gallery // Install Sheetrock Top Down | 3d | 2026-11-16 | 2026-11-18 | DH.15000.1070 | 39.88d |
| DH.15000.1080 |  | DH1500/PDU Gallery // Install sheetrock on walls (Balance) | 5d | 2026-11-19 | 2026-11-25 | DH.15000.1070, DH.15000.1060 | 39.88d |
| DH.15000.1090 |  | DH1500/PDU Gallery // Tape and finish walls | 1d | 2026-11-27 | 2026-11-27 | DH.15000.1080 | 39.88d |
| DH.15000.1050 |  | DH1500/PDU Gallery // Install wall door frames | 1d | 2026-11-30 | 2026-11-30 | DH.15000.1090 | 39.88d |
| DH.15000.1110 |  | DH1500/PDU Gallery // Install Cable Tray (From Elec Rm 5501 to CRAHU Gallery) | 2d | 2026-11-30 | 2026-12-01 | DH.15000.1090, DH.1500.1180 | 40.88d |
| DH.15000.1100 |  | DH1500/PDU Gallery // Paint walls | 2d | 2026-12-01 | 2026-12-02 | DH.15000.1090, DH.15000.1040, DH.15000.1050 | 39.88d |
| DH.15000.1712 |  | DH1500/PDU Gallery // Ready to Receive Equipment | 0d | 2026-12-02 | 2026-12-02 | DH.15000.1100 FF | 39.88d |
|  | 14 | **CRAH/CDU Galleries** |  | 2026-09-30 | 2027-02-05 |  |  |
|  | 2 | **Gallery 1502** |  | 2026-09-30 | 2027-01-25 |  |  |
|  | 4 | **Architectural** |  | 2026-09-30 | 2026-12-22 |  |  |
| DH.1500670 |  | DH 1500/Gallery 1502 // MEPF overhead layout | 5d | 2026-09-30 | 2026-10-06 | DH.1400670 SS | -1.12d |
| DH.1500660 |  | DH 1500/Gallery 1502 // Seal concrete | 2d | 2026-10-02 | 2026-10-05 | DH.15000.1000 | 16.88d |
| B120001.3209 |  | DH 1500/Gallery 1502 // Install Overhead Cable Ladder / 36" Cable Tray - TFO | 5d | 2026-10-07 | 2026-10-14 | DH.1500670 | 6.88d |
| DH.1500700 |  | DH 1500/Gallery 1502 // Frame walls | 6d | 2026-10-07 | 2026-10-15 | DH.1500670 | -1.12d |
| B120001.3210 |  | DH 1500/Gallery 1502 // Install Overhead HAC - TFO | 5d | 2026-10-15 | 2026-10-21 | B120001.3209 | 6.88d |
| DH.1500730 |  | DH 1500/Gallery 1502 // MEP rough in walls | 4d | 2026-10-16 | 2026-10-21 | DH.1500700 | 9.88d |
| DH.1500690 |  | DH 1500/Gallery 1502 // MEPF high overhead install | 10d | 2026-10-22 | 2026-11-04 | DH.1500670 SS, B120001.3210 | 6.88d |
| DH.1500740 |  | DH 1500/Gallery 1502 // In wall inspection | 1d | 2026-10-22 | 2026-10-22 | DH.1500730 | 9.88d |
| DH.1500720 |  | DH 1500/Gallery 1502 // Install Sheetrock Top Down | 6d | 2026-10-23 | 2026-10-30 | DH.1500700 SS+3d, DH.1500740 | 9.88d |
| DH.1500750 |  | DH 1500/Gallery 1502 // Install Balance of Sheetrock on walls | 6d | 2026-11-05 | 2026-11-13 | DH.1500690, DH.1500720 | 6.88d |
| F.1000A.1296 |  | DH 1500/Gallery 1502 // Rough-In Security | 2d | 2026-11-05 | 2026-11-06 | DH.1500690 | 80.88d |
| F.1000A.1565 |  | DH 1500/Gallery 1502 // BMS & EPMS Rough-In | 2d | 2026-11-05 | 2026-11-06 | F.1000A.1296 FF, F.1000A.1296 SS | 92.88d |
| F.1000A.1297 |  | DH 1500/Gallery 1502 // Pull & Test Security Cable | 3d | 2026-11-09 | 2026-11-12 | F.1000A.1296 | 80.88d |
| DH.1500770 |  | DH 1500/Gallery 1502 // Tape and finish walls | 8d | 2026-11-16 | 2026-11-25 | DH.1500750 | 6.88d |
| DH.1500710 |  | DH 1500/Gallery 1502 // Install wall door frames | 1d | 2026-11-27 | 2026-11-27 | DH.1500740, DH.1500770, DH.1500700 FF | 9.88d |
| DH.1500790 |  | DH 1500/Gallery 1502 // Prime and Paint walls | 4d | 2026-11-27 | 2026-12-02 | DH.1500770 | 6.88d |
| F.1000A.1298 |  | DH 1500/Gallery 1502 // Install Security Devices | 2d | 2026-11-30 | 2026-12-01 | F.1000A.1297, DH.1500710 | 70.88d |
| DH.1500800 |  | DH 1500/Gallery 1502 // Touch up Walls and Fianl Paint | 5d | 2026-12-03 | 2026-12-09 | DH.1500710, DH.1500790 | 6.88d |
| F.1000A.1299 |  | DH 1500/Gallery 1502 // Mount & Terminate Security Devices | 5d | 2026-12-03 | 2026-12-09 | F.1000A.1298, DH.1500790 | 69.88d |
| DH.1500810 |  | DH 1500/Gallery 1502 // Install Trim and Devices | 2d | 2026-12-10 | 2026-12-11 | DH.1500800 | 6.88d |
| DH.160012157 |  | DH 1500/Gallery 1502 // Ready to Receive Equipment | 0d | 2026-12-11 | 2026-12-11 | DH.1500810 | 6.88d |
| F.1000A.1300 |  | DH 1500/Gallery 1502 // Test Security Devices | 2d | 2026-12-14 | 2026-12-15 | F.1000A.1565 FF, F.1000A.1299, DH.1500810 | 67.88d |
| DH.1500820 |  | DH 1500/Gallery 1502 // Suffolk Pre Punch | 5d | 2026-12-16 | 2026-12-22 | DH.160012157, F.1000A.1300 | 67.88d |
|  | 16 | **Raceway** |  |  |  |  |  |
|  | 3 | **Equipment Line-Ups** |  | 2026-12-14 | 2027-01-25 |  |  |
|  | 1 | **A150** |  | 2026-12-14 | 2027-01-15 |  |  |
| DH.1500A-EQP-1 |  | Gallery 1502 - A150/Line-Ups // Set CRAH-DH1500- 01 | 1d | 2026-12-14 | 2026-12-14 | DH.15006360, DH.160012157 | 6.88d |
| DH.1500A-EQP-3 |  | Gallery 1502 - A150/Line-Ups // Set CRAH-DH1500- 02 | 1d | 2026-12-14 | 2026-12-14 | DH.1500A-EQP-1 SS | 6.88d |
| DH.1500A-EQP-5 |  | Gallery 1502 - A150/Line-Ups // Set MOD-A150-01 | 1d | 2026-12-14 | 2026-12-14 | DH.1500A-EQP-3 FF | 53.88d |
| DH.1500A-EQP-6 |  | Gallery 1502 - A150/Line-Ups // Set MOD-A150-02 | 1d | 2026-12-14 | 2026-12-14 | DH.1500A-EQP-5 SS | 53.88d |
| DH.1500A-EQP-10 |  | Gallery 1502 - A150/Line-Ups // Pull Cable Tray Feed from MOD to CRAHU's | 5d | 2026-12-15 | 2026-12-21 | DH.1500A-EQP-6, DH.15000.1110 | 59.88d |
| DH.1500A-EQP-12 |  | Gallery 1502 - A150/Line-Ups // Mount Electrial Gear for Chiller Controls | 10d | 2026-12-15 | 2026-12-29 | DH.1500A-EQP-6 | 53.88d |
| DH.1500A-EQP-7 |  | Gallery 1502 - A150/Line-Ups // Set CDU-DH1500- 01 | 1d | 2026-12-15 | 2026-12-15 | DH.1500A-EQP-1 | 53.88d |
| DH.1500A-EQP-9 |  | Gallery 1502 - A150/Line-Ups // Pull Feeder from SWD to MOD | 1d | 2026-12-15 | 2026-12-15 | DH.1500A-EQP-6 | 69.88d |
| DH.1500A-EQP-8 |  | Gallery 1502 - A150/Line-Ups // Set CDU-DH1500- 02 | 1d | 2026-12-16 | 2026-12-16 | DH.1500A-EQP-3, DH.1500A-EQP-7 | 53.88d |
| DH.1500A-EQP-4 |  | Gallery 1502 - A150/Line-Ups // Condensate connections to Floor Drains | 10d | 2026-12-17 | 2026-12-31 | DH.1500A-EQP-8, DH.1500A-EQP-7, DH.1500A-EQP-3 | 53.88d |
| DH.1500A-EQP-11 |  | Gallery 1502 - A150/Line-Ups // Mechanical Connections to CRAHU Units | 10d | 2026-12-21 | 2027-01-05 | DH.1500A-EQP-3 SS+5d | 51.88d |
| DH.1500A-EQP-17 |  | Gallery 1502 - A150/Line-Ups // Pull Feeder and Branch circuits to MIsc equipment and Chiller controls | 10d | 2026-12-21 | 2027-01-05 | DH.1500A-EQP-12 SS+4d | 53.88d |
| DH.1500A-EQP-13 |  | Gallery 1502 - A150/Line-Ups // Pull Cable Tray Feed from MOD to CRAHU's | 5d | 2026-12-22 | 2026-12-29 | DH.1500A-EQP-10 | 59.88d |
| DH.1500A-EQP-16 |  | Gallery 1502 - A150/Line-Ups // Terminate CRAHU Electrical Connections | 5d | 2026-12-24 | 2026-12-31 | DH.1500A-EQP-10, DH.1500A-EQP-13 SS+2d | 59.88d |
| DH.1500A-EQP-19 |  | Gallery 1502 - A150/Line-Ups // Teminate all Misc Equipment and Chiller Controls | 10d | 2026-12-28 | 2027-01-11 | DH.1500A-EQP-17 SS+4d | 53.88d |
| DH.1500A-EQP-14 |  | Gallery 1502 - A150/Line-Ups // Condensate connections to Floor Drains | 10d | 2026-12-29 | 2027-01-12 | DH.1500A-EQP-4 SS+5d, DH.1500A-EQP-11 SS+5d, DH.15007841, DH.150012025 | 51.88d |
| DH.1500A-EQP-15 |  | Gallery 1502 - A150/Line-Ups // Terminate Mod Panels | 1d | 2026-12-30 | 2026-12-30 | DH.1500A-EQP-9, DH.1500A-EQP-10, DH.1500A-EQP-13 | 60.88d |
| DH.1500A-EQP-20 |  | Gallery 1502 - A150/Line-Ups // Electrical Gear FOD Inspection Pre-Start Up | 2d | 2027-01-12 | 2027-01-13 | DH.1500A-EQP-15, DH.1500A-EQP-19, DH.1500A-EQP-16 | 53.88d |
| DH.1500A-EQP-18 |  | Gallery 1502 - A150/Line-Ups // Mechanical Gear FOD Inspection Pre-Start Up | 3d | 2027-01-13 | 2027-01-15 | DH.1500A-EQP-11, DH.1500A-EQP-4, DH.1500A-EQP-14, DH.1500A-EQP-3 | 51.88d |
|  | 2 | **B150** |  | 2026-12-14 | 2027-01-15 |  |  |
| DH.1500A-EQP-21 |  | Gallery 1502 - B150/Line-Ups // Set CRAH-DH1500- 03 | 1d | 2026-12-14 | 2026-12-14 | DH.1500A-EQP-3 SS | 6.88d |
| DH.1500A-EQP-23 |  | Gallery 1502 - B150/Line-Ups // Set CRAH-DH1500- 04 | 1d | 2026-12-14 | 2026-12-14 | DH.1500A-EQP-21 SS | 6.88d |
| DH.1500A-EQP-25 |  | Gallery 1502 - B150/Line-Ups // Set MOD-B150-01 | 1d | 2026-12-14 | 2026-12-14 | DH.1500A-EQP-23 FF | 53.88d |
| DH.1500A-EQP-26 |  | Gallery 1502 - B150/Line-Ups // Set MOD-B150-02 | 1d | 2026-12-14 | 2026-12-14 | DH.1500A-EQP-25 SS | 53.88d |
| DH.1500A-EQP-27 |  | Gallery 1502 - B150/Line-Ups // Set CDU-DH1500- 03 | 1d | 2026-12-15 | 2026-12-15 | DH.1500A-EQP-21 | 53.88d |
| DH.1500A-EQP-29 |  | Gallery 1502 - B150/Line-Ups // Pull Feeder from SWD to MOD | 1d | 2026-12-15 | 2026-12-15 | DH.1500A-EQP-26 | 69.88d |

| ID | WBS | Task | Duration | Start | Finish | Predecessors | Total float |
| --- | --- | --- | --- | --- | --- | --- | --- |
| DH.1500A-EQP-30 |  | Gallery 1502 - B150/Line-Ups // Pull Cable Tray Feed from MOD to CRAHU's | 5d | 2026-12-15 | 2026-12-21 | DH.1500A-EQP-26 | 59.88d |
| DH.1500A-EQP-32 |  | Gallery 1502 - B150/Line-Ups // Mount Electrial Gear for Chiller Controls | 10d | 2026-12-15 | 2026-12-29 | DH.1500A-EQP-26 | 53.88d |
| DH.1500A-EQP-28 |  | Gallery 1502 - B150/Line-Ups // Set CDU-DH1500- 04 | 1d | 2026-12-16 | 2026-12-16 | DH.1500A-EQP-23, DH.1500A-EQP-27 | 53.88d |
| DH.1500A-EQP-24 |  | Gallery 1502 - B150/Line-Ups // Condensate connections to Floor Drains | 10d | 2026-12-17 | 2026-12-31 | DH.1500A-EQP-28, DH.1500A-EQP-27, DH.1500A-EQP-23 | 53.88d |
| DH.1500A-EQP-31 |  | Gallery 1502 - B150/Line-Ups // Mechanical Connections to CRAHU Units | 10d | 2026-12-21 | 2027-01-05 | DH.1500A-EQP-23 SS+5d | 51.88d |
| DH.1500A-EQP-37 |  | Gallery 1502 - B150/Line-Ups // Pull Feeder and Branch circuits to MIsc equipment and Chiller controls | 10d | 2026-12-21 | 2027-01-05 | DH.1500A-EQP-32 SS+4d | 53.88d |
| DH.1500A-EQP-33 |  | Gallery 1502 - B150/Line-Ups // Pull Cable Tray Feed from MOD to CRAHU's | 5d | 2026-12-22 | 2026-12-29 | DH.1500A-EQP-30 | 59.88d |
| DH.1500A-EQP-36 |  | Gallery 1502 - B150/Line-Ups // Terminate CRAHU Electrical Connections | 5d | 2026-12-24 | 2026-12-31 | DH.1500A-EQP-30, DH.1500A-EQP-33 SS+2d | 59.88d |
| DH.1500A-EQP-39 |  | Gallery 1502 - B150/Line-Ups // Teminate all Misc Equipment and Chiller Controls | 10d | 2026-12-28 | 2027-01-11 | DH.1500A-EQP-37 SS+4d | 53.88d |
| DH.1500A-EQP-34 |  | Gallery 1502 - B150/Line-Ups // Condensate connections to Floor Drains | 10d | 2026-12-29 | 2027-01-12 | DH.1500A-EQP-24 SS+5d, DH.1500A-EQP-31 SS+5d, DH.150012028 | 51.88d |
| DH.1500A-EQP-35 |  | Gallery 1502 - B150/Line-Ups // Terminate Mod Panels | 1d | 2026-12-30 | 2026-12-30 | DH.1500A-EQP-29, DH.1500A-EQP-30, DH.1500A-EQP-33 | 60.88d |
| DH.1500A-EQP-40 |  | Gallery 1502 - B150/Line-Ups // Electrical Gear FOD Inspection Pre-Start Up | 2d | 2027-01-12 | 2027-01-13 | DH.1500A-EQP-35, DH.1500A-EQP-39, DH.1500A-EQP-36 | 53.88d |
| DH.1500A-EQP-38 |  | Gallery 1502 - B150/Line-Ups // Mechanical Gear FOD Inspection Pre-Start Up | 3d | 2027-01-13 | 2027-01-15 | DH.1500A-EQP-31, DH.1500A-EQP-24, DH.1500A-EQP-34, DH.1500A-EQP-23 | 51.88d |
|  | 3 | **C150** |  | 2026-12-14 | 2027-01-15 |  |  |
| DH.1500A-EQP-41 |  | Gallery 1502 - C150/Line-Ups // Set CRAH-DH1500- 05 | 1d | 2026-12-14 | 2026-12-14 | DH.1500A-EQP-23 SS | 6.88d |
| DH.1500A-EQP-43 |  | Gallery 1502 - C150/Line-Ups // Set CRAH-DH1500- 06 | 1d | 2026-12-14 | 2026-12-14 | DH.1500A-EQP-41 SS | 6.88d |
| DH.1500A-EQP-45 |  | Gallery 1502 - C150/Line-Ups // Set MOD-C150-01 | 1d | 2026-12-14 | 2026-12-14 | DH.1500A-EQP-43 FF | 53.88d |
| DH.1500A-EQP-46 |  | Gallery 1502 - C150/Line-Ups // Set MOD-C150-02 | 1d | 2026-12-14 | 2026-12-14 | DH.1500A-EQP-45 SS | 53.88d |
| DH.1500A-EQP-47 |  | Gallery 1502 - C150/Line-Ups // Set CDU-DH1500- 05 | 1d | 2026-12-15 | 2026-12-15 | DH.1500A-EQP-41 | 53.88d |
| DH.1500A-EQP-49 |  | Gallery 1502 - C150/Line-Ups // Pull Feeder from SWD to MOD | 1d | 2026-12-15 | 2026-12-15 | DH.1500A-EQP-46 | 69.88d |
| DH.1500A-EQP-50 |  | Gallery 1502 - C150/Line-Ups // Pull Cable Tray Feed from MOD to CRAHU's | 5d | 2026-12-15 | 2026-12-21 | DH.1500A-EQP-46 | 59.88d |
| DH.1500A-EQP-52 |  | Gallery 1502 - C150/Line-Ups // Mount Electrial Gear for Chiller Controls | 10d | 2026-12-15 | 2026-12-29 | DH.1500A-EQP-46 | 53.88d |
| DH.1500A-EQP-48 |  | Gallery 1502 - C150/Line-Ups // Set CDU-DH1500- 06 | 1d | 2026-12-16 | 2026-12-16 | DH.1500A-EQP-43, DH.1500A-EQP-47 | 53.88d |
| DH.1500A-EQP-44 |  | Gallery 1502 - C150/Line-Ups // Condensate connections to Floor Drains | 10d | 2026-12-17 | 2026-12-31 | DH.1500A-EQP-48, DH.1500A-EQP-47, DH.1500A-EQP-43 | 53.88d |
| DH.1500A-EQP-51 |  | Gallery 1502 - C150/Line-Ups // Mechanical Connections to CRAHU Units | 10d | 2026-12-21 | 2027-01-05 | DH.1500A-EQP-43 SS+5d | 51.88d |
| DH.1500A-EQP-57 |  | Gallery 1502 - C150/Line-Ups // Pull Feeder and Branch circuits to MIsc equipment and Chiller controls | 10d | 2026-12-21 | 2027-01-05 | DH.1500A-EQP-52 SS+4d | 53.88d |
| DH.1500A-EQP-53 |  | Gallery 1502 - C150/Line-Ups // Pull Cable Tray Feed from MOD to CRAHU's | 5d | 2026-12-22 | 2026-12-29 | DH.1500A-EQP-50 | 59.88d |
| DH.1500A-EQP-56 |  | Gallery 1502 - C150/Line-Ups // Terminate CRAHU Electrical Connections | 5d | 2026-12-24 | 2026-12-31 | DH.1500A-EQP-50, DH.1500A-EQP-53 SS+2d | 59.88d |
| DH.1500A-EQP-59 |  | Gallery 1502 - C150/Line-Ups // Teminate all Misc Equipment and Chiller Controls | 10d | 2026-12-28 | 2027-01-11 | DH.1500A-EQP-57 SS+4d | 53.88d |
| DH.1500A-EQP-54 |  | Gallery 1502 - C150/Line-Ups // Condensate connections to Floor Drains | 10d | 2026-12-29 | 2027-01-12 | DH.1500A-EQP-44 SS+5d, DH.1500A-EQP-51 SS+5d, DH.150012031 | 51.88d |
| DH.1500A-EQP-55 |  | Gallery 1502 - C150/Line-Ups // Terminate Mod Panels | 1d | 2026-12-30 | 2026-12-30 | DH.1500A-EQP-49, DH.1500A-EQP-50, DH.1500A-EQP-53 | 60.88d |
| DH.1500A-EQP-60 |  | Gallery 1502 - C150/Line-Ups // Electrical Gear FOD Inspection Pre-Start Up | 2d | 2027-01-12 | 2027-01-13 | DH.1500A-EQP-55, DH.1500A-EQP-59, DH.1500A-EQP-56 | 53.88d |
| DH.1500A-EQP-58 |  | Gallery 1502 - C150/Line-Ups // Mechanical Gear FOD Inspection Pre-Start Up | 3d | 2027-01-13 | 2027-01-15 | DH.1500A-EQP-51, DH.1500A-EQP-44, DH.1500A-EQP-54, DH.1500A-EQP-43 | 51.88d |
|  | 4 | **D150** |  | 2026-12-15 | 2027-01-25 |  |  |
| DH.1500A-EQP-61 |  | Gallery 1502 - D150/Line-Ups // Set CRAH-DH1500- 07 | 1d | 2026-12-15 | 2026-12-15 | DH.1500A-EQP-43 | 6.88d |
| DH.1500A-EQP-63 |  | Gallery 1502 - D150/Line-Ups // Set CRAH-DH1500- 08 | 1d | 2026-12-15 | 2026-12-15 | DH.1500A-EQP-61 SS | 6.88d |
| DH.1500A-EQP-65 |  | Gallery 1502 - D150/Line-Ups // Set MOD-D150-01 | 1d | 2026-12-15 | 2026-12-15 | DH.1500A-EQP-63 FF | 52.88d |
| DH.1500A-EQP-66 |  | Gallery 1502 - D150/Line-Ups // Set MOD-D150-02 | 1d | 2026-12-15 | 2026-12-15 | DH.1500A-EQP-65 SS | 52.88d |
| DH.1500A-EQP-67 |  | Gallery 1502 - D150/Line-Ups // Set CDU-DH1500- 07 | 1d | 2026-12-16 | 2026-12-16 | DH.1500A-EQP-61 | 57.88d |
| DH.1500A-EQP-69 |  | Gallery 1502 - D150/Line-Ups // Pull Feeder from SWD to MOD | 1d | 2026-12-16 | 2026-12-16 | DH.1500A-EQP-66 | 68.88d |
| DH.1500A-EQP-70 |  | Gallery 1502 - D150/Line-Ups // Pull Cable Tray Feed from MOD to CRAHU's | 5d | 2026-12-16 | 2026-12-22 | DH.1500A-EQP-66 | 58.88d |
| DH.1500A-EQP-72 |  | Gallery 1502 - D150/Line-Ups // Mount Electrial Gear for Chiller Controls | 10d | 2026-12-16 | 2026-12-30 | DH.1500A-EQP-66 | 52.88d |
| DH.1500A-EQP-68 |  | Gallery 1502 - D150/Line-Ups // Set CDU-DH1500- 08 | 1d | 2026-12-17 | 2026-12-17 | DH.1500A-EQP-63, DH.1500A-EQP-67 | 57.88d |
| DH.1500A-EQP-71 |  | Gallery 1502 - D150/Line-Ups // Mechanical Connections to CRAHU Units | 10d | 2026-12-22 | 2027-01-06 | DH.1500A-EQP-63 SS+5d | 46.88d |
| DH.1500A-EQP-77 |  | Gallery 1502 - D150/Line-Ups // Pull Feeder and Branch circuits to MIsc equipment and Chiller controls | 10d | 2026-12-22 | 2027-01-06 | DH.1500A-EQP-72 SS+4d | 52.88d |
| DH.1500A-EQP-73 |  | Gallery 1502 - D150/Line-Ups // Pull Cable Tray Feed from MOD to CRAHU's | 5d | 2026-12-23 | 2026-12-30 | DH.1500A-EQP-70 | 58.88d |
| DH.1500A-EQP-76 |  | Gallery 1502 - D150/Line-Ups // Terminate CRAHU Electrical Connections | 5d | 2026-12-28 | 2027-01-04 | DH.1500A-EQP-70, DH.1500A-EQP-73 SS+2d | 58.88d |
| DH.1500A-EQP-74 |  | Gallery 1502 - D150/Line-Ups // Condensate connections to Floor Drains | 10d | 2026-12-30 | 2027-01-13 | DH.1500A-EQP-71 SS+5d, DH.1500A-EQP-68, DH.1500A-EQP-67, DH.1500A-EQP-63, DH.150012034 | 50.88d |
| DH.1500A-EQP-75 |  | Gallery 1502 - D150/Line-Ups // Terminate Mod Panels | 1d | 2026-12-31 | 2026-12-31 | DH.1500A-EQP-69, DH.1500A-EQP-70, DH.1500A-EQP-73, DH.1500A-EQP-68 | 59.88d |
| DH.1500A-EQP-79 |  | Gallery 1502 - D150/Line-Ups // Teminate all Misc Equipment and Chiller Controls | 10d | 2027-01-07 | 2027-01-21 | DH.1500A-EQP-77 SS+4d, DH.1500A-EQP-71 | 46.88d |
| DH.1500A-EQP-78 |  | Gallery 1502 - D150/Line-Ups // Mechanical Gear FOD Inspection Pre-Start Up | 3d | 2027-01-14 | 2027-01-19 | DH.1500A-EQP-71, DH.1500A-EQP-74, DH.1500A-EQP-63, DH.1500A-EQP-68, DH.1500A-EQP-67 | 50.88d |
| DH.1500A-EQP-80 |  | Gallery 1502 - D150/Line-Ups // Electrical Gear FOD Inspection Pre-Start Up | 2d | 2027-01-22 | 2027-01-25 | DH.1500A-EQP-75, DH.1500A-EQP-79, DH.1500A-EQP-76 | 46.88d |
|  | 5 | **E150** |  | 2026-12-15 | 2027-01-19 |  |  |
| DH.1500A-EQP-81 |  | Gallery 1502 - E150/Line-Ups // Set CRAH-DH1500- 09 | 1d | 2026-12-15 | 2026-12-15 | DH.1500A-EQP-63 SS | 6.88d |
| DH.1500A-EQP-83 |  | Gallery 1502 - E150/Line-Ups // Set CRAH-DH1500- 10 | 1d | 2026-12-15 | 2026-12-15 | DH.1500A-EQP-81 SS | 6.88d |
| DH.1500A-EQP-85 |  | Gallery 1502 - E150/Line-Ups // Set MOD-E150-01 | 1d | 2026-12-15 | 2026-12-15 | DH.1500A-EQP-83 FF | 52.88d |
| DH.1500A-EQP-86 |  | Gallery 1502 - E150/Line-Ups // Set MOD-E150-02 | 1d | 2026-12-15 | 2026-12-15 | DH.1500A-EQP-85 SS | 52.88d |
| DH.1500A-EQP-87 |  | Gallery 1502 - E150/Line-Ups // Set CDU-DH1500- 09 | 1d | 2026-12-16 | 2026-12-16 | DH.1500A-EQP-81 | 52.88d |
| DH.1500A-EQP-89 |  | Gallery 1502 - E150/Line-Ups // Pull Feeder from SWD to MOD | 1d | 2026-12-16 | 2026-12-16 | DH.1500A-EQP-86 | 68.88d |
| DH.1500A-EQP-90 |  | Gallery 1502 - E150/Line-Ups // Pull Cable Tray Feed from MOD to CRAHU's | 5d | 2026-12-16 | 2026-12-22 | DH.1500A-EQP-86 | 58.88d |
| DH.1500A-EQP-92 |  | Gallery 1502 - E150/Line-Ups // Mount Electrial Gear for Chiller Controls | 10d | 2026-12-16 | 2026-12-30 | DH.1500A-EQP-86 | 52.88d |
| DH.1500A-EQP-88 |  | Gallery 1502 - E150/Line-Ups // Set CDU-DH1500- 10 | 1d | 2026-12-17 | 2026-12-17 | DH.1500A-EQP-83, DH.1500A-EQP-87 | 52.88d |
| DH.1500A-EQP-84 |  | Gallery 1502 - E150/Line-Ups // Condensate connections to Floor Drains | 10d | 2026-12-18 | 2027-01-04 | DH.1500A-EQP-88, DH.1500A-EQP-87, DH.1500A-EQP-83 | 52.88d |
| DH.1500A-EQP-91 |  | Gallery 1502 - E150/Line-Ups // Mechanical Connections to CRAHU Units | 10d | 2026-12-22 | 2027-01-06 | DH.1500A-EQP-83 SS+5d | 50.88d |
| DH.1500A-EQP-97 |  | Gallery 1502 - E150/Line-Ups // Pull Feeder and Branch circuits to MIsc equipment and Chiller controls | 10d | 2026-12-22 | 2027-01-06 | DH.1500A-EQP-92 SS+4d | 52.88d |
| DH.1500A-EQP-93 |  | Gallery 1502 - E150/Line-Ups // Pull Cable Tray Feed from MOD to CRAHU's | 5d | 2026-12-23 | 2026-12-30 | DH.1500A-EQP-90 | 58.88d |
| DH.1500A-EQP-96 |  | Gallery 1502 - E150/Line-Ups // Terminate CRAHU Electrical Connections | 5d | 2026-12-28 | 2027-01-04 | DH.1500A-EQP-90, DH.1500A-EQP-93 SS+2d | 58.88d |
| DH.1500A-EQP-99 |  | Gallery 1502 - E150/Line-Ups // Teminate all Misc Equipment and Chiller Controls | 10d | 2026-12-29 | 2027-01-12 | DH.1500A-EQP-97 SS+4d | 52.88d |
| DH.1500A-EQP-94 |  | Gallery 1502 - E150/Line-Ups // Condensate connections to Floor Drains | 10d | 2026-12-30 | 2027-01-13 | DH.1500A-EQP-84 SS+5d, DH.1500A-EQP-91 SS+5d, DH.150012037 | 50.88d |
| DH.1500A-EQP-95 |  | Gallery 1502 - E150/Line-Ups // Terminate Mod Panels | 1d | 2026-12-31 | 2026-12-31 | DH.1500A-EQP-89, DH.1500A-EQP-90, DH.1500A-EQP-93 | 59.88d |

| ID | WBS | Task | Duration | Start | Finish | Predecessors | Total float |
| --- | --- | --- | --- | --- | --- | --- | --- |
| DH.1500A-EQP-100 |  | Gallery 1502 - E150/Line-Ups // Electrical Gear FOD Inspection Pre-Start Up | 2d | 2027-01-13 | 2027-01-14 | DH.1500A-EQP-95, DH.1500A-EQP-99, DH.1500A-EQP-96 | 52.88d |
| DH.1500A-EQP-98 |  | Gallery 1502 - E150/Line-Ups // Mechanical Gear FOD Inspection Pre-Start Up | 3d | 2027-01-14 | 2027-01-19 | DH.1500A-EQP-91, DH.1500A-EQP-84, DH.1500A-EQP-94, DH.1500A-EQP-83 | 50.88d |
|  | 6 | **F150** |  | 2026-12-15 | 2027-01-19 |  |  |
| DH.1500A-EQP-101 |  | Gallery 1502 - F150/Line-Ups // Set CRAH-DH1500- 11 | 1d | 2026-12-15 | 2026-12-15 | DH.1500A-EQP-83 SS | 6.88d |
| DH.1500A-EQP-103 |  | Gallery 1502 - F150/Line-Ups // Set CRAH-DH1500- 12 | 1d | 2026-12-15 | 2026-12-15 | DH.1500A-EQP-101 SS | 6.88d |
| DH.1500A-EQP-105 |  | Gallery 1502 - F150/Line-Ups // Set MOD-F150-01 | 1d | 2026-12-15 | 2026-12-15 | DH.1500A-EQP-103 FF | 52.88d |
| DH.1500A-EQP-106 |  | Gallery 1502 - F150/Line-Ups // Set MOD-F150-02 | 1d | 2026-12-15 | 2026-12-15 | DH.1500A-EQP-105 SS | 52.88d |
| DH.1500A-EQP-107 |  | Gallery 1502 - F150/Line-Ups // Set CDU-DH1500- 11 | 1d | 2026-12-16 | 2026-12-16 | DH.1500A-EQP-101 | 52.88d |
| DH.1500A-EQP-109 |  | Gallery 1502 - F150/Line-Ups // Pull Feeder from SWD to MOD | 1d | 2026-12-16 | 2026-12-16 | DH.1500A-EQP-106 | 68.88d |
| DH.1500A-EQP-110 |  | Gallery 1502 - F150/Line-Ups // Pull Cable Tray Feed from MOD to CRAHU's | 5d | 2026-12-16 | 2026-12-22 | DH.1500A-EQP-106 | 58.88d |
| DH.1500A-EQP-112 |  | Gallery 1502 - F150/Line-Ups // Mount Electrial Gear for Chiller Controls | 10d | 2026-12-16 | 2026-12-30 | DH.1500A-EQP-106 | 52.88d |
| DH.1500A-EQP-108 |  | Gallery 1502 - F150/Line-Ups // Set CDU-DH1500- 12 | 1d | 2026-12-17 | 2026-12-17 | DH.1500A-EQP-103, DH.1500A-EQP-107 | 52.88d |
| DH.1500A-EQP-104 |  | Gallery 1502 - F150/Line-Ups // Condensate connections to Floor Drains | 10d | 2026-12-18 | 2027-01-04 | DH.1500A-EQP-108, DH.1500A-EQP-107, DH.1500A-EQP-103 | 52.88d |
| DH.1500A-EQP-111 |  | Gallery 1502 - F150/Line-Ups // Mechanical Connections to CRAHU Units | 10d | 2026-12-22 | 2027-01-06 | DH.1500A-EQP-103 SS+5d | 50.88d |
| DH.1500A-EQP-117 |  | Gallery 1502 - F150/Line-Ups // Pull Feeder and Branch circuits to MIsc equipment and Chiller controls | 10d | 2026-12-22 | 2027-01-06 | DH.1500A-EQP-112 SS+4d | 52.88d |
| DH.1500A-EQP-113 |  | Gallery 1502 - F150/Line-Ups // Pull Cable Tray Feed from MOD to CRAHU's | 5d | 2026-12-23 | 2026-12-30 | DH.1500A-EQP-110 | 58.88d |
| DH.1500A-EQP-116 |  | Gallery 1502 - F150/Line-Ups // Terminate CRAHU Electrical Connections | 5d | 2026-12-28 | 2027-01-04 | DH.1500A-EQP-110, DH.1500A-EQP-113 SS+2d | 58.88d |
| DH.1500A-EQP-119 |  | Gallery 1502 - F150/Line-Ups // Teminate all Misc Equipment and Chiller Controls | 10d | 2026-12-29 | 2027-01-12 | DH.1500A-EQP-117 SS+4d | 52.88d |
| DH.1500A-EQP-114 |  | Gallery 1502 - F150/Line-Ups // Condensate connections to Floor Drains | 10d | 2026-12-30 | 2027-01-13 | DH.1500A-EQP-104 SS+5d, DH.1500A-EQP-111 SS+5d, DH.150012040 | 50.88d |
| DH.1500A-EQP-115 |  | Gallery 1502 - F150/Line-Ups // Terminate Mod Panels | 1d | 2026-12-31 | 2026-12-31 | DH.1500A-EQP-109, DH.1500A-EQP-110, DH.1500A-EQP-113 | 59.88d |
| DH.1500A-EQP-120 |  | Gallery 1502 - F150/Line-Ups // Electrical Gear FOD Inspection Pre-Start Up | 2d | 2027-01-13 | 2027-01-14 | DH.1500A-EQP-115, DH.1500A-EQP-119, DH.1500A-EQP-116 | 52.88d |
| DH.1500A-EQP-118 |  | Gallery 1502 - F150/Line-Ups // Mechanical Gear FOD Inspection Pre-Start Up | 3d | 2027-01-14 | 2027-01-19 | DH.1500A-EQP-111, DH.1500A-EQP-104, DH.1500A-EQP-114, DH.1500A-EQP-103 | 50.88d |
|  | 7 | **G150** |  | 2026-12-16 | 2027-01-20 |  |  |
| DH.1500A-EQP-121 |  | Gallery 1502 - G150/Line-Ups // Set CRAH-DH1500- 13 | 1d | 2026-12-16 | 2026-12-16 | DH.1500A-EQP-103 | 6.88d |
| DH.1500A-EQP-123 |  | Gallery 1502 - G150/Line-Ups // Set CRAH-DH1500- 14 | 1d | 2026-12-16 | 2026-12-16 | DH.1500A-EQP-121 SS | 6.88d |
| DH.1500A-EQP-125 |  | Gallery 1502 - G150/Line-Ups // Set MOD-G150-01 | 1d | 2026-12-16 | 2026-12-16 | DH.1500A-EQP-123 FF | 51.88d |
| DH.1500A-EQP-126 |  | Gallery 1502 - G150/Line-Ups // Set MOD-G150-02 | 1d | 2026-12-16 | 2026-12-16 | DH.1500A-EQP-125 SS | 51.88d |
| DH.1500A-EQP-127 |  | Gallery 1502 - G150/Line-Ups // Set CDU-DH1500- 13 | 1d | 2026-12-17 | 2026-12-17 | DH.1500A-EQP-121 | 51.88d |
| DH.1500A-EQP-129 |  | Gallery 1502 - G150/Line-Ups // Pull Feeder from SWD to MOD | 1d | 2026-12-17 | 2026-12-17 | DH.1500A-EQP-126 | 67.88d |
| DH.1500A-EQP-130 |  | Gallery 1502 - G150/Line-Ups // Pull Cable Tray Feed from MOD to CRAHU's | 5d | 2026-12-17 | 2026-12-23 | DH.1500A-EQP-126 | 57.88d |
| DH.1500A-EQP-132 |  | Gallery 1502 - G150/Line-Ups // Mount Electrial Gear for Chiller Controls | 10d | 2026-12-17 | 2026-12-31 | DH.1500A-EQP-126 | 51.88d |
| DH.1500A-EQP-128 |  | Gallery 1502 - G150/Line-Ups // Set CDU-DH1500- 14 | 1d | 2026-12-18 | 2026-12-18 | DH.1500A-EQP-123, DH.1500A-EQP-127 | 51.88d |
| DH.1500A-EQP-124 |  | Gallery 1502 - G150/Line-Ups // Condensate connections to Floor Drains | 10d | 2026-12-21 | 2027-01-05 | DH.1500A-EQP-128, DH.1500A-EQP-127, DH.1500A-EQP-123 | 51.88d |
| DH.1500A-EQP-131 |  | Gallery 1502 - G150/Line-Ups // Mechanical Connections to CRAHU Units | 10d | 2026-12-23 | 2027-01-07 | DH.1500A-EQP-123 SS+5d | 49.88d |
| DH.1500A-EQP-137 |  | Gallery 1502 - G150/Line-Ups // Pull Feeder and Branch circuits to MIsc equipment and Chiller controls | 10d | 2026-12-23 | 2027-01-07 | DH.1500A-EQP-132 SS+4d | 51.88d |
| DH.1500A-EQP-133 |  | Gallery 1502 - G150/Line-Ups // Pull Cable Tray Feed from MOD to CRAHU's | 5d | 2026-12-24 | 2026-12-31 | DH.1500A-EQP-130 | 57.88d |
| DH.1500A-EQP-136 |  | Gallery 1502 - G150/Line-Ups // Terminate CRAHU Electrical Connections | 5d | 2026-12-29 | 2027-01-05 | DH.1500A-EQP-130, DH.1500A-EQP-133 SS+2d | 57.88d |
| DH.1500A-EQP-139 |  | Gallery 1502 - G150/Line-Ups // Teminate all Misc Equipment and Chiller Controls | 10d | 2026-12-30 | 2027-01-13 | DH.1500A-EQP-137 SS+4d | 51.88d |
| DH.1500A-EQP-134 |  | Gallery 1502 - G150/Line-Ups // Condensate connections to Floor Drains | 10d | 2026-12-31 | 2027-01-14 | DH.1500A-EQP-124 SS+5d, DH.1500A-EQP-131 SS+5d, DH.150012043 | 49.88d |
| DH.1500A-EQP-135 |  | Gallery 1502 - G150/Line-Ups // Terminate Mod Panels | 1d | 2027-01-04 | 2027-01-04 | DH.1500A-EQP-129, DH.1500A-EQP-130, DH.1500A-EQP-133 | 58.88d |
| DH.1500A-EQP-140 |  | Gallery 1502 - G150/Line-Ups // Electrical Gear FOD Inspection Pre-Start Up | 2d | 2027-01-14 | 2027-01-15 | DH.1500A-EQP-135, DH.1500A-EQP-139, DH.1500A-EQP-136 | 51.88d |
| DH.1500A-EQP-138 |  | Gallery 1502 - G150/Line-Ups // Mechanical Gear FOD Inspection Pre-Start Up | 3d | 2027-01-15 | 2027-01-20 | DH.1500A-EQP-131, DH.1500A-EQP-124, DH.1500A-EQP-134, DH.1500A-EQP-123 | 49.88d |
|  | 8 | **H150** |  | 2026-12-16 | 2027-01-20 |  |  |
| DH.1500A-EQP-141 |  | Gallery 1502 - H150/Line-Ups // Set CRAH-DH1500- 15 | 1d | 2026-12-16 | 2026-12-16 | DH.1500A-EQP-123 SS | 6.88d |
| DH.1500A-EQP-143 |  | Gallery 1502 - H150/Line-Ups // Set CRAH-DH1500- 16 | 1d | 2026-12-16 | 2026-12-16 | DH.1500A-EQP-141 SS | 6.88d |
| DH.1500A-EQP-145 |  | Gallery 1502 - H150/Line-Ups // Set MOD-H150-01 | 1d | 2026-12-16 | 2026-12-16 | DH.1500A-EQP-143 FF | 51.88d |
| DH.1500A-EQP-146 |  | Gallery 1502 - H150/Line-Ups // Set MOD-H150-02 | 1d | 2026-12-16 | 2026-12-16 | DH.1500A-EQP-145 SS | 51.88d |
| DH.1500A-EQP-147 |  | Gallery 1502 - H150/Line-Ups // Set CDU-DH1500- 15 | 1d | 2026-12-17 | 2026-12-17 | DH.1500A-EQP-141 | 51.88d |
| DH.1500A-EQP-149 |  | Gallery 1502 - H150/Line-Ups // Pull Feeder from SWD to MOD | 1d | 2026-12-17 | 2026-12-17 | DH.1500A-EQP-146 | 67.88d |
| DH.1500A-EQP-150 |  | Gallery 1502 - H150/Line-Ups // Pull Cable Tray Feed from MOD to CRAHU's | 5d | 2026-12-17 | 2026-12-23 | DH.1500A-EQP-146 | 57.88d |
| DH.1500A-EQP-152 |  | Gallery 1502 - H150/Line-Ups // Mount Electrial Gear for Chiller Controls | 10d | 2026-12-17 | 2026-12-31 | DH.1500A-EQP-146 | 51.88d |
| DH.1500A-EQP-148 |  | Gallery 1502 - H150/Line-Ups // Set CDU-DH1500- 16 | 1d | 2026-12-18 | 2026-12-18 | DH.1500A-EQP-143, DH.1500A-EQP-147 | 51.88d |
| DH.1500A-EQP-144 |  | Gallery 1502 - H150/Line-Ups // Condensate connections to Floor Drains | 10d | 2026-12-21 | 2027-01-05 | DH.1500A-EQP-148, DH.1500A-EQP-147, DH.1500A-EQP-143 | 51.88d |
| DH.1500A-EQP-151 |  | Gallery 1502 - H150/Line-Ups // Mechanical Connections to CRAHU Units | 10d | 2026-12-23 | 2027-01-07 | DH.1500A-EQP-143 SS+5d | 49.88d |
| DH.1500A-EQP-157 |  | Gallery 1502 - H150/Line-Ups // Pull Feeder and Branch circuits to MIsc equipment and Chiller controls | 10d | 2026-12-23 | 2027-01-07 | DH.1500A-EQP-152 SS+4d | 51.88d |
| DH.1500A-EQP-153 |  | Gallery 1502 - H150/Line-Ups // Pull Cable Tray Feed from MOD to CRAHU's | 5d | 2026-12-24 | 2026-12-31 | DH.1500A-EQP-150 | 57.88d |
| DH.1500A-EQP-156 |  | Gallery 1502 - H150/Line-Ups // Terminate CRAHU Electrical Connections | 5d | 2026-12-29 | 2027-01-05 | DH.1500A-EQP-150, DH.1500A-EQP-153 SS+2d | 57.88d |
| DH.1500A-EQP-159 |  | Gallery 1502 - H150/Line-Ups // Teminate all Misc Equipment and Chiller Controls | 10d | 2026-12-30 | 2027-01-13 | DH.1500A-EQP-157 SS+4d | 51.88d |
| DH.1500A-EQP-154 |  | Gallery 1502 - H150/Line-Ups // Condensate connections to Floor Drains | 10d | 2026-12-31 | 2027-01-14 | DH.1500A-EQP-144 SS+5d, DH.1500A-EQP-151 SS+5d, DH.150012046 | 49.88d |
| DH.1500A-EQP-155 |  | Gallery 1502 - H150/Line-Ups // Terminate Mod Panels | 1d | 2027-01-04 | 2027-01-04 | DH.1500A-EQP-149, DH.1500A-EQP-150, DH.1500A-EQP-153 | 58.88d |
| DH.1500A-EQP-160 |  | Gallery 1502 - H150/Line-Ups // Electrical Gear FOD Inspection Pre-Start Up | 2d | 2027-01-14 | 2027-01-15 | DH.1500A-EQP-155, DH.1500A-EQP-159, DH.1500A-EQP-156 | 51.88d |
| DH.1500A-EQP-158 |  | Gallery 1502 - H150/Line-Ups // Mechanical Gear FOD Inspection Pre-Start Up | 3d | 2027-01-15 | 2027-01-20 | DH.1500A-EQP-151, DH.1500A-EQP-144, DH.1500A-EQP-154, DH.1500A-EQP-143 | 49.88d |
|  | 9 | **J150** |  | 2026-12-16 | 2027-01-20 |  |  |
| DH.1500A-EQP-161 |  | Gallery 1502 - J150/Line-Ups // Set CRAH-DH1500- 17 | 1d | 2026-12-16 | 2026-12-16 | DH.1500A-EQP-143 SS | 6.88d |
| DH.1500A-EQP-163 |  | Gallery 1502 - J150/Line-Ups // Set CRAH-DH1500- 18 | 1d | 2026-12-16 | 2026-12-16 | DH.1500A-EQP-161 SS | 6.88d |
| DH.1500A-EQP-165 |  | Gallery 1502 - J150/Line-Ups // Set MOD-J150-01 | 1d | 2026-12-16 | 2026-12-16 | DH.1500A-EQP-163 FF | 51.88d |
| DH.1500A-EQP-166 |  | Gallery 1502 - J150/Line-Ups // Set MOD-J150-02 | 1d | 2026-12-16 | 2026-12-16 | DH.1500A-EQP-165 SS | 51.88d |
| DH.1500A-EQP-167 |  | Gallery 1502 - J150/Line-Ups // Set CDU-DH1500- 17 | 1d | 2026-12-17 | 2026-12-17 | DH.1500A-EQP-161 | 51.88d |
| DH.1500A-EQP-169 |  | Gallery 1502 - J150/Line-Ups // Pull Feeder from SWD to MOD | 1d | 2026-12-17 | 2026-12-17 | DH.1500A-EQP-166 | 67.88d |
| DH.1500A-EQP-170 |  | Gallery 1502 - J150/Line-Ups // Pull Cable Tray Feed from MOD to CRAHU's | 5d | 2026-12-17 | 2026-12-23 | DH.1500A-EQP-166 | 57.88d |

| ID | WBS | Task | Duration | Start | Finish | Predecessors | Total float |
| --- | --- | --- | --- | --- | --- | --- | --- |
| DH.1500A-EQP-172 |  | Gallery 1502 - J150/Line-Ups // Mount Electrial Gear for Chiller Controls | 10d | 2026-12-17 | 2026-12-31 | DH.1500A-EQP-166 | 51.88d |
| DH.1500A-EQP-168 |  | Gallery 1502 - J150/Line-Ups // Set CDU-DH1500- 18 | 1d | 2026-12-18 | 2026-12-18 | DH.1500A-EQP-163, DH.1500A-EQP-167 | 51.88d |
| DH.1500A-EQP-164 |  | Gallery 1502 - J150/Line-Ups // Condensate connections to Floor Drains | 10d | 2026-12-21 | 2027-01-05 | DH.1500A-EQP-168, DH.1500A-EQP-167, DH.1500A-EQP-163 | 51.88d |
| DH.1500A-EQP-171 |  | Gallery 1502 - J150/Line-Ups // Mechanical Connections to CRAHU Units | 10d | 2026-12-23 | 2027-01-07 | DH.1500A-EQP-163 SS+5d | 49.88d |
| DH.1500A-EQP-177 |  | Gallery 1502 - J150/Line-Ups // Pull Feeder and Branch circuits to MIsc equipment and Chiller controls | 10d | 2026-12-23 | 2027-01-07 | DH.1500A-EQP-172 SS+4d | 51.88d |
| DH.1500A-EQP-173 |  | Gallery 1502 - J150/Line-Ups // Pull Cable Tray Feed from MOD to CRAHU's | 5d | 2026-12-24 | 2026-12-31 | DH.1500A-EQP-170 | 57.88d |
| DH.1500A-EQP-176 |  | Gallery 1502 - J150/Line-Ups // Terminate CRAHU Electrical Connections | 5d | 2026-12-29 | 2027-01-05 | DH.1500A-EQP-170, DH.1500A-EQP-173 SS+2d | 57.88d |
| DH.1500A-EQP-179 |  | Gallery 1502 - J150/Line-Ups // Teminate all Misc Equipment and Chiller Controls | 10d | 2026-12-30 | 2027-01-13 | DH.1500A-EQP-177 SS+4d | 51.88d |
| DH.1500A-EQP-174 |  | Gallery 1502 - J150/Line-Ups // Condensate connections to Floor Drains | 10d | 2026-12-31 | 2027-01-14 | DH.1500A-EQP-164 SS+5d, DH.1500A-EQP-171 SS+5d, DH.150012049 | 49.88d |
| DH.1500A-EQP-175 |  | Gallery 1502 - J150/Line-Ups // Terminate Mod Panels | 1d | 2027-01-04 | 2027-01-04 | DH.1500A-EQP-169, DH.1500A-EQP-170, DH.1500A-EQP-173 | 58.88d |
| DH.1500A-EQP-180 |  | Gallery 1502 - J150/Line-Ups // Electrical Gear FOD Inspection Pre-Start Up | 2d | 2027-01-14 | 2027-01-15 | DH.1500A-EQP-175, DH.1500A-EQP-179, DH.1500A-EQP-176 | 51.88d |
| DH.1500A-EQP-178 |  | Gallery 1502 - J150/Line-Ups // Mechanical Gear FOD Inspection Pre-Start Up | 3d | 2027-01-15 | 2027-01-20 | DH.1500A-EQP-171, DH.1500A-EQP-164, DH.1500A-EQP-174, DH.1500A-EQP-163 | 49.88d |
|  | 10 | **K150** |  | 2026-12-17 | 2027-01-21 |  |  |
| DH.1500A-EQP-181 |  | Gallery 1502 - K150/Line-Ups // Set CRAH-DH1500- 19 | 1d | 2026-12-17 | 2026-12-17 | DH.1500A-EQP-163 | 6.88d |
| DH.1500A-EQP-183 |  | Gallery 1502 - K150/Line-Ups // Set CRAH-DH1500- 20 | 1d | 2026-12-17 | 2026-12-17 | DH.1500A-EQP-181 SS | 6.88d |
| DH.1500A-EQP-185 |  | Gallery 1502 - K150/Line-Ups // Set MOD-K150-01 | 1d | 2026-12-17 | 2026-12-17 | DH.1500A-EQP-183 FF | 50.88d |
| DH.1500A-EQP-186 |  | Gallery 1502 - K150/Line-Ups // Set MOD-K150-02 | 1d | 2026-12-17 | 2026-12-17 | DH.1500A-EQP-185 SS | 50.88d |
| DH.1500A-EQP-187 |  | Gallery 1502 - K150/Line-Ups // Set CDU-DH1500- 19 | 1d | 2026-12-18 | 2026-12-18 | DH.1500A-EQP-181 | 55.88d |
| DH.1500A-EQP-189 |  | Gallery 1502 - K150/Line-Ups // Pull Feeder from SWD to MOD | 1d | 2026-12-18 | 2026-12-18 | DH.1500A-EQP-186 | 66.88d |
| DH.1500A-EQP-190 |  | Gallery 1502 - K150/Line-Ups // Pull Cable Tray Feed from MOD to CRAHU's | 5d | 2026-12-18 | 2026-12-24 | DH.1500A-EQP-186 | 56.88d |
| DH.1500A-EQP-192 |  | Gallery 1502 - K150/Line-Ups // Mount Electrial Gear for Chiller Controls | 10d | 2026-12-18 | 2027-01-04 | DH.1500A-EQP-186 | 50.88d |
| DH.1500A-EQP-188 |  | Gallery 1502 - K150/Line-Ups // Set CDU-DH1500- 20 | 1d | 2026-12-21 | 2026-12-21 | DH.1500A-EQP-183, DH.1500A-EQP-187 | 55.88d |
| DH.1500A-EQP-191 |  | Gallery 1502 - K150/Line-Ups // Mechanical Connections to CRAHU Units | 10d | 2026-12-24 | 2027-01-08 | DH.1500A-EQP-183 SS+5d | 48.88d |
| DH.1500A-EQP-197 |  | Gallery 1502 - K150/Line-Ups // Pull Feeder and Branch circuits to MIsc equipment and Chiller controls | 10d | 2026-12-24 | 2027-01-08 | DH.1500A-EQP-192 SS+4d | 50.88d |
| DH.1500A-EQP-193 |  | Gallery 1502 - K150/Line-Ups // Pull Cable Tray Feed from MOD to CRAHU's | 5d | 2026-12-28 | 2027-01-04 | DH.1500A-EQP-190 | 56.88d |
| DH.1500A-EQP-196 |  | Gallery 1502 - K150/Line-Ups // Terminate CRAHU Electrical Connections | 5d | 2026-12-30 | 2027-01-06 | DH.1500A-EQP-190, DH.1500A-EQP-193 SS+2d | 56.88d |
| DH.1500A-EQP-199 |  | Gallery 1502 - K150/Line-Ups // Teminate all Misc Equipment and Chiller Controls | 10d | 2026-12-31 | 2027-01-14 | DH.1500A-EQP-197 SS+4d | 50.88d |
| DH.1500A-EQP-194 |  | Gallery 1502 - K150/Line-Ups // Condensate connections to Floor Drains | 10d | 2027-01-04 | 2027-01-15 | DH.1500A-EQP-191 SS+5d, DH.150012052, DH.1500A-EQP-188, DH.1500A-EQP-187, DH.1500A-EQP-183 | 48.88d |
| DH.1500A-EQP-195 |  | Gallery 1502 - K150/Line-Ups // Terminate Mod Panels | 1d | 2027-01-05 | 2027-01-05 | DH.1500A-EQP-189, DH.1500A-EQP-190, DH.1500A-EQP-193 | 57.88d |
| DH.1500A-EQP-200 |  | Gallery 1502 - K150/Line-Ups // Electrical Gear FOD Inspection Pre-Start Up | 2d | 2027-01-15 | 2027-01-19 | DH.1500A-EQP-195, DH.1500A-EQP-199, DH.1500A-EQP-196 | 50.88d |
| DH.1500A-EQP-198 |  | Gallery 1502 - K150/Line-Ups // Mechanical Gear FOD Inspection Pre-Start Up | 3d | 2027-01-19 | 2027-01-21 | DH.1500A-EQP-191, DH.1500A-EQP-194, DH.1500A-EQP-183, DH.1500A-EQP-188, DH.1500A-EQP-187 | 48.88d |
|  | 11 | **R150** |  | 2026-12-17 | 2027-01-21 |  |  |
| DH.1500A-EQP-201 |  | Gallery 1502 - R150/Line-Ups // Set CRAH-DH1500- 21 | 1d | 2026-12-17 | 2026-12-17 | DH.1500A-EQP-183 SS | 6.88d |
| DH.1500A-EQP-203 |  | Gallery 1502 - R150/Line-Ups // Set CRAH-DH1500- 22 | 1d | 2026-12-17 | 2026-12-17 | DH.1500A-EQP-201 SS | 6.88d |
| DH.1500A-EQP-205 |  | Gallery 1502 - R150/Line-Ups // Set MOD-R150-01 | 1d | 2026-12-17 | 2026-12-17 | DH.1500A-EQP-203 FF | 8.88d |
| DH.1500A-EQP-206 |  | Gallery 1502 - R150/Line-Ups // Set MOD-R150-02 | 1d | 2026-12-17 | 2026-12-17 | DH.1500A-EQP-205 SS | 8.88d |
| DH.1500A-EQP-207 |  | Gallery 1502 - R150/Line-Ups // Set CDU-DH1500- 21 | 1d | 2026-12-18 | 2026-12-18 | DH.1500A-EQP-201 | 13.88d |
| DH.1500A-EQP-210 |  | Gallery 1502 - R150/Line-Ups // Pull Cable Tray Feed from MOD to CRAHU's | 5d | 2026-12-18 | 2026-12-24 | DH.1500A-EQP-206 | 10.88d |
| DH.1500A-EQP-212 |  | Gallery 1502 - R150/Line-Ups // Mount Electrial Gear for Chiller Controls | 10d | 2026-12-18 | 2027-01-04 | DH.1500A-EQP-206 | 8.88d |
| DH.1500A-EQP-208 |  | Gallery 1502 - R150/Line-Ups // Set CDU-DH1500- 22 | 1d | 2026-12-21 | 2026-12-21 | DH.1500A-EQP-203, DH.1500A-EQP-207 | 13.88d |
| DH.1500A-EQP-221 |  | Gallery 1502 - R150/Line-Ups // Set SWD-R150 | 1d | 2026-12-22 | 2026-12-22 | DH.1500A-EQP-208 | 20.88d |
| DH.1500A-EQP-222 |  | Gallery 1502 - R150/Line-Ups // Set SWD-TIE-R150 | 1d | 2026-12-23 | 2026-12-23 | DH.1500A-EQP-221 | 20.88d |
| DH.1500A-EQP-209 |  | Gallery 1502 - R150/Line-Ups // Pull Feeder from SWD to MOD | 1d | 2026-12-24 | 2026-12-24 | DH.1500A-EQP-206, DH.1500A-EQP-222 | 20.88d |
| DH.1500A-EQP-211 |  | Gallery 1502 - R150/Line-Ups // Mechanical Connections to CRAHU Units | 10d | 2026-12-24 | 2027-01-08 | DH.1500A-EQP-203 SS+5d | 6.88d |
| DH.1500A-EQP-217 |  | Gallery 1502 - R150/Line-Ups // Pull Feeder and Branch circuits to MIsc equipment and Chiller controls | 10d | 2026-12-24 | 2027-01-08 | DH.1500A-EQP-212 SS+4d | 8.88d |
| DH.1500A-EQP-213 |  | Gallery 1502 - R150/Line-Ups // Pull Cable Tray Feed from MOD to CRAHU's | 5d | 2026-12-28 | 2027-01-04 | DH.1500A-EQP-210 | 10.88d |
| DH.1500A-EQP-216 |  | Gallery 1502 - R150/Line-Ups // Terminate CRAHU Electrical Connections | 5d | 2026-12-30 | 2027-01-06 | DH.1500A-EQP-210, DH.1500A-EQP-213 SS+2d | 14.88d |
| DH.1500A-EQP-219 |  | Gallery 1502 - R150/Line-Ups // Teminate all Misc Equipment and Chiller Controls | 10d | 2026-12-31 | 2027-01-14 | DH.1500A-EQP-217 SS+4d | 8.88d |
| DH.1500A-EQP-214 |  | Gallery 1502 - R150/Line-Ups // Condensate connections to Floor Drains | 10d | 2027-01-04 | 2027-01-15 | DH.1500A-EQP-211 SS+5d, DH.150012055, DH.1500A-EQP-208, DH.1500A-EQP-207, DH.1500A-EQP-203 | 6.88d |
| DH.1500A-EQP-215 |  | Gallery 1502 - R150/Line-Ups // Terminate Mod Panels | 1d | 2027-01-05 | 2027-01-05 | DH.1500A-EQP-209, DH.1500A-EQP-210, DH.1500A-EQP-213 | 15.88d |
| DH.1500A-EQP-220 |  | Gallery 1502 - R150/Line-Ups // Electrical Gear FOD Inspection Pre-Start Up | 2d | 2027-01-15 | 2027-01-19 | DH.1500A-EQP-215, DH.1500A-EQP-219, DH.1500A-EQP-216, DH.160012131 | 8.88d |
| DH.1500A-EQP-218 |  | Gallery 1502 - R150/Line-Ups // Mechanical Gear FOD Inspection Pre-Start Up | 3d | 2027-01-19 | 2027-01-21 | DH.1500A-EQP-211, DH.1500A-EQP-214, DH.1500A-EQP-203, DH.1500A-EQP-208, DH.1500A-EQP-207 | 6.88d |
|  | 12 | **Equipment Connections** |  | 2027-01-05 | 2027-01-14 |  |  |
|  | 1 | **CRAH** |  | 2027-01-05 | 2027-01-14 |  |  |
| DH1500.MG.A110.8687 |  | Gallery 1502 // DH 1500 / Elec Room // CRAH Duct Work Termination | 2d | 2027-01-05 | 2027-01-06 | DH.1500A-EQP-213 | 10.88d |
| DH1500.MG.A110.8686 |  | Gallery 1502 // DH 1500 / Elec Room // CRAH Chilled Water | 2d | 2027-01-07 | 2027-01-08 | DH1500.MG.A110.8687 | 10.88d |
| DH1500.MG.A110.8684 |  | Gallery 1502 // DH 1500 / Elec Room // CRAH Power Connections | 2d | 2027-01-11 | 2027-01-12 | DH1500.MG.A110.8686 | 10.88d |
| DH1500.MG.A110.8685 |  | Gallery 1502 // DH 1500 / Elec Room // CRAH LV Connections | 2d | 2027-01-13 | 2027-01-14 | DH1500.MG.A110.8684 | 10.88d |
|  | 2 | **CDU** |  | 2027-01-05 | 2027-01-12 |  |  |
| DH1500.MG.A110.8690 |  | Gallery 1502 // DH 1500 / Elec Room // CDU Chilled Water Connections | 2d | 2027-01-05 | 2027-01-06 | DH.1500A-EQP-213 | 12.88d |
| DH1500.MG.A110.8688 |  | Gallery 1502 // DH 1500 /Elec Room // CDU Power Connections | 2d | 2027-01-07 | 2027-01-08 | DH1500.MG.A110.8690 | 12.88d |
| DH1500.MG.A110.8689 |  | Gallery 1502 // DH 1500 / Elec Room // CDU Controls Connections | 2d | 2027-01-11 | 2027-01-12 | DH1500.MG.A110.8688 | 12.88d |
|  | 3 | **MOD** |  | 2027-01-11 | 2027-01-14 |  |  |
| DH1500.MG.A110.8691 |  | Gallery 1502 // DH 1500 / Elec Room // MOD Power Connections | 2d | 2027-01-11 | 2027-01-12 | DH.1500A-EQP-217 | 10.88d |
| DH1500.MG.A110.8692 |  | Gallery 1502 // DH 1500 / Elec Room // MOD LV Connections | 2d | 2027-01-13 | 2027-01-14 | DH1500.MG.A110.8691 | 10.88d |
|  | 4 | **Gallery 1503** |  | 2026-09-30 | 2027-02-05 |  |  |
|  | 1 | **Architectural** |  | 2026-09-30 | 2027-01-04 |  |  |
| DH.15001010 |  | DH 1500/Gallery 1503 // MEPF overhead layout | 5d | 2026-09-30 | 2026-10-06 | DH.14006270 | -4.12d |
| DH.15001000 |  | DH 1500/Gallery 1503 // Seal concrete | 5d | 2026-10-02 | 2026-10-08 | DH.15000.1000 | 13.88d |
| B120001.3211 |  | DH 1500/Gallery 1503 // Install Overhead Cable Ladder / 36" Cable Tray - TFO | 5d | 2026-10-07 | 2026-10-14 | DH.15001010 | -4.12d |

| ID | WBS | Task | Duration | Start | Finish | Predecessors | Total float |
| --- | --- | --- | --- | --- | --- | --- | --- |
| B120001.3212 |  | DH 1500/Gallery 1503 // Install Overhead HAC - TFO | 5d | 2026-10-07 | 2026-10-14 | B120001.3211 FF | -4.12d |
| DH.15001030 |  | DH 1500/Gallery 1503 // MEPF high overhead install | 10d | 2026-10-15 | 2026-10-28 | DH.15001010 SS, B120001.3212 | -4.12d |
| DH.15001040 |  | DH 1500/Gallery 1503 // Frame walls | 6d | 2026-10-16 | 2026-10-23 | DH.1500700 | -1.12d |
| DH.15001070 |  | DH 1500/Gallery 1503 // MEP rough in walls | 4d | 2026-10-26 | 2026-10-29 | DH.15001040 | -1.12d |
| F.1000A.1301 |  | DH 1500/Gallery 1503 // Rough-In Security | 2d | 2026-10-29 | 2026-10-30 | DH.15001030 | -4.12d |
| F.1000A.1575 |  | DH 1500/Gallery 1503 // BMS & EPMS Rough-In | 2d | 2026-10-29 | 2026-10-30 | F.1000A.1301 FF, F.1000A.1301 SS | 97.88d |
| DH.15001080 |  | DH 1500/Gallery 1503 // In wall inspection | 1d | 2026-10-30 | 2026-10-30 | DH.15001070 | -1.12d |
| F.1000A.1302 |  | DH 1500/Gallery 1503 // Pull & Test Security Cable | 3d | 2026-11-02 | 2026-11-04 | F.1000A.1301 | -4.12d |
| DH.15001050 |  | DH 1500/Gallery 1503 // Install Sheetrock Top Down | 6d | 2026-11-05 | 2026-11-13 | DH.15001000, DH.15001040 SS+3d, F.1000A.1302, DH.15001080 | -4.12d |
| DH.15001090 |  | DH 1500/Gallery 1503 // Install Balance of Sheetrock on walls | 6d | 2026-11-16 | 2026-11-23 | DH.15001030, DH.15001050 | -4.12d |
| DH.15001100 |  | DH 1500/Gallery 1503 // Tape and finish walls | 8d | 2026-11-24 | 2026-12-04 | DH.15001080, DH.15001090 | -4.12d |
| DH.15001060 |  | DH 1500/Gallery 1503 // Install wall door frames | 2d | 2026-12-07 | 2026-12-08 | DH.15001100 | -2.12d |
| DH.15001110 |  | DH 1500/Gallery 1503 // Prime and Paint walls | 4d | 2026-12-07 | 2026-12-10 | DH.15001100 | -4.12d |
| F.1000A.1303 |  | DH 1500/Gallery 1503 // Install Security Devices | 2d | 2026-12-09 | 2026-12-10 | F.1000A.1302, DH.15001060 | 63.88d |
| DH.15001120 |  | DH 1500/Gallery 1503 // Touch up Walls and Fianl Paint | 5d | 2026-12-11 | 2026-12-17 | DH.15001060, DH.15001110 | -4.12d |
| F.1000A.1304 |  | DH 1500/Gallery 1503 // Mount & Terminate Security Devices | 5d | 2026-12-11 | 2026-12-17 | F.1000A.1303, DH.15001110 | 63.88d |
| DH.15001130 |  | DH 1500/Gallery 1503 // Install Trim and Devices | 2d | 2026-12-18 | 2026-12-21 | DH.15001120 | -4.12d |
| DH.160012158 |  | DH 1500/Gallery 1503 // Ready to Receive Equipment | 0d | 2026-12-21 | 2026-12-21 | DH.15001130 | -4.12d |
| F.1000A.1305 |  | DH 1500/Gallery 1503 // Test Security Devices | 2d | 2026-12-23 | 2026-12-24 | F.1000A.1575 FF, F.1000A.1304, DH.15001130 FS+1d | 60.88d |
| DH.15001140 |  | DH 1500/Gallery 1503 // Suffolk Pre Punch | 5d | 2026-12-28 | 2027-01-04 | DH.160012158, F.1000A.1305 | 60.88d |
|  | 16 | **Raceway** |  |  |  |  |  |
|  | 3 | **Equipment Line-Ups** |  | 2026-12-22 | 2027-02-05 |  |  |
|  | 1 | **A150** |  | 2026-12-22 | 2027-01-26 |  |  |
| DH.1500B-EQP-1 |  | Gallery 1503 - A150/Line-Ups // Set CRAH-DH1500- 23 | 1d | 2026-12-22 | 2026-12-22 | DH.15006360, DH.160012158 | -4.12d |
| DH.1500B-EQP-4 |  | Gallery 1503 - A150/Line-Ups // Set CRAH-DH1500- 24 | 1d | 2026-12-22 | 2026-12-22 | DH.1500B-EQP-1 FF, DH.1500B-EQP-1 SS | -4.12d |
| DH.1500B-EQP-5 |  | Gallery 1503 - A150/Line-Ups // Set MOD A140-01 (Does No apply) | 1d | 2026-12-22 | 2026-12-22 | DH.1500B-EQP-4 FF | 47.88d |
| DH.1500B-EQP-6 |  | Gallery 1503 - A150/Line-Ups // Set MOD A140-02 (Does No apply) | 1d | 2026-12-22 | 2026-12-22 | DH.1500B-EQP-5 SS | 47.88d |
| DH.1500B-EQP-10 |  | Gallery 1503 - A150/Line-Ups // Mount Electrial Gear for Chiller Controls | 10d | 2026-12-23 | 2027-01-07 | DH.1500B-EQP-6 | 47.88d |
| DH.1500B-EQP-199 |  | Gallery 1503 - A150/Line-Ups // Set CDU-DH1500-23 | 1d | 2026-12-23 | 2026-12-23 | DH.1500B-EQP-6 | 61.88d |
| DH.1500B-EQP-3 |  | Gallery 1503 - A150/Line-Ups // Condensate connections to Floor Drains | 10d | 2026-12-23 | 2027-01-07 | DH.1500B-EQP-4, DH.1500B-EQP-1 SS | 49.88d |
| DH.1500B-EQP-8 |  | Gallery 1503 - A150/Line-Ups // Pull Cable Tray Feed from MOD to CRAHU's | 3d | 2026-12-23 | 2026-12-28 | DH.1500B-EQP-6 | 59.88d |
| DH.1500B-EQP-200 |  | Gallery 1503 - A150/Line-Ups // Set CDU-DH1500-24 | 1d | 2026-12-24 | 2026-12-24 | DH.1500B-EQP-199 | 61.88d |
| DH.1500B-EQP-7 |  | Gallery 1503 - A150/Line-Ups // Pull Feeder from SWD to MOD | 1d | 2026-12-28 | 2026-12-28 | DH.1500B-EQP-6, DH.1500B-EQP-200 | 61.88d |
| DH.1500B-EQP-13 |  | Gallery 1503 - A150/Line-Ups // Terminate MOD Panels | 1d | 2026-12-29 | 2026-12-29 | DH.1500B-EQP-7, DH.1500B-EQP-8 | 61.88d |
| DH.1500B-EQP-14 |  | Gallery 1503 - A150/Line-Ups // Terminate Electrical Connections - CRAHU | 3d | 2026-12-29 | 2026-12-31 | DH.1500B-EQP-8 | 59.88d |
| DH.1500B-EQP-15 |  | Gallery 1503 - A150/Line-Ups // Pull Feeder and Branch circuits to MIsc equipment and Chiller controls | 10d | 2026-12-30 | 2027-01-13 | DH.1500B-EQP-10 SS+4d | 47.88d |
| DH.1500B-EQP-9 |  | Gallery 1503 - A150/Line-Ups // Mechanical Connections to CRAHU Units | 5d | 2026-12-30 | 2027-01-06 | DH.1500B-EQP-4 SS+5d | 45.88d |
| DH.1500B-EQP-17 |  | Gallery 1503 - A150/Line-Ups // Teminate all Misc Equipment and Chiller Controls | 10d | 2027-01-06 | 2027-01-20 | DH.1500B-EQP-15 SS+4d | 47.88d |
| DH.1500B-EQP-12 |  | Gallery 1503 - A150/Line-Ups // Condensate connections to Floor Drains | 10d | 2027-01-07 | 2027-01-21 | DH.1500B-EQP-3 SS+5d, DH.1500B-EQP-9 SS+5d | 45.88d |
| DH.1500B-EQP-18 |  | Gallery 1503 - A150/Line-Ups // Electrical Gear FOD Inspection Pre-Start Up | 2d | 2027-01-21 | 2027-01-22 | DH.1500B-EQP-13, DH.1500B-EQP-17, DH.1500B-EQP-14 | 47.88d |
| DH.1500B-EQP-16 |  | Gallery 1503 - A150/Line-Ups // Mechanical Gear FOD Inspection Pre-Start Up | 3d | 2027-01-22 | 2027-01-26 | DH.1500B-EQP-4, DH.1500B-EQP-1 SS, DH.1500B-EQP-9, DH.1500B-EQP-3, DH.1500B-EQP-12 | 45.88d |
|  | 2 | **B150** |  | 2026-12-22 | 2027-02-02 |  |  |
| DH.1500B-EQP-19 |  | Gallery 1503 - B150/Line-Ups // Set CRAH-DH1500- 25 | 1d | 2026-12-22 | 2026-12-22 | DH.1500B-EQP-4 SS | -4.12d |
| DH.1500B-EQP-22 |  | Gallery 1503 - B150/Line-Ups // Set CRAH-DH1500- 26 | 1d | 2026-12-22 | 2026-12-22 | DH.1500B-EQP-19 FF, DH.1500B-EQP-19 SS | -4.12d |
| DH.1500B-EQP-23 |  | Gallery 1503 - B150/Line-Ups // Set MOD B140-01 (Does No apply) | 1d | 2026-12-22 | 2026-12-22 | DH.1500B-EQP-22 FF | 47.88d |
| DH.1500B-EQP-24 |  | Gallery 1503 - B150/Line-Ups // Set MOD B140-02 (Does No apply) | 1d | 2026-12-22 | 2026-12-22 | DH.1500B-EQP-23 SS | 47.88d |
| DH.1500B-EQP-201 |  | Gallery 1503 - B150/Line-Ups // Set CDU-DH1500-25 | 1d | 2026-12-23 | 2026-12-23 | DH.1500B-EQP-24 | 61.88d |
| DH.1500B-EQP-26 |  | Gallery 1503 - B150/Line-Ups // Pull Cable Tray Feed from MOD to CRAHU's | 5d | 2026-12-23 | 2026-12-30 | DH.1500B-EQP-24 | 53.88d |
| DH.1500B-EQP-28 |  | Gallery 1503 - B150/Line-Ups // Mount Electrial Gear for Chiller Controls | 10d | 2026-12-23 | 2027-01-07 | DH.1500B-EQP-24 | 47.88d |
| DH.1500B-EQP-202 |  | Gallery 1503 - B150/Line-Ups // Set CDU-DH1500-26 | 1d | 2026-12-24 | 2026-12-24 | DH.1500B-EQP-201, DH.1500B-EQP-201 FF | 61.88d |
| DH.1500B-EQP-25 |  | Gallery 1503 - B150/Line-Ups // Pull Feeder from SWD to MOD | 1d | 2026-12-28 | 2026-12-28 | DH.1500B-EQP-24, DH.1500B-EQP-202 | 61.88d |
| DH.1500B-EQP-20 |  | Gallery 1503 - B150/Line-Ups // Connect CRAH units | 10d | 2026-12-30 | 2027-01-13 | DH.1500B-EQP-22, DH.1500B-EQP-19 SS+5d | 40.88d |
| DH.1500B-EQP-27 |  | Gallery 1503 - B150/Line-Ups // Mechanical Connections to CRAHU Units | 10d | 2026-12-30 | 2027-01-13 | DH.1500B-EQP-22 SS+5d | 45.88d |
| DH.1500B-EQP-33 |  | Gallery 1503 - B150/Line-Ups // Pull Feeder and Branch circuits to MIsc equipment and Chiller controls | 10d | 2026-12-30 | 2027-01-13 | DH.1500B-EQP-28 SS+4d | 47.88d |
| DH.1500B-EQP-29 |  | Gallery 1503 - B150/Line-Ups // Pull Cable Tray Feed from MOD to CRAHU's | 5d | 2026-12-31 | 2027-01-07 | DH.1500B-EQP-26 | 53.88d |
| DH.1500B-EQP-32 |  | Gallery 1503 - B150/Line-Ups // Terminate CRAHU Electrical Connections | 5d | 2027-01-05 | 2027-01-11 | DH.1500B-EQP-26, DH.1500B-EQP-29 SS+2d | 53.88d |
| DH.1500B-EQP-35 |  | Gallery 1503 - B150/Line-Ups // Teminate all Misc Equipment and Chiller Controls | 10d | 2027-01-06 | 2027-01-20 | DH.1500B-EQP-33 SS+4d | 47.88d |
| DH.1500B-EQP-21 |  | Gallery 1503 - B150/Line-Ups // Condensate connections to Floor Drains | 10d | 2027-01-07 | 2027-01-21 | DH.1500B-EQP-20 SS+5d | 40.88d |
| DH.1500B-EQP-31 |  | Gallery 1503 - B150/Line-Ups // Terminat Mod Panels | 1d | 2027-01-08 | 2027-01-08 | DH.1500B-EQP-25, DH.1500B-EQP-26, DH.1500B-EQP-29 | 54.88d |
| DH.1500B-EQP-30 |  | Gallery 1503 - B150/Line-Ups // Condensate connections to Floor Drains | 10d | 2027-01-14 | 2027-01-28 | DH.1500B-EQP-21 SS+5d, DH.1500B-EQP-27 SS+5d | 40.88d |
| DH.1500B-EQP-36 |  | Gallery 1503 - B150/Line-Ups // Electrical Gear FOD Inspection Pre-Start Up | 2d | 2027-01-21 | 2027-01-22 | DH.1500B-EQP-31, DH.1500B-EQP-35, DH.1500B-EQP-32 | 47.88d |
| DH.1500B-EQP-34 |  | Gallery 1503 - B150/Line-Ups // Mechanical Gear FOD Inspection Pre-Start Up | 3d | 2027-01-29 | 2027-02-02 | DH.1500B-EQP-20, DH.1500B-EQP-27, DH.1500B-EQP-21, DH.1500B-EQP-30 | 40.88d |
|  | 3 | **C150** |  | 2026-12-22 | 2027-02-02 |  |  |
| DH.1500B-EQP-37 |  | Gallery 1503 - C150/Line-Ups // Set CRAH-DH1500- 27 | 1d | 2026-12-22 | 2026-12-22 | DH.1500B-EQP-22 SS | -4.12d |
| DH.1500B-EQP-40 |  | Gallery 1503 - C150/Line-Ups // Set CRAH-DH1500- 28 | 1d | 2026-12-22 | 2026-12-22 | DH.1500B-EQP-37 FF, DH.1500B-EQP-37 SS | -4.12d |
| DH.1500B-EQP-41 |  | Gallery 1503 - C150/Line-Ups // Set MOD C140-01 (Does No apply) | 1d | 2026-12-22 | 2026-12-22 | DH.1500B-EQP-40 FF | 47.88d |
| DH.1500B-EQP-42 |  | Gallery 1503 - C150/Line-Ups // Set MOD C140-02 (Does No apply) | 1d | 2026-12-22 | 2026-12-22 | DH.1500B-EQP-41 SS | 47.88d |
| DH.1500B-EQP-203 |  | Gallery 1503 - C150/Line-Ups // Set CDU-DH1500-27 | 1d | 2026-12-23 | 2026-12-23 | DH.1500B-EQP-42 | 61.88d |
| DH.1500B-EQP-44 |  | Gallery 1503 - C150/Line-Ups // Pull Cable Tray Feed from MOD to CRAHU's | 5d | 2026-12-23 | 2026-12-30 | DH.1500B-EQP-42 | 53.88d |
| DH.1500B-EQP-46 |  | Gallery 1503 - C150/Line-Ups // Mount Electrial Gear for Chiller Controls | 10d | 2026-12-23 | 2027-01-07 | DH.1500B-EQP-42 | 47.88d |

| ID | WBS | Task | Duration | Start | Finish | Predecessors | Total float |
| --- | --- | --- | --- | --- | --- | --- | --- |
| DH.1500B-EQP-204 |  | Gallery 1503 - C150/Line-Ups // Set CDU-DH1500-28 | 1d | 2026-12-24 | 2026-12-24 | DH.1500B-EQP-203, DH.1500B-EQP-203 FF | 61.88d |
| DH.1500B-EQP-43 |  | Gallery 1503 - C150/Line-Ups // Pull Feeder from SWD to MOD | 1d | 2026-12-28 | 2026-12-28 | DH.1500B-EQP-42, DH.1500B-EQP-204 | 61.88d |
| DH.1500B-EQP-38 |  | Gallery 1503 - C150/Line-Ups // Connect CRAH units | 10d | 2026-12-30 | 2027-01-13 | DH.1500B-EQP-40, DH.1500B-EQP-37 SS+5d | 40.88d |
| DH.1500B-EQP-45 |  | Gallery 1503 - C150/Line-Ups // Mechanical Connections to CRAHU Units | 10d | 2026-12-30 | 2027-01-13 | DH.1500B-EQP-40 SS+5d | 45.88d |
| DH.1500B-EQP-51 |  | Gallery 1503 - C150/Line-Ups // Pull Feeder and Branch circuits to MIsc equipment and Chiller controls | 10d | 2026-12-30 | 2027-01-13 | DH.1500B-EQP-46 SS+4d | 47.88d |
| DH.1500B-EQP-47 |  | Gallery 1503 - C150/Line-Ups // Pull Cable Tray Feed from MOD to CRAHU's | 5d | 2026-12-31 | 2027-01-07 | DH.1500B-EQP-44 | 53.88d |
| DH.1500B-EQP-50 |  | Gallery 1503 - C150/Line-Ups // Terminate CRAHU Electrical Connections | 5d | 2027-01-05 | 2027-01-11 | DH.1500B-EQP-44, DH.1500B-EQP-47 SS+2d | 53.88d |
| DH.1500B-EQP-53 |  | Gallery 1503 - C150/Line-Ups // Teminate all Misc Equipment and Chiller Controls | 10d | 2027-01-06 | 2027-01-20 | DH.1500B-EQP-51 SS+4d | 47.88d |
| DH.1500B-EQP-39 |  | Gallery 1503 - C150/Line-Ups // Condensate connections to Floor Drains | 10d | 2027-01-07 | 2027-01-21 | DH.1500B-EQP-38 SS+5d | 40.88d |
| DH.1500B-EQP-49 |  | Gallery 1503 - C150/Line-Ups // Terminat Mod Panels | 1d | 2027-01-08 | 2027-01-08 | DH.1500B-EQP-43, DH.1500B-EQP-44, DH.1500B-EQP-47 | 54.88d |
| DH.1500B-EQP-48 |  | Gallery 1503 - C150/Line-Ups // Condensate connections to Floor Drains | 10d | 2027-01-14 | 2027-01-28 | DH.1500B-EQP-39 SS+5d, DH.1500B-EQP-45 SS+5d | 40.88d |
| DH.1500B-EQP-54 |  | Gallery 1503 - C150/Line-Ups // Electrical Gear FOD Inspection Pre-Start Up | 2d | 2027-01-21 | 2027-01-22 | DH.1500B-EQP-49, DH.1500B-EQP-53, DH.1500B-EQP-50 | 47.88d |
| DH.1500B-EQP-52 |  | Gallery 1503 - C150/Line-Ups // Mechanical Gear FOD Inspection Pre-Start Up | 3d | 2027-01-29 | 2027-02-02 | DH.1500B-EQP-38, DH.1500B-EQP-45, DH.1500B-EQP-39, DH.1500B-EQP-48 | 40.88d |
|  | 4 | **D150** |  | 2026-12-23 | 2027-02-03 |  |  |
| DH.1500B-EQP-55 |  | Gallery 1503 - D150/Line-Ups // Set CRAH-DH1500- 29 | 1d | 2026-12-23 | 2026-12-23 | DH.1500B-EQP-40 | -4.12d |
| DH.1500B-EQP-58 |  | Gallery 1503 - D150/Line-Ups // Set CRAH-DH1500-30 | 1d | 2026-12-23 | 2026-12-23 | DH.1500B-EQP-55 FF, DH.1500B-EQP-55 SS | -4.12d |
| DH.1500B-EQP-59 |  | Gallery 1503 - D150/Line-Ups // Set MOD D140-01 (Does No apply) | 1d | 2026-12-23 | 2026-12-23 | DH.1500B-EQP-58 FF | 46.88d |
| DH.1500B-EQP-60 |  | Gallery 1503 - D150/Line-Ups // Set MOD D140-02 (Does No apply) | 1d | 2026-12-23 | 2026-12-23 | DH.1500B-EQP-59 SS | 46.88d |
| DH.1500B-EQP-205 |  | Gallery 1503 - D150/Line-Ups // Set CDU-DH1500-29 | 1d | 2026-12-24 | 2026-12-24 | DH.1500B-EQP-60 | 60.88d |
| DH.1500B-EQP-62 |  | Gallery 1503 - D150/Line-Ups // Pull Cable Tray Feed from MOD to CRAHU's | 5d | 2026-12-24 | 2026-12-31 | DH.1500B-EQP-60 | 52.88d |
| DH.1500B-EQP-64 |  | Gallery 1503 - D150/Line-Ups // Mount Electrial Gear for Chiller Controls | 10d | 2026-12-24 | 2027-01-08 | DH.1500B-EQP-60 | 46.88d |
| DH.1500B-EQP-206 |  | Gallery 1503 - D150/Line-Ups // Set CDU-DH1500-30 | 1d | 2026-12-28 | 2026-12-28 | DH.1500B-EQP-205 | 60.88d |
| DH.1500B-EQP-61 |  | Gallery 1503 - D150/Line-Ups // Pull Feeder from SWD to MOD | 1d | 2026-12-29 | 2026-12-29 | DH.1500B-EQP-60, DH.1500B-EQP-206 | 60.88d |
| DH.1500B-EQP-56 |  | Gallery 1503 - D150/Line-Ups // Connect CRAH units | 10d | 2026-12-31 | 2027-01-14 | DH.1500B-EQP-58, DH.1500B-EQP-55 SS+5d | 39.88d |
| DH.1500B-EQP-63 |  | Gallery 1503 - D150/Line-Ups // Mechanical Connections to CRAHU Units | 10d | 2026-12-31 | 2027-01-14 | DH.1500B-EQP-58 SS+5d | 44.88d |
| DH.1500B-EQP-69 |  | Gallery 1503 - D150/Line-Ups // Pull Feeder and Branch circuits to MIsc equipment and Chiller controls | 10d | 2026-12-31 | 2027-01-14 | DH.1500B-EQP-64 SS+4d | 46.88d |
| DH.1500B-EQP-65 |  | Gallery 1503 - D150/Line-Ups // Pull Cable Tray Feed from MOD to CRAHU's | 5d | 2027-01-04 | 2027-01-08 | DH.1500B-EQP-62 | 52.88d |
| DH.1500B-EQP-68 |  | Gallery 1503 - D150/Line-Ups // Terminate CRAHU Electrical Connections | 5d | 2027-01-06 | 2027-01-12 | DH.1500B-EQP-62, DH.1500B-EQP-65 SS+2d | 52.88d |
| DH.1500B-EQP-71 |  | Gallery 1503 - D150/Line-Ups // Teminate all Misc Equipment and Chiller Controls | 10d | 2027-01-07 | 2027-01-21 | DH.1500B-EQP-69 SS+4d | 46.88d |
| DH.1500B-EQP-57 |  | Gallery 1503 - D150/Line-Ups // Condensate connections to Floor Drains | 10d | 2027-01-08 | 2027-01-22 | DH.1500B-EQP-56 SS+5d | 39.88d |
| DH.1500B-EQP-67 |  | Gallery 1503 - D150/Line-Ups // Terminat Mod Panels | 1d | 2027-01-11 | 2027-01-11 | DH.1500B-EQP-61, DH.1500B-EQP-62, DH.1500B-EQP-65 | 53.88d |
| DH.1500B-EQP-66 |  | Gallery 1503 - D150/Line-Ups // Condensate connections to Floor Drains | 10d | 2027-01-15 | 2027-01-29 | DH.1500B-EQP-57 SS+5d, DH.1500B-EQP-63 SS+5d | 39.88d |
| DH.1500B-EQP-72 |  | Gallery 1503 - D150/Line-Ups // Electrical Gear FOD Inspection Pre-Start Up | 2d | 2027-01-22 | 2027-01-25 | DH.1500B-EQP-67, DH.1500B-EQP-71, DH.1500B-EQP-68 | 46.88d |
| DH.1500B-EQP-70 |  | Gallery 1503 - D150/Line-Ups // Mechanical Gear FOD Inspection Pre-Start Up | 3d | 2027-02-01 | 2027-02-03 | DH.1500B-EQP-56, DH.1500B-EQP-63, DH.1500B-EQP-57, DH.1500B-EQP-66 | 39.88d |
|  | 5 | **E150** |  | 2026-12-23 | 2027-02-03 |  |  |
| DH.1500B-EQP-73 |  | Gallery 1503 - E150/Line-Ups // Set CRAH-DH1500- 31 | 1d | 2026-12-23 | 2026-12-23 | DH.1500B-EQP-58 SS | -4.12d |
| DH.1500B-EQP-76 |  | Gallery 1503 - E150/Line-Ups // Set CRAH-DH1500-32 | 1d | 2026-12-23 | 2026-12-23 | DH.1500B-EQP-73 FF, DH.1500B-EQP-73 SS | -4.12d |
| DH.1500B-EQP-77 |  | Gallery 1503 - E150/Line-Ups // Set MOD E140-01 (Does No apply) | 1d | 2026-12-23 | 2026-12-23 | DH.1500B-EQP-76 FF | 46.88d |
| DH.1500B-EQP-78 |  | Gallery 1503 - E150/Line-Ups // Set MOD E140-02 (Does No apply) | 1d | 2026-12-23 | 2026-12-23 | DH.1500B-EQP-77 SS | 46.88d |
| DH.1500B-EQP-207 |  | Gallery 1503 - E150/Line-Ups // Set CDU-DH1500-31 | 1d | 2026-12-24 | 2026-12-24 | DH.1500B-EQP-78 | 60.88d |
| DH.1500B-EQP-80 |  | Gallery 1503 - E150/Line-Ups // Pull Cable Tray Feed from MOD to CRAHU's | 5d | 2026-12-24 | 2026-12-31 | DH.1500B-EQP-78 | 52.88d |
| DH.1500B-EQP-82 |  | Gallery 1503 - E150/Line-Ups // Mount Electrial Gear for Chiller Controls | 10d | 2026-12-24 | 2027-01-08 | DH.1500B-EQP-78 | 46.88d |
| DH.1500B-EQP-208 |  | Gallery 1503 - E150/Line-Ups // Set CDU-DH1500-32 | 1d | 2026-12-28 | 2026-12-28 | DH.1500B-EQP-207 | 60.88d |
| DH.1500B-EQP-79 |  | Gallery 1503 - E150/Line-Ups // Pull Feeder from SWD to MOD | 1d | 2026-12-29 | 2026-12-29 | DH.1500B-EQP-78, DH.1500B-EQP-208 | 60.88d |
| DH.1500B-EQP-74 |  | Gallery 1503 - E150/Line-Ups // Connect CRAH units | 10d | 2026-12-31 | 2027-01-14 | DH.1500B-EQP-76, DH.1500B-EQP-73 SS+5d | 39.88d |
| DH.1500B-EQP-81 |  | Gallery 1503 - E150/Line-Ups // Mechanical Connections to CRAHU Units | 10d | 2026-12-31 | 2027-01-14 | DH.1500B-EQP-76 SS+5d | 44.88d |
| DH.1500B-EQP-87 |  | Gallery 1503 - E150/Line-Ups // Pull Feeder and Branch circuits to MIsc equipment and Chiller controls | 10d | 2026-12-31 | 2027-01-14 | DH.1500B-EQP-82 SS+4d | 46.88d |
| DH.1500B-EQP-83 |  | Gallery 1503 - E150/Line-Ups // Pull Cable Tray Feed from MOD to CRAHU's | 5d | 2027-01-04 | 2027-01-08 | DH.1500B-EQP-80 | 52.88d |
| DH.1500B-EQP-86 |  | Gallery 1503 - E150/Line-Ups // Terminate CRAHU Electrical Connections | 5d | 2027-01-06 | 2027-01-12 | DH.1500B-EQP-80, DH.1500B-EQP-83 SS+2d | 52.88d |
| DH.1500B-EQP-89 |  | Gallery 1503 - E150/Line-Ups // Teminate all Misc Equipment and Chiller Controls | 10d | 2027-01-07 | 2027-01-21 | DH.1500B-EQP-87 SS+4d | 46.88d |
| DH.1500B-EQP-75 |  | Gallery 1503 - E150/Line-Ups // Condensate connections to Floor Drains | 10d | 2027-01-08 | 2027-01-22 | DH.1500B-EQP-74 SS+5d | 39.88d |
| DH.1500B-EQP-85 |  | Gallery 1503 - E150/Line-Ups // Terminat Mod Panels | 1d | 2027-01-11 | 2027-01-11 | DH.1500B-EQP-79, DH.1500B-EQP-80, DH.1500B-EQP-83 | 53.88d |
| DH.1500B-EQP-84 |  | Gallery 1503 - E150/Line-Ups // Condensate connections to Floor Drains | 10d | 2027-01-15 | 2027-01-29 | DH.1500B-EQP-75 SS+5d, DH.1500B-EQP-81 SS+5d | 39.88d |
| DH.1500B-EQP-90 |  | Gallery 1503 - E150/Line-Ups // Electrical Gear FOD Inspection Pre-Start Up | 2d | 2027-01-22 | 2027-01-25 | DH.1500B-EQP-85, DH.1500B-EQP-89, DH.1500B-EQP-86 | 46.88d |
| DH.1500B-EQP-88 |  | Gallery 1503 - E150/Line-Ups // Mechanical Gear FOD Inspection Pre-Start Up | 3d | 2027-02-01 | 2027-02-03 | DH.1500B-EQP-74, DH.1500B-EQP-81, DH.1500B-EQP-75, DH.1500B-EQP-84 | 39.88d |
|  | 6 | **F150** |  | 2026-12-23 | 2027-02-03 |  |  |
| DH.1500B-EQP-91 |  | Gallery 1503 - F150/Line-Ups // Set CRAH-DH1500-33 | 1d | 2026-12-23 | 2026-12-23 | DH.1500B-EQP-76 SS | -4.12d |
| DH.1500B-EQP-94 |  | Gallery 1503 - F150/Line-Ups // Set CRAH-DH1500-34 | 1d | 2026-12-23 | 2026-12-23 | DH.1500B-EQP-91 FF, DH.1500B-EQP-91 SS | -4.12d |
| DH.1500B-EQP-95 |  | Gallery 1503 - F150/Line-Ups // Set MOD F140-01 (Does No apply) | 1d | 2026-12-23 | 2026-12-23 | DH.1500B-EQP-94 FF | 46.88d |
| DH.1500B-EQP-96 |  | Gallery 1503 - F150/Line-Ups // Set MOD F140-02 (Does No apply) | 1d | 2026-12-23 | 2026-12-23 | DH.1500B-EQP-95 SS | 46.88d |
| DH.1500B-EQP-100 |  | Gallery 1503 - F150/Line-Ups // Mount Electrial Gear for Chiller Controls | 10d | 2026-12-24 | 2027-01-08 | DH.1500B-EQP-96 | 46.88d |
| DH.1500B-EQP-209 |  | Gallery 1503 - F150/Line-Ups // Set CDU-DH1500-33 | 1d | 2026-12-24 | 2026-12-24 | DH.1500B-EQP-96 | 60.88d |
| DH.1500B-EQP-98 |  | Gallery 1503 - F150/Line-Ups // Pull Cable Tray Feed from MOD to CRAHU's | 5d | 2026-12-24 | 2026-12-31 | DH.1500B-EQP-96 | 52.88d |
| DH.1500B-EQP-210 |  | Gallery 1503 - F150/Line-Ups // Set CDU-DH1500-34 | 1d | 2026-12-28 | 2026-12-28 | DH.1500B-EQP-209 | 60.88d |
| DH.1500B-EQP-97 |  | Gallery 1503 - F150/Line-Ups // Pull Feeder from SWD to MOD | 1d | 2026-12-29 | 2026-12-29 | DH.1500B-EQP-96, DH.1500B-EQP-210 | 60.88d |
| DH.1500B-EQP-105 |  | Gallery 1503 - F150/Line-Ups // Pull Feeder and Branch circuits to MIsc equipment and Chiller controls | 10d | 2026-12-31 | 2027-01-14 | DH.1500B-EQP-100 SS+4d | 46.88d |
| DH.1500B-EQP-92 |  | Gallery 1503 - F150/Line-Ups // Connect CRAH units | 10d | 2026-12-31 | 2027-01-14 | DH.1500B-EQP-94, DH.1500B-EQP-91 SS+5d | 39.88d |
| DH.1500B-EQP-99 |  | Gallery 1503 - F150/Line-Ups // Mechanical Connections to CRAHU Units | 10d | 2026-12-31 | 2027-01-14 | DH.1500B-EQP-94 SS+5d | 44.88d |
| DH.1500B-EQP-101 |  | Gallery 1503 - F150/Line-Ups // Pull Cable Tray Feed from MOD to CRAHU's | 5d | 2027-01-04 | 2027-01-08 | DH.1500B-EQP-98 | 52.88d |
| DH.1500B-EQP-104 |  | Gallery 1503 - F150/Line-Ups // Terminate CRAHU Electrical Connections | 5d | 2027-01-06 | 2027-01-12 | DH.1500B-EQP-98, DH.1500B-EQP-101 SS+2d | 52.88d |

| ID | WBS | Task | Duration | Start | Finish | Predecessors | Total float |
| --- | --- | --- | --- | --- | --- | --- | --- |
| DH.1500B-EQP-107 |  | Gallery 1503 - F150/Line-Ups // Teminate all Misc Equipment and Chiller Controls | 10d | 2027-01-07 | 2027-01-21 | DH.1500B-EQP-105 SS+4d | 46.88d |
| DH.1500B-EQP-93 |  | Gallery 1503 - F150/Line-Ups // Condensate connections to Floor Drains | 10d | 2027-01-08 | 2027-01-22 | DH.1500B-EQP-92 SS+5d | 39.88d |
| DH.1500B-EQP-103 |  | Gallery 1503 - F150/Line-Ups // Terminat Mod Panels | 1d | 2027-01-11 | 2027-01-11 | DH.1500B-EQP-97, DH.1500B-EQP-98, DH.1500B-EQP-101 | 53.88d |
| DH.1500B-EQP-102 |  | Gallery 1503 - F150/Line-Ups // Condensate connections to Floor Drains | 10d | 2027-01-15 | 2027-01-29 | DH.1500B-EQP-93 SS+5d, DH.1500B-EQP-99 SS+5d | 39.88d |
| DH.1500B-EQP-108 |  | Gallery 1503 - F150/Line-Ups // Electrical Gear FOD Inspection Pre-Start Up | 2d | 2027-01-22 | 2027-01-25 | DH.1500B-EQP-103, DH.1500B-EQP-107, DH.1500B-EQP-104 | 46.88d |
| DH.1500B-EQP-106 |  | Gallery 1503 - F150/Line-Ups // Mechanical Gear FOD Inspection Pre-Start Up | 3d | 2027-02-01 | 2027-02-03 | DH.1500B-EQP-92, DH.1500B-EQP-99, DH.1500B-EQP-93, DH.1500B-EQP-102 | 39.88d |
|  | 7 | **G150** |  | 2026-12-24 | 2027-02-04 |  |  |
| DH.1500B-EQP-109 |  | Gallery 1503 - G150/Line-Ups // Set CRAH-DH1500-35 | 1d | 2026-12-24 | 2026-12-24 | DH.1500B-EQP-94 | -4.12d |
| DH.1500B-EQP-112 |  | Gallery 1503 - G150/Line-Ups // Set CRAH-DH1500-36 | 1d | 2026-12-24 | 2026-12-24 | DH.1500B-EQP-109 FF, DH.1500B-EQP-109 SS | -4.12d |
| DH.1500B-EQP-113 |  | Gallery 1503 - G150/Line-Ups // Set MOD G140-01 (Does No apply) | 1d | 2026-12-24 | 2026-12-24 | DH.1500B-EQP-112 FF | 45.88d |
| DH.1500B-EQP-114 |  | Gallery 1503 - G150/Line-Ups // Set MOD G140-02 (Does No apply) | 1d | 2026-12-24 | 2026-12-24 | DH.1500B-EQP-113 SS | 45.88d |
| DH.1500B-EQP-116 |  | Gallery 1503 - G150/Line-Ups // Pull Cable Tray Feed from MOD to CRAHU's | 5d | 2026-12-28 | 2027-01-04 | DH.1500B-EQP-114 | 51.88d |
| DH.1500B-EQP-118 |  | Gallery 1503 - G150/Line-Ups // Mount Electrial Gear for Chiller Controls | 10d | 2026-12-28 | 2027-01-11 | DH.1500B-EQP-114 | 45.88d |
| DH.1500B-EQP-211 |  | Gallery 1503 - G150/Line-Ups // Set CDU-DH1500-35 | 1d | 2026-12-28 | 2026-12-28 | DH.1500B-EQP-114 | 59.88d |
| DH.1500B-EQP-212 |  | Gallery 1503 - G150/Line-Ups // Set CDU-DH1500-36 | 1d | 2026-12-29 | 2026-12-29 | DH.1500B-EQP-211 | 59.88d |
| DH.1500B-EQP-115 |  | Gallery 1503 - G150/Line-Ups // Pull Feeder from SWD to MOD | 1d | 2026-12-30 | 2026-12-30 | DH.1500B-EQP-114, DH.1500B-EQP-212 | 59.88d |
| DH.1500B-EQP-110 |  | Gallery 1503 - G150/Line-Ups // Connect CRAH units | 10d | 2027-01-04 | 2027-01-15 | DH.1500B-EQP-112, DH.1500B-EQP-109 SS+5d | 38.88d |
| DH.1500B-EQP-117 |  | Gallery 1503 - G150/Line-Ups // Mechanical Connections to CRAHU Units | 10d | 2027-01-04 | 2027-01-15 | DH.1500B-EQP-112 SS+5d | 43.88d |
| DH.1500B-EQP-123 |  | Gallery 1503 - G150/Line-Ups // Pull Feeder and Branch circuits to MIsc equipment and Chiller controls | 10d | 2027-01-04 | 2027-01-15 | DH.1500B-EQP-118 SS+4d | 45.88d |
| DH.1500B-EQP-119 |  | Gallery 1503 - G150/Line-Ups // Pull Cable Tray Feed from MOD to CRAHU's | 5d | 2027-01-05 | 2027-01-11 | DH.1500B-EQP-116 | 51.88d |
| DH.1500B-EQP-122 |  | Gallery 1503 - G150/Line-Ups // Terminate CRAHU Electrical Connections | 5d | 2027-01-07 | 2027-01-13 | DH.1500B-EQP-116, DH.1500B-EQP-119 SS+2d | 51.88d |
| DH.1500B-EQP-125 |  | Gallery 1503 - G150/Line-Ups // Teminate all Misc Equipment and Chiller Controls | 10d | 2027-01-08 | 2027-01-22 | DH.1500B-EQP-123 SS+4d | 45.88d |
| DH.1500B-EQP-111 |  | Gallery 1503 - G150/Line-Ups // Condensate connections to Floor Drains | 10d | 2027-01-11 | 2027-01-25 | DH.1500B-EQP-110 SS+5d | 38.88d |
| DH.1500B-EQP-121 |  | Gallery 1503 - G150/Line-Ups // Terminat Mod Panels | 1d | 2027-01-12 | 2027-01-12 | DH.1500B-EQP-115, DH.1500B-EQP-116, DH.1500B-EQP-119 | 52.88d |
| DH.1500B-EQP-120 |  | Gallery 1503 - G150/Line-Ups // Condensate connections to Floor Drains | 10d | 2027-01-19 | 2027-02-01 | DH.1500B-EQP-111 SS+5d, DH.1500B-EQP-117 SS+5d | 38.88d |
| DH.1500B-EQP-126 |  | Gallery 1503 - G150/Line-Ups // Electrical Gear FOD Inspection Pre-Start Up | 2d | 2027-01-25 | 2027-01-26 | DH.1500B-EQP-121, DH.1500B-EQP-125, DH.1500B-EQP-122 | 45.88d |
| DH.1500B-EQP-124 |  | Gallery 1503 - G150/Line-Ups // Mechanical Gear FOD Inspection Pre-Start Up | 3d | 2027-02-02 | 2027-02-04 | DH.1500B-EQP-110, DH.1500B-EQP-117, DH.1500B-EQP-111, DH.1500B-EQP-120 | 38.88d |
|  | 8 | **H150** |  | 2026-12-24 | 2027-02-04 |  |  |
| DH.1500B-EQP-127 |  | Gallery 1503 - H150/Line-Ups // Set CRAH-DH1500-37 | 1d | 2026-12-24 | 2026-12-24 | DH.1500B-EQP-112 SS | -4.12d |
| DH.1500B-EQP-130 |  | Gallery 1503 - H150/Line-Ups // Set CRAH-DH1500-38 | 1d | 2026-12-24 | 2026-12-24 | DH.1500B-EQP-127 FF, DH.1500B-EQP-127 SS | -4.12d |
| DH.1500B-EQP-131 |  | Gallery 1503 - H150/Line-Ups // Set MOD H140-01 | 1d | 2026-12-24 | 2026-12-24 | DH.1500B-EQP-130 FF | 45.88d |
| DH.1500B-EQP-132 |  | Gallery 1503 - H150/Line-Ups // Set MOD H140-02 | 1d | 2026-12-24 | 2026-12-24 | DH.1500B-EQP-131 SS | 45.88d |
| DH.1500B-EQP-134 |  | Gallery 1503 - H150/Line-Ups // Pull Cable Tray Feed from MOD to CRAHU's | 5d | 2026-12-28 | 2027-01-04 | DH.1500B-EQP-132 | 51.88d |
| DH.1500B-EQP-136 |  | Gallery 1503 - H150/Line-Ups // Mount Electrial Gear for Chiller Controls | 10d | 2026-12-28 | 2027-01-11 | DH.1500B-EQP-132 | 45.88d |
| DH.1500B-EQP-213 |  | Gallery 1503 - H150/Line-Ups // Set CDU-DH1500-37 | 1d | 2026-12-28 | 2026-12-28 | DH.1500B-EQP-132 | 59.88d |
| DH.1500B-EQP-214 |  | Gallery 1503 - H150/Line-Ups // Set CDU-DH1500-38 | 1d | 2026-12-29 | 2026-12-29 | DH.1500B-EQP-213 | 59.88d |
| DH.1500B-EQP-133 |  | Gallery 1503 - H150/Line-Ups // Pull Feeder from SWD to MOD | 1d | 2026-12-30 | 2026-12-30 | DH.1500B-EQP-132, DH.1500B-EQP-214 | 59.88d |
| DH.1500B-EQP-128 |  | Gallery 1503 - H150/Line-Ups // Connect CRAH units | 10d | 2027-01-04 | 2027-01-15 | DH.1500B-EQP-130, DH.1500B-EQP-127 SS+5d | 38.88d |
| DH.1500B-EQP-135 |  | Gallery 1503 - H150/Line-Ups // Mechanical Connections to CRAHU Units | 10d | 2027-01-04 | 2027-01-15 | DH.1500B-EQP-130 SS+5d | 43.88d |
| DH.1500B-EQP-141 |  | Gallery 1503 - H150/Line-Ups // Pull Feeder and Branch circuits to MIsc equipment and Chiller controls | 10d | 2027-01-04 | 2027-01-15 | DH.1500B-EQP-136 SS+4d | 45.88d |
| DH.1500B-EQP-137 |  | Gallery 1503 - H150/Line-Ups // Pull Cable Tray Feed from MOD to CRAHU's | 5d | 2027-01-05 | 2027-01-11 | DH.1500B-EQP-134 | 51.88d |
| DH.1500B-EQP-140 |  | Gallery 1503 - H150/Line-Ups // Terminate CRAHU Electrical Connections | 5d | 2027-01-07 | 2027-01-13 | DH.1500B-EQP-134, DH.1500B-EQP-137 SS+2d | 51.88d |
| DH.1500B-EQP-143 |  | Gallery 1503 - H150/Line-Ups // Teminate all Misc Equipment and Chiller Controls | 10d | 2027-01-08 | 2027-01-22 | DH.1500B-EQP-141 SS+4d | 45.88d |
| DH.1500B-EQP-129 |  | Gallery 1503 - H150/Line-Ups // Condensate connections to Floor Drains | 10d | 2027-01-11 | 2027-01-25 | DH.1500B-EQP-128 SS+5d | 38.88d |
| DH.1500B-EQP-139 |  | Gallery 1503 - H150/Line-Ups // Terminat Mod Panels | 1d | 2027-01-12 | 2027-01-12 | DH.1500B-EQP-133, DH.1500B-EQP-134, DH.1500B-EQP-137 | 52.88d |
| DH.1500B-EQP-138 |  | Gallery 1503 - H150/Line-Ups // Condensate connections to Floor Drains | 10d | 2027-01-19 | 2027-02-01 | DH.1500B-EQP-129 SS+5d, DH.1500B-EQP-135 SS+5d | 38.88d |
| DH.1500B-EQP-144 |  | Gallery 1503 - H150/Line-Ups // Electrical Gear FOD Inspection Pre-Start Up | 2d | 2027-01-25 | 2027-01-26 | DH.1500B-EQP-139, DH.1500B-EQP-143, DH.1500B-EQP-140 | 45.88d |
| DH.1500B-EQP-142 |  | Gallery 1503 - H150/Line-Ups // Mechanical Gear FOD Inspection Pre-Start Up | 3d | 2027-02-02 | 2027-02-04 | DH.1500B-EQP-128, DH.1500B-EQP-135, DH.1500B-EQP-129, DH.1500B-EQP-138 | 38.88d |
|  | 9 | **J150** |  | 2026-12-24 | 2027-02-04 |  |  |
| DH.1500B-EQP-145 |  | Gallery 1503 - J150/Line-Ups // Set CRAH-DH1500-39 | 1d | 2026-12-24 | 2026-12-24 | DH.1500B-EQP-130 SS | -4.12d |
| DH.1500B-EQP-148 |  | Gallery 1503 - J150/Line-Ups // Set CRAH-DH1500-40 | 1d | 2026-12-24 | 2026-12-24 | DH.1500B-EQP-145 FF, DH.1500B-EQP-145 SS | -4.12d |
| DH.1500B-EQP-149 |  | Gallery 1503 - J150/Line-Ups // Set MOD J140-01 | 1d | 2026-12-24 | 2026-12-24 | DH.1500B-EQP-148 FF | 45.88d |
| DH.1500B-EQP-150 |  | Gallery 1503 - J150/Line-Ups // Set MOD J140-02 | 1d | 2026-12-24 | 2026-12-24 | DH.1500B-EQP-149 SS | 45.88d |
| DH.1500B-EQP-152 |  | Gallery 1503 - J150/Line-Ups // Pull Cable Tray Feed from MOD to CRAHU's | 5d | 2026-12-28 | 2027-01-04 | DH.1500B-EQP-150 | 51.88d |
| DH.1500B-EQP-154 |  | Gallery 1503 - J150/Line-Ups // Mount Electrial Gear for Chiller Controls | 10d | 2026-12-28 | 2027-01-11 | DH.1500B-EQP-150 | 45.88d |
| DH.1500B-EQP-215 |  | Gallery 1503 - J150/Line-Ups // Set CDU-DH1500-39 | 1d | 2026-12-28 | 2026-12-28 | DH.1500B-EQP-150 | 59.88d |
| DH.1500B-EQP-216 |  | Gallery 1503 - J150/Line-Ups // Set CDU-DH1500-40 | 1d | 2026-12-29 | 2026-12-29 | DH.1500B-EQP-215 | 59.88d |
| DH.1500B-EQP-151 |  | Gallery 1503 - J150/Line-Ups // Pull Feeder from SWD to MOD | 1d | 2026-12-30 | 2026-12-30 | DH.1500B-EQP-150, DH.1500B-EQP-216 | 59.88d |
| DH.1500B-EQP-146 |  | Gallery 1503 - J150/Line-Ups // Connect CRAH units | 10d | 2027-01-04 | 2027-01-15 | DH.1500B-EQP-148, DH.1500B-EQP-145 SS+5d | 38.88d |
| DH.1500B-EQP-153 |  | Gallery 1503 - J150/Line-Ups // Mechanical Connections to CRAHU Units | 10d | 2027-01-04 | 2027-01-15 | DH.1500B-EQP-148 SS+5d | 43.88d |
| DH.1500B-EQP-159 |  | Gallery 1503 - J150/Line-Ups // Pull Feeder and Branch circuits to MIsc equipment and Chiller controls | 10d | 2027-01-04 | 2027-01-15 | DH.1500B-EQP-154 SS+4d | 45.88d |
| DH.1500B-EQP-155 |  | Gallery 1503 - J150/Line-Ups // Pull Cable Tray Feed from MOD to CRAHU's | 5d | 2027-01-05 | 2027-01-11 | DH.1500B-EQP-152 | 51.88d |
| DH.1500B-EQP-158 |  | Gallery 1503 - J150/Line-Ups // Terminate CRAHU Electrical Connections | 5d | 2027-01-07 | 2027-01-13 | DH.1500B-EQP-152, DH.1500B-EQP-155 SS+2d | 51.88d |
| DH.1500B-EQP-161 |  | Gallery 1503 - J150/Line-Ups // Teminate all Misc Equipment and Chiller Controls | 10d | 2027-01-08 | 2027-01-22 | DH.1500B-EQP-159 SS+4d | 45.88d |
| DH.1500B-EQP-147 |  | Gallery 1503 - J150/Line-Ups // Condensate connections to Floor Drains | 10d | 2027-01-11 | 2027-01-25 | DH.1500B-EQP-146 SS+5d | 38.88d |
| DH.1500B-EQP-157 |  | Gallery 1503 - J150/Line-Ups // Terminat Mod Panels | 1d | 2027-01-12 | 2027-01-12 | DH.1500B-EQP-151, DH.1500B-EQP-152, DH.1500B-EQP-155 | 52.88d |
| DH.1500B-EQP-156 |  | Gallery 1503 - J150/Line-Ups // Condensate connections to Floor Drains | 10d | 2027-01-19 | 2027-02-01 | DH.1500B-EQP-147 SS+5d, DH.1500B-EQP-153 SS+5d | 38.88d |
| DH.1500B-EQP-162 |  | Gallery 1503 - J150/Line-Ups // Electrical Gear FOD Inspection Pre-Start Up | 2d | 2027-01-25 | 2027-01-26 | DH.1500B-EQP-157, DH.1500B-EQP-161, DH.1500B-EQP-158 | 45.88d |
| DH.1500B-EQP-160 |  | Gallery 1503 - J150/Line-Ups // Mechanical Gear FOD Inspection Pre-Start Up | 3d | 2027-02-02 | 2027-02-04 | DH.1500B-EQP-146, DH.1500B-EQP-153, DH.1500B-EQP-147, DH.1500B-EQP-156 | 38.88d |
|  | 10 | **K150** |  | 2026-12-28 | 2027-02-05 |  |  |

| ID | WBS | Task | Duration | Start | Finish | Predecessors | Total float |
| --- | --- | --- | --- | --- | --- | --- | --- |
| DH.1500B-EQP-163 |  | Gallery 1503 - K150/Line-Ups // Set CRAH-DH1500-41 | 1d | 2026-12-28 | 2026-12-28 | DH.1500B-EQP-148 | -4.12d |
| DH.1500B-EQP-166 |  | Gallery 1503 - K150/Line-Ups // Set CRAH-DH1500-42 | 1d | 2026-12-28 | 2026-12-28 | DH.1500B-EQP-163 FF, DH.1500B-EQP-163 SS | -4.12d |
| DH.1500B-EQP-167 |  | Gallery 1503 - K150/Line-Ups // Set MOD K140-01 (Does No apply) | 1d | 2026-12-28 | 2026-12-28 | DH.1500B-EQP-166 FF | 44.88d |
| DH.1500B-EQP-168 |  | Gallery 1503 - K150/Line-Ups // Set MOD K140-02 (Does No apply) | 1d | 2026-12-28 | 2026-12-28 | DH.1500B-EQP-167 SS | 44.88d |
| DH.1500B-EQP-169 |  | Gallery 1503 - K150/Line-Ups // Pull Feeder from SWD to MOD | 1d | 2026-12-29 | 2026-12-29 | DH.1500B-EQP-168 | 60.88d |
| DH.1500B-EQP-170 |  | Gallery 1503 - K150/Line-Ups // Pull Cable Tray Feed from MOD to CRAHU's | 5d | 2026-12-29 | 2027-01-05 | DH.1500B-EQP-168 | 50.88d |
| DH.1500B-EQP-172 |  | Gallery 1503 - K150/Line-Ups // Mount Electrial Gear for Chiller Controls | 10d | 2026-12-29 | 2027-01-12 | DH.1500B-EQP-168 | 44.88d |
| DH.1500B-EQP-164 |  | Gallery 1503 - K150/Line-Ups // Connect CRAH units | 10d | 2027-01-05 | 2027-01-19 | DH.1500B-EQP-166, DH.1500B-EQP-163 SS+5d | 37.88d |
| DH.1500B-EQP-171 |  | Gallery 1503 - K150/Line-Ups // Mechanical Connections to CRAHU Units | 10d | 2027-01-05 | 2027-01-19 | DH.1500B-EQP-166 SS+5d | 42.88d |
| DH.1500B-EQP-177 |  | Gallery 1503 - K150/Line-Ups // Pull Feeder and Branch circuits to MIsc equipment and Chiller controls | 10d | 2027-01-05 | 2027-01-19 | DH.1500B-EQP-172 SS+4d | 44.88d |
| DH.1500B-EQP-173 |  | Gallery 1503 - K150/Line-Ups // Pull Cable Tray Feed from MOD to CRAHU's | 5d | 2027-01-06 | 2027-01-12 | DH.1500B-EQP-170 | 50.88d |
| DH.1500B-EQP-176 |  | Gallery 1503 - K150/Line-Ups // Terminate CRAHU Electrical Connections | 5d | 2027-01-08 | 2027-01-14 | DH.1500B-EQP-170, DH.1500B-EQP-173 SS+2d | 50.88d |
| DH.1500B-EQP-179 |  | Gallery 1503 - K150/Line-Ups // Teminate all Misc Equipment and Chiller Controls | 10d | 2027-01-11 | 2027-01-25 | DH.1500B-EQP-177 SS+4d | 44.88d |
| DH.1500B-EQP-165 |  | Gallery 1503 - K150/Line-Ups // Condensate connections to Floor Drains | 10d | 2027-01-12 | 2027-01-26 | DH.1500B-EQP-164 SS+5d | 37.88d |
| DH.1500B-EQP-175 |  | Gallery 1503 - K150/Line-Ups // Terminat Mod Panels | 1d | 2027-01-13 | 2027-01-13 | DH.1500B-EQP-169, DH.1500B-EQP-170, DH.1500B-EQP-173 | 51.88d |
| DH.1500B-EQP-174 |  | Gallery 1503 - K150/Line-Ups // Condensate connections to Floor Drains | 10d | 2027-01-20 | 2027-02-02 | DH.1500B-EQP-165 SS+5d, DH.1500B-EQP-171 SS+5d | 37.88d |
| DH.1500B-EQP-180 |  | Gallery 1503 - K150/Line-Ups // Electrical Gear FOD Inspection Pre-Start Up | 2d | 2027-01-26 | 2027-01-27 | DH.1500B-EQP-175, DH.1500B-EQP-179, DH.1500B-EQP-176 | 44.88d |
| DH.1500B-EQP-178 |  | Gallery 1503 - K150/Line-Ups // Mechanical Gear FOD Inspection Pre-Start Up | 3d | 2027-02-03 | 2027-02-05 | DH.1500B-EQP-164, DH.1500B-EQP-171, DH.1500B-EQP-165, DH.1500B-EQP-174 | 37.88d |
|  | 11 | **R150** |  | 2026-12-28 | 2027-02-05 |  |  |
| DH.1500B-EQP-181 |  | Gallery 1503 - R150/Line-Ups // Set CRAH-DH1500-43 | 1d | 2026-12-28 | 2026-12-28 | DH.1500B-EQP-166 SS | -4.12d |
| DH.1500B-EQP-184 |  | Gallery 1503 - R150/Line-Ups // Set CRAH-DH1500-44 | 1d | 2026-12-28 | 2026-12-28 | DH.1500B-EQP-181 FF, DH.1500B-EQP-181 SS | -0.12d |
| DH.1500B-EQP-185 |  | Gallery 1503 - R150/Line-Ups // Set MOD R140-01 (No Apply) | 1d | 2026-12-28 | 2026-12-28 | DH.1500B-EQP-184 FF | 4.88d |
| DH.1500B-EQP-186 |  | Gallery 1503 - R150/Line-Ups // Set MOD R140-02 (Does No apply) | 1d | 2026-12-28 | 2026-12-28 | DH.1500B-EQP-185 SS | 4.88d |
| DH.1500B-EQP-187 |  | Gallery 1503 - R150/Line-Ups // Pull Feeder from SWD to MOD | 1d | 2026-12-29 | 2026-12-29 | DH.1500B-EQP-186 | 17.88d |
| DH.1500B-EQP-188 |  | Gallery 1503 - R150/Line-Ups // Pull Cable Tray Feed from MOD to CRAHU's | 5d | 2026-12-29 | 2027-01-05 | DH.1500B-EQP-186 | 4.88d |
| DH.1500B-EQP-190 |  | Gallery 1503 - R150/Line-Ups // Mount Electrial Gear for Chiller Controls | 10d | 2026-12-29 | 2027-01-12 | DH.1500B-EQP-186 | 6.88d |
| DH.1500B-EQP-195 |  | Gallery 1503 - R150/Line-Ups // Pull Feeder and Branch circuits to MIsc equipment and Chiller controls | 10d | 2026-12-29 | 2027-01-12 | DH.1500B-EQP-190 SS | 6.88d |
| DH.1500B-EQP-197 |  | Gallery 1503 - R150/Line-Ups // Teminate all Misc Equipment and Chiller Controls | 10d | 2026-12-29 | 2027-01-12 | DH.1500B-EQP-195 SS | 10.88d |
| DH.1500B-EQP-182 |  | Gallery 1503 - R150/Line-Ups // Connect CRAH units | 10d | 2027-01-05 | 2027-01-19 | DH.1500B-EQP-184, DH.1500B-EQP-181 SS+5d | -4.12d |
| DH.1500B-EQP-189 |  | Gallery 1503 - R150/Line-Ups // Mechanical Connections to CRAHU Units | 10d | 2027-01-05 | 2027-01-19 | DH.1500B-EQP-184 SS+5d | 0.88d |
| DH.1500B-EQP-191 |  | Gallery 1503 - R150/Line-Ups // Pull Cable Tray Feed from MOD to CRAHU's | 5d | 2027-01-06 | 2027-01-12 | DH.1500B-EQP-188 | 4.88d |
| DH.1500B-EQP-194 |  | Gallery 1503 - R150/Line-Ups // Terminate CRAHU Electrical Connections | 5d | 2027-01-08 | 2027-01-14 | DH.1500B-EQP-188, DH.1500B-EQP-191 SS+2d | 8.88d |
| DH.1500B-EQP-183 |  | Gallery 1503 - R150/Line-Ups // Condensate connections to Floor Drains | 10d | 2027-01-12 | 2027-01-26 | DH.1500B-EQP-182 SS+5d | -4.12d |
| DH.1500B-EQP-193 |  | Gallery 1503 - R150/Line-Ups // Terminat Mod Panels | 1d | 2027-01-13 | 2027-01-13 | DH.1500B-EQP-187, DH.1500B-EQP-188, DH.1500B-EQP-191 | 9.88d |
| DH.1500B-EQP-198 |  | Gallery 1503 - R150/Line-Ups // Electrical Gear FOD Inspection Pre-Start Up | 2d | 2027-01-15 | 2027-01-19 | DH.1500B-EQP-193, DH.1500B-EQP-197, DH.1500B-EQP-194 | 8.88d |
| DH.1500B-EQP-192 |  | Gallery 1503 - R150/Line-Ups // Condensate connections to Floor Drains | 10d | 2027-01-20 | 2027-02-02 | DH.1500B-EQP-183 SS+5d, DH.1500B-EQP-189 SS+5d | -4.12d |
| DH.1500B-EQP-196 |  | Gallery 1503 - R150/Line-Ups // Mechanical Gear FOD Inspection Pre-Start Up | 3d | 2027-02-03 | 2027-02-05 | DH.1500B-EQP-182, DH.1500B-EQP-189, DH.1500B-EQP-183, DH.1500B-EQP-192 | -4.12d |
|  | 12 | **Equipment Connections** |  | 2026-12-30 | 2027-01-25 |  |  |
|  | 1 | **CRAH** |  | 2027-01-13 | 2027-01-25 |  |  |
| DH1500-004 |  | Gallery 1503 // DH 1500 / Elec Room // CRAH Duct Work Termination | 2d | 2027-01-13 | 2027-01-14 | DH.1500B-EQP-191 | 4.88d |
| DH1500-003 |  | Gallery 1503 // DH 1500 / Elec Room // CRAH Chilled Water | 2d | 2027-01-15 | 2027-01-19 | DH1500-004 | 4.88d |
| DH1500-001 |  | Gallery 1503 // DH 1500 / Elec Room // CRAH Power Connections | 2d | 2027-01-20 | 2027-01-21 | DH1500-003 | 4.88d |
| DH1500-002 |  | Gallery 1503 // DH 1500 / Elec Room // CRAH LV Connections | 2d | 2027-01-22 | 2027-01-25 | DH1500-001 | 4.88d |
|  | 2 | **CDU** |  | 2027-01-13 | 2027-01-21 |  |  |
| DH1500-007 |  | Gallery 1503 // DH 1500 / Elec Room // CDU Chilled Water Connections | 2d | 2027-01-13 | 2027-01-14 | DH.1500B-EQP-195 | 6.88d |
| DH1500-005 |  | Gallery 1503 // DH 1500 /Elec Room // CDU Power Connections | 2d | 2027-01-15 | 2027-01-19 | DH1500-007 | 6.88d |
| DH1500-006 |  | Gallery 1503 // DH 1500 / Elec Room // CDU Controls Connections | 2d | 2027-01-20 | 2027-01-21 | DH1500-005 | 6.88d |
|  | 3 | **MOD** |  | 2026-12-30 | 2027-01-05 |  |  |
| DH1500-008 |  | Gallery 1503 // DH 1500 / Elec Room // MOD Power Connections | 2d | 2026-12-30 | 2026-12-31 | DH.1500B-EQP-187 | 17.88d |
| DH1500-009 |  | Gallery 1503 // DH 1500 / Elec Room // MOD LV Connections | 2d | 2027-01-04 | 2027-01-05 | DH1500-008 | 17.88d |
|  | 6 | **Corridors** |  | 2026-10-06 | 2026-12-09 |  |  |
|  | 1 | **Corridor 1000A (No apply)** |  |  |  |  |  |
|  | 3 | **Corridor 1000** |  | 2026-10-06 | 2026-12-09 |  |  |
| DH.150012078 |  | DH 1500/Corridor 1000 // Seal concrete | 1d | 2026-10-06 | 2026-10-06 | DH.1500660 | 16.88d |
| DH.150012071 |  | DH 1500/Corridor 1000 // MEPF high overhead install | 3d | 2026-10-07 | 2026-10-09 | DH.150012078 | 34.88d |
| B120001.3215 |  | DH 1500/Corridor 1000 // Install Overhead Cable Ladder / 36" Cable Tray - TFO | 5d | 2026-10-13 | 2026-10-19 | DH.150012071 | 34.88d |
| DH.150012069 |  | DH 1500/Corridor 1000 // Frame walls | 3d | 2026-10-16 | 2026-10-20 | DH.1500700 | 36.88d |
| B120001.3216 |  | DH 1500/Corridor 1000 // Install Overhead HAC - TFO | 5d | 2026-10-20 | 2026-10-26 | B120001.3215 | 34.88d |
| DH.150012072 |  | DH 1500/Corridor 1000 // MEP rough in walls | 3d | 2026-10-21 | 2026-10-23 | DH.150012071, DH.150012069 | 39.88d |
| DH.150012073 |  | DH 1500/Corridor 1000 // In wall inspection | 1d | 2026-10-26 | 2026-10-26 | DH.150012072 | 39.88d |
| DH.150012068 |  | DH 1500/Corridor 1000 // MEPF Overhead Hangers | 5d | 2026-10-27 | 2026-11-02 | DH.150012078, B120001.3216 | 34.88d |
| DH.150012070 |  | DH 1500/Corridor 1000 // Install Top Down Sheetrock | 3d | 2026-10-27 | 2026-10-29 | DH.150012069 SS+3d, DH.150012073 | 39.88d |
| DH.150012074 |  | DH 1500/Corridor 1000 // Install Balance of Sheetrock on Walls | 5d | 2026-11-03 | 2026-11-09 | DH.150012068, DH.150012070 SS, DH.150012071 | 34.88d |
| DH.150012075 |  | DH 1500/Corridor 1000 // Tape and finish walls | 8d | 2026-11-10 | 2026-11-20 | DH.150012074 | 34.88d |
| DH.150012076 |  | DH 1500/Corridor 1000 // Install wall door frames | 3d | 2026-11-23 | 2026-11-25 | DH.150012075, DH.150012069 SS+1d | 34.88d |
| DH.150012077 |  | DH 1500/Corridor 1000 // Prime and Paint first coat walls | 3d | 2026-11-23 | 2026-11-25 | DH.150012075 | 34.88d |
| DH.150012079 |  | DH 1500/Corridor 1000 // Install lights and exit signs | 3d | 2026-11-27 | 2026-12-01 | DH.150012076, DH.150012077 | 34.88d |
| DH.150012080 |  | DH 1500/Corridor 1000 // Final Coat Paint & Touchup Walls | 4d | 2026-12-02 | 2026-12-07 | DH.150012079 | 34.88d |
| DH.150012081 |  | DH 1500/Corridor 1000 // Install MEP Devices and Trim | 2d | 2026-12-08 | 2026-12-09 | DH.150012080 | 34.88d |
| DH.160012160 |  | DH 1500/Corridor 1000 // Ready to Receive Equipment | 0d | 2026-12-09 | 2026-12-09 | DH.150012081 FF | 34.88d |

| ID | WBS | Task | Duration | Start | Finish | Predecessors | Total float |
| --- | --- | --- | --- | --- | --- | --- | --- |
|  | 2 | **Corridor 1000F** |  | 2026-10-07 | 2026-12-07 |  |  |
| DH.150012092 |  | DH 1500/Corridor 1000F // Seal concrete | 1d | 2026-10-07 | 2026-10-07 | DH.150012078 | 16.88d |
| DH.150012085 |  | DH 1500/Corridor 1000F // MEPF high overhead install | 3d | 2026-10-08 | 2026-10-13 | DH.150012092 | 16.88d |
| B120001.3217 |  | DH 1500/Corridor 1000F // Install Overhead Cable Ladder / 36" Cable Tray - TFO | 5d | 2026-10-14 | 2026-10-20 | DH.150012085 | 16.88d |
| B120001.3218 |  | DH 1500/Corridor 1000F // Install Overhead HAC - TFO | 5d | 2026-10-21 | 2026-10-27 | B120001.3217 | 16.88d |
| DH.150012083 |  | DH 1500/Corridor 1000F // Frame walls | 3d | 2026-10-21 | 2026-10-23 | DH.150012069 | 36.88d |
| DH.150012086 |  | DH 1500/Corridor 1000F // MEP rough in walls | 3d | 2026-10-26 | 2026-10-28 | DH.150012085, DH.150012083 | 36.88d |
| DH.150012082 |  | DH 1500/Corridor 1000F // MEPF Overhead Hangers | 5d | 2026-10-28 | 2026-11-03 | DH.150012092, B120001.3218 | 16.88d |
| DH.150012087 |  | DH 1500/Corridor 1000F // In wall inspection | 1d | 2026-10-29 | 2026-10-29 | DH.150012086 | 36.88d |
| DH.150012084 |  | DH 1500/Corridor 1000F // Install Top Down Sheetrock | 3d | 2026-10-30 | 2026-11-03 | DH.150012083 SS+3d, DH.150012087 | 36.88d |
| DH.150012088 |  | DH 1500/Corridor 1000F // Install Balance of Sheetrock on Walls | 5d | 2026-10-30 | 2026-11-05 | DH.150012084 SS | 36.88d |
| DH.150012089 |  | DH 1500/Corridor 1000F // Tape and finish walls | 8d | 2026-11-06 | 2026-11-18 | DH.150012088 | 36.88d |
| DH.150012090 |  | DH 1500/Corridor 1000F // Install wall door frames | 3d | 2026-11-19 | 2026-11-23 | DH.150012089, DH.150012083 SS+1d | 36.88d |
| DH.150012091 |  | DH 1500/Corridor 1000F // Prime and Paint first coat walls | 3d | 2026-11-19 | 2026-11-23 | DH.150012089 | 36.88d |
| DH.150012093 |  | DH 1500/Corridor 1000F // Install lights and exit signs | 3d | 2026-11-24 | 2026-11-27 | DH.150012090, DH.150012091 | 36.88d |
| DH.150012094 |  | DH 1500/Corridor 1000F // Final Coat Paint & Touchup Walls | 4d | 2026-11-30 | 2026-12-03 | DH.150012093 | 36.88d |
| DH.150012095 |  | DH 1500/Corridor 1000F // Install MEP Devices and Trim | 2d | 2026-12-04 | 2026-12-07 | DH.150012094 | 36.88d |
| DH.160012161 |  | DH 1500/Corridor 1000F // Ready to Receive Equipment | 0d | 2026-12-07 | 2026-12-07 | DH.150012095 FF | 36.88d |
|  | 10 | **Flex 1000F1** |  | 2026-10-08 | 2027-01-13 |  |  |
| DH.1500..1000 |  | DH 1500/Flex 1000F1 // Seal Concrete | 2d | 2026-10-08 | 2026-10-09 | DH.150012092 | 18.88d |
| DH.1500..1010 |  | DH 1500/Flex 1000F1 // MEPF Layout of Overhead Supports | 2d | 2026-11-04 | 2026-11-05 | DH.150012082, DH.1500..1000 | 16.88d |
| DH.1500..1020 |  | DH 1500/Flex 1000F1 // MEPF Install High Overhead Systems | 6d | 2026-11-06 | 2026-11-16 | DH.1500..1010 | 16.88d |
| DH.1500..1040 |  | DH 1500/Flex 1000F1 // Frame Walls including Backing | 4d | 2026-11-17 | 2026-11-20 | DH.1500..1010, DH.1500..1020 | 16.88d |
| DH.1500..1060 |  | DH 1500/Flex 1000F1 // MEPF Install Rough Wall | 2d | 2026-11-23 | 2026-11-24 | DH.1500..1040, DH.1500..1020 | 16.88d |
| DH.1500..1080 |  | DH 1500/Flex 1000F1 // Rough Wall Inspspection (Approval to Close up) | 1d | 2026-11-25 | 2026-11-25 | DH.1500..1060 | 16.88d |
| DH.1500..1070 |  | DH 1500/Flex 1000F1 // Install Top Down Sheet Rock | 5d | 2026-11-27 | 2026-12-03 | DH.1500..1080 | 16.88d |
| DH.1500..1090 |  | DH 1500/Flex 1000F1 // Install Balance of Sheetrock | 3d | 2026-12-04 | 2026-12-08 | DH.1500..1070 | 16.88d |
| DH.1500..1100 |  | DH 1500/Flex 1000F1 // Tape and Finish Walls | 6d | 2026-12-09 | 2026-12-16 | DH.1500..1090 | 16.88d |
| DH.1500..1110 |  | DH 1500/Flex 1000F1 // Prime and First Coat of Paint | 2d | 2026-12-17 | 2026-12-18 | DH.1500..1100 | 16.88d |
| DH.1500..1120 |  | DH 1500/Flex 1000F1 // Install MEPF Overhead Ceiling Rough | 3d | 2026-12-21 | 2026-12-23 | DH.1500..1110 | 16.88d |
| DH.1500..1130 |  | DH 1500/Flex 1000F1 // Install Lighting, Fire Alarm & Fire Protection | 2d | 2026-12-24 | 2026-12-28 | DH.1500..1120 | 16.88d |
| DH.1500..1140 |  | DH 1500/Flex 1000F1 // Wall Touch up Final Coat of Paint | 3d | 2026-12-29 | 2026-12-31 | DH.1500..1130 | 16.88d |
| DH.1500..1050 |  | DH 1500/Flex 1000F1 // Install Door Frames | 1d | 2027-01-04 | 2027-01-04 | DH.1500..1040 FF, DH.1500..1140 | 55.88d |
| DH.1500..1150 |  | DH 1500/Flex 1000F1 // Install Wall Base, Trim, and Devices | 3d | 2027-01-04 | 2027-01-06 | DH.1500..1140 | 16.88d |
| DH.1500..1161 |  | DH 1500/Flex 1000F1 // Ready to Receive Equipment | 0d | 2027-01-06 | 2027-01-06 | DH.1500..1150 FF | 16.88d |
| DH.1500..1160 |  | DH 1500/Flex 1000F1 // Suffolk Pre Punch | 5d | 2027-01-07 | 2027-01-13 | DH.1500..1050, DH.1500..1161 | 53.88d |
|  | 11 | **IDF 1000F2 (Missing Activities)** |  |  |  |  |  |
|  | 1 | **Loading Dock 1050 (No apply)** |  |  |  |  |  |
|  | 12 | **Preaction 1000F3 (Missing Activities)** |  |  |  |  |  |
|  | 13 | **Restroom-Dock & Janitor** |  | 2026-10-13 | 2027-01-04 |  |  |
| DH.1500000 |  | DH 1500/Restroom-Dock & Janitor // Seal concrete | 5d | 2026-10-13 | 2026-10-19 | DH.1500..1000 | 18.88d |
| DH.1500010 |  | DH 1500/Restroom-Dock & Janitor // MEPF overhead layout | 5d | 2026-10-20 | 2026-10-26 | DH.1500000 | 18.88d |
| DH.1500020 |  | DH 1500/Restroom-Dock & Janitor // Layout walls | 5d | 2026-10-27 | 2026-11-02 | DH.1500010 | 18.88d |
| DH.1500030 |  | DH 1500/Restroom-Dock & Janitor // Frame walls | 5d | 2026-11-03 | 2026-11-09 | DH.1500020 | 18.88d |
| DH.1500040 |  | DH 1500/Restroom-Dock & Janitor // Install wall door frames | 3d | 2026-11-04 | 2026-11-06 | DH.1500030 SS+1d | 18.88d |
| DH.1500060 |  | DH 1500/Restroom-Dock & Janitor // MEP rough in walls | 3d | 2026-11-09 | 2026-11-12 | DH.1500040 | 18.88d |
| DH.1500070 |  | DH 1500/Restroom-Dock & Janitor // In wall inspection | 1d | 2026-11-13 | 2026-11-13 | DH.1500060 | 18.88d |
| DH.1500050 |  | DH 1500/Restroom-Dock & Janitor // Install Top Down Sheetrock | 5d | 2026-11-16 | 2026-11-20 | DH.1500030 SS+3d, DH.1500070 | 18.88d |
| DH.1500080 |  | DH 1500/Restroom-Dock & Janitor // MEPF high overhead install | 3d | 2026-11-23 | 2026-11-25 | DH.1500050 | 18.88d |
| DH.1500090 |  | DH 1500/Restroom-Dock & Janitor // Install Balance of Sheetrock on Walls | 5d | 2026-11-27 | 2026-12-03 | DH.1500050 SS, DH.1500080 | 18.88d |
| DH.1500100 |  | DH 1500/Restroom-Dock & Janitor // Tape and finish walls | 8d | 2026-12-04 | 2026-12-15 | DH.1500090 | 18.88d |
| DH.1500110 |  | DH 1500/Restroom-Dock & Janitor // Prime and Paint first coat walls | 3d | 2026-12-16 | 2026-12-18 | DH.1500100 | 18.88d |
| DH.1500120 |  | DH 1500/Restroom-Dock & Janitor // Install lights and exit signs | 3d | 2026-12-21 | 2026-12-23 | DH.1500110 | 18.88d |
| DH.1500130 |  | DH 1500/Restroom-Dock & Janitor // Final Coat Paint & Touchup Walls | 4d | 2026-12-24 | 2026-12-30 | DH.1500120 | 18.88d |
| DH.1500140 |  | DH 1500/Restroom-Dock & Janitor // Install MEP Devices and Trim | 2d | 2026-12-31 | 2027-01-04 | DH.1500130 | 18.88d |
|  | 5 | **1500 Energization, Start-up & Commissioning** |  | 2027-02-16 | 2027-05-21 |  |  |
|  | 1 | **Energization & L3 Prefunctional Testing** |  | 2027-02-16 | 2027-04-15 |  |  |
| DH1500.L3CX.99 |  | DH1500 L3 Start | 0d | 2027-02-16 | 2027-02-16 | DH.1500.3057, DH.1300.3040, DH.1400.3037, DH.1500.1180, ER.5101.3108, DH.1500.1300, DH.1500.1240, DH.1500.1310, DH.1500.1330, DH.1300.3066, DH.1400.3065, DH.1400.3071, DH.1500.3040, DH.1500.3053, DH.1500.3054, DH.1500.3056, DH.1500.3055, DH.160012156, DH.15000.1110, DH.15000.1712, DH.160012157, DH.1500A-EQP-215, DH.1500A-EQP-220, DH.1500A-EQP-218, DH1500.MG.A110.8685, DH1500.MG.A110.8689, DH1500.MG.A110.8692, DH.160012158, DH.1500B-EQP-198, DH.1500B-EQP-196, DH1500-002, DH1500-006, DH1500-009, DH.150012081, DH.160012160, DH.150012095, DH.160012161, DH.1500..1161, DH.1500140 | -9.12d |
| DH1500.L3CX.BMS.41 |  | DH1500 L3 PTPs & SOOs – BMS | 40d | 2027-02-16 | 2027-04-12 | DH1500.L3CX.ELEC.123 SS | -9.12d |
| DH1500.L3CX.ELEC.123 |  | DH1500 L3 FTEs | 5d | 2027-02-16 | 2027-02-22 | DH1500.L3CX.99 SS | -9.12d |
| DH1500.L3CX.MECH.123 |  | DH1500 L3 Startup / Pre-Functional – MECHANICAL | 20d | 2027-02-19 | 2027-03-18 | DH1500.L3CX.ELEC.123 SS+3d | -2.12d |
| DH1500.L3CX.ELEC.113 |  | DH1500 L3 Startup / Pre-Functional – ELECTRICAL | 15d | 2027-02-23 | 2027-03-15 | DH1500.L3CX.ELEC.123 | 2.88d |
| DH1500.L3CX.MECH.133 |  | DH1500 L3 TAB (Air, Water and Reports) – MECHANICAL | 10d | 2027-03-30 | 2027-04-12 | DH1500.L3CX.BMS.41 FF, DH1500.L3CX.MECH.123 | -9.12d |
| DH1500.L3CX.MECH.143 |  | DH1500 L3 FLS – MECHANICAL | 10d | 2027-04-01 | 2027-04-14 | DH1500.L3CX.ELEC.113, DH1500.L3CX.MECH.123, DH1500.L3CX.MECH.133 FF+2d | -9.12d |
| DH1500.L3CX.89 |  | DH1500 L3 Cx Complete | 0d | 2027-04-15 | 2027-04-15 | DH1500.L3CX.MECH.143 FF, DH1500.L3CX.MECH.133 FF | -9.12d |
|  | 2 | **L4 Function Testing** |  | 2027-03-19 | 2027-04-22 |  |  |
| DH1500.L4CX.COMM.170 |  | DH1500 L4 Cx | 25d | 2027-03-19 | 2027-04-22 | DH1500.L3CX.89 FF+6d | 0d |
|  | 3 | **L5 Integrated System Testing (IST)** |  | 2027-04-05 | 2027-05-21 |  |  |
| DH1500.L5CX.COMM.280 |  | DH1500 L5 Integrated Systems Testing - IST | 20d | 2027-04-05 | 2027-04-30 | DH1500.L4CX.COMM.170 FF+6d | 0d |
| DH1500.A2110.CO |  | DH1500– Phase Closeout Period O&M / TRAINING/ CLOSEOUT DOCS | 15d | 2027-05-03 | 2027-05-21 | DH1500.L5CX.COMM.290 | 6d |

| ID | WBS | Task | Duration | Start | Finish | Predecessors | Complete | Total float |
| --- | --- | --- | --- | --- | --- | --- | --- | --- |
| DH1500.L5CX.COMM.290 |  | DH1500 – IST / L5 Cx Complete | 0d | 2027-05-03 | 2027-05-03 | DH1500.L5CX.COMM.280 |  | 0d |
|  | 2 | **Commissioning & Start Up** |  |  |  |  |  |  |
|  | 3 | **Data Hall 1200** |  | 2026-05-11 | 2027-02-24 |  |  |  |
|  | 10 | **Exterior Build Out** |  | 2026-05-11 | 2026-11-18 |  |  |  |
|  | 9 | **Electrical Yard** |  | 2026-07-16 | 2026-08-31 |  |  |  |
|  | 3 | **Electrical** |  | 2026-07-16 | 2026-08-31 |  |  |  |
|  | 1 | **Underground** |  | 2026-07-16 | 2026-08-12 |  |  |  |
|  | 1 | **Column Line 2.0-2.9** |  | 2026-07-16 | 2026-08-05 |  |  |  |
| B1200 |  | DH1200/Electrical Yard-Underground // Excavate From MVG-B1-02 to Transformers | 10d | 2026-07-16 A | 2026-07-22 A | A5661, FDN.1080, A2920, A3170 | 100% |  |
| B5700 |  | DH1200/Electrical Yard-Underground // Install Raceway from MVG-B1-02 to Transformers | 10d | 2026-07-23 A | 2026-07-29 A | B1200 | 100% |  |
| B5701 |  | DH1200/Electrical Yard-Underground // Backfill Raceways from MVG-B1-02 to Transformers | 5d | 2026-07-30 A | 2026-08-05 A | B5700, B5700 FF | 100% |  |
|  | 2 | **Column Line 2.0 - 2.9** |  | 2026-07-16 | 2026-08-05 |  |  |  |
| B1200373 |  | DH1200/Electrical Yard-Underground // Excavate From MVG-A1-02 to Transformers | 5d | 2026-07-16 A | 2026-07-22 A | B1200 SS, B5701 | 100% |  |
| B1200374 |  | DH1200/Electrical Yard-Underground // Install Raceway from MVG-A1-02 to Transformers | 5d | 2026-07-23 A | 2026-07-29 A | B1200373 | 100% |  |
| B1200375 |  | DH1200/Electrical Yard-Underground // Backfill Raceways from MVG-A1-02 to Transformers | 3d | 2026-07-30 A | 2026-08-05 A | B1200374, B1200374 FF | 100% |  |
|  | 3 | **Column Line 2.0 - to 2.9 XFMR** |  | 2026-07-21 | 2026-08-12 |  |  |  |
| A5871 |  | DH1200/Electrical Yard-Underground // Excavate A120 - F120 XFMR Pads (A-Side) | 1d | 2026-07-21 A | 2026-07-21 A | PS870 | 100% |  |
| A5872 |  | DH1200/Electrical Yard-Underground // Run Conduit A120 - F120 XFMR Pads (A-Side) | 2d | 2026-07-23 A | 2026-07-24 A | A5871 | 100% |  |
| A5874 |  | DH1200/Electrical Yard-Underground // Excavate G120 - R120 XFMR Pads (A-Side) | 1d | 2026-07-23 A | 2026-07-23 A | A5873 | 100% |  |
| A5875 |  | DH1200/Electrical Yard-Underground // Run Conduit G120 - R120 XFMR Pads (A-Side) | 2d | 2026-07-27 A | 2026-07-28 A | A5874 | 100% |  |
| A5873 |  | DH1200/Electrical Yard-Underground // Backfill A120 - F120 XFMR Pads (A-Side) | 1d | 2026-07-29 A | 2026-07-31 A | A5872 | 100% |  |
| A5876 |  | DH1200/Electrical Yard-Underground // Backfill G120 - R120 XFMR Pads (A-Side) | 1d | 2026-07-31 A | 2026-07-31 A | A5875 | 100% |  |
| PS931 |  | DH1200/Electrical Yard-Underground // Excavate A120 - F120 XFMR Pads (P-Side) | 1d | 2026-08-03 A | 2026-08-03 A | A5876 | 100% |  |
| PS932 |  | DH1200/Electrical Yard-Underground // Run Conduit A120 - F120 XFMR Pads (P-Side) | 2d | 2026-08-04 A | 2026-08-05 A | PS931 | 100% |  |
| PS933 |  | DH1200/Electrical Yard-Underground // Backfill A120 - F120 XFMR Pads (P-Side) | 1d | 2026-08-06 A | 2026-08-06 A | PS932 | 100% |  |
| PS934 |  | DH1200/Electrical Yard-Underground // Excavate G120 - R120 XFMR Pads (P-Side) | 1d | 2026-08-07 A | 2026-08-07 A | PS933 | 100% |  |
| PS935 |  | DH1200/Electrical Yard-Underground // Run Conduit G120 - R120 XFMR Pads (P-Side) | 2d | 2026-08-10 A | 2026-08-11 A | PS934 | 100% |  |
| PS936 |  | DH1200/Electrical Yard-Underground // Backfill G120 - R120 XFMR Pads (P-Side) | 1d | 2026-08-12 A | 2026-08-12 A | PS935 | 100% |  |
|  | 2 | **Pads** |  | 2026-08-12 | 2026-08-26 |  |  |  |
| B120020 |  | DH1200/Electrical Yard-Pads // Excavate / Form / Rebar /-Finish XFMR Pads | 5d | 2026-08-12 A | 2026-08-19 A | PS936, B1200375 | 100% |  |
| B120000 |  | DH1200/Electrical Yard-Pads // Pad Strip and Cure | 1d | 2026-08-20 A | 2026-08-20 A | B120020 | 100% |  |
| B120030 |  | DH1200/Electrical Yard-Pads // Pour-Finish Pads (16 Xfmrs) | 5d | 2026-08-20 A | 2026-08-26 A | B120020 | 100% |  |
|  | 3 | **Equipment** |  | 2026-08-27 | 2026-08-31 |  |  |  |
|  | 1 | **A120** |  | 2026-08-27 | 2026-08-27 |  |  |  |
| B1200351 |  | DH1200/Electrical Yard // Set XFMR - XFMR-A120a | 1d | 2026-08-27 A | 2026-08-27 A | B120030, B120000, B120020 | 100% |  |
| B1200352 |  | DH1200/Electrical Yard // Set XFMR - XFMR-A120p | 1d | 2026-08-27 A | 2026-08-27 A | B1200351 SS | 100% |  |
|  | 2 | **B120** |  | 2026-08-27 | 2026-08-27 |  |  |  |
| B1200353 |  | DH1200/Electrical Yard // Set XFMR - XFMR-B120a | 1d | 2026-08-27 A | 2026-08-27 A | B1200352 SS | 100% |  |
| B1200354 |  | DH1200/Electrical Yard // Set XFMR - XFMR-B120p | 1d | 2026-08-27 A | 2026-08-27 A | B1200353 SS | 100% |  |
|  | 3 | **C120** |  | 2026-08-27 | 2026-08-27 |  |  |  |
| B1200355 |  | DH1200/Electrical Yard // Set XFMR - XFMR-C120a | 1d | 2026-08-27 A | 2026-08-27 A | B1200354 SS | 100% |  |
| B1200356 |  | DH1200/Electrical Yard // Set XFMR - XFMR-C120p | 1d | 2026-08-27 A | 2026-08-27 A | B1200355 SS | 100% |  |
|  | 4 | **D120** |  | 2026-08-27 | 2026-08-27 |  |  |  |
| B1200357 |  | DH1200/Electrical Yard // Set XFMR - XFMR-D120a | 1d | 2026-08-27 A | 2026-08-27 A | B1200356 SS | 100% |  |
| B1200358 |  | DH1200/Electrical Yard // Set XFMR - XFMR-D120p | 1d | 2026-08-27 A | 2026-08-27 A | B1200357 SS | 100% |  |
|  | 5 | **E120** |  | 2026-08-27 | 2026-08-27 |  |  |  |
| B1200359 |  | DH1200/Electrical Yard // Set XFMR - XFMR-E120a | 1d | 2026-08-27 A | 2026-08-27 A | B1200358 SS | 100% |  |
| B1200360 |  | DH1200/Electrical Yard // Set XFMR - XFMR-E120p | 1d | 2026-08-27 A | 2026-08-27 A | B1200359 | 100% |  |
|  | 6 | **F120** |  | 2026-08-28 | 2026-08-28 |  |  |  |
| B1200361 |  | DH1200/Electrical Yard // Set XFMR - XFMR-F120a | 1d | 2026-08-28 A | 2026-08-28 A | B1200360 | 100% |  |
| B1200362 |  | DH1200/Electrical Yard // Set XFMR - XFMR-F120p | 1d | 2026-08-28 A | 2026-08-28 A | B1200361 | 100% |  |
|  | 7 | **G120** |  | 2026-08-28 | 2026-08-28 |  |  |  |
| B1200363 |  | DH1200/Electrical Yard // Set XFMR - XFMR-G120a | 1d | 2026-08-28 A | 2026-08-28 A | B1200362 SS | 100% |  |
| B1200364 |  | DH1200/Electrical Yard // Set XFMR - XFMR-G120p | 1d | 2026-08-28 A | 2026-08-28 A | B1200363 | 100% |  |
|  | 8 | **H120** |  | 2026-08-28 | 2026-08-28 |  |  |  |
| B1200365 |  | DH1200/Electrical Yard // Set XFMR - XFMR-H120a | 1d | 2026-08-28 A | 2026-08-28 A | B1200364 SS | 100% |  |
| B1200366 |  | DH1200/Electrical Yard // Set XFMR - XFMR-H120p | 1d | 2026-08-28 A | 2026-08-28 A | B1200365 | 100% |  |
|  | 9 | **J120** |  | 2026-08-31 | 2026-08-31 |  |  |  |
| B1200367 |  | DH1200/Electrical Yard // Set XFMR - XFMR-J120a | 1d | 2026-08-31 A | 2026-08-31 A | B1200366 | 100% |  |
| B1200368 |  | DH1200/Electrical Yard // Set XFMR - XFMR-J120p | 1d | 2026-08-31 A | 2026-08-31 A | B1200367 | 100% |  |
|  | 10 | **K120** |  | 2026-08-31 | 2026-08-31 |  |  |  |
| B1200369 |  | DH1200/Electrical Yard // Set XFMR - XFMR-K120a | 1d | 2026-08-31 A | 2026-08-31 A | B1200368 SS | 100% |  |
| B1200370 |  | DH1200/Electrical Yard // Set XFMR - XFMR-K120p | 1d | 2026-08-31 A | 2026-08-31 A | B1200369 | 100% |  |
|  | 11 | **R120** |  | 2026-08-31 | 2026-08-31 |  |  |  |
| B1200371 |  | DH1200/Electrical Yard // Set XFMR - XFMR-R120a | 1d | 2026-08-31 A | 2026-08-31 A | B1200370 | 100% |  |
| B1200372 |  | DH1200/Electrical Yard // Set XFMR - XFMR-R120p | 1d | 2026-08-31 A | 2026-08-31 A | B1200371 | 100% |  |
|  | 1 | **Mechanical Yard** |  | 2026-05-11 | 2026-11-18 |  |  |  |
|  | 1 | **Pads** |  | 2026-05-11 | 2026-08-14 |  |  |  |
| A5700 |  | DH1200/Mechanical Yard-Pads // Excavate / Form / Rebar / Pour Chiller Pads | 8d | 2026-05-11 A | 2026-05-20 A | FDN.1080, A3210 | 100% |  |
| A5702 |  | DH1200/Mechanical Yard-Pads // Excavate / Form / Rebar / Pour Support and TES Pads | 5d | 2026-06-10 A | 2026-06-16 A | A5700 | 100% |  |

| ID | WBS | Task | Duration | Start | Finish | Predecessors | Complete | Total float |
| --- | --- | --- | --- | --- | --- | --- | --- | --- |
| A5704 |  | DH1200/Mechanical Yard-Pads // Excavate / Form / Rebar / Pour Support and TES Pads (Column Lines 1.3 to 1.6) | 5d | 2026-08-03 A | 2026-08-07 A | A5700 SS, A5702 | 100% |  |
| A5705 |  | DH1200/Mechanical Yard-Pads // Excavate / Form / Rebar / Pour Support and TES Pads (Column Lines 1.6 to 1.9) | 5d | 2026-08-10 A | 2026-08-14 A | A5704 | 100% |  |
|  | 5 | **Equipment** |  | 2026-08-04 | 2026-11-02 |  |  |  |
|  | 1 | **A120** |  | 2026-08-04 | 2026-10-02 |  |  |  |
| B12000.12023 |  | DH1200/Mechanical Yard-A120 // Install CHWP | 1d | 2026-08-04 A | 2026-08-24 A | STRUCTURE.6860 | 100% |  |
| B12000.12024 |  | DH1200/Mechanical Yard-A120 // Install Mechanical Piping Mains (Building -to Line) | 1d | 2026-08-05 A | 2026-09-08 A | B12000.12023 | 100% |  |
| B12000.12001 |  | DH1200/Mechanical Yard-A120 // Set Chiller - CHLR-1CY40-A120 | 1d | 2026-09-30 | 2026-09-30 | A5702, STRUCTURE.6860 |  | 29d |
| B12000.12002 |  | DH1200/Mechanical Yard-A120 // Set TES tank - TES-1CY40-A120 | 1d | 2026-10-01 | 2026-10-01 | B12000.12001 |  | 50d |
| B12000.12025 |  | DH1200/Mechanical Yard-A120 // Install Mechanical Chiller to Mains | 1d | 2026-10-02 | 2026-10-02 | B12000.12024, B12000.12002 |  | 50d |
|  | 2 | **B120** |  | 2026-08-05 | 2026-10-05 |  |  |  |
| B12000.12026 |  | DH1200/Mechanical Yard-B120 // Install CHWP | 1d | 2026-08-05 A | 2026-08-24 A | B12000.12023 SS | 100% |  |
| B12000.12027 |  | DH1200/Mechanical Yard-B120 // Install Mechanical Piping Mains (Building -to Line) | 1d | 2026-08-06 A | 2026-09-08 A | B12000.12026 | 100% |  |
| B12000.12003 |  | DH1200/Mechanical Yard-B120 // Set Chiller - CHLR-1CY40-B120 | 1d | 2026-10-01 | 2026-10-01 | B12000.12001 |  | 29d |
| B12000.12004 |  | DH1200/Mechanical Yard-B120 // Set TES tank - TES-1CY40-B120 | 1d | 2026-10-02 | 2026-10-02 | B12000.12003 |  | 49d |
| B12000.12028 |  | DH1200/Mechanical Yard-B120 // Install Mechanical Chiller to Mains | 1d | 2026-10-05 | 2026-10-05 | B12000.12027, B12000.12004 |  | 49d |
|  | 3 | **C120** |  | 2026-08-06 | 2026-10-06 |  |  |  |
| B12000.12029 |  | DH1200/Mechanical Yard-C120 // Install CHWP | 1d | 2026-08-06 A | 2026-08-24 A | B12000.12026 SS | 100% |  |
| B12000.12030 |  | DH1200/Mechanical Yard-C120 // Install Mechanical Piping Mains (Building -to Line) | 1d | 2026-08-07 A | 2026-09-08 A | B12000.12029 | 100% |  |
| B12000.12005 |  | DH1200/Mechanical Yard-C120 // Set Chiller - CHLR-1CY40-C120 | 1d | 2026-10-02 | 2026-10-02 | B12000.12003 |  | 29d |
| B12000.12006 |  | DH1200/Mechanical Yard-C120 // Set TES tank - TES-1CY40-C120 | 1d | 2026-10-05 | 2026-10-05 | B12000.12005 |  | 48d |
| B12000.12031 |  | DH1200/Mechanical Yard-C120 // Install Mechanical Chiller to Mains | 1d | 2026-10-06 | 2026-10-06 | B12000.12030, B12000.12006 |  | 48d |
|  | 4 | **D120** |  | 2026-08-07 | 2026-10-07 |  |  |  |
| B12000.12032 |  | DH1200/Mechanical Yard-D120 // Install CHWP | 1d | 2026-08-07 A | 2026-08-25 A | B12000.12029 | 100% |  |
| B12000.12033 |  | DH1200/Mechanical Yard-D120 // Install Mechanical Piping Mains (Building -to Line) | 1d | 2026-08-10 A | 2026-09-08 A | B12000.12032 | 100% |  |
| B12000.12007 |  | DH1200/Mechanical Yard-D120 // Set Chiller - CHLR-1CY40-D120 | 1d | 2026-10-05 | 2026-10-05 | B12000.12005 |  | 29d |
| B12000.12008 |  | DH1200/Mechanical Yard-D120 // Set TES tank - TES-1CY40-D120 | 1d | 2026-10-06 | 2026-10-06 | B12000.12007 |  | 47d |
| B12000.12034 |  | DH1200/Mechanical Yard-D120 // Install Mechanical Chiller to Mains | 1d | 2026-10-07 | 2026-10-07 | B12000.12033, B12000.12008 |  | 47d |
|  | 5 | **E120** |  | 2026-08-10 | 2026-10-08 |  |  |  |
| B12000.12035 |  | DH1200/Mechanical Yard-E120 // Install CHWP | 1d | 2026-08-10 A | 2026-08-25 A | B12000.12032 SS | 100% |  |
| B12000.12036 |  | DH1200/Mechanical Yard-E120 // Install Mechanical Piping Mains (Building -to Line) | 1d | 2026-08-11 A | 2026-09-08 A | B12000.12035 | 100% |  |
| B12000.12009 |  | DH1200/Mechanical Yard-E120 // Set Chiller - CHLR-1CY40-E120 | 1d | 2026-10-06 | 2026-10-06 | B12000.12007 |  | 29d |
| B12000.12010 |  | DH1200/Mechanical Yard-E120 // Set TES tank - TES-1CY40-E120 | 1d | 2026-10-07 | 2026-10-07 | B12000.12009 |  | 46d |
| B12000.12037 |  | DH1200/Mechanical Yard-E120 // Install Mechanical Chiller to Mains | 1d | 2026-10-08 | 2026-10-08 | B12000.12036, B12000.12010 |  | 46d |
|  | 6 | **F120** |  | 2026-08-11 | 2026-10-09 |  |  |  |
| B12000.12038 |  | DH1200/Mechanical Yard-F120 // Install CHWP | 1d | 2026-08-11 A | 2026-08-26 A | B12000.12035 | 100% |  |
| B12000.12039 |  | DH1200/Mechanical Yard-F120 // Install Mechanical Piping Mains (Building -to Line) | 1d | 2026-08-12 A | 2026-09-08 A | B12000.12038 | 100% |  |
| B12000.12011 |  | DH1200/Mechanical Yard-F120 // Set Chiller - CHLR-1CY40-F120 | 1d | 2026-10-07 | 2026-10-07 | B12000.12009 |  | 29d |
| B12000.12012 |  | DH1200/Mechanical Yard-F120 // Set TES tank - TES-1CY40-F120 | 1d | 2026-10-08 | 2026-10-08 | B12000.12011 |  | 45d |
| B12000.12040 |  | DH1200/Mechanical Yard-F120 // Install Mechanical Chiller to Mains | 1d | 2026-10-09 | 2026-10-09 | B12000.12039, B12000.12038, B12000.12012 |  | 45d |
|  | 7 | **G120** |  | 2026-08-12 | 2026-10-13 |  |  |  |
| B12000.12041 |  | DH1200/Mechanical Yard-G120 // Install CHWP | 1d | 2026-08-12 A | 2026-08-26 A | B12000.12038 | 100% |  |
| B12000.12042 |  | DH1200/Mechanical Yard-G120 // Install Mechanical Piping Mains (Building -to Line) | 1d | 2026-08-13 A | 2026-09-08 A | B12000.12041 | 100% |  |
| B12000.12013 |  | DH1200/Mechanical Yard-G120 // Set Chiller - CHLR-1CY40-G120 | 1d | 2026-10-08 | 2026-10-08 | B12000.12011 |  | 29d |
| B12000.12014 |  | DH1200/Mechanical Yard-G120 // Set TES tank - TES-1CY40-G120 | 1d | 2026-10-09 | 2026-10-09 | B12000.12013 |  | 44d |
| B12000.12043 |  | DH1200/Mechanical Yard-G120 // Install Mechanical Chiller to Mains | 1d | 2026-10-13 | 2026-10-13 | B12000.12042, B12000.12014 |  | 44d |
|  | 8 | **H120** |  | 2026-08-13 | 2026-10-14 |  |  |  |
| B12000.12044 |  | DH1200/Mechanical Yard-H120 // Install CHWP | 1d | 2026-08-13 A | 2026-08-27 A | B12000.12041 | 100% |  |
| B12000.12045 |  | DH1200/Mechanical Yard-H120 // Install Mechanical Piping Mains (Building -to Line) | 1d | 2026-08-14 A | 2026-09-08 A | B12000.12044 | 100% |  |
| B12000.12015 |  | DH1200/Mechanical Yard-H120 // Set Chiller - CHLR-1CY40-H120 | 1d | 2026-10-09 | 2026-10-09 | B12000.12013 |  | 29d |
| B12000.12016 |  | DH1200/Mechanical Yard-H120 // Set TES tank - TES-1CY40-H120 | 1d | 2026-10-13 | 2026-10-13 | B12000.12015 |  | 43d |
| B12000.12046 |  | DH1200/Mechanical Yard-H120 // Install Mechanical Chiller to Mains | 1d | 2026-10-14 | 2026-10-14 | B12000.12045, B12000.12016 |  | 43d |
|  | 9 | **J120** |  | 2026-08-14 | 2026-10-15 |  |  |  |
| B12000.12047 |  | DH1200/Mechanical Yard-J120 // Install CHWP | 1d | 2026-08-14 A | 2026-08-27 A | B12000.12044 SS | 100% |  |
| B12000.12048 |  | DH1200/Mechanical Yard-J120 // Install Mechanical Piping Mains (Building -to Line) | 1d | 2026-08-17 A | 2026-09-08 A | B12000.12047 | 100% |  |
| B12000.12017 |  | DH1200/Mechanical Yard-J120 // Set Chiller - CHLR-1CY40-J120 | 1d | 2026-10-13 | 2026-10-13 | B12000.12015 |  | 29d |
| B12000.12018 |  | DH1200/Mechanical Yard-J120 // Set TES tank - TES-1CY40-J120 | 1d | 2026-10-14 | 2026-10-14 | B12000.12017 |  | 42d |
| B12000.12049 |  | DH1200/Mechanical Yard-J120 // Install Mechanical Chiller to Mains | 1d | 2026-10-15 | 2026-10-15 | B12000.12048, B12000.12018 |  | 42d |
|  | 10 | **K120** |  | 2026-08-17 | 2026-10-16 |  |  |  |
| B12000.12050 |  | DH1200/Mechanical Yard-K120 // Install CHWP | 1d | 2026-08-17 A | 2026-08-28 A | B12000.12047 SS | 100% |  |
| B12000.12051 |  | DH1200/Mechanical Yard-K120 // Install Mechanical Piping Mains (Building -to Line) | 1d | 2026-08-18 A | 2026-09-08 A | B12000.12050 | 100% |  |
| B12000.12019 |  | DH1200/Mechanical Yard-K120 // Set Chiller - CHLR-1CY40-K120 | 1d | 2026-10-14 | 2026-10-14 | B12000.12017 |  | 29d |
| B12000.12020 |  | DH1200/Mechanical Yard-K120 // Set TES tank - TES-1CY40-K120 | 1d | 2026-10-15 | 2026-10-15 | B12000.12019 |  | 41d |
| B12000.12052 |  | DH1200/Mechanical Yard-K120 // Install Mechanical Chiller to Mains | 1d | 2026-10-16 | 2026-10-16 | B12000.12051, B12000.12020 |  | 41d |
|  | 11 | **R120** |  | 2026-08-18 | 2026-10-19 |  |  |  |
| B12000.12053 |  | DH1200/Mechanical Yard-R120 // Install CHWP | 1d | 2026-08-18 A | 2026-08-28 A | B12000.12050 SS | 100% |  |
| B12000.12054 |  | DH1200/Mechanical Yard-R120 // Install Mechanical Piping Mains (Building -to Line) | 1d | 2026-08-19 A | 2026-09-08 A | B12000.12053 | 100% |  |
| B12000.12021 |  | DH1200/Mechanical Yard-R120 // Set Chiller - CHLR-1CY40-R120 | 1d | 2026-10-15 | 2026-10-15 | B12000.12019 |  | 29d |
| B12000.12022 |  | DH1200/Mechanical Yard-R120 // Set TES tank - TES-1CY40-R120 | 1d | 2026-10-16 | 2026-10-16 | B12000.12021 |  | 40d |
| B12000.12055 |  | DH1200/Mechanical Yard-R120 // Install Mechanical Chiller to Mains | 1d | 2026-10-19 | 2026-10-19 | B12000.12054, B12000.12022 |  | 40d |
|  | 12 | **Test & Flushing** |  | 2026-10-20 | 2026-11-02 |  |  |  |

| ID | WBS | Task | Duration | Start | Finish | Predecessors | Complete | Total float | Constraint |
| --- | --- | --- | --- | --- | --- | --- | --- | --- | --- |
| A5733 |  | DH1200/Mechanical Yard-Test & Flushing // Line Test & Checking | 2d | 2026-10-20 | 2026-10-21 | B12000.12055, B12000.12052, B12000.12049, B12000.12046, B12000.12043, B12000.12040, B12000.12037, B12000.12034, B12000.12031, B12000.12028, B12000.12025 |  | 40d |  |
| A5735 |  | DH1200/Mechanical Yard-Test & Flushing // Electrical & Controls Testing / Checking | 3d | 2026-10-22 | 2026-10-26 | A5733 |  | 40d |  |
| A5734 |  | DH1200/Mechanical Yard-Test & Flushing // Fill, Flush & Purge | 5d | 2026-10-27 | 2026-11-02 | A5735 |  | 40d |  |
|  | 2 | **Electrical & Controls** |  | 2026-06-10 | 2026-11-18 |  |  |  |  |
| A5706 |  | DH1200/Electrical & Controls // Excavate Raceways from Building to Chiller Pad | 8d | 2026-06-10 A | 2026-06-19 A | A5700, FDN.1070 | 100% |  |  |
| A5707 |  | DH1200/Electrical & Controls // Install Raceway from Building To Chiller Pad | 8d | 2026-06-19 A | 2026-06-30 A | A5706 SS+4d | 100% |  |  |
| A5708 |  | DH1200/Electrical & Controls // Backfill Chiller Raceways from Building to Chiller Pad | 8d | 2026-07-28 A | 2026-08-07 A | A5706 | 100% |  |  |
| A5718 |  | DH1200/Electrical & Controls // Mechanical CWP Support Caisson Footings | 10d | 2026-09-11 A | 2026-09-24 A | A5708 | 100% |  |  |
| A5712 |  | DH1200/Electrical & Controls // Raceway connections to Chiller units | 6d | 2026-10-16 | 2026-10-23 | A5707, A5708 SS, B12000.12021, B12000.12019, B12000.12017, B12000.12015, B12000.12013, B12000.12011, B12000.12009, B12000.12007, B12000.12005, B12000.12003, B12000.12001 |  | 29d |  |
| A5713 |  | DH1200/Electrical & Controls // Install Panels and Raceways to CHWP | 10d | 2026-10-16 | 2026-10-29 | A5712 SS |  | 29d |  |
| A5715 |  | DH1200/Electrical & Controls // Install Controls conduits and wire to Chiller units | 12d | 2026-10-16 | 2026-11-02 | A5713 SS |  | 29d |  |
| A5722 |  | DH1200/Electrical & Controls // Pull and Terminate Feeders to Chiller units | 6d | 2026-10-26 | 2026-11-02 | A5712, A5708 SS |  | 29d |  |
| A5723 |  | DH1200/Electrical & Controls // Chiller units Ready to Energize | 6d | 2026-11-03 | 2026-11-10 | A5722, A5715, A5713 |  | 29d |  |
| A5719 |  | DH1200/Electrical & Controls // Fine Grade Install Landscape Fabric & Install Rock | 5d | 2026-11-12 | 2026-11-18 | A5718, A5715, A5723 |  | 29d |  |
|  | 2 | **Roof - RTUs** |  | 2026-07-29 | 2026-11-12 |  |  |  |  |
|  | 1 | **Column Lines 1.2 thru 2.0** |  | 2026-07-29 | 2026-11-12 |  |  |  |  |
| B12000.12058 |  | DH1200/Roof - RTUs // - RTU-RT05-01 | 1d | 2026-07-29 A | 2026-08-03 A | DH1100.12064 | 100% |  |  |
| B12000.12057 |  | DH1200/Roof - RTUs // - RTU-RT- 06 | 1d | 2026-07-31 A | 2026-08-05 A | B12000.12058 SS+2d | 100% |  |  |
| B12000.12064 |  | DH1200/Roof - RTUs // - RTU-RT- 07 | 1d | 2026-08-03 A | 2026-08-06 A | B12000.12057 | 100% |  |  |
| B12000.12059 |  | DH1200/Roof - RTUs // Install Mechanical Piping | 15d | 2026-09-30 | 2026-10-21 | B12000.12064, B12000.12058 |  | 33d |  |
| B12000.12056 |  | DH1200/Roof - RTUs // Install heat trace system | 15d | 2026-10-22 | 2026-11-12 | B12000.12059 |  | 33d |  |
| B12000.7841 |  | DH1200/Roof - RTUs // Install Electrical Conduit and Controls Piping | 15d | 2026-10-22 | 2026-11-12 | B12000.12064, B12000.12059 |  | 33d |  |
|  | 1 | **Interior Build Out** |  | 2026-07-27 | 2027-02-24 |  |  |  |  |
|  | 9 | **Flex 1000B10** |  | 2026-07-27 | 2026-11-16 |  |  |  |  |
| B12000A.1000 |  | DH1200/Flex 1000B10 // Seal Concrete | 2d | 2026-07-27 A | 2026-07-28 A | SOG.1448 | 100% |  |  |
| B12000A.1010 |  | DH1200/Flex 1000B10 // MEPF Layout of Overhead Supports | 2d | 2026-07-28 A | 2026-08-04 A | STRUCTURE.7420, SOG.1448, B12000A.1000 | 100% |  |  |
| B12000A.1020 |  | DH1200/Flex 1000B10 // MEPF Install High Overhead Systems | 5d | 2026-07-30 A | 2026-09-02 A | B12000A.1010 | 100% |  |  |
| B12000A.1040 |  | DH1200/Flex 1000B10 // Frame Walls including Backing | 4d | 2026-08-05 A | 2026-08-10 A | B12000A.1010, SOG.1448 | 100% |  |  |
| B12000A.1060 |  | DH1200/Flex 1000B10 // MEPF Install Rough Wall | 2d | 2026-08-12 A | 2026-09-01 A | B12000A.1040 | 100% |  |  |
| B12000A.1070 |  | DH1200/Flex 1000B10 // Install Top Down Sheet Rock | 5d | 2026-09-30 | 2026-10-06 | B12000A.1040 SS+2d |  | 31d |  |
| B12000A.1080 |  | DH1200/Flex 1000B10 // Rough Wall Inspspection (Approval to Close up) | 1d | 2026-09-30 | 2026-09-30 | B12000A.1060 |  | 35d |  |
| B12000A.1090 |  | DH1200/Flex 1000B10 // Install Balance of Sheetrock | 3d | 2026-10-07 | 2026-10-09 | B12000A.1080, B12000A.1070 |  | 31d |  |
| B12000A.1100 |  | DH1200/Flex 1000B10 // Tape and Finish Walls | 6d | 2026-10-13 | 2026-10-20 | B12000A.1090 |  | 31d |  |
| B12000A.1110 |  | DH1200/Flex 1000B10 // Prime and First Coat of Paint | 2d | 2026-10-21 | 2026-10-22 | B12000A.1100 |  | 31d |  |
| B12000A.1120 |  | DH1200/Flex 1000B10 // Install MEPF Overhead Ceiling Rough | 3d | 2026-10-23 | 2026-10-27 | B12000A.1020, B12000A.1110 |  | 31d |  |
| B12000A.1130 |  | DH1200/Flex 1000B10 // Install Lighting, Fire Alarm & Fire Protection | 2d | 2026-10-28 | 2026-10-29 | B12000A.1120 |  | 31d |  |
| B12000A.1050 |  | DH1200/Flex 1000B10 // Install Door Frames | 1d | 2026-10-30 | 2026-10-30 | B12000A.1040 FF, B12000A.1130 |  | 33d |  |
| B12000A.1140 |  | DH1200/Flex 1000B10 // Wall Touch up Final Coat of Paint | 3d | 2026-10-30 | 2026-11-03 | B12000A.1130 |  | 31d |  |
| B12000A.1150 |  | DH1200/Flex 1000B10 // Install Wall Base, Trim, and Devices | 3d | 2026-11-04 | 2026-11-06 | B12000A.1140, B12000A.1050 |  | 31d |  |
| B12000A.1161 |  | DH1200/Flex 1000B10 // Ready to Receive Equipment | 0d | 2026-11-06 | 2026-11-06 | B12000A.1150 FF |  | 31d |  |
| B12000A.1160 |  | DH1200/Flex 1000B10 // Suffolk Pre Punch | 5d | 2026-11-09 | 2026-11-16 | B12000A.1161 |  | 31d |  |
|  | 7 | **Electrical Room #5201** |  | 2026-07-27 | 2026-11-20 |  |  |  |  |
| B120001.1000 |  | DH1200/Electrical Room #5201 // Seal Concrete | 2d | 2026-07-27 A | 2026-07-28 A | B12000A.1000 FF | 100% |  |  |
| B120001.1010 |  | DH1200/Electrical Room #5201 // MEPF Layout of Overhead Supports | 2d | 2026-07-30 A | 2026-08-04 A | B12000A.1010 SS, B120001.1000 | 100% |  |  |
| B120001.1020 |  | DH1200/Electrical Room #5201 // MEPF Install High Overhead Systems | 6d | 2026-08-03 A | 2026-09-03 A | B120001.1010 | 100% |  |  |
| B120001.1040 |  | DH1200/Electrical Room #5201 // Frame Walls including Backing | 4d | 2026-08-05 A | 2026-08-10 A | B12000A.1040 FF, B120001.1010 | 100% |  |  |
| B120001.3111 |  | DH1200/Electrical Room #5201 // Install Overhead Cable Ladder / 36" Cable Tray - TFO | 5d | 2026-08-11 A | 2026-09-14 A | B120001.1020, A5662 | 100% |  |  |
| B120001.1070 |  | DH1200/Electrical Room #5201 // Install Top Down Sheet Rock | 5d | 2026-08-14 A | 2026-09-16 A | B120001.1040 SS+2d | 100% |  |  |
| B120001.1060 |  | DH1200/Electrical Room #5201 // MEPF Install Rough Wall | 2d | 2026-08-18 A | 2026-09-10 A | B120001.1040 | 100% |  |  |
| F.1000A.1191 |  | DH1200/Electrical Room #5201 // Rough-In Security | 2d | 2026-08-18 A | 2026-09-18 A | B120001.1020 | 100% |  |  |
| B120001.1080 |  | DH1200/Electrical Room #5201 // Rough Wall Inspspection (Approval to Close up) | 1d | 2026-08-20 A | 2026-09-17 A | B120001.1060 | 100% |  |  |
| B120001.1090 |  | DH1200/Electrical Room #5201 // Install Balance of Sheetrock | 3d | 2026-08-21 A | 2026-09-22 A | B120001.1080, B120001.1070 SS+3d | 100% |  |  |
| B120001.1100 |  | DH1200/Electrical Room #5201 // Tape and Finish Walls | 6d | 2026-09-24 A | 2026-10-07 | B120001.1090 |  | -2d |  |
| B120001.1110 |  | DH1200/Electrical Room #5201 // Prime and First Coat of Paint | 2d | 2026-09-25 A | 2026-10-07 | B120001.1100 FF |  | -2d |  |
| B120001.1120 |  | DH1200/Electrical Room #5201 // Install MEPF Overhead Ceiling Rough | 3d | 2026-09-25 A | 2026-10-02 | B120001.1090 |  | 1d |  |
| B120001.1180 |  | DH1200/Electrical Room #5201 // Install Cable Tray | 3d | 2026-09-25 A | 2026-10-02 | B120001.1070 |  | 1d |  |
| B120001.1170 |  | DH1200/Electrical Room #5201 // Install Overhead Buss duct | 2d | 2026-09-30 | 2026-10-01 | B120001.1020, B120001.1070 |  | 4d |  |
| B120001.3112 |  | DH1200/Electrical Room #5201 // Install Overhead HAC - TFO | 5d | 2026-09-30 | 2026-10-06 | B120001.3111, B120001.1170 SS |  | 4d |  |
| F.1000A.1192 |  | DH1200/Electrical Room #5201 // Pull & Test Security Cable | 3d | 2026-09-30 | 2026-10-02 | F.1000A.1191 |  | 46d |  |
| F.1000A.1385 |  | DH1200/Electrical Room #5201 // BMS & EPMS Rough-In | 2d | 2026-09-30 | 2026-10-01 | F.1000A.1191 FF, F.1000A.1191 SS |  | 56d |  |
| B120001.1220 |  | DH1200/Electrical Room #5201 // Pull Cable Tray Feeders (CRAHU/CDU) | 10d | 2026-10-05 | 2026-10-19 | B120001.1180 |  | 1d |  |
| B120001.1290 |  | DH1200/Electrical Room #5201 // Pull Misc Feeder and Branch Circuits | 10d | 2026-10-05 | 2026-10-19 | B120001.1120 |  | 1d |  |
| ER.5101.3096 |  | DH1200/Electrical Room #5201 // Set PDU - PDU-R120-01 | 1d | 2026-10-05 | 2026-10-05 | B120001.1180 |  | 6d |  |
| F.1000A.1193 |  | DH1200/Electrical Room #5201 // Install Security Devices | 2d | 2026-10-05 | 2026-10-06 | F.1000A.1192 |  | 46d |  |
| ER.5101.3102 |  | DH1200/Electrical Room #5201 // Set UPS - UPS-R120 | 1d | 2026-10-06 | 2026-10-06 | ER.5101.3096 |  | 6d |  |
| B120001.3110 |  | DH1200/Electrical Room #5201 // Room Ready to Receive Equipment | 0d | 2026-10-08 | 2026-10-08 | B120001.1110 |  | -2d |  |
| B120001.1240 |  | DH1200/Electrical Room #5201 // Land and Terminate Cabel Tray Feeders In Gear | 10d | 2026-10-13 | 2026-10-26 | B120001.1220 SS+5d, B120001.3112 |  | 1d |  |
| B120001.1300 |  | DH1200/Electrical Room #5201 // Land and Terminate Misc Feeder and Branch Circuits | 10d | 2026-10-13 | 2026-10-26 | B120001.1290 SS+5d |  | 1d |  |
| B120001.3219 |  | DH1200/Electrical Room #5201 // DH1200 - OFCI Skid Ship Date (09/30/2026) First Shipment | 0d | 2026-10-13 | 2026-10-13 | B120001.3110 |  | -4d | finish on or after 2026-10-12 |
| ER.5101.3045 |  | DH1200/Electrical Room #5201 // Set Skid - SKID-A120 | 1d | 2026-10-13 | 2026-10-13 | B120001.3110 SS, B120001.3219 |  | -4d |  |

| ID | WBS | Task | Duration | Start | Finish | Predecessors | Complete | Total float | Constraint |
| --- | --- | --- | --- | --- | --- | --- | --- | --- | --- |
| ER.5101.3046 |  | DH1200/Electrical Room #5201 // Set Skid - SKID-B120 | 1d | 2026-10-13 | 2026-10-13 | ER.5101.3045 SS |  | -4d |  |
| ER.5101.3047 |  | DH1200/Electrical Room #5201 // Set Skid - SKID-C120 | 1d | 2026-10-13 | 2026-10-13 | ER.5101.3046 SS |  | -4d |  |
| ER.5101.3048 |  | DH1200/Electrical Room #5201 // Set Skid - SKID-D120 | 1d | 2026-10-13 | 2026-10-13 | ER.5101.3047 SS |  | -4d |  |
| ER.5101.3049 |  | DH1200/Electrical Room #5201 // Set Skid - SKID-E120 | 1d | 2026-10-13 | 2026-10-13 | ER.5101.3048 SS |  | -4d |  |
| B120001.1200 |  | DH1200/Electrical Room #5201 // Install Cable Buss From Exterior | 3d | 2026-10-14 | 2026-10-16 | ER.5101.3049, B120001.1180 |  | -2d |  |
| B120001.1250 |  | DH1200/Electrical Room #5201 // Set CRAH-ER5201- 01 | 1d | 2026-10-14 | 2026-10-14 | B120001.1110, ER.5101.3049 |  | -4d |  |
| B120001.1320 |  | DH1200/Electrical Room #5201 // Buss Duct Tie In to Elect Gear | 3d | 2026-10-14 | 2026-10-16 | ER.5101.3049, B120001.1170 |  | 7d |  |
| B120001.3031 |  | DH1200/Electrical Room #5201 // Set CRAH-ER5201- 02 | 1d | 2026-10-15 | 2026-10-15 | B120001.1250, B120001.1180 |  | -4d |  |
| B120001.3032 |  | DH1200/Electrical Room #5201 // Set CRAH-ER5201- 03 | 1d | 2026-10-16 | 2026-10-16 | B120001.3031 |  | -4d |  |
| B120001.1210 |  | DH1200/Electrical Room #5201 // Pull Cable Buss Feeders | 6d | 2026-10-19 | 2026-10-26 | ER.5101.3049, B120001.1200 |  | -2d |  |
| B120001.3033 |  | DH1200/Electrical Room #5201 // Set CRAH-ER5201- 04 | 1d | 2026-10-19 | 2026-10-19 | B120001.3032 |  | -4d |  |
| B120001.3034 |  | DH1200/Electrical Room #5201 // Set CRAH-ER5201- 05 | 1d | 2026-10-20 | 2026-10-20 | B120001.3033 |  | -4d |  |
| B120001.3035 |  | DH1200/Electrical Room #5201 // Set CRAH-ER5201- 06 | 1d | 2026-10-21 | 2026-10-21 | B120001.3034 |  | -4d |  |
| B120001.1260 |  | DH1200/Electrical Room #5201 // Mechanical Connections to CRAHU | 5d | 2026-10-22 | 2026-10-28 | B120001.3035, B120001.1250, ER.5101.3102 |  | -4d |  |
| B120001.1050 |  | DH1200/Electrical Room #5201 // Install Door Frames | 1d | 2026-10-27 | 2026-10-27 | B120001.1040 FF, B120001.1240 |  | 28d |  |
| B120001.1130 |  | DH1200/Electrical Room #5201 // Install Lighting, Fire Alarm & Fire Protection | 2d | 2026-10-27 | 2026-10-28 | B120001.1120, B120001.1300 |  | 27d |  |
| B120001.1230 |  | DH1200/Electrical Room #5201 // Terminate Cable Buss Feeders | 3d | 2026-10-27 | 2026-10-29 | B120001.1210 |  | -2d |  |
| B120001.1140 |  | DH1200/Electrical Room #5201 // Wall Touch up Final Coat of Paint | 3d | 2026-10-29 | 2026-11-02 | B120001.1130, B120001.1050 |  | 27d |  |
| B120001.1270 |  | DH1200/Electrical Room #5201 // Install Condensate lines from CRAHU's | 2d | 2026-10-29 | 2026-10-30 | B120001.1260 |  | -3d |  |
| B120001.1280 |  | DH1200/Electrical Room #5201 // Install Elec Feeders to CRAHU's | 3d | 2026-10-29 | 2026-11-02 | B120001.1260, B120001.1180 |  | -4d |  |
| F.1000A.1194 |  | DH1200/Electrical Room #5201 // Mount & Terminate Security Devices | 5d | 2026-10-29 | 2026-11-04 | F.1000A.1193, B120001.1130 |  | 31d |  |
| B120001.1310 |  | DH1200/Electrical Room #5201 // Final FOD Check of all Panels | 2d | 2026-10-30 | 2026-11-02 | B120001.1230, B120001.1240, B120001.1320, B120001.1300 |  | -2d |  |
| B120001.1150 |  | DH1200/Electrical Room #5201 // Install Wall Base, Trim, and Devices | 3d | 2026-11-03 | 2026-11-05 | B120001.1140 |  | 27d |  |
| B120001.1330 |  | DH1200/Electrical Room #5201 // Mechanical Equipment Pre-Start up | 2d | 2026-11-03 | 2026-11-04 | B120001.1280, B120001.1270, B120001.1260, B120001.1240 |  | -4d |  |
| F.1000A.1195 |  | DH1200/Electrical Room #5201 // Test Security Devices | 2d | 2026-11-12 | 2026-11-13 | F.1000A.1385 FF, F.1000A.1194, B120001.1150 FS+3d |  | 27d |  |
| B120001.1160 |  | DH1200/Electrical Room #5201 // Suffolk Pre Punch | 5d | 2026-11-16 | 2026-11-20 | B120001.1150, F.1000A.1195 |  | 27d |  |
|  | 2 | **Electrcal Room #5204** |  | 2026-07-27 | 2026-11-10 |  |  |  |  |
| B120004.1000 |  | DH1200/Electrical Room #5204 // Seal Concrete | 2d | 2026-07-27 A | 2026-07-28 A | B120001.1000 | 100% |  |  |
| B120004.1010 |  | DH1200/Electrical Room #5204 // MEPF Layout of Overhead Supports | 2d | 2026-08-03 A | 2026-08-04 A | B120001.1010 SS, B120004.1000 | 100% |  |  |
| B120004.1040 |  | DH1200/Electrical Room #5204 // Frame Walls including Backing | 4d | 2026-08-05 A | 2026-08-10 A | B120004.1010 | 100% |  |  |
| B120001.3113 |  | DH1200/Electrical Room #5204 // Install Overhead Cable Ladder / 36" Cable Tray - TFO | 5d | 2026-08-05 A | 2026-09-14 A | B120004.1010 | 100% |  |  |
| B120004.1020 |  | DH1200/Electrical Room #5204 // MEPF Install High Overhead Systems | 6d | 2026-08-05 A | 2026-09-10 A | B120004.1010 | 100% |  |  |
| B120004.1060 |  | DH1200/Electrical Room #5204 // MEPF Install Rough Wall | 2d | 2026-08-11 A | 2026-09-10 A | B120004.1040 | 100% |  |  |
| B120004.1070 |  | DH1200/Electrical Room #5204 // Install Top Down Sheet Rock | 5d | 2026-08-11 A | 2026-09-17 A | B120004.1040 | 100% |  |  |
| B120004.1090 |  | DH1200/Electrical Room #5204 // Rough Wall Inspspection (Approval to Close up) | 1d | 2026-08-13 A | 2026-09-17 A | B120004.1060 | 100% |  |  |
| F.1000A.1196 |  | DH1200/Electrical Room #5204 // Rough-In Security | 2d | 2026-08-13 A | 2026-09-18 A | B120004.1020 | 100% |  |  |
| B120004.1080 |  | DH1200/Electrical Room #5204 // Install Overhead Buss duct | 2d | 2026-08-18 A | 2026-09-23 A | B120004.1020, B120004.1070 | 100% |  |  |
| B120004.1130 |  | DH1200/Electrical Room #5204 // Install MEPF Overhead Ceiling Rough | 3d | 2026-08-19 A | 2026-09-21 A | B120004.1020 | 100% |  |  |
| B120004.1140 |  | DH1200/Electrical Room #5204 // Install Cable Tray | 3d | 2026-08-19 A | 2026-09-21 A | B120004.1020 | 100% |  |  |
| B120004.1110 |  | DH1200/Electrical Room #5204 // Tape and Finish Walls | 6d | 2026-09-25 A | 2026-10-07 | B120004.1090 |  | 1d |  |
| B120004.1120 |  | DH1200/Electrical Room #5204 // Prime and First Coat of Paint | 2d | 2026-09-29 A | 2026-10-02 | B120004.1110 SS+2d, B120004.1140, B120004.1100 FF |  | 0d |  |
| B120001.3114 |  | DH1200/Electrical Room #5204 // Install Overhead HAC - TFO | 5d | 2026-09-30 | 2026-10-06 | B120001.3113 FF |  | 4d |  |
| B120004.1100 |  | DH1200/Electrical Room #5204 // Install Balance of Sheetrock | 3d | 2026-09-30 | 2026-10-02 | B120004.1090 |  | 0d |  |
| B120004.1180 |  | DH1200/Electrical Room #5204 // Pull Misc Feeder and Branch Circuits | 4d | 2026-09-30 | 2026-10-05 | B120004.1130 |  | 9d |  |
| B120004.1200 |  | DH1200/Electrical Room #5204 // Pull Cable Tray Feeders (CRAHU/CDU) | 10d | 2026-09-30 | 2026-10-14 | B120004.1140 |  | -6d |  |
| F.1000A.1197 |  | DH1200/Electrical Room #5204 // Pull & Test Security Cable | 3d | 2026-09-30 | 2026-10-02 | F.1000A.1196 |  | 51d |  |
| F.1000A.1395 |  | DH1200/Electrical Room #5204 // BMS & EPMS Rough-In | 2d | 2026-09-30 | 2026-10-01 | F.1000A.1196 FF, F.1000A.1196 SS |  | 61d |  |
| B120004.3036 |  | DH1200/Electrical Room #5204 // Ready to Receive Equipment | 0d | 2026-10-02 | 2026-10-02 | B120004.1120 FF |  | 2d |  |
| B120004.1150 |  | DH1200/Electrical Room #5204 // Set CRAH-ER5204- 01 | 1d | 2026-10-05 | 2026-10-05 | B120004.1120 |  | 0d |  |
| B120004.3031 |  | DH1200/Electrical Room #5204 // Set CRAH-ER5204- 02 | 1d | 2026-10-05 | 2026-10-05 | B120004.1150 SS |  | 0d |  |
| B120004.3032 |  | DH1200/Electrical Room #5204 // Set CRAH-ER5204- 03 | 1d | 2026-10-05 | 2026-10-05 | B120004.3031 SS |  | 0d |  |
| B120004.3033 |  | DH1200/Electrical Room #5204 // Set CRAH-ER5204- 04 | 1d | 2026-10-05 | 2026-10-05 | B120004.3032 SS |  | 0d |  |
| B120004.3034 |  | DH1200/Electrical Room #5204 // Set CRAH-ER5204- 05 | 1d | 2026-10-05 | 2026-10-05 | B120004.3033 SS |  | 0d |  |
| B120004.3035 |  | DH1200/Electrical Room #5204 // Set CRAH-ER5204- 06 | 1d | 2026-10-05 | 2026-10-05 | B120004.3034 SS |  | 0d |  |
| F.1000A.1198 |  | DH1200/Electrical Room #5204 // Install Security Devices | 2d | 2026-10-05 | 2026-10-06 | F.1000A.1197 |  | 51d |  |
| B120001.3220 |  | DH1200/Electrical Room #5204 // DH1200 - OFCI Skid Ship Date (10/06/2026) 2ND Shipment | 0d | 2026-10-06 | 2026-10-06 | B120004.3036 FF |  | 1d | finish on or after 2026-10-06 |
| B120004.1160 |  | DH1200/Electrical Room #5204 // Mechanical Connections to CRAHU | 5d | 2026-10-06 | 2026-10-13 | B120004.3035 |  | 2d |  |
| B120004.1260 |  | DH1200/Electrical Room #5204 // Land and Terminate Misc Feeder and Branch Circuits | 10d | 2026-10-07 | 2026-10-21 | B120001.3114 |  | 4d |  |
| B120004.1210 |  | DH1200/Electrical Room #5204 // Install Condensate lines from CRAHU's | 2d | 2026-10-14 | 2026-10-15 | B120004.1160 |  | 3d |  |
| B120004.1220 |  | DH1200/Electrical Room #5204 // Install Elec Feeders to CRAHU's | 3d | 2026-10-14 | 2026-10-16 | B120004.1160, B120004.1140 |  | 2d |  |
| ER.5101.3050 |  | DH1200/Electrical Room #5204 // Set Skid - SKID-F120 | 1d | 2026-10-14 | 2026-10-14 | ER.5101.3049, B120001.3220 |  | -4d |  |
| ER.5101.3051 |  | DH1200/Electrical Room #5204 // Set Skid - SKID-G120 | 1d | 2026-10-14 | 2026-10-14 | ER.5101.3050 SS |  | -4d |  |
| B120004.1280 |  | DH1200/Electrical Room #5204 // Land and Terminate Cabel Tray Feeders In Gear | 10d | 2026-10-15 | 2026-10-28 | B120004.1200, B120004.3035 |  | -6d |  |
| ER.5101.3052 |  | DH1200/Electrical Room #5204 // Set Skid - SKID-H120 | 1d | 2026-10-15 | 2026-10-15 | ER.5101.3051 |  | -4d |  |
| ER.5101.3053 |  | DH1200/Electrical Room #5204 // Set Skid - SKID-J120 | 1d | 2026-10-15 | 2026-10-15 | ER.5101.3052 SS |  | -4d |  |
| ER.5101.3054 |  | DH1200/Electrical Room #5204 // Set Skid - SKID-K120 | 1d | 2026-10-15 | 2026-10-15 | ER.5101.3053 SS |  | -4d |  |
| B120004.1190 |  | DH1200/Electrical Room #5204 // Install Cable Buss From Exterior | 3d | 2026-10-16 | 2026-10-20 | ER.5101.3054, B120004.1140 |  | -4d |  |
| B120004.1230 |  | DH1200/Electrical Room #5204 // Buss Duct Tie In to Elect Gear | 3d | 2026-10-16 | 2026-10-20 | ER.5101.3054, B120004.1080, B120004.1140 |  | 5d |  |
| B120004.3046 |  | DH1200/Electrical Room #5204 // Pull Misc Feeder and Branch Circuits | 6d | 2026-10-16 | 2026-10-23 | B120004.1180, ER.5101.3054 |  | 2d |  |
| B120004.1240 |  | DH1200/Electrical Room #5204 // Pull Cable Buss Feeders | 6d | 2026-10-21 | 2026-10-28 | ER.5101.3054, B120004.1190 |  | -4d |  |

| ID | WBS | Task | Duration | Start | Finish | Predecessors | Complete | Total float |
| --- | --- | --- | --- | --- | --- | --- | --- | --- |
| B120004.1290 |  | DH1200/Electrical Room #5204 // Install Lighting, Fire Alarm & Fire Protection | 2d | 2026-10-22 | 2026-10-23 | B120004.1130, B120004.1260 |  | 34d |
| B120004.1050 |  | DH1200/Electrical Room #5204 // Install Door Frames | 1d | 2026-10-26 | 2026-10-26 | B120004.1040 FF, B120004.1290, B120004.3035 |  | 34d |
| F.1000A.1199 |  | DH1200/Electrical Room #5204 // Mount & Terminate Security Devices | 5d | 2026-10-26 | 2026-10-30 | F.1000A.1198, B120004.1290 |  | 39d |
| B120004.1300 |  | DH1200/Electrical Room #5204 // Wall Touch up Final Coat of Paint | 3d | 2026-10-27 | 2026-10-29 | B120004.1050 |  | 34d |
| B120004.1250 |  | DH1200/Electrical Room #5204 // Mechanical Equipment Pre-Start up | 7d | 2026-10-29 | 2026-11-06 | B120004.1220, B120004.1210, B120004.1160, B120004.1280 |  | -6d |
| B120004.1270 |  | DH1200/Electrical Room #5204 // Terminate Cable Buss Feeders | 3d | 2026-10-29 | 2026-11-02 | PS936, B120004.1240 |  | -4d |
| B120004.1320 |  | DH1200/Electrical Room #5204 // Install Wall Base, Trim, and Devices | 3d | 2026-10-30 | 2026-11-03 | B120004.1300 |  | 34d |
| B120004.1310 |  | DH1200/Electrical Room #5204 // Final FOD Check of all Panels | 2d | 2026-11-03 | 2026-11-04 | B120004.1270, B120004.1280, B120004.1230, B120004.1260, B120004.3046 |  | -4d |
| B120004.1330 |  | DH1200/Electrical Room #5204 // Suffolk Pre Punch | 5d | 2026-11-04 | 2026-11-10 | B120004.1320 |  | 34d |
| F.1000A.1200 |  | DH1200/Electrical Room #5204 // Test Security Devices | 2d | 2026-11-04 | 2026-11-05 | F.1000A.1395 FF, F.1000A.1199, B120004.1320 |  | 37d |
|  | 3 | **Data Hall 1200** |  | 2026-08-04 | 2026-11-13 |  |  |  |
| B12000.6270 |  | DH 1200 // MEPF overhead layout | 3d | 2026-08-04 A | 2026-08-06 A | B120004.1010 | 100% |  |
| B12000.6300 |  | DH 1200 // Frame walls | 10d | 2026-08-04 A | 2026-08-17 A | B12000.6270 SS | 100% |  |
| B12000.6290 |  | DH 1200 // MEPF high overhead install | 10d | 2026-08-10 A | 2026-09-15 A | B12000.6270 | 100% |  |
| B12000.12067 |  | DH 1200 // Install 1-Side Sheet Rock (DH-Side) | 3d | 2026-08-19 A | 2026-09-17 A | B12000.6300 | 100% |  |
| B12000.6320 |  | DH 1200 // MEP rough in walls | 5d | 2026-08-19 A | 2026-09-16 A | B12000.6300 | 100% |  |
| B12000.6260 |  | DH 1200 // Polish concrete | 5d | 2026-09-11 A | 2026-09-18 A | B12000.6300 | 100% |  |
| B12000.6360 |  | DH 1200 // Tape and finish walls | 15d | 2026-09-18 A | 2026-10-13 | B12000.6320, B12000.12067, B12000.6300 SS | 40% | -9d |
| B120001.3115 |  | DH 1200 // Install Overhead Cable Ladder / 36" Cable Tray - TFO | 5d | 2026-09-24 A | 2026-10-06 | B12000.6290 |  | 39d |
| B12000.6310 |  | DH 1200 // Install wall door frames | 3d | 2026-09-28 A | 2026-10-02 | B12000.6300 FF |  | 43d |
| B12000.6250 |  | DH 1200 // Install overhead MEP and lighting | 5d | 2026-09-29 A | 2026-10-06 | B12000.6290 |  | 43d |
| B12000.7800 |  | DH 1200 // Install Ceiling supports (rods/wires) no grid | 5d | 2026-09-30 | 2026-10-06 | B12000.6300 SS, B12000.6290 |  | 38d |
| B12000.6220 |  | DH 1200 // Install ceiling grid system | 8d | 2026-10-07 | 2026-10-19 | B12000.7800 |  | 38d |
| B120001.3116 |  | DH 1200 // Install Overhead HAC - TFO | 5d | 2026-10-07 | 2026-10-14 | B120001.3115 |  | 39d |
| B12000.6240 |  | DH 1200 // Install ceiling grid tiles | 3d | 2026-10-13 | 2026-10-15 | B12000.6220 SS+3d, B12000.6250 |  | 40d |
| B12000.6410 |  | DH 1200 // Prime and 1st coat of Paint | 5d | 2026-10-14 | 2026-10-20 | B12000.6360, B12000.6260, B12000.6310 |  | 37d |
| F.1000A.1201 |  | DH 1200 // Rough-In Security | 2d | 2026-10-15 | 2026-10-16 | B12000.6290, B120001.3116 |  | 39d |
| F.1000A.1405 |  | DH 1200 // BMS & EPMS Rough-In | 2d | 2026-10-15 | 2026-10-16 | F.1000A.1201 FF, F.1000A.1201 SS |  | 51d |
| F.1000A.1202 |  | DH 1200 // Pull & Test Security Cable | 3d | 2026-10-19 | 2026-10-21 | F.1000A.1201 |  | 39d |
| B12000.7790 |  | DH 1200 // Final Paint & Touch up walls | 5d | 2026-10-21 | 2026-10-27 | B12000.6410, B12000.6220, B12000.6240 |  | 37d |
| F.1000A.1203 |  | DH 1200 // Install Security Devices | 2d | 2026-10-22 | 2026-10-23 | F.1000A.1202 |  | 39d |
| F.1000A.1204 |  | DH 1200 // Mount & Terminate Security Devices | 5d | 2026-10-26 | 2026-10-30 | F.1000A.1203, B12000.6410 |  | 39d |
| B12000.7810 |  | DH 1200 // Install MEPF Trim and Finishes | 5d | 2026-10-28 | 2026-11-03 | B12000.7790 |  | 37d |
| B12000.12096 |  | DH 1200 // Ready to Receive Equipment | 0d | 2026-11-03 | 2026-11-03 | B12000.7810 |  | 53d |
| F.1000A.1205 |  | DH 1200 // Test Security Devices | 2d | 2026-11-04 | 2026-11-05 | F.1000A.1405 FF, F.1000A.1204, B12000.7810 |  | 37d |
| B12000.7820 |  | DH 1200 // Suffolk Pre Punch | 5d | 2026-11-06 | 2026-11-13 | B12000.12096, F.1000A.1205 |  | 51d |
|  | 15 | **PDU Gallery** |  | 2026-08-06 | 2026-10-23 |  |  |  |
| B1200100.1010 |  | DH1200/PDU Gallery // MEPF overhead layout | 5d | 2026-08-06 A | 2026-08-12 A | B12000.6270 | 100% |  |
| B1200100.1040 |  | DH1200/PDU Gallery // Frame walls | 5d | 2026-08-12 A | 2026-08-18 A | B1200100.1010 | 100% |  |
| B1200100.1050 |  | DH1200/PDU Gallery // Install wall door frames | 1d | 2026-08-24 A | 2026-09-10 A | B1200100.1040 | 100% |  |
| B1200100.1060 |  | DH1200/PDU Gallery // Install Sheetrock Top Down | 3d | 2026-08-25 A | 2026-09-14 A | B1200100.1050, B1200100.1040 SS | 100% |  |
| B1200100.1711 |  | DH1200/PDU Gallery // MEP rough in walls | 3d | 2026-09-25 A | 2026-10-02 | B1200100.1060 |  | 9d |
| B1200100.1030 |  | DH1200/PDU Gallery // MEPF high overhead install | 3d | 2026-09-29 A | 2026-10-02 | B1200100.1060, B1200100.1010 SS |  | 53d |
| B1200100.1070 |  | DH1200/PDU Gallery // In wall inspection | 1d | 2026-10-05 | 2026-10-05 | B1200100.1060, B1200100.1711 |  | 9d |
| B1200100.1080 |  | DH1200/PDU Gallery // Install sheetrock on walls | 5d | 2026-10-06 | 2026-10-13 | B1200100.1070 |  | 9d |
| B1200100.1090 |  | DH1200/PDU Gallery // Tape and finish walls | 1d | 2026-10-14 | 2026-10-14 | B1200100.1080 |  | 9d |
| B1200100.1000 |  | DH1200/PDU Gallery // Seal concrete | 5d | 2026-10-15 | 2026-10-21 | B1200100.1090, B1200100.1030 |  | 46d |
| B1200100.1110 |  | DH1200/PDU Gallery // Install Cable Tray (From Elec Rm 5201 to CRAHU Gallery) | 2d | 2026-10-15 | 2026-10-16 | B1200100.1090, B120001.1180 |  | 9d |
| B1200100.1100 |  | DH1200/PDU Gallery // Paint walls | 2d | 2026-10-22 | 2026-10-23 | B1200100.1090, B1200100.1000 |  | 46d |
| B1200100.1712 |  | DH1200/PDU Gallery // Ready to Receive Equipment | 0d | 2026-10-23 | 2026-10-23 | B1200100.1100 FF |  | 46d |
|  | 14 | **CRAH/CDU Galleries** |  | 2026-07-28 | 2026-11-27 |  |  |  |
|  | 2 | **Gallery 1202** |  | 2026-07-29 | 2026-11-17 |  |  |  |
|  | 4 | **Architectural** |  | 2026-07-29 | 2026-11-03 |  |  |  |
| B1200.4660 |  | DH 1200/Gallery 1202 // Seal concrete | 2d | 2026-07-29 A | 2026-07-30 A | B120004.1000 SS | 100% |  |
| B1200.4670 |  | DH 1200/Gallery 1202 // MEPF overhead layout | 5d | 2026-08-03 A | 2026-08-07 A | B1200.4660 | 100% |  |
| B1200.4700 |  | DH 1200/Gallery 1202 // Frame walls | 6d | 2026-08-10 A | 2026-08-17 A | B1200.4670 | 100% |  |
| B1200.4720 |  | DH 1200/Gallery 1202 // Install Sheetrock Top Down | 6d | 2026-08-13 A | 2026-09-21 A | B1200.4700 | 100% |  |
| B1200.4690 |  | DH 1200/Gallery 1202 // MEPF high overhead install | 10d | 2026-08-21 A | 2026-09-23 A | B1200.4720 SS, B1200.4670 | 100% |  |
| B1200.4750 |  | DH 1200/Gallery 1202 // Install Balance of Sheetrock on walls | 6d | 2026-09-04 A | 2026-09-23 A | B1200.4690 SS+2d | 100% |  |
| B1200.4710 |  | DH 1200/Gallery 1202 // Install wall door frames | 1d | 2026-09-16 A | 2026-09-16 A | B1200.4670, B1200.4700 | 100% |  |
| B1200.4770 |  | DH 1200/Gallery 1202 // Tape and finish walls | 8d | 2026-09-16 A | 2026-09-23 A | B1200.4750 FF | 100% |  |
| B1200.4730 |  | DH 1200/Gallery 1202 // MEP rough in walls | 4d | 2026-09-24 A | 2026-10-05 | B1200.4750, B1200.4720 |  | -8d |
| B120001.3117 |  | DH 1200/Gallery 1202 // Install Overhead Cable Ladder / 36" Cable Tray - TFO | 5d | 2026-09-24 A | 2026-10-06 | B1200.4670 |  | 39d |
| B120001.3118 |  | DH 1200/Gallery 1202 // Install Overhead HAC - TFO | 5d | 2026-09-24 A | 2026-10-06 | B120001.3117 FF |  | 39d |
| B1200.4740 |  | DH 1200/Gallery 1202 // In wall inspection | 1d | 2026-10-06 | 2026-10-06 | B1200.4730 |  | -8d |
| B1200.4800 |  | DH 1200/Gallery 1202 // Touch up Walls and Fianl Paint | 5d | 2026-10-06 | 2026-10-13 | B1200.4710, B1200.4790 FF |  | -8d |
| B1200.4790 |  | DH 1200/Gallery 1202 // Prime and Paint walls | 4d | 2026-10-07 | 2026-10-13 | B1200.4740, B1200.4770 |  | -8d |
| F.1000A.1206 |  | DH 1200/Gallery 1202 // Rough-In Security | 2d | 2026-10-07 | 2026-10-08 | B1200.4670, B120001.3118 |  | 39d |
| F.1000A.1415 |  | DH 1200/Gallery 1202 // BMS & EPMS Rough-In | 2d | 2026-10-07 | 2026-10-08 | F.1000A.1206 FF, F.1000A.1206 SS |  | 51d |
| B1200.4810 |  | DH 1200/Gallery 1202 // Install Trim and Devices | 2d | 2026-10-09 | 2026-10-13 | B1200.4800 FF |  | -8d |

| ID | WBS | Task | Duration | Start | Finish | Predecessors | Total float |
| --- | --- | --- | --- | --- | --- | --- | --- |
| F.1000A.1207 |  | DH 1200/Gallery 1202 // Pull & Test Security Cable | 3d | 2026-10-09 | 2026-10-14 | F.1000A.1206 | 39d |
| B1200.4821 |  | DH 1200/Gallery 1202 // Ready to Receive Equipment | 0d | 2026-10-14 | 2026-10-14 | B1200.4810 | -8d |
| F.1000A.1208 |  | DH 1200/Gallery 1202 // Install Security Devices | 2d | 2026-10-15 | 2026-10-16 | F.1000A.1207 | 39d |
| F.1000A.1209 |  | DH 1200/Gallery 1202 // Mount & Terminate Security Devices | 5d | 2026-10-19 | 2026-10-23 | F.1000A.1208, B1200.4790 | 39d |
| F.1000A.1210 |  | DH 1200/Gallery 1202 // Test Security Devices | 2d | 2026-10-26 | 2026-10-27 | F.1000A.1415 FF, F.1000A.1209, B1200.4810 | 39d |
| B1200.4820 |  | DH 1200/Gallery 1202 // Suffolk Pre Punch | 5d | 2026-10-28 | 2026-11-03 | B1200.4821 SS, F.1000A.1210 | 39d |
|  | 16 | **Raceway** |  |  |  |  |  |
|  | 3 | **Equipment Line-Ups** |  | 2026-10-14 | 2026-11-17 |  |  |
|  | 1 | **A120** |  | 2026-10-14 | 2026-11-16 |  |  |
| B12000-A-EQP-1 |  | Gallery 1202 - A120/Line-Ups // Set CRAH-DH1200- 23 | 1d | 2026-10-14 | 2026-10-14 | B12000.6360, B1200.4821 SS | -8d |
| B12000-A-EQP-3 |  | Gallery 1202 - A120/Line-Ups // Set CRAH-DH1200- 24 | 1d | 2026-10-14 | 2026-10-14 | B12000-A-EQP-1 SS | -8d |
| B12000-A-EQP-5 |  | Gallery 1202 - A120/Line-Ups // Set MOD-A120-01 | 1d | 2026-10-14 | 2026-10-14 | B12000-A-EQP-3 FF | 38d |
| B12000-A-EQP-6 |  | Gallery 1202 - A120/Line-Ups // Set MOD-A120-02 | 1d | 2026-10-14 | 2026-10-14 | B12000-A-EQP-5 SS | 38d |
| B12000-A-EQP-10 |  | Gallery 1202 - A120/Line-Ups // Pull Cable Tray Feed from MOD to CRAHU's | 5d | 2026-10-15 | 2026-10-21 | B12000-A-EQP-6 | 39d |
| B12000-A-EQP-12 |  | Gallery 1202 - A120/Line-Ups // Mount Electrial Gear for Chiller Controls | 5d | 2026-10-15 | 2026-10-21 | B12000-A-EQP-6 | 38d |
| B12000-A-EQP-7 |  | Gallery 1202 - A120/Line-Ups // Set CDU-DH1200- 21 | 1d | 2026-10-15 | 2026-10-15 | B12000-A-EQP-1 | 33d |
| B12000-A-EQP-9 |  | Gallery 1202 - A120/Line-Ups // Pull Feeder from SWD to MOD | 1d | 2026-10-15 | 2026-10-15 | B12000-A-EQP-6 | 49d |
| B12000-A-EQP-8 |  | Gallery 1202 - A120/Line-Ups // Set CDU-DH1200- 22 | 1d | 2026-10-16 | 2026-10-16 | B12000-A-EQP-3, B12000-A-EQP-7 | 33d |
| B12000-A-EQP-4 |  | Gallery 1202 - A120/Line-Ups // Condensate connections to Floor Drains | 10d | 2026-10-19 | 2026-10-30 | B12000-A-EQP-8, B12000-A-EQP-7, B12000-A-EQP-3 | 33d |
| B12000-A-EQP-11 |  | Gallery 1202 - A120/Line-Ups // Mechanical Connections to CRAHU Units | 5d | 2026-10-21 | 2026-10-27 | B12000-A-EQP-3 SS+5d | 31d |
| B12000-A-EQP-17 |  | Gallery 1202 - A120/Line-Ups // Pull Feeder and Branch circuits to MIsc equipment and Chiller controls | 5d | 2026-10-21 | 2026-10-27 | B12000-A-EQP-12 SS+4d | 38d |
| B12000-A-EQP-13 |  | Gallery 1202 - A120/Line-Ups // Pull Cable Tray Feed from MOD to CRAHU's | 5d | 2026-10-22 | 2026-10-28 | B12000-A-EQP-10 | 39d |
| B12000-A-EQP-16 |  | Gallery 1202 - A120/Line-Ups // Terminate CRAHU Electrical Connections | 5d | 2026-10-26 | 2026-10-30 | B12000-A-EQP-10, B12000-A-EQP-13 SS+2d | 39d |
| B12000-A-EQP-19 |  | Gallery 1202 - A120/Line-Ups // Teminate all Misc Equipment and Chiller Controls | 5d | 2026-10-27 | 2026-11-02 | B12000-A-EQP-17 SS+4d | 38d |
| B12000-A-EQP-14 |  | Gallery 1202 - A120/Line-Ups // Condensate connections to Floor Drains | 10d | 2026-10-28 | 2026-11-10 | B12000-A-EQP-4 SS+5d, B12000-A-EQP-11 SS+5d | 31d |
| B12000-A-EQP-15 |  | Gallery 1202 - A120/Line-Ups // Terminate Mod Panels | 1d | 2026-10-29 | 2026-10-29 | B12000-A-EQP-9, B12000-A-EQP-10, B12000-A-EQP-13 | 40d |
| B12000-A-EQP-20 |  | Gallery 1202 - A120/Line-Ups // Electrical Gear FOD Inspection Pre-Start Up | 2d | 2026-11-03 | 2026-11-04 | B1200352, B12000-A-EQP-15, B12000-A-EQP-19, B12000-A-EQP-16 | 38d |
| B12000-A-EQP-18 |  | Gallery 1202 - A120/Line-Ups // Mechanical Gear FOD Inspection Pre-Start Up | 3d | 2026-11-12 | 2026-11-16 | B12000-A-EQP-11, B12000-A-EQP-4, B12000-A-EQP-14, B12000-A-EQP-3 | 31d |
|  | 2 | **B120** |  | 2026-10-14 | 2026-11-16 |  |  |
| B12000-A-EQP-21 |  | Gallery 1202 - B120/Line-Ups // Set CRAH-DH1200- 25 | 1d | 2026-10-14 | 2026-10-14 | B12000-A-EQP-3 SS | -8d |
| B12000-A-EQP-23 |  | Gallery 1202 - B120/Line-Ups // Set CRAH-DH1200- 26 | 1d | 2026-10-14 | 2026-10-14 | B12000-A-EQP-21 SS | -8d |
| B12000-A-EQP-25 |  | Gallery 1202 - B120/Line-Ups // Set MOD-B120-01 | 1d | 2026-10-14 | 2026-10-14 | B12000-A-EQP-23 FF | 33d |
| B12000-A-EQP-26 |  | Gallery 1202 - B120/Line-Ups // Set MOD-B120-02 | 1d | 2026-10-14 | 2026-10-14 | B12000-A-EQP-25 SS | 33d |
| B12000-A-EQP-27 |  | Gallery 1202 - B120/Line-Ups // Set CDU-DH1200- 23 | 1d | 2026-10-15 | 2026-10-15 | B12000-A-EQP-21 | 33d |
| B12000-A-EQP-29 |  | Gallery 1202 - B120/Line-Ups // Pull Feeder from SWD to MOD | 1d | 2026-10-15 | 2026-10-15 | B12000-A-EQP-26 | 49d |
| B12000-A-EQP-30 |  | Gallery 1202 - B120/Line-Ups // Pull Cable Tray Feed from MOD to CRAHU's | 5d | 2026-10-15 | 2026-10-21 | B12000-A-EQP-26 | 39d |
| B12000-A-EQP-32 |  | Gallery 1202 - B120/Line-Ups // Mount Electrial Gear for Chiller Controls | 10d | 2026-10-15 | 2026-10-28 | B12000-A-EQP-26 | 33d |
| B12000-A-EQP-28 |  | Gallery 1202 - B120/Line-Ups // Set CDU-DH1200- 24 | 1d | 2026-10-16 | 2026-10-16 | B12000-A-EQP-23, B12000-A-EQP-27 | 33d |
| B12000-A-EQP-24 |  | Gallery 1202 - B120/Line-Ups // Condensate connections to Floor Drains | 10d | 2026-10-19 | 2026-10-30 | B12000-A-EQP-28, B12000-A-EQP-27, B12000-A-EQP-23 | 33d |
| B12000-A-EQP-31 |  | Gallery 1202 - B120/Line-Ups // Mechanical Connections to CRAHU Units | 10d | 2026-10-21 | 2026-11-03 | B12000-A-EQP-23 SS+5d | 31d |
| B12000-A-EQP-37 |  | Gallery 1202 - B120/Line-Ups // Pull Feeder and Branch circuits to MIsc equipment and Chiller controls | 10d | 2026-10-21 | 2026-11-03 | B12000-A-EQP-32 SS+4d | 33d |
| B12000-A-EQP-33 |  | Gallery 1202 - B120/Line-Ups // Pull Cable Tray Feed from MOD to CRAHU's | 5d | 2026-10-22 | 2026-10-28 | B12000-A-EQP-30 | 39d |
| B12000-A-EQP-36 |  | Gallery 1202 - B120/Line-Ups // Terminate CRAHU Electrical Connections | 5d | 2026-10-26 | 2026-10-30 | B12000-A-EQP-30, B12000-A-EQP-33 SS+2d | 39d |
| B12000-A-EQP-39 |  | Gallery 1202 - B120/Line-Ups // Teminate all Misc Equipment and Chiller Controls | 10d | 2026-10-27 | 2026-11-09 | B12000-A-EQP-37 SS+4d | 33d |
| B12000-A-EQP-34 |  | Gallery 1202 - B120/Line-Ups // Condensate connections to Floor Drains | 10d | 2026-10-28 | 2026-11-10 | B12000-A-EQP-24 SS+5d, B12000-A-EQP-31 SS+5d | 31d |
| B12000-A-EQP-35 |  | Gallery 1202 - B120/Line-Ups // Terminate Mod Panels | 1d | 2026-10-29 | 2026-10-29 | B12000-A-EQP-29, B12000-A-EQP-30, B12000-A-EQP-33 | 40d |
| B12000-A-EQP-40 |  | Gallery 1202 - B120/Line-Ups // Electrical Gear FOD Inspection Pre-Start Up | 2d | 2026-11-10 | 2026-11-12 | B1200354, B12000-A-EQP-35, B12000-A-EQP-39, B12000-A-EQP-36 | 33d |
| B12000-A-EQP-38 |  | Gallery 1202 - B120/Line-Ups // Mechanical Gear FOD Inspection Pre-Start Up | 3d | 2026-11-12 | 2026-11-16 | B12000-A-EQP-31, B12000-A-EQP-24, B12000-A-EQP-34, B12000-A-EQP-23 | 31d |
|  | 3 | **C120** |  | 2026-10-14 | 2026-11-16 |  |  |
| B12000-A-EQP-41 |  | Gallery 1202 - C120/Line-Ups // Set CRAH-DH1200- 27 | 1d | 2026-10-14 | 2026-10-14 | B12000-A-EQP-23 SS | -8d |
| B12000-A-EQP-43 |  | Gallery 1202 - C120/Line-Ups // Set CRAH-DH1200- 28 | 1d | 2026-10-14 | 2026-10-14 | B12000-A-EQP-41 SS | -8d |
| B12000-A-EQP-45 |  | Gallery 1202 - C120/Line-Ups // Set MOD-C120-01 | 1d | 2026-10-14 | 2026-10-14 | B12000-A-EQP-43 FF | 33d |
| B12000-A-EQP-46 |  | Gallery 1202 - C120/Line-Ups // Set MOD-C120-02 | 1d | 2026-10-14 | 2026-10-14 | B12000-A-EQP-45 SS | 33d |
| B12000-A-EQP-47 |  | Gallery 1202 - C120/Line-Ups // Set CDU-DH1200- 25 | 1d | 2026-10-15 | 2026-10-15 | B12000-A-EQP-41 | 33d |
| B12000-A-EQP-49 |  | Gallery 1202 - C120/Line-Ups // Pull Feeder from SWD to MOD | 1d | 2026-10-15 | 2026-10-15 | B12000-A-EQP-46 | 49d |
| B12000-A-EQP-50 |  | Gallery 1202 - C120/Line-Ups // Pull Cable Tray Feed from MOD to CRAHU's | 5d | 2026-10-15 | 2026-10-21 | B12000-A-EQP-46 | 39d |
| B12000-A-EQP-52 |  | Gallery 1202 - C120/Line-Ups // Mount Electrial Gear for Chiller Controls | 10d | 2026-10-15 | 2026-10-28 | B12000-A-EQP-46 | 33d |
| B12000-A-EQP-48 |  | Gallery 1202 - C120/Line-Ups // Set CDU-DH1200- 26 | 1d | 2026-10-16 | 2026-10-16 | B12000-A-EQP-43, B12000-A-EQP-47 | 33d |
| B12000-A-EQP-44 |  | Gallery 1202 - C120/Line-Ups // Condensate connections to Floor Drains | 10d | 2026-10-19 | 2026-10-30 | B12000-A-EQP-48, B12000-A-EQP-47, B12000-A-EQP-43 | 33d |
| B12000-A-EQP-51 |  | Gallery 1202 - C120/Line-Ups // Mechanical Connections to CRAHU Units | 10d | 2026-10-21 | 2026-11-03 | B12000-A-EQP-43 SS+5d | 31d |
| B12000-A-EQP-57 |  | Gallery 1202 - C120/Line-Ups // Pull Feeder and Branch circuits to MIsc equipment and Chiller controls | 10d | 2026-10-21 | 2026-11-03 | B12000-A-EQP-52 SS+4d | 33d |
| B12000-A-EQP-53 |  | Gallery 1202 - C120/Line-Ups // Pull Cable Tray Feed from MOD to CRAHU's | 5d | 2026-10-22 | 2026-10-28 | B12000-A-EQP-50 | 39d |
| B12000-A-EQP-56 |  | Gallery 1202 - C120/Line-Ups // Terminate CRAHU Electrical Connections | 5d | 2026-10-26 | 2026-10-30 | B12000-A-EQP-50, B12000-A-EQP-53 SS+2d | 39d |
| B12000-A-EQP-59 |  | Gallery 1202 - C120/Line-Ups // Teminate all Misc Equipment and Chiller Controls | 10d | 2026-10-27 | 2026-11-09 | B12000-A-EQP-57 SS+4d | 33d |
| B12000-A-EQP-54 |  | Gallery 1202 - C120/Line-Ups // Condensate connections to Floor Drains | 10d | 2026-10-28 | 2026-11-10 | B12000-A-EQP-44 SS+5d, B12000-A-EQP-51 SS+5d | 31d |
| B12000-A-EQP-55 |  | Gallery 1202 - C120/Line-Ups // Terminate Mod Panels | 1d | 2026-10-29 | 2026-10-29 | B12000-A-EQP-49, B12000-A-EQP-50, B12000-A-EQP-53 | 40d |
| B12000-A-EQP-60 |  | Gallery 1202 - C120/Line-Ups // Electrical Gear FOD Inspection Pre-Start Up | 2d | 2026-11-10 | 2026-11-12 | B1200356, B12000-A-EQP-55, B12000-A-EQP-59, B12000-A-EQP-56 | 33d |
| B12000-A-EQP-58 |  | Gallery 1202 - C120/Line-Ups // Mechanical Gear FOD Inspection Pre-Start Up | 3d | 2026-11-12 | 2026-11-16 | B12000-A-EQP-51, B12000-A-EQP-44, B12000-A-EQP-54, B12000-A-EQP-43 | 31d |
|  | 4 | **D120** |  | 2026-10-15 | 2026-11-17 |  |  |
| B12000-A-EQP-61 |  | Gallery 1202 - D120/Line-Ups // Set CRAH-DH1200- 28 | 1d | 2026-10-15 | 2026-10-15 | B12000-A-EQP-43 | -8d |

| ID | WBS | Task | Duration | Start | Finish | Predecessors | Total float |
| --- | --- | --- | --- | --- | --- | --- | --- |
| B12000-A-EQP-63 |  | Gallery 1202 - D120/Line-Ups // Set CRAH-DH1200- 29 | 1d | 2026-10-15 | 2026-10-15 | B12000-A-EQP-61 SS | -8d |
| B12000-A-EQP-65 |  | Gallery 1202 - D120/Line-Ups // Set MOD-D120-01 | 1d | 2026-10-15 | 2026-10-15 | B12000-A-EQP-63 FF | 32d |
| B12000-A-EQP-66 |  | Gallery 1202 - D120/Line-Ups // Set MOD-D120-02 | 1d | 2026-10-15 | 2026-10-15 | B12000-A-EQP-65 SS | 32d |
| B12000-A-EQP-67 |  | Gallery 1202 - D120/Line-Ups // Set CDU-DH1200- 27 | 1d | 2026-10-16 | 2026-10-16 | B12000-A-EQP-61 | 32d |
| B12000-A-EQP-69 |  | Gallery 1202 - D120/Line-Ups // Pull Feeder from SWD to MOD | 1d | 2026-10-16 | 2026-10-16 | B12000-A-EQP-66 | 48d |
| B12000-A-EQP-70 |  | Gallery 1202 - D120/Line-Ups // Pull Cable Tray Feed from MOD to CRAHU's | 5d | 2026-10-16 | 2026-10-22 | B12000-A-EQP-66 | 38d |
| B12000-A-EQP-72 |  | Gallery 1202 - D120/Line-Ups // Mount Electrial Gear for Chiller Controls | 10d | 2026-10-16 | 2026-10-29 | B12000-A-EQP-66 | 32d |
| B12000-A-EQP-68 |  | Gallery 1202 - D120/Line-Ups // Set CDU-DH1200- 28 | 1d | 2026-10-19 | 2026-10-19 | B12000-A-EQP-63, B12000-A-EQP-67 | 32d |
| B12000-A-EQP-64 |  | Gallery 1202 - D120/Line-Ups // Condensate connections to Floor Drains | 10d | 2026-10-20 | 2026-11-02 | B12000-A-EQP-68, B12000-A-EQP-67, B12000-A-EQP-63 | 32d |
| B12000-A-EQP-71 |  | Gallery 1202 - D120/Line-Ups // Mechanical Connections to CRAHU Units | 10d | 2026-10-22 | 2026-11-04 | B12000-A-EQP-63 SS+5d | 30d |
| B12000-A-EQP-77 |  | Gallery 1202 - D120/Line-Ups // Pull Feeder and Branch circuits to MIsc equipment and Chiller controls | 10d | 2026-10-22 | 2026-11-04 | B12000-A-EQP-72 SS+4d | 32d |
| B12000-A-EQP-73 |  | Gallery 1202 - D120/Line-Ups // Pull Cable Tray Feed from MOD to CRAHU's | 5d | 2026-10-23 | 2026-10-29 | B12000-A-EQP-70 | 38d |
| B12000-A-EQP-76 |  | Gallery 1202 - D120/Line-Ups // Terminate CRAHU Electrical Connections | 5d | 2026-10-27 | 2026-11-02 | B12000-A-EQP-70, B12000-A-EQP-73 SS+2d | 38d |
| B12000-A-EQP-79 |  | Gallery 1202 - D120/Line-Ups // Teminate all Misc Equipment and Chiller Controls | 10d | 2026-10-28 | 2026-11-10 | B12000-A-EQP-77 SS+4d | 32d |
| B12000-A-EQP-74 |  | Gallery 1202 - D120/Line-Ups // Condensate connections to Floor Drains | 10d | 2026-10-29 | 2026-11-12 | B12000-A-EQP-64 SS+5d, B12000-A-EQP-71 SS+5d | 30d |
| B12000-A-EQP-75 |  | Gallery 1202 - D120/Line-Ups // Terminate Mod Panels | 1d | 2026-10-30 | 2026-10-30 | B12000-A-EQP-69, B12000-A-EQP-70, B12000-A-EQP-73 | 39d |
| B12000-A-EQP-80 |  | Gallery 1202 - D120/Line-Ups // Electrical Gear FOD Inspection Pre-Start Up | 2d | 2026-11-12 | 2026-11-13 | B1200358, B12000-A-EQP-75, B12000-A-EQP-79, B12000-A-EQP-76 | 32d |
| B12000-A-EQP-78 |  | Gallery 1202 - D120/Line-Ups // Mechanical Gear FOD Inspection Pre-Start Up | 3d | 2026-11-13 | 2026-11-17 | B12000-A-EQP-71, B12000-A-EQP-64, B12000-A-EQP-74, B12000-A-EQP-63 | 30d |
|  | 5 | **E120** |  | 2026-10-15 | 2026-11-17 |  |  |
| B12000-A-EQP-81 |  | Gallery 1202 - D120/Line-Ups // Set CRAH-DH1200- 30 | 1d | 2026-10-15 | 2026-10-15 | B12000-A-EQP-63 SS | -8d |
| B12000-A-EQP-83 |  | Gallery 1202 - D120/Line-Ups // Set CRAH-DH1200- 31 | 1d | 2026-10-15 | 2026-10-15 | B12000-A-EQP-81 SS | -8d |
| B12000-A-EQP-85 |  | Gallery 1202 - D120/Line-Ups // Set MOD-E120-01 | 1d | 2026-10-15 | 2026-10-15 | B12000-A-EQP-83 FF | 32d |
| B12000-A-EQP-86 |  | Gallery 1202 - D120/Line-Ups // Set MOD-E120-02 | 1d | 2026-10-15 | 2026-10-15 | B12000-A-EQP-85 SS | 32d |
| B12000-A-EQP-87 |  | Gallery 1202 - D120/Line-Ups // Set CDU-DH1200- 29 | 1d | 2026-10-16 | 2026-10-16 | B12000-A-EQP-81 | 32d |
| B12000-A-EQP-89 |  | Gallery 1202 - D120/Line-Ups // Pull Feeder from SWD to MOD | 1d | 2026-10-16 | 2026-10-16 | B12000-A-EQP-86 | 48d |
| B12000-A-EQP-90 |  | Gallery 1202 - D120/Line-Ups // Pull Cable Tray Feed from MOD to CRAHU's | 5d | 2026-10-16 | 2026-10-22 | B12000-A-EQP-86 | 38d |
| B12000-A-EQP-92 |  | Gallery 1202 - D120/Line-Ups // Mount Electrial Gear for Chiller Controls | 10d | 2026-10-16 | 2026-10-29 | B12000-A-EQP-86 | 32d |
| B12000-A-EQP-88 |  | Gallery 1202 - D120/Line-Ups // Set CDU-DH1200- 30 | 1d | 2026-10-19 | 2026-10-19 | B12000-A-EQP-83, B12000-A-EQP-87 | 32d |
| B12000-A-EQP-84 |  | Gallery 1202 - D120/Line-Ups // Condensate connections to Floor Drains | 10d | 2026-10-20 | 2026-11-02 | B12000-A-EQP-88, B12000-A-EQP-87, B12000-A-EQP-83 | 32d |
| B12000-A-EQP-91 |  | Gallery 1202 - D120/Line-Ups // Mechanical Connections to CRAHU Units | 10d | 2026-10-22 | 2026-11-04 | B12000-A-EQP-83 SS+5d | 30d |
| B12000-A-EQP-97 |  | Gallery 1202 - D120/Line-Ups // Pull Feeder and Branch circuits to MIsc equipment and Chiller controls | 10d | 2026-10-22 | 2026-11-04 | B12000-A-EQP-92 SS+4d | 32d |
| B12000-A-EQP-93 |  | Gallery 1202 - D120/Line-Ups // Pull Cable Tray Feed from MOD to CRAHU's | 5d | 2026-10-23 | 2026-10-29 | B12000-A-EQP-90 | 38d |
| B12000-A-EQP-96 |  | Gallery 1202 - D120/Line-Ups // Terminate CRAHU Electrical Connections | 5d | 2026-10-27 | 2026-11-02 | B12000-A-EQP-90, B12000-A-EQP-93 SS+2d | 38d |
| B12000-A-EQP-99 |  | Gallery 1202 - D120/Line-Ups // Teminate all Misc Equipment and Chiller Controls | 10d | 2026-10-28 | 2026-11-10 | B12000-A-EQP-97 SS+4d | 32d |
| B12000-A-EQP-94 |  | Gallery 1202 - D120/Line-Ups // Condensate connections to Floor Drains | 10d | 2026-10-29 | 2026-11-12 | B12000-A-EQP-84 SS+5d, B12000-A-EQP-91 SS+5d | 30d |
| B12000-A-EQP-95 |  | Gallery 1202 - D120/Line-Ups // Terminate Mod Panels | 1d | 2026-10-30 | 2026-10-30 | B12000-A-EQP-89, B12000-A-EQP-90, B12000-A-EQP-93 | 39d |
| B12000-A-EQP-100 |  | Gallery 1202 - D120/Line-Ups // Electrical Gear FOD Inspection Pre-Start Up | 2d | 2026-11-12 | 2026-11-13 | B1200360, B12000-A-EQP-95, B12000-A-EQP-99, B12000-A-EQP-96 | 32d |
| B12000-A-EQP-98 |  | Gallery 1202 - D120/Line-Ups // Mechanical Gear FOD Inspection Pre-Start Up | 3d | 2026-11-13 | 2026-11-17 | B12000-A-EQP-91, B12000-A-EQP-84, B12000-A-EQP-94, B12000-A-EQP-83 | 30d |
|  | 6 | **F120** |  | 2026-10-15 | 2026-11-17 |  |  |
| B12000-A-EQP-101 |  | Gallery 1202 - F120/Line-Ups // Set CRAH-DH1200- 32 | 1d | 2026-10-15 | 2026-10-15 | B12000-A-EQP-83 SS | -8d |
| B12000-A-EQP-103 |  | Gallery 1202 - F120/Line-Ups // Set CRAH-DH1200- 33 | 1d | 2026-10-15 | 2026-10-15 | B12000-A-EQP-101 SS | -8d |
| B12000-A-EQP-105 |  | Gallery 1202 - F120/Line-Ups // Set MOD-F120-01 | 1d | 2026-10-15 | 2026-10-15 | B12000-A-EQP-103 FF | 32d |
| B12000-A-EQP-106 |  | Gallery 1202 - F120/Line-Ups // Set MOD-F120-02 | 1d | 2026-10-15 | 2026-10-15 | B12000-A-EQP-105 SS | 32d |
| B12000-A-EQP-107 |  | Gallery 1202 - F120/Line-Ups // Set CDU-DH1200- 31 | 1d | 2026-10-16 | 2026-10-16 | B12000-A-EQP-101 | 32d |
| B12000-A-EQP-109 |  | Gallery 1202 - F120/Line-Ups // Pull Feeder from SWD to MOD | 1d | 2026-10-16 | 2026-10-16 | B12000-A-EQP-106 | 48d |
| B12000-A-EQP-110 |  | Gallery 1202 - F120/Line-Ups // Pull Cable Tray Feed from MOD to CRAHU's | 5d | 2026-10-16 | 2026-10-22 | B12000-A-EQP-106 | 38d |
| B12000-A-EQP-112 |  | Gallery 1202 - F120/Line-Ups // Mount Electrial Gear for Chiller Controls | 10d | 2026-10-16 | 2026-10-29 | B12000-A-EQP-106 | 32d |
| B12000-A-EQP-108 |  | Gallery 1202 - F120/Line-Ups // Set CDU-DH1200- 32 | 1d | 2026-10-19 | 2026-10-19 | B12000-A-EQP-103, B12000-A-EQP-107 | 32d |
| B12000-A-EQP-104 |  | Gallery 1202 - F120/Line-Ups // Condensate connections to Floor Drains | 10d | 2026-10-20 | 2026-11-02 | B12000-A-EQP-108, B12000-A-EQP-107, B12000-A-EQP-103 | 32d |
| B12000-A-EQP-111 |  | Gallery 1202 - F120/Line-Ups // Mechanical Connections to CRAHU Units | 10d | 2026-10-22 | 2026-11-04 | B12000-A-EQP-103 SS+5d | 30d |
| B12000-A-EQP-117 |  | Gallery 1202 - F120/Line-Ups // Pull Feeder and Branch circuits to MIsc equipment and Chiller controls | 10d | 2026-10-22 | 2026-11-04 | B12000-A-EQP-112 SS+4d | 32d |
| B12000-A-EQP-113 |  | Gallery 1202 - F120/Line-Ups // Pull Cable Tray Feed from MOD to CRAHU's | 5d | 2026-10-23 | 2026-10-29 | B12000-A-EQP-110 | 38d |
| B12000-A-EQP-116 |  | Gallery 1202 - F120/Line-Ups // Terminate CRAHU Electrical Connections | 5d | 2026-10-27 | 2026-11-02 | B12000-A-EQP-110, B12000-A-EQP-113 SS+2d | 38d |
| B12000-A-EQP-119 |  | Gallery 1202 - F120/Line-Ups // Teminate all Misc Equipment and Chiller Controls | 10d | 2026-10-28 | 2026-11-10 | B12000-A-EQP-117 SS+4d | 32d |
| B12000-A-EQP-114 |  | Gallery 1202 - F120/Line-Ups // Condensate connections to Floor Drains | 10d | 2026-10-29 | 2026-11-12 | B12000-A-EQP-104 SS+5d, B12000-A-EQP-111 SS+5d | 30d |
| B12000-A-EQP-115 |  | Gallery 1202 - F120/Line-Ups // Terminate Mod Panels | 1d | 2026-10-30 | 2026-10-30 | B12000-A-EQP-109, B12000-A-EQP-110, B12000-A-EQP-113 | 39d |
| B12000-A-EQP-120 |  | Gallery 1202 - F120/Line-Ups // Electrical Gear FOD Inspection Pre-Start Up | 2d | 2026-11-12 | 2026-11-13 | B1200362, B12000-A-EQP-115, B12000-A-EQP-119, B12000-A-EQP-116 | 32d |
| B12000-A-EQP-118 |  | Gallery 1202 - F120/Line-Ups // Mechanical Gear FOD Inspection Pre-Start Up | 3d | 2026-11-13 | 2026-11-17 | B12000-A-EQP-111, B12000-A-EQP-104, B12000-A-EQP-114, B12000-A-EQP-103 | 30d |
|  | 7 | **G120** |  | 2026-10-15 | 2026-11-17 |  |  |
| B12000-A-EQP-121 |  | Gallery 1202 - G120/Line-Ups // Set CRAH-DH1200- 33 | 1d | 2026-10-15 | 2026-10-15 | B12000-A-EQP-103 SS | -8d |
| B12000-A-EQP-123 |  | Gallery 1202 - G120/Line-Ups // Set CRAH-DH1200- 34 | 1d | 2026-10-15 | 2026-10-15 | B12000-A-EQP-121 SS | -8d |
| B12000-A-EQP-125 |  | Gallery 1202 - G120/Line-Ups // Set MOD-G120-01 | 1d | 2026-10-15 | 2026-10-15 | B12000-A-EQP-123 FF | 32d |
| B12000-A-EQP-126 |  | Gallery 1202 - G120/Line-Ups // Set MOD-G120-02 | 1d | 2026-10-15 | 2026-10-15 | B12000-A-EQP-125 SS | 32d |
| B12000-A-EQP-127 |  | Gallery 1202 - G120/Line-Ups // Set CDU-DH1200- 33 | 1d | 2026-10-16 | 2026-10-16 | B12000-A-EQP-121 | 32d |
| B12000-A-EQP-129 |  | Gallery 1202 - G120/Line-Ups // Pull Feeder from SWD to MOD | 1d | 2026-10-16 | 2026-10-16 | B12000-A-EQP-126 | 48d |
| B12000-A-EQP-130 |  | Gallery 1202 - G120/Line-Ups // Pull Cable Tray Feed from MOD to CRAHU's | 5d | 2026-10-16 | 2026-10-22 | B12000-A-EQP-126 | 38d |
| B12000-A-EQP-132 |  | Gallery 1202 - G120/Line-Ups // Mount Electrial Gear for Chiller Controls | 10d | 2026-10-16 | 2026-10-29 | B12000-A-EQP-126 | 32d |
| B12000-A-EQP-128 |  | Gallery 1202 - G120/Line-Ups // Set CDU-DH1200- 34 | 1d | 2026-10-19 | 2026-10-19 | B12000-A-EQP-123, B12000-A-EQP-127 | 32d |
| B12000-A-EQP-124 |  | Gallery 1202 - G120/Line-Ups // Condensate connections to Floor Drains | 10d | 2026-10-20 | 2026-11-02 | B12000-A-EQP-128, B12000-A-EQP-127, B12000-A-EQP-123 | 32d |
| B12000-A-EQP-131 |  | Gallery 1202 - G120/Line-Ups // Mechanical Connections to CRAHU Units | 10d | 2026-10-22 | 2026-11-04 | B12000-A-EQP-123 SS+5d | 30d |

| ID | WBS | Task | Duration | Start | Finish | Predecessors | Total float |
| --- | --- | --- | --- | --- | --- | --- | --- |
| B12000-A-EQP-137 |  | Gallery 1202 - G120/Line-Ups // Pull Feeder and Branch circuits to MIsc equipment and Chiller controls | 10d | 2026-10-22 | 2026-11-04 | B12000-A-EQP-132 SS+4d | 32d |
| B12000-A-EQP-133 |  | Gallery 1202 - G120/Line-Ups // Pull Cable Tray Feed from MOD to CRAHU's | 5d | 2026-10-23 | 2026-10-29 | B12000-A-EQP-130 | 38d |
| B12000-A-EQP-136 |  | Gallery 1202 - G120/Line-Ups // Terminate CRAHU Electrical Connections | 5d | 2026-10-27 | 2026-11-02 | B12000-A-EQP-130, B12000-A-EQP-133 SS+2d | 38d |
| B12000-A-EQP-139 |  | Gallery 1202 - G120/Line-Ups // Teminate all Misc Equipment and Chiller Controls | 10d | 2026-10-28 | 2026-11-10 | B12000-A-EQP-137 SS+4d | 32d |
| B12000-A-EQP-134 |  | Gallery 1202 - G120/Line-Ups // Condensate connections to Floor Drains | 10d | 2026-10-29 | 2026-11-12 | B12000-A-EQP-124 SS+5d, B12000-A-EQP-131 SS+5d | 30d |
| B12000-A-EQP-135 |  | Gallery 1202 - G120/Line-Ups // Terminate Mod Panels | 1d | 2026-10-30 | 2026-10-30 | B12000-A-EQP-129, B12000-A-EQP-130, B12000-A-EQP-133 | 39d |
| B12000-A-EQP-140 |  | Gallery 1202 - G120/Line-Ups // Electrical Gear FOD Inspection Pre-Start Up | 2d | 2026-11-12 | 2026-11-13 | B1200364, B12000-A-EQP-135, B12000-A-EQP-139, B12000-A-EQP-136 | 32d |
| B12000-A-EQP-138 |  | Gallery 1202 - G120/Line-Ups // Mechanical Gear FOD Inspection Pre-Start Up | 3d | 2026-11-13 | 2026-11-17 | B12000-A-EQP-131, B12000-A-EQP-124, B12000-A-EQP-134, B12000-A-EQP-123 | 30d |
|  | 8 | **H120** |  | 2026-10-15 | 2026-11-17 |  |  |
| B12000-A-EQP-141 |  | Gallery 1202 - H120/Line-Ups // Set CRAH-DH1200- 35 | 1d | 2026-10-15 | 2026-10-15 | B12000-A-EQP-123 SS | -8d |
| B12000-A-EQP-143 |  | Gallery 1202 - H120/Line-Ups // Set CRAH-DH1200- 36 | 1d | 2026-10-15 | 2026-10-15 | B12000-A-EQP-141 SS | -8d |
| B12000-A-EQP-145 |  | Gallery 1202 - H120/Line-Ups // Set MOD-H120-01 | 1d | 2026-10-15 | 2026-10-15 | B12000-A-EQP-143 FF | 32d |
| B12000-A-EQP-146 |  | Gallery 1202 - H120/Line-Ups // Set MOD-H120-02 | 1d | 2026-10-15 | 2026-10-15 | B12000-A-EQP-145 SS | 32d |
| B12000-A-EQP-147 |  | Gallery 1202 - H120/Line-Ups // Set CDU-DH1200- 35 | 1d | 2026-10-16 | 2026-10-16 | B12000-A-EQP-141 | 32d |
| B12000-A-EQP-149 |  | Gallery 1202 - H120/Line-Ups // Pull Feeder from SWD to MOD | 1d | 2026-10-16 | 2026-10-16 | B12000-A-EQP-146 | 48d |
| B12000-A-EQP-150 |  | Gallery 1202 - H120/Line-Ups // Pull Cable Tray Feed from MOD to CRAHU's | 5d | 2026-10-16 | 2026-10-22 | B12000-A-EQP-146 | 38d |
| B12000-A-EQP-152 |  | Gallery 1202 - H120/Line-Ups // Mount Electrial Gear for Chiller Controls | 10d | 2026-10-16 | 2026-10-29 | B12000-A-EQP-146 | 32d |
| B12000-A-EQP-148 |  | Gallery 1202 - H120/Line-Ups // Set CDU-DH1200- 36 | 1d | 2026-10-19 | 2026-10-19 | B12000-A-EQP-143, B12000-A-EQP-147 | 32d |
| B12000-A-EQP-144 |  | Gallery 1202 - H120/Line-Ups // Condensate connections to Floor Drains | 10d | 2026-10-20 | 2026-11-02 | B12000-A-EQP-148, B12000-A-EQP-147, B12000-A-EQP-143 | 32d |
| B12000-A-EQP-151 |  | Gallery 1202 - H120/Line-Ups // Mechanical Connections to CRAHU Units | 10d | 2026-10-22 | 2026-11-04 | B12000-A-EQP-143 SS+5d | 30d |
| B12000-A-EQP-157 |  | Gallery 1202 - H120/Line-Ups // Pull Feeder and Branch circuits to MIsc equipment and Chiller controls | 10d | 2026-10-22 | 2026-11-04 | B12000-A-EQP-152 SS+4d | 32d |
| B12000-A-EQP-153 |  | Gallery 1202 - H120/Line-Ups // Pull Cable Tray Feed from MOD to CRAHU's | 5d | 2026-10-23 | 2026-10-29 | B12000-A-EQP-150 | 38d |
| B12000-A-EQP-156 |  | Gallery 1202 - H120/Line-Ups // Terminate CRAHU Electrical Connections | 5d | 2026-10-27 | 2026-11-02 | B12000-A-EQP-150, B12000-A-EQP-153 SS+2d | 38d |
| B12000-A-EQP-159 |  | Gallery 1202 - H120/Line-Ups // Teminate all Misc Equipment and Chiller Controls | 10d | 2026-10-28 | 2026-11-10 | B12000-A-EQP-157 SS+4d | 32d |
| B12000-A-EQP-154 |  | Gallery 1202 - H120/Line-Ups // Condensate connections to Floor Drains | 10d | 2026-10-29 | 2026-11-12 | B12000-A-EQP-144 SS+5d, B12000-A-EQP-151 SS+5d | 30d |
| B12000-A-EQP-155 |  | Gallery 1202 - H120/Line-Ups // Terminate Mod Panels | 1d | 2026-10-30 | 2026-10-30 | B12000-A-EQP-149, B12000-A-EQP-150, B12000-A-EQP-153 | 39d |
| B12000-A-EQP-160 |  | Gallery 1202 - H120/Line-Ups // Electrical Gear FOD Inspection Pre-Start Up | 2d | 2026-11-12 | 2026-11-13 | B1200366, B12000-A-EQP-155, B12000-A-EQP-159, B12000-A-EQP-156 | 32d |
| B12000-A-EQP-158 |  | Gallery 1202 - H120/Line-Ups // Mechanical Gear FOD Inspection Pre-Start Up | 3d | 2026-11-13 | 2026-11-17 | B12000-A-EQP-151, B12000-A-EQP-144, B12000-A-EQP-154, B12000-A-EQP-143 | 30d |
|  | 9 | **J120** |  | 2026-10-15 | 2026-11-17 |  |  |
| B12000-A-EQP-161 |  | Gallery 1202 - J120/Line-Ups // Set CRAH-DH1200- 37 | 1d | 2026-10-15 | 2026-10-15 | B12000-A-EQP-143 SS | -8d |
| B12000-A-EQP-163 |  | Gallery 1202 - J120/Line-Ups // Set CRAH-DH1200- 38 | 1d | 2026-10-15 | 2026-10-15 | B12000-A-EQP-161 SS | -8d |
| B12000-A-EQP-165 |  | Gallery 1202 - J120/Line-Ups // Set MOD-J120-01 | 1d | 2026-10-15 | 2026-10-15 | B12000-A-EQP-163 FF | 32d |
| B12000-A-EQP-166 |  | Gallery 1202 - J120/Line-Ups // Set MOD-J120-02 | 1d | 2026-10-15 | 2026-10-15 | B12000-A-EQP-165 SS | 32d |
| B12000-A-EQP-167 |  | Gallery 1202 - J120/Line-Ups // Set CDU-DH1200- 37 | 1d | 2026-10-16 | 2026-10-16 | B12000-A-EQP-161 | 32d |
| B12000-A-EQP-169 |  | Gallery 1202 - J120/Line-Ups // Pull Feeder from SWD to MOD | 1d | 2026-10-16 | 2026-10-16 | B12000-A-EQP-166 | 48d |
| B12000-A-EQP-170 |  | Gallery 1202 - J120/Line-Ups // Pull Cable Tray Feed from MOD to CRAHU's | 5d | 2026-10-16 | 2026-10-22 | B12000-A-EQP-166 | 38d |
| B12000-A-EQP-172 |  | Gallery 1202 - J120/Line-Ups // Mount Electrial Gear for Chiller Controls | 10d | 2026-10-16 | 2026-10-29 | B12000-A-EQP-166 | 32d |
| B12000-A-EQP-168 |  | Gallery 1202 - J120/Line-Ups // Set CDU-DH1200- 38 | 1d | 2026-10-19 | 2026-10-19 | B12000-A-EQP-163, B12000-A-EQP-167 | 32d |
| B12000-A-EQP-164 |  | Gallery 1202 - J120/Line-Ups // Condensate connections to Floor Drains | 10d | 2026-10-20 | 2026-11-02 | B12000-A-EQP-168, B12000-A-EQP-167, B12000-A-EQP-163 | 32d |
| B12000-A-EQP-171 |  | Gallery 1202 - J120/Line-Ups // Mechanical Connections to CRAHU Units | 10d | 2026-10-22 | 2026-11-04 | B12000-A-EQP-163 SS+5d | 30d |
| B12000-A-EQP-177 |  | Gallery 1202 - J120/Line-Ups // Pull Feeder and Branch circuits to MIsc equipment and Chiller controls | 10d | 2026-10-22 | 2026-11-04 | B12000-A-EQP-172 SS+4d | 32d |
| B12000-A-EQP-173 |  | Gallery 1202 - J120/Line-Ups // Pull Cable Tray Feed from MOD to CRAHU's | 5d | 2026-10-23 | 2026-10-29 | B12000-A-EQP-170 | 38d |
| B12000-A-EQP-176 |  | Gallery 1202 - J120/Line-Ups // Terminate CRAHU Electrical Connections | 5d | 2026-10-27 | 2026-11-02 | B12000-A-EQP-170, B12000-A-EQP-173 SS+2d | 38d |
| B12000-A-EQP-179 |  | Gallery 1202 - J120/Line-Ups // Teminate all Misc Equipment and Chiller Controls | 10d | 2026-10-28 | 2026-11-10 | B12000-A-EQP-177 SS+4d | 32d |
| B12000-A-EQP-174 |  | Gallery 1202 - J120/Line-Ups // Condensate connections to Floor Drains | 10d | 2026-10-29 | 2026-11-12 | B12000-A-EQP-164 SS+5d, B12000-A-EQP-171 SS+5d | 30d |
| B12000-A-EQP-175 |  | Gallery 1202 - J120/Line-Ups // Terminate Mod Panels | 1d | 2026-10-30 | 2026-10-30 | B12000-A-EQP-169, B12000-A-EQP-170, B12000-A-EQP-173 | 39d |
| B12000-A-EQP-180 |  | Gallery 1202 - J120/Line-Ups // Electrical Gear FOD Inspection Pre-Start Up | 2d | 2026-11-12 | 2026-11-13 | B1200368, B12000-A-EQP-175, B12000-A-EQP-179, B12000-A-EQP-176 | 32d |
| B12000-A-EQP-178 |  | Gallery 1202 - J120/Line-Ups // Mechanical Gear FOD Inspection Pre-Start Up | 3d | 2026-11-13 | 2026-11-17 | B12000-A-EQP-171, B12000-A-EQP-164, B12000-A-EQP-174, B12000-A-EQP-163 | 30d |
|  | 10 | **K120** |  | 2026-10-15 | 2026-11-17 |  |  |
| B12000-A-EQP-181 |  | Gallery 1202 - K120/Line-Ups // Set CRAH-DH1200- 39 | 1d | 2026-10-15 | 2026-10-15 | B12000-A-EQP-163 SS | -8d |
| B12000-A-EQP-183 |  | Gallery 1202 - K120/Line-Ups // Set CRAH-DH1200- 40 | 1d | 2026-10-15 | 2026-10-15 | B12000-A-EQP-181 SS | -8d |
| B12000-A-EQP-185 |  | Gallery 1202 - K120/Line-Ups // Set MOD-K120-01 | 1d | 2026-10-15 | 2026-10-15 | B12000-A-EQP-183 FF | 32d |
| B12000-A-EQP-186 |  | Gallery 1202 - K120/Line-Ups // Set MOD-K120-02 | 1d | 2026-10-15 | 2026-10-15 | B12000-A-EQP-185 SS | 32d |
| B12000-A-EQP-187 |  | Gallery 1202 - K120/Line-Ups // Set CDU-DH1200- 39 | 1d | 2026-10-16 | 2026-10-16 | B12000-A-EQP-181 | 32d |
| B12000-A-EQP-189 |  | Gallery 1202 - K120/Line-Ups // Pull Feeder from SWD to MOD | 1d | 2026-10-16 | 2026-10-16 | B12000-A-EQP-186 | 48d |
| B12000-A-EQP-190 |  | Gallery 1202 - K120/Line-Ups // Pull Cable Tray Feed from MOD to CRAHU's | 5d | 2026-10-16 | 2026-10-22 | B12000-A-EQP-186 | 38d |
| B12000-A-EQP-192 |  | Gallery 1202 - K120/Line-Ups // Mount Electrial Gear for Chiller Controls | 10d | 2026-10-16 | 2026-10-29 | B12000-A-EQP-186 | 32d |
| B12000-A-EQP-188 |  | Gallery 1202 - K120/Line-Ups // Set CDU-DH1200- 40 | 1d | 2026-10-19 | 2026-10-19 | B12000-A-EQP-183, B12000-A-EQP-187 | 32d |
| B12000-A-EQP-184 |  | Gallery 1202 - K120/Line-Ups // Condensate connections to Floor Drains | 10d | 2026-10-20 | 2026-11-02 | B12000-A-EQP-188, B12000-A-EQP-187, B12000-A-EQP-183 | 32d |
| B12000-A-EQP-191 |  | Gallery 1202 - K120/Line-Ups // Mechanical Connections to CRAHU Units | 10d | 2026-10-22 | 2026-11-04 | B12000-A-EQP-183 SS+5d | 30d |
| B12000-A-EQP-197 |  | Gallery 1202 - K120/Line-Ups // Pull Feeder and Branch circuits to MIsc equipment and Chiller controls | 10d | 2026-10-22 | 2026-11-04 | B12000-A-EQP-192 SS+4d | 32d |
| B12000-A-EQP-193 |  | Gallery 1202 - K120/Line-Ups // Pull Cable Tray Feed from MOD to CRAHU's | 5d | 2026-10-23 | 2026-10-29 | B12000-A-EQP-190 | 38d |
| B12000-A-EQP-196 |  | Gallery 1202 - K120/Line-Ups // Terminate CRAHU Electrical Connections | 5d | 2026-10-27 | 2026-11-02 | B12000-A-EQP-190, B12000-A-EQP-193 SS+2d | 38d |
| B12000-A-EQP-199 |  | Gallery 1202 - K120/Line-Ups // Teminate all Misc Equipment and Chiller Controls | 10d | 2026-10-28 | 2026-11-10 | B12000-A-EQP-197 SS+4d | 32d |
| B12000-A-EQP-194 |  | Gallery 1202 - K120/Line-Ups // Condensate connections to Floor Drains | 10d | 2026-10-29 | 2026-11-12 | B12000-A-EQP-184 SS+5d, B12000-A-EQP-191 SS+5d | 30d |
| B12000-A-EQP-195 |  | Gallery 1202 - K120/Line-Ups // Terminate Mod Panels | 1d | 2026-10-30 | 2026-10-30 | B12000-A-EQP-189, B12000-A-EQP-190, B12000-A-EQP-193 | 39d |
| B12000-A-EQP-200 |  | Gallery 1202 - K120/Line-Ups // Electrical Gear FOD Inspection Pre-Start Up | 2d | 2026-11-12 | 2026-11-13 | B1200370, B12000-A-EQP-195, B12000-A-EQP-199, B12000-A-EQP-196 | 32d |
| B12000-A-EQP-198 |  | Gallery 1202 - K120/Line-Ups // Mechanical Gear FOD Inspection Pre-Start Up | 3d | 2026-11-13 | 2026-11-17 | B12000-A-EQP-191, B12000-A-EQP-184, B12000-A-EQP-194, B12000-A-EQP-183 | 30d |
|  | 11 | **R120** |  | 2026-10-15 | 2026-11-17 |  |  |
| B12000-A-EQP-201 |  | Gallery 1202 - R120/Line-Ups // Set CRAH-DH1200- 41 | 1d | 2026-10-15 | 2026-10-15 | B12000-A-EQP-183 SS | -8d |

| ID | WBS | Task | Duration | Start | Finish | Predecessors | Complete | Total float |
| --- | --- | --- | --- | --- | --- | --- | --- | --- |
| B12000-A-EQP-203 |  | Gallery 1202 - R120/Line-Ups // Set CRAH-DH1200- 42 | 1d | 2026-10-15 | 2026-10-15 | B12000-A-EQP-201 SS |  | -8d |
| B12000-A-EQP-205 |  | Gallery 1202 - R120/Line-Ups // Set MOD-R120-01 | 1d | 2026-10-15 | 2026-10-15 | B12000-A-EQP-203 FF |  | -8d |
| B12000-A-EQP-206 |  | Gallery 1202 - R120/Line-Ups // Set MOD-R120-02 | 1d | 2026-10-15 | 2026-10-15 | B12000-A-EQP-205 SS |  | -8d |
| B12000-A-EQP-207 |  | Gallery 1202 - R120/Line-Ups // Set CDU-DH1200- 41 | 1d | 2026-10-16 | 2026-10-16 | B12000-A-EQP-201 |  | 0d |
| B12000-A-EQP-210 |  | Gallery 1202 - R120/Line-Ups // Pull Cable Tray Feed from MOD to CRAHU's | 5d | 2026-10-16 | 2026-10-22 | B12000-A-EQP-206 |  | -8d |
| B12000-A-EQP-212 |  | Gallery 1202 - R120/Line-Ups // Mount Electrial Gear for Chiller Controls | 10d | 2026-10-16 | 2026-10-29 | B12000-A-EQP-206 |  | -6d |
| B12000-A-EQP-217 |  | Gallery 1202 - R120/Line-Ups // Pull Feeder and Branch circuits to MIsc equipment and Chiller controls | 10d | 2026-10-16 | 2026-10-29 | B12000-A-EQP-212 FF |  | -6d |
| B12000-A-EQP-208 |  | Gallery 1202 - R120/Line-Ups // Set CDU-DH1200- 42 | 1d | 2026-10-19 | 2026-10-19 | B12000-A-EQP-203, B12000-A-EQP-207 |  | 0d |
| B12000-A-EQP-204 |  | Gallery 1202 - R120/Line-Ups // Condensate connections to Floor Drains | 10d | 2026-10-20 | 2026-11-02 | B12000-A-EQP-208, B12000-A-EQP-207, B12000-A-EQP-203 |  | 0d |
| B12000-A-EQP-221 |  | Gallery 1202 - R120/Line-Ups // Set SWD-R120 | 1d | 2026-10-20 | 2026-10-20 | B12000-A-EQP-208 |  | 4d |
| B12000-A-EQP-222 |  | Gallery 1202 - R120/Line-Ups // Set SWD-TIE-R120 | 1d | 2026-10-21 | 2026-10-21 | B12000-A-EQP-221 |  | 4d |
| B12000-A-EQP-209 |  | Gallery 1202 - R120/Line-Ups // Pull Feeder from SWD to MOD | 1d | 2026-10-22 | 2026-10-22 | B12000-A-EQP-206, B12000-A-EQP-222 |  | 4d |
| B12000-A-EQP-211 |  | Gallery 1202 - R120/Line-Ups // Mechanical Connections to CRAHU Units | 10d | 2026-10-22 | 2026-11-04 | B12000-A-EQP-203 SS+5d |  | -2d |
| B12000-A-EQP-219 |  | Gallery 1202 - R120/Line-Ups // Teminate all Misc Equipment and Chiller Controls | 10d | 2026-10-22 | 2026-11-04 | B12000-A-EQP-217 SS+4d |  | 11d |
| B12000-A-EQP-213 |  | Gallery 1202 - R120/Line-Ups // Pull Cable Tray Feed from MOD to CRAHU's | 5d | 2026-10-23 | 2026-10-29 | B12000-A-EQP-210 |  | -8d |
| B12000-A-EQP-216 |  | Gallery 1202 - R120/Line-Ups // Terminate CRAHU Electrical Connections | 5d | 2026-10-27 | 2026-11-02 | B12000-A-EQP-210, B12000-A-EQP-213 SS+2d |  | 13d |
| B12000-A-EQP-214 |  | Gallery 1202 - R120/Line-Ups // Condensate connections to Floor Drains | 10d | 2026-10-29 | 2026-11-12 | B12000-A-EQP-204 SS+5d, B12000-A-EQP-211 SS+5d |  | -2d |
| B12000-A-EQP-215 |  | Gallery 1202 - R120/Line-Ups // Terminate Mod Panels | 1d | 2026-10-30 | 2026-10-30 | B12000-A-EQP-209, B12000-A-EQP-210, B12000-A-EQP-213 |  | -1d |
| B12000-A-EQP-220 |  | Gallery 1202 - R120/Line-Ups // Electrical Gear FOD Inspection Pre-Start Up | 2d | 2026-11-05 | 2026-11-06 | B1200375, B1200372, B12000-A-EQP-215, B12000-A-EQP-219, B12000-A-EQP-216 |  | 11d |
| B12000-A-EQP-218 |  | Gallery 1202 - R120/Line-Ups // Mechanical Gear FOD Inspection Pre-Start Up | 3d | 2026-11-13 | 2026-11-17 | B12000-A-EQP-211, B12000-A-EQP-204, B12000-A-EQP-214, B12000-A-EQP-203 |  | -2d |
|  | 12 | **Equipment Connections** |  | 2026-10-23 | 2026-11-10 |  |  |  |
|  | 1 | **CRAH** |  | 2026-10-30 | 2026-11-10 |  |  |  |
| DH1200.MG.A110.8687 |  | Gallery 1202 // DH 1200 / Elec Room // CRAH Duct Work Termination | 2d | 2026-10-30 | 2026-11-02 | B12000-A-EQP-213 |  | -8d |
| DH1200.MG.A110.8686 |  | Gallery 1202 // DH 1200 / Elec Room // CRAH Chilled Water | 2d | 2026-11-03 | 2026-11-04 | DH1200.MG.A110.8687 |  | -8d |
| DH1200.MG.A110.8684 |  | Gallery 1202 // DH 1200 / Elec Room // CRAH Power Connections | 2d | 2026-11-05 | 2026-11-06 | DH1200.MG.A110.8686 |  | -8d |
| DH1200.MG.A110.8685 |  | Gallery 1202 // DH 1200 / Elec Room // CRAH LV Connections | 2d | 2026-11-09 | 2026-11-10 | DH1200.MG.A110.8684 |  | -8d |
|  | 2 | **CDU** |  | 2026-10-30 | 2026-11-06 |  |  |  |
| DH1200.MG.A110.8690 |  | Gallery 1202 // DH 1200 / Elec Room // CDU Chilled Water Connections | 2d | 2026-10-30 | 2026-11-02 | B12000-A-EQP-217 |  | -6d |
| DH1200.MG.A110.8688 |  | Gallery 1202 // DH 1200 /Elec Room // CDU Power Connections | 2d | 2026-11-03 | 2026-11-04 | DH1200.MG.A110.8690 |  | -6d |
| DH1200.MG.A110.8689 |  | Gallery 1202 // DH 1200 / Elec Room // CDU Controls Connections | 2d | 2026-11-05 | 2026-11-06 | DH1200.MG.A110.8688 |  | -6d |
|  | 3 | **MOD** |  | 2026-10-23 | 2026-10-28 |  |  |  |
| DH1200.MG.A110.8691 |  | Gallery 1202 // DH 1200 / Elec Room // MOD Power Connections | 2d | 2026-10-23 | 2026-10-26 | B12000-A-EQP-210 |  | 1d |
| DH1200.MG.A110.8692 |  | Gallery 1202 // DH 1200 / Elec Room // MOD LV Connections | 2d | 2026-10-27 | 2026-10-28 | DH1200.MG.A110.8691 |  | 1d |
|  | 4 | **Gallery 1203** |  | 2026-07-28 | 2026-11-27 |  |  |  |
|  | 1 | **Architectural** |  | 2026-07-28 | 2026-11-03 |  |  |  |
| B12003.1000 |  | DH 1200/Gallery 1203 // Seal concrete | 2d | 2026-07-28 A | 2026-07-29 A | B1200.4660 SS | 100% |  |
| B12003.1010 |  | DH 1200/Gallery 1203 // MEPF overhead layout | 5d | 2026-08-03 A | 2026-08-14 A | B1200.4670 FF, B12003.1000 | 100% |  |
| B12003.1040 |  | DH 1200/Gallery 1203 // Frame walls | 6d | 2026-08-10 A | 2026-08-17 A | B1200.4700 SS | 100% |  |
| B120001.3119 |  | DH 1200/Gallery 1203 // Install Overhead Cable Ladder / 36" Cable Tray - TFO | 5d | 2026-08-10 A | 2026-09-23 A | B12003.1010 | 100% |  |
| B12003.1050 |  | DH 1200/Gallery 1203 // Install Sheetrock Top Down | 6d | 2026-08-12 A | 2026-08-19 A | B12003.1040 SS | 100% |  |
| B12003.1030 |  | DH 1200/Gallery 1203 // MEPF high overhead install | 5d | 2026-08-18 A | 2026-09-03 A | B12003.1050, B12003.1010 SS | 100% |  |
| B12003.1070 |  | DH 1200/Gallery 1203 // MEP rough in walls | 4d | 2026-08-25 A | 2026-09-15 A | B12003.1050, B12003.1090 SS, B12003.1040 | 100% |  |
| B12003.1090 |  | DH 1200/Gallery 1203 // Install Balance of Sheetrock on walls | 6d | 2026-08-25 A | 2026-09-17 A | B12003.1030 | 100% |  |
| B12003.1080 |  | DH 1200/Gallery 1203 // In wall inspection | 1d | 2026-08-31 A | 2026-09-16 A | B12003.1070 | 100% |  |
| B12003.1100 |  | DH 1200/Gallery 1203 // Tape and finish walls | 8d | 2026-09-17 A | 2026-10-02 | B12003.1080, B12003.1090 | 62% | -9d |
| B12003.1060 |  | DH 1200/Gallery 1203 // Install wall door frames | 2d | 2026-09-29 A | 2026-10-01 | B12003.1090 |  | -4d |
| B120001.3120 |  | DH 1200/Gallery 1203 // Install Overhead HAC - TFO | 5d | 2026-09-30 | 2026-10-06 | B120001.3119 |  | 39d |
| B12003.1110 |  | DH 1200/Gallery 1203 // Prime and Paint walls | 4d | 2026-10-05 | 2026-10-08 | B12003.1100, B12003.1060 FF |  | -9d |
| B12003.1120 |  | DH 1200/Gallery 1203 // Touch up Walls and Fianl Paint | 5d | 2026-10-06 | 2026-10-13 | B12003.1110 FF+2d |  | -9d |
| F.1000A.1211 |  | DH 1200/Gallery 1203 // Rough-In Security | 2d | 2026-10-07 | 2026-10-08 | B12003.1010, B120001.3120 |  | 39d |
| F.1000A.1425 |  | DH 1200/Gallery 1203 // BMS & EPMS Rough-In | 2d | 2026-10-07 | 2026-10-08 | F.1000A.1211 FF, F.1000A.1211 SS |  | 51d |
| B12003.1130 |  | DH 1200/Gallery 1203 // Install Trim and Devices | 2d | 2026-10-09 | 2026-10-13 | B12003.1120 FF |  | -9d |
| F.1000A.1212 |  | DH 1200/Gallery 1203 // Pull & Test Security Cable | 3d | 2026-10-09 | 2026-10-14 | F.1000A.1211 |  | 39d |
| B12003.1141 |  | DH 1200/Gallery 1203 // Ready to Receive Equipment | 0d | 2026-10-13 | 2026-10-13 | B12003.1130 FF |  | -9d |
| F.1000A.1213 |  | DH 1200/Gallery 1203 // Install Security Devices | 2d | 2026-10-15 | 2026-10-16 | F.1000A.1212 |  | 39d |
| F.1000A.1214 |  | DH 1200/Gallery 1203 // Mount & Terminate Security Devices | 5d | 2026-10-19 | 2026-10-23 | F.1000A.1213, B12003.1110 |  | 39d |
| F.1000A.1215 |  | DH 1200/Gallery 1203 // Test Security Devices | 2d | 2026-10-26 | 2026-10-27 | F.1000A.1425 FF, F.1000A.1214, B12003.1130 |  | 39d |
| B12003.1140 |  | DH 1200/Gallery 1203 // Suffolk Pre Punch | 5d | 2026-10-28 | 2026-11-03 | B12003.1141, F.1000A.1215 |  | 39d |
|  | 16 | **Raceway** |  |  |  |  |  |  |
|  | 3 | **Equipment Line-Ups** |  | 2026-09-30 | 2026-11-27 |  |  |  |
|  | 1 | **A120** |  | 2026-10-14 | 2026-11-16 |  |  |  |
| B12000-B-EQP-1 |  | Gallery 1203 - A120/Line-Ups // Set CRAH-DH1200- 12 | 1d | 2026-10-14 | 2026-10-14 | B12000.6360, B12003.1141 |  | -9d |
| B12000-B-EQP-4 |  | Gallery 1203 - A120/Line-Ups // Set CRAH-DH1200- 13 | 1d | 2026-10-14 | 2026-10-14 | B12000-B-EQP-1 FF, B12000-B-EQP-1 SS |  | -9d |
| B12000-B-EQP-5 |  | Gallery 1203 - A120/Line-Ups // Set MOD A140-01 (Does No apply) | 1d | 2026-10-14 | 2026-10-14 | B12000-B-EQP-4 FF |  | 33d |
| B12000-B-EQP-6 |  | Gallery 1203 - A120/Line-Ups // Set MOD A140-02 (Does No apply) | 1d | 2026-10-14 | 2026-10-14 | B12000-B-EQP-5 SS |  | 33d |
| B12000-B-EQP-10 |  | Gallery 1203 - A120/Line-Ups // Mount Electrial Gear for Chiller Controls | 10d | 2026-10-15 | 2026-10-28 | B12000-B-EQP-6 |  | 33d |
| B12000-B-EQP-199 |  | Gallery 1203 - A120/Line-Ups // Set CDU-DH1200-11 | 1d | 2026-10-15 | 2026-10-15 | B12000-B-EQP-6 |  | 47d |
| B12000-B-EQP-3 |  | Gallery 1203 - A120/Line-Ups // Condensate connections to Floor Drains | 10d | 2026-10-15 | 2026-10-28 | B12000-B-EQP-4, B12000-B-EQP-1 SS |  | 35d |
| B12000-B-EQP-8 |  | Gallery 1203 - A120/Line-Ups // Pull Cable Tray Feed from MOD to CRAHU's | 3d | 2026-10-15 | 2026-10-19 | B12000-B-EQP-6 |  | 45d |
| B12000-B-EQP-200 |  | Gallery 1203 - A120/Line-Ups // Set CDU-DH1200-12 | 1d | 2026-10-16 | 2026-10-16 | B12000-B-EQP-199 |  | 47d |

| ID | WBS | Task | Duration | Start | Finish | Predecessors | Total float |
| --- | --- | --- | --- | --- | --- | --- | --- |
| B12000-B-EQP-7 |  | Gallery 1203 - A120/Line-Ups // Pull Feeder from SWD to MOD | 1d | 2026-10-19 | 2026-10-19 | B12000-B-EQP-6, B12000-B-EQP-200 | 47d |
| B12000-B-EQP-13 |  | Gallery 1203 - A120/Line-Ups // Terminate MOD Panels | 1d | 2026-10-20 | 2026-10-20 | B12000-B-EQP-7, B12000-B-EQP-8 | 47d |
| B12000-B-EQP-14 |  | Gallery 1203 - A120/Line-Ups // Terminate Electrical Connections - CRAHU | 3d | 2026-10-20 | 2026-10-22 | B12000-B-EQP-8 | 45d |
| B12000-B-EQP-15 |  | Gallery 1203 - A120/Line-Ups // Pull Feeder and Branch circuits to MIsc equipment and Chiller controls | 10d | 2026-10-21 | 2026-11-03 | B12000-B-EQP-10 SS+4d | 33d |
| B12000-B-EQP-9 |  | Gallery 1203 - A120/Line-Ups // Mechanical Connections to CRAHU Units | 5d | 2026-10-21 | 2026-10-27 | B12000-B-EQP-4 SS+5d | 31d |
| B12000-B-EQP-17 |  | Gallery 1203 - A120/Line-Ups // Teminate all Misc Equipment and Chiller Controls | 10d | 2026-10-27 | 2026-11-09 | B12000-B-EQP-15 SS+4d | 33d |
| B12000-B-EQP-12 |  | Gallery 1203 - A120/Line-Ups // Condensate connections to Floor Drains | 10d | 2026-10-28 | 2026-11-10 | B12000-B-EQP-3 SS+5d, B12000-B-EQP-9 SS+5d | 31d |
| B12000-B-EQP-18 |  | Gallery 1203 - A120/Line-Ups // Electrical Gear FOD Inspection Pre-Start Up | 2d | 2026-11-10 | 2026-11-12 | B12000-B-EQP-13, B12000-B-EQP-17, B12000-B-EQP-14 | 33d |
| B12000-B-EQP-16 |  | Gallery 1203 - A120/Line-Ups // Mechanical Gear FOD Inspection Pre-Start Up | 3d | 2026-11-12 | 2026-11-16 | B12000-B-EQP-4, B12000-B-EQP-1 SS, B12000-B-EQP-9, B12000-B-EQP-3, B12000-B-EQP-12 | 31d |
|  | 2 | **B120** |  | 2026-10-14 | 2026-11-23 |  |  |
| B12000-B-EQP-19 |  | Gallery 1203 - B120/Line-Ups // Set CRAH-DH1200- 14 | 1d | 2026-10-14 | 2026-10-14 | B12000-B-EQP-4 SS | -9d |
| B12000-B-EQP-22 |  | Gallery 1203 - B120/Line-Ups // Set CRAH-DH1200- 15 | 1d | 2026-10-14 | 2026-10-14 | B12000-B-EQP-19 FF, B12000-B-EQP-19 SS | -9d |
| B12000-B-EQP-23 |  | Gallery 1203 - B120/Line-Ups // Set MOD B140-01 (Does No apply) | 1d | 2026-10-14 | 2026-10-14 | B12000-B-EQP-22 FF | 33d |
| B12000-B-EQP-24 |  | Gallery 1203 - B120/Line-Ups // Set MOD B140-02 (Does No apply) | 1d | 2026-10-14 | 2026-10-14 | B12000-B-EQP-23 SS | 33d |
| B12000-B-EQP-201 |  | Gallery 1203 - B120/Line-Ups // Set CDU-DH1200-13 | 1d | 2026-10-15 | 2026-10-15 | B12000-B-EQP-24 | 47d |
| B12000-B-EQP-26 |  | Gallery 1203 - B120/Line-Ups // Pull Cable Tray Feed from MOD to CRAHU's | 5d | 2026-10-15 | 2026-10-21 | B12000-B-EQP-24 | 39d |
| B12000-B-EQP-28 |  | Gallery 1203 - B120/Line-Ups // Mount Electrial Gear for Chiller Controls | 10d | 2026-10-15 | 2026-10-28 | B12000-B-EQP-24 | 33d |
| B12000-B-EQP-202 |  | Gallery 1203 - B120/Line-Ups // Set CDU-DH1200-14 | 1d | 2026-10-16 | 2026-10-16 | B12000-B-EQP-201, B12000-B-EQP-201 FF | 47d |
| B12000-B-EQP-25 |  | Gallery 1203 - B120/Line-Ups // Pull Feeder from SWD to MOD | 1d | 2026-10-19 | 2026-10-19 | B12000-B-EQP-24, B12000-B-EQP-202 | 47d |
| B12000-B-EQP-20 |  | Gallery 1203 - B120/Line-Ups // Connect CRAH units | 10d | 2026-10-21 | 2026-11-03 | B12000-B-EQP-22, B12000-B-EQP-19 SS+5d | 26d |
| B12000-B-EQP-27 |  | Gallery 1203 - B120/Line-Ups // Mechanical Connections to CRAHU Units | 10d | 2026-10-21 | 2026-11-03 | B12000-B-EQP-22 SS+5d | 31d |
| B12000-B-EQP-33 |  | Gallery 1203 - B120/Line-Ups // Pull Feeder and Branch circuits to MIsc equipment and Chiller controls | 10d | 2026-10-21 | 2026-11-03 | B12000-B-EQP-28 SS+4d | 33d |
| B12000-B-EQP-29 |  | Gallery 1203 - B120/Line-Ups // Pull Cable Tray Feed from MOD to CRAHU's | 5d | 2026-10-22 | 2026-10-28 | B12000-B-EQP-26 | 39d |
| B12000-B-EQP-32 |  | Gallery 1203 - B120/Line-Ups // Terminate CRAHU Electrical Connections | 5d | 2026-10-26 | 2026-10-30 | B12000-B-EQP-26, B12000-B-EQP-29 SS+2d | 39d |
| B12000-B-EQP-35 |  | Gallery 1203 - B120/Line-Ups // Teminate all Misc Equipment and Chiller Controls | 10d | 2026-10-27 | 2026-11-09 | B12000-B-EQP-33 SS+4d | 33d |
| B12000-B-EQP-21 |  | Gallery 1203 - B120/Line-Ups // Condensate connections to Floor Drains | 10d | 2026-10-28 | 2026-11-10 | B12000-B-EQP-20 SS+5d | 26d |
| B12000-B-EQP-31 |  | Gallery 1203 - B120/Line-Ups // Terminat Mod Panels | 1d | 2026-10-29 | 2026-10-29 | B12000-B-EQP-25, B12000-B-EQP-26, B12000-B-EQP-29 | 40d |
| B12000-B-EQP-30 |  | Gallery 1203 - B120/Line-Ups // Condensate connections to Floor Drains | 10d | 2026-11-04 | 2026-11-18 | B12000-B-EQP-21 SS+5d, B12000-B-EQP-27 SS+5d | 26d |
| B12000-B-EQP-36 |  | Gallery 1203 - B120/Line-Ups // Electrical Gear FOD Inspection Pre-Start Up | 2d | 2026-11-10 | 2026-11-12 | B12000-B-EQP-31, B12000-B-EQP-35, B12000-B-EQP-32 | 33d |
| B12000-B-EQP-34 |  | Gallery 1203 - B120/Line-Ups // Mechanical Gear FOD Inspection Pre-Start Up | 3d | 2026-11-19 | 2026-11-23 | B12000-B-EQP-20, B12000-B-EQP-27, B12000-B-EQP-21, B12000-B-EQP-30 | 26d |
|  | 3 | **C120** |  | 2026-10-14 | 2026-11-23 |  |  |
| B12000-B-EQP-37 |  | Gallery 1203 - C120/Line-Ups // Set CRAH-DH1200- 16 | 1d | 2026-10-14 | 2026-10-14 | B12000-B-EQP-22 SS | -9d |
| B12000-B-EQP-40 |  | Gallery 1203 - C120/Line-Ups // Set CRAH-DH1200- 17 | 1d | 2026-10-14 | 2026-10-14 | B12000-B-EQP-37 FF, B12000-B-EQP-37 SS | -9d |
| B12000-B-EQP-41 |  | Gallery 1203 - C120/Line-Ups // Set MOD C140-01 (Does No apply) | 1d | 2026-10-14 | 2026-10-14 | B12000-B-EQP-40 FF | 33d |
| B12000-B-EQP-42 |  | Gallery 1203 - C120/Line-Ups // Set MOD C140-02 (Does No apply) | 1d | 2026-10-14 | 2026-10-14 | B12000-B-EQP-41 SS | 33d |
| B12000-B-EQP-203 |  | Gallery 1203 - C120/Line-Ups // Set CDU-DH1200-27 | 1d | 2026-10-15 | 2026-10-15 | B12000-B-EQP-42 | 47d |
| B12000-B-EQP-44 |  | Gallery 1203 - C120/Line-Ups // Pull Cable Tray Feed from MOD to CRAHU's | 5d | 2026-10-15 | 2026-10-21 | B12000-B-EQP-42 | 39d |
| B12000-B-EQP-46 |  | Gallery 1203 - C120/Line-Ups // Mount Electrial Gear for Chiller Controls | 10d | 2026-10-15 | 2026-10-28 | B12000-B-EQP-42 | 33d |
| B12000-B-EQP-204 |  | Gallery 1203 - C120/Line-Ups // Set CDU-DH1200-28 | 1d | 2026-10-16 | 2026-10-16 | B12000-B-EQP-203, B12000-B-EQP-203 FF | 47d |
| B12000-B-EQP-43 |  | Gallery 1203 - C120/Line-Ups // Pull Feeder from SWD to MOD | 1d | 2026-10-19 | 2026-10-19 | B12000-B-EQP-42, B12000-B-EQP-204 | 47d |
| B12000-B-EQP-38 |  | Gallery 1203 - C120/Line-Ups // Connect CRAH units | 10d | 2026-10-21 | 2026-11-03 | B12000-B-EQP-40, B12000-B-EQP-37 SS+5d | 26d |
| B12000-B-EQP-45 |  | Gallery 1203 - C120/Line-Ups // Mechanical Connections to CRAHU Units | 10d | 2026-10-21 | 2026-11-03 | B12000-B-EQP-40 SS+5d | 31d |
| B12000-B-EQP-51 |  | Gallery 1203 - C120/Line-Ups // Pull Feeder and Branch circuits to MIsc equipment and Chiller controls | 10d | 2026-10-21 | 2026-11-03 | B12000-B-EQP-46 SS+4d | 33d |
| B12000-B-EQP-47 |  | Gallery 1203 - C120/Line-Ups // Pull Cable Tray Feed from MOD to CRAHU's | 5d | 2026-10-22 | 2026-10-28 | B12000-B-EQP-44 | 39d |
| B12000-B-EQP-50 |  | Gallery 1203 - C120/Line-Ups // Terminate CRAHU Electrical Connections | 5d | 2026-10-26 | 2026-10-30 | B12000-B-EQP-44, B12000-B-EQP-47 SS+2d | 39d |
| B12000-B-EQP-53 |  | Gallery 1203 - C120/Line-Ups // Teminate all Misc Equipment and Chiller Controls | 10d | 2026-10-27 | 2026-11-09 | B12000-B-EQP-51 SS+4d | 33d |
| B12000-B-EQP-39 |  | Gallery 1203 - C120/Line-Ups // Condensate connections to Floor Drains | 10d | 2026-10-28 | 2026-11-10 | B12000-B-EQP-38 SS+5d | 26d |
| B12000-B-EQP-49 |  | Gallery 1203 - C120/Line-Ups // Terminat Mod Panels | 1d | 2026-10-29 | 2026-10-29 | B12000-B-EQP-43, B12000-B-EQP-44, B12000-B-EQP-47 | 40d |
| B12000-B-EQP-48 |  | Gallery 1203 - C120/Line-Ups // Condensate connections to Floor Drains | 10d | 2026-11-04 | 2026-11-18 | B12000-B-EQP-39 SS+5d, B12000-B-EQP-45 SS+5d | 26d |
| B12000-B-EQP-54 |  | Gallery 1203 - C120/Line-Ups // Electrical Gear FOD Inspection Pre-Start Up | 2d | 2026-11-10 | 2026-11-12 | B12000-B-EQP-49, B12000-B-EQP-53, B12000-B-EQP-50 | 33d |
| B12000-B-EQP-52 |  | Gallery 1203 - C120/Line-Ups // Mechanical Gear FOD Inspection Pre-Start Up | 3d | 2026-11-19 | 2026-11-23 | B12000-B-EQP-38, B12000-B-EQP-45, B12000-B-EQP-39, B12000-B-EQP-48 | 26d |
|  | 4 | **D120** |  | 2026-10-15 | 2026-11-24 |  |  |
| B12000-B-EQP-55 |  | Gallery 1203 - D120/Line-Ups // Set CRAH-DH1200- 29 | 1d | 2026-10-15 | 2026-10-15 | B12000-B-EQP-40 | -9d |
| B12000-B-EQP-58 |  | Gallery 1203 - D120/Line-Ups // Set CRAH-DH1200-30 | 1d | 2026-10-15 | 2026-10-15 | B12000-B-EQP-55 FF, B12000-B-EQP-55 SS | -9d |
| B12000-B-EQP-59 |  | Gallery 1203 - D120/Line-Ups // Set MOD D140-01 (Does No apply) | 1d | 2026-10-15 | 2026-10-15 | B12000-B-EQP-58 FF | 32d |
| B12000-B-EQP-60 |  | Gallery 1203 - D120/Line-Ups // Set MOD D140-02 (Does No apply) | 1d | 2026-10-15 | 2026-10-15 | B12000-B-EQP-59 SS | 32d |
| B12000-B-EQP-205 |  | Gallery 1203 - D120/Line-Ups // Set CDU-DH1200-29 | 1d | 2026-10-16 | 2026-10-16 | B12000-B-EQP-60 | 46d |
| B12000-B-EQP-62 |  | Gallery 1203 - D120/Line-Ups // Pull Cable Tray Feed from MOD to CRAHU's | 5d | 2026-10-16 | 2026-10-22 | B12000-B-EQP-60 | 38d |
| B12000-B-EQP-64 |  | Gallery 1203 - D120/Line-Ups // Mount Electrial Gear for Chiller Controls | 10d | 2026-10-16 | 2026-10-29 | B12000-B-EQP-60 | 32d |
| B12000-B-EQP-206 |  | Gallery 1203 - D120/Line-Ups // Set CDU-DH1200-30 | 1d | 2026-10-19 | 2026-10-19 | B12000-B-EQP-205 | 46d |
| B12000-B-EQP-61 |  | Gallery 1203 - D120/Line-Ups // Pull Feeder from SWD to MOD | 1d | 2026-10-20 | 2026-10-20 | B12000-B-EQP-60, B12000-B-EQP-206 | 46d |
| B12000-B-EQP-56 |  | Gallery 1203 - D120/Line-Ups // Connect CRAH units | 10d | 2026-10-22 | 2026-11-04 | B12000-B-EQP-58, B12000-B-EQP-55 SS+5d | 25d |
| B12000-B-EQP-63 |  | Gallery 1203 - D120/Line-Ups // Mechanical Connections to CRAHU Units | 10d | 2026-10-22 | 2026-11-04 | B12000-B-EQP-58 SS+5d | 30d |
| B12000-B-EQP-69 |  | Gallery 1203 - D120/Line-Ups // Pull Feeder and Branch circuits to MIsc equipment and Chiller controls | 10d | 2026-10-22 | 2026-11-04 | B12000-B-EQP-64 SS+4d | 32d |
| B12000-B-EQP-65 |  | Gallery 1203 - D120/Line-Ups // Pull Cable Tray Feed from MOD to CRAHU's | 5d | 2026-10-23 | 2026-10-29 | B12000-B-EQP-62 | 38d |
| B12000-B-EQP-68 |  | Gallery 1203 - D120/Line-Ups // Terminate CRAHU Electrical Connections | 5d | 2026-10-27 | 2026-11-02 | B12000-B-EQP-62, B12000-B-EQP-65 SS+2d | 38d |
| B12000-B-EQP-71 |  | Gallery 1203 - D120/Line-Ups // Teminate all Misc Equipment and Chiller Controls | 10d | 2026-10-28 | 2026-11-10 | B12000-B-EQP-69 SS+4d | 32d |
| B12000-B-EQP-57 |  | Gallery 1203 - D120/Line-Ups // Condensate connections to Floor Drains | 10d | 2026-10-29 | 2026-11-12 | B12000-B-EQP-56 SS+5d | 25d |
| B12000-B-EQP-67 |  | Gallery 1203 - D120/Line-Ups // Terminat Mod Panels | 1d | 2026-10-30 | 2026-10-30 | B12000-B-EQP-61, B12000-B-EQP-62, B12000-B-EQP-65 | 39d |
| B12000-B-EQP-66 |  | Gallery 1203 - D120/Line-Ups // Condensate connections to Floor Drains | 10d | 2026-11-05 | 2026-11-19 | B12000-B-EQP-57 SS+5d, B12000-B-EQP-63 SS+5d | 25d |

| ID | WBS | Task | Duration | Start | Finish | Predecessors | Total float |
| --- | --- | --- | --- | --- | --- | --- | --- |
| B12000-B-EQP-72 |  | Gallery 1203 - D120/Line-Ups // Electrical Gear FOD Inspection Pre-Start Up | 2d | 2026-11-12 | 2026-11-13 | B12000-B-EQP-67, B12000-B-EQP-71, B12000-B-EQP-68 | 32d |
| B12000-B-EQP-70 |  | Gallery 1203 - D120/Line-Ups // Mechanical Gear FOD Inspection Pre-Start Up | 3d | 2026-11-20 | 2026-11-24 | B12000-B-EQP-56, B12000-B-EQP-63, B12000-B-EQP-57, B12000-B-EQP-66 | 25d |
|  | 5 | **E120** |  | 2026-10-15 | 2026-11-24 |  |  |
| B12000-B-EQP-73 |  | Gallery 1203 - E120/Line-Ups // Set CRAH-DH1200- 31 | 1d | 2026-10-15 | 2026-10-15 | B12000-B-EQP-58 SS | -9d |
| B12000-B-EQP-76 |  | Gallery 1203 - E120/Line-Ups // Set CRAH-DH1200-32 | 1d | 2026-10-15 | 2026-10-15 | B12000-B-EQP-73 FF, B12000-B-EQP-73 SS | -9d |
| B12000-B-EQP-77 |  | Gallery 1203 - E120/Line-Ups // Set MOD E140-01 (Does No apply) | 1d | 2026-10-15 | 2026-10-15 | B12000-B-EQP-76 FF | 32d |
| B12000-B-EQP-78 |  | Gallery 1203 - E120/Line-Ups // Set MOD E140-02 (Does No apply) | 1d | 2026-10-15 | 2026-10-15 | B12000-B-EQP-77 SS | 32d |
| B12000-B-EQP-207 |  | Gallery 1203 - E120/Line-Ups // Set CDU-DH1200-31 | 1d | 2026-10-16 | 2026-10-16 | B12000-B-EQP-78 | 46d |
| B12000-B-EQP-80 |  | Gallery 1203 - E120/Line-Ups // Pull Cable Tray Feed from MOD to CRAHU's | 5d | 2026-10-16 | 2026-10-22 | B12000-B-EQP-78 | 38d |
| B12000-B-EQP-82 |  | Gallery 1203 - E120/Line-Ups // Mount Electrial Gear for Chiller Controls | 10d | 2026-10-16 | 2026-10-29 | B12000-B-EQP-78 | 32d |
| B12000-B-EQP-208 |  | Gallery 1203 - E120/Line-Ups // Set CDU-DH1200-32 | 1d | 2026-10-19 | 2026-10-19 | B12000-B-EQP-207 | 46d |
| B12000-B-EQP-79 |  | Gallery 1203 - E120/Line-Ups // Pull Feeder from SWD to MOD | 1d | 2026-10-20 | 2026-10-20 | B12000-B-EQP-78, B12000-B-EQP-208 | 46d |
| B12000-B-EQP-74 |  | Gallery 1203 - E120/Line-Ups // Connect CRAH units | 10d | 2026-10-22 | 2026-11-04 | B12000-B-EQP-76, B12000-B-EQP-73 SS+5d | 25d |
| B12000-B-EQP-81 |  | Gallery 1203 - E120/Line-Ups // Mechanical Connections to CRAHU Units | 10d | 2026-10-22 | 2026-11-04 | B12000-B-EQP-76 SS+5d | 30d |
| B12000-B-EQP-87 |  | Gallery 1203 - E120/Line-Ups // Pull Feeder and Branch circuits to MIsc equipment and Chiller controls | 10d | 2026-10-22 | 2026-11-04 | B12000-B-EQP-82 SS+4d | 32d |
| B12000-B-EQP-83 |  | Gallery 1203 - E120/Line-Ups // Pull Cable Tray Feed from MOD to CRAHU's | 5d | 2026-10-23 | 2026-10-29 | B12000-B-EQP-80 | 38d |
| B12000-B-EQP-86 |  | Gallery 1203 - E120/Line-Ups // Terminate CRAHU Electrical Connections | 5d | 2026-10-27 | 2026-11-02 | B12000-B-EQP-80, B12000-B-EQP-83 SS+2d | 38d |
| B12000-B-EQP-89 |  | Gallery 1203 - E120/Line-Ups // Teminate all Misc Equipment and Chiller Controls | 10d | 2026-10-28 | 2026-11-10 | B12000-B-EQP-87 SS+4d | 32d |
| B12000-B-EQP-75 |  | Gallery 1203 - E120/Line-Ups // Condensate connections to Floor Drains | 10d | 2026-10-29 | 2026-11-12 | B12000-B-EQP-74 SS+5d | 25d |
| B12000-B-EQP-85 |  | Gallery 1203 - E120/Line-Ups // Terminat Mod Panels | 1d | 2026-10-30 | 2026-10-30 | B12000-B-EQP-79, B12000-B-EQP-80, B12000-B-EQP-83 | 39d |
| B12000-B-EQP-84 |  | Gallery 1203 - E120/Line-Ups // Condensate connections to Floor Drains | 10d | 2026-11-05 | 2026-11-19 | B12000-B-EQP-75 SS+5d, B12000-B-EQP-81 SS+5d | 25d |
| B12000-B-EQP-90 |  | Gallery 1203 - E120/Line-Ups // Electrical Gear FOD Inspection Pre-Start Up | 2d | 2026-11-12 | 2026-11-13 | B12000-B-EQP-85, B12000-B-EQP-89, B12000-B-EQP-86 | 32d |
| B12000-B-EQP-88 |  | Gallery 1203 - E120/Line-Ups // Mechanical Gear FOD Inspection Pre-Start Up | 3d | 2026-11-20 | 2026-11-24 | B12000-B-EQP-74, B12000-B-EQP-81, B12000-B-EQP-75, B12000-B-EQP-84 | 25d |
|  | 6 | **F120** |  | 2026-10-15 | 2026-11-24 |  |  |
| B12000-B-EQP-91 |  | Gallery 1203 - F120/Line-Ups // Set CRAH-DH1200-33 | 1d | 2026-10-15 | 2026-10-15 | B12000-B-EQP-76 SS | -9d |
| B12000-B-EQP-94 |  | Gallery 1203 - F120/Line-Ups // Set CRAH-DH1200-34 | 1d | 2026-10-15 | 2026-10-15 | B12000-B-EQP-91 FF, B12000-B-EQP-91 SS | -9d |
| B12000-B-EQP-95 |  | Gallery 1203 - F120/Line-Ups // Set MOD F140-01 (Does No apply) | 1d | 2026-10-15 | 2026-10-15 | B12000-B-EQP-94 FF | 32d |
| B12000-B-EQP-96 |  | Gallery 1203 - F120/Line-Ups // Set MOD F140-02 (Does No apply) | 1d | 2026-10-15 | 2026-10-15 | B12000-B-EQP-95 SS | 32d |
| B12000-B-EQP-100 |  | Gallery 1203 - F120/Line-Ups // Mount Electrial Gear for Chiller Controls | 10d | 2026-10-16 | 2026-10-29 | B12000-B-EQP-96 | 32d |
| B12000-B-EQP-209 |  | Gallery 1203 - F120/Line-Ups // Set CDU-DH1200-33 | 1d | 2026-10-16 | 2026-10-16 | B12000-B-EQP-96 | 46d |
| B12000-B-EQP-98 |  | Gallery 1203 - F120/Line-Ups // Pull Cable Tray Feed from MOD to CRAHU's | 5d | 2026-10-16 | 2026-10-22 | B12000-B-EQP-96 | 38d |
| B12000-B-EQP-210 |  | Gallery 1203 - F120/Line-Ups // Set CDU-DH1200-34 | 1d | 2026-10-19 | 2026-10-19 | B12000-B-EQP-209 | 46d |
| B12000-B-EQP-97 |  | Gallery 1203 - F120/Line-Ups // Pull Feeder from SWD to MOD | 1d | 2026-10-20 | 2026-10-20 | B12000-B-EQP-96, B12000-B-EQP-210 | 46d |
| B12000-B-EQP-105 |  | Gallery 1203 - F120/Line-Ups // Pull Feeder and Branch circuits to MIsc equipment and Chiller controls | 10d | 2026-10-22 | 2026-11-04 | B12000-B-EQP-100 SS+4d | 32d |
| B12000-B-EQP-92 |  | Gallery 1203 - F120/Line-Ups // Connect CRAH units | 10d | 2026-10-22 | 2026-11-04 | B12000-B-EQP-94, B12000-B-EQP-91 SS+5d | 25d |
| B12000-B-EQP-99 |  | Gallery 1203 - F120/Line-Ups // Mechanical Connections to CRAHU Units | 10d | 2026-10-22 | 2026-11-04 | B12000-B-EQP-94 SS+5d | 30d |
| B12000-B-EQP-101 |  | Gallery 1203 - F120/Line-Ups // Pull Cable Tray Feed from MOD to CRAHU's | 5d | 2026-10-23 | 2026-10-29 | B12000-B-EQP-98 | 38d |
| B12000-B-EQP-104 |  | Gallery 1203 - F120/Line-Ups // Terminate CRAHU Electrical Connections | 5d | 2026-10-27 | 2026-11-02 | B12000-B-EQP-98, B12000-B-EQP-101 SS+2d | 38d |
| B12000-B-EQP-107 |  | Gallery 1203 - F120/Line-Ups // Teminate all Misc Equipment and Chiller Controls | 10d | 2026-10-28 | 2026-11-10 | B12000-B-EQP-105 SS+4d | 32d |
| B12000-B-EQP-93 |  | Gallery 1203 - F120/Line-Ups // Condensate connections to Floor Drains | 10d | 2026-10-29 | 2026-11-12 | B12000-B-EQP-92 SS+5d | 25d |
| B12000-B-EQP-103 |  | Gallery 1203 - F120/Line-Ups // Terminat Mod Panels | 1d | 2026-10-30 | 2026-10-30 | B12000-B-EQP-97, B12000-B-EQP-98, B12000-B-EQP-101 | 39d |
| B12000-B-EQP-102 |  | Gallery 1203 - F120/Line-Ups // Condensate connections to Floor Drains | 10d | 2026-11-05 | 2026-11-19 | B12000-B-EQP-93 SS+5d, B12000-B-EQP-99 SS+5d | 25d |
| B12000-B-EQP-108 |  | Gallery 1203 - F120/Line-Ups // Electrical Gear FOD Inspection Pre-Start Up | 2d | 2026-11-12 | 2026-11-13 | B12000-B-EQP-103, B12000-B-EQP-107, B12000-B-EQP-104 | 32d |
| B12000-B-EQP-106 |  | Gallery 1203 - F120/Line-Ups // Mechanical Gear FOD Inspection Pre-Start Up | 3d | 2026-11-20 | 2026-11-24 | B12000-B-EQP-92, B12000-B-EQP-99, B12000-B-EQP-93, B12000-B-EQP-102 | 25d |
|  | 7 | **G120** |  | 2026-10-16 | 2026-11-25 |  |  |
| B12000-B-EQP-109 |  | Gallery 1203 - G120/Line-Ups // Set CRAH-DH1200-35 | 1d | 2026-10-16 | 2026-10-16 | B12000-B-EQP-94 | -9d |
| B12000-B-EQP-112 |  | Gallery 1203 - G120/Line-Ups // Set CRAH-DH1200-36 | 1d | 2026-10-16 | 2026-10-16 | B12000-B-EQP-109 FF, B12000-B-EQP-109 SS | -9d |
| B12000-B-EQP-113 |  | Gallery 1203 - G120/Line-Ups // Set MOD G140-01 (Does No apply) | 1d | 2026-10-16 | 2026-10-16 | B12000-B-EQP-112 FF | 31d |
| B12000-B-EQP-114 |  | Gallery 1203 - G120/Line-Ups // Set MOD G140-02 (Does No apply) | 1d | 2026-10-16 | 2026-10-16 | B12000-B-EQP-113 SS | 31d |
| B12000-B-EQP-116 |  | Gallery 1203 - G120/Line-Ups // Pull Cable Tray Feed from MOD to CRAHU's | 5d | 2026-10-19 | 2026-10-23 | B12000-B-EQP-114 | 37d |
| B12000-B-EQP-118 |  | Gallery 1203 - G120/Line-Ups // Mount Electrial Gear for Chiller Controls | 10d | 2026-10-19 | 2026-10-30 | B12000-B-EQP-114 | 31d |
| B12000-B-EQP-211 |  | Gallery 1203 - G120/Line-Ups // Set CDU-DH1200-35 | 1d | 2026-10-19 | 2026-10-19 | B12000-B-EQP-114 | 45d |
| B12000-B-EQP-212 |  | Gallery 1203 - G120/Line-Ups // Set CDU-DH1200-36 | 1d | 2026-10-20 | 2026-10-20 | B12000-B-EQP-211 | 45d |
| B12000-B-EQP-115 |  | Gallery 1203 - G120/Line-Ups // Pull Feeder from SWD to MOD | 1d | 2026-10-21 | 2026-10-21 | B12000-B-EQP-114, B12000-B-EQP-212 | 45d |
| B12000-B-EQP-110 |  | Gallery 1203 - G120/Line-Ups // Connect CRAH units | 10d | 2026-10-23 | 2026-11-05 | B12000-B-EQP-112, B12000-B-EQP-109 SS+5d | 24d |
| B12000-B-EQP-117 |  | Gallery 1203 - G120/Line-Ups // Mechanical Connections to CRAHU Units | 10d | 2026-10-23 | 2026-11-05 | B12000-B-EQP-112 SS+5d | 29d |
| B12000-B-EQP-123 |  | Gallery 1203 - G120/Line-Ups // Pull Feeder and Branch circuits to MIsc equipment and Chiller controls | 10d | 2026-10-23 | 2026-11-05 | B12000-B-EQP-118 SS+4d | 31d |
| B12000-B-EQP-119 |  | Gallery 1203 - G120/Line-Ups // Pull Cable Tray Feed from MOD to CRAHU's | 5d | 2026-10-26 | 2026-10-30 | B12000-B-EQP-116 | 37d |
| B12000-B-EQP-122 |  | Gallery 1203 - G120/Line-Ups // Terminate CRAHU Electrical Connections | 5d | 2026-10-28 | 2026-11-03 | B12000-B-EQP-116, B12000-B-EQP-119 SS+2d | 37d |
| B12000-B-EQP-125 |  | Gallery 1203 - G120/Line-Ups // Teminate all Misc Equipment and Chiller Controls | 10d | 2026-10-29 | 2026-11-12 | B12000-B-EQP-123 SS+4d | 31d |
| B12000-B-EQP-111 |  | Gallery 1203 - G120/Line-Ups // Condensate connections to Floor Drains | 10d | 2026-10-30 | 2026-11-13 | B12000-B-EQP-110 SS+5d | 24d |
| B12000-B-EQP-121 |  | Gallery 1203 - G120/Line-Ups // Terminat Mod Panels | 1d | 2026-11-02 | 2026-11-02 | B12000-B-EQP-115, B12000-B-EQP-116, B12000-B-EQP-119 | 38d |
| B12000-B-EQP-120 |  | Gallery 1203 - G120/Line-Ups // Condensate connections to Floor Drains | 10d | 2026-11-06 | 2026-11-20 | B12000-B-EQP-111 SS+5d, B12000-B-EQP-117 SS+5d | 24d |
| B12000-B-EQP-126 |  | Gallery 1203 - G120/Line-Ups // Electrical Gear FOD Inspection Pre-Start Up | 2d | 2026-11-13 | 2026-11-16 | B12000-B-EQP-121, B12000-B-EQP-125, B12000-B-EQP-122 | 31d |
| B12000-B-EQP-124 |  | Gallery 1203 - G120/Line-Ups // Mechanical Gear FOD Inspection Pre-Start Up | 3d | 2026-11-23 | 2026-11-25 | B12000-B-EQP-110, B12000-B-EQP-117, B12000-B-EQP-111, B12000-B-EQP-120 | 24d |
|  | 8 | **H120** |  | 2026-10-16 | 2026-11-25 |  |  |
| B12000-B-EQP-127 |  | Gallery 1203 - H120/Line-Ups // Set CRAH-DH1200-37 | 1d | 2026-10-16 | 2026-10-16 | B12000-B-EQP-112 SS | -9d |
| B12000-B-EQP-130 |  | Gallery 1203 - H120/Line-Ups // Set CRAH-DH1200-38 | 1d | 2026-10-16 | 2026-10-16 | B12000-B-EQP-127 FF, B12000-B-EQP-127 SS | -9d |
| B12000-B-EQP-131 |  | Gallery 1203 - H120/Line-Ups // Set MOD H140-01 | 1d | 2026-10-16 | 2026-10-16 | B12000-B-EQP-130 FF | 31d |
| B12000-B-EQP-132 |  | Gallery 1203 - H120/Line-Ups // Set MOD H140-02 | 1d | 2026-10-16 | 2026-10-16 | B12000-B-EQP-131 SS | 31d |

| ID | WBS | Task | Duration | Start | Finish | Predecessors | Total float |
| --- | --- | --- | --- | --- | --- | --- | --- |
| B12000-B-EQP-134 |  | Gallery 1203 - H120/Line-Ups // Pull Cable Tray Feed from MOD to CRAHU's | 5d | 2026-10-19 | 2026-10-23 | B12000-B-EQP-132 | 37d |
| B12000-B-EQP-136 |  | Gallery 1203 - H120/Line-Ups // Mount Electrial Gear for Chiller Controls | 10d | 2026-10-19 | 2026-10-30 | B12000-B-EQP-132 | 31d |
| B12000-B-EQP-213 |  | Gallery 1203 - H120/Line-Ups // Set CDU-DH1200-37 | 1d | 2026-10-19 | 2026-10-19 | B12000-B-EQP-132 | 45d |
| B12000-B-EQP-214 |  | Gallery 1203 - H120/Line-Ups // Set CDU-DH1200-38 | 1d | 2026-10-20 | 2026-10-20 | B12000-B-EQP-213 | 45d |
| B12000-B-EQP-133 |  | Gallery 1203 - H120/Line-Ups // Pull Feeder from SWD to MOD | 1d | 2026-10-21 | 2026-10-21 | B12000-B-EQP-132, B12000-B-EQP-214 | 45d |
| B12000-B-EQP-128 |  | Gallery 1203 - H120/Line-Ups // Connect CRAH units | 10d | 2026-10-23 | 2026-11-05 | B12000-B-EQP-130, B12000-B-EQP-127 SS+5d | 24d |
| B12000-B-EQP-135 |  | Gallery 1203 - H120/Line-Ups // Mechanical Connections to CRAHU Units | 10d | 2026-10-23 | 2026-11-05 | B12000-B-EQP-130 SS+5d | 29d |
| B12000-B-EQP-141 |  | Gallery 1203 - H120/Line-Ups // Pull Feeder and Branch circuits to MIsc equipment and Chiller controls | 10d | 2026-10-23 | 2026-11-05 | B12000-B-EQP-136 SS+4d | 31d |
| B12000-B-EQP-137 |  | Gallery 1203 - H120/Line-Ups // Pull Cable Tray Feed from MOD to CRAHU's | 5d | 2026-10-26 | 2026-10-30 | B12000-B-EQP-134 | 37d |
| B12000-B-EQP-140 |  | Gallery 1203 - H120/Line-Ups // Terminate CRAHU Electrical Connections | 5d | 2026-10-28 | 2026-11-03 | B12000-B-EQP-134, B12000-B-EQP-137 SS+2d | 37d |
| B12000-B-EQP-143 |  | Gallery 1203 - H120/Line-Ups // Teminate all Misc Equipment and Chiller Controls | 10d | 2026-10-29 | 2026-11-12 | B12000-B-EQP-141 SS+4d | 31d |
| B12000-B-EQP-129 |  | Gallery 1203 - H120/Line-Ups // Condensate connections to Floor Drains | 10d | 2026-10-30 | 2026-11-13 | B12000-B-EQP-128 SS+5d | 24d |
| B12000-B-EQP-139 |  | Gallery 1203 - H120/Line-Ups // Terminat Mod Panels | 1d | 2026-11-02 | 2026-11-02 | B12000-B-EQP-133, B12000-B-EQP-134, B12000-B-EQP-137 | 38d |
| B12000-B-EQP-138 |  | Gallery 1203 - H120/Line-Ups // Condensate connections to Floor Drains | 10d | 2026-11-06 | 2026-11-20 | B12000-B-EQP-129 SS+5d, B12000-B-EQP-135 SS+5d | 24d |
| B12000-B-EQP-144 |  | Gallery 1203 - H120/Line-Ups // Electrical Gear FOD Inspection Pre-Start Up | 2d | 2026-11-13 | 2026-11-16 | B12000-B-EQP-139, B12000-B-EQP-143, B12000-B-EQP-140 | 31d |
| B12000-B-EQP-142 |  | Gallery 1203 - H120/Line-Ups // Mechanical Gear FOD Inspection Pre-Start Up | 3d | 2026-11-23 | 2026-11-25 | B12000-B-EQP-128, B12000-B-EQP-135, B12000-B-EQP-129, B12000-B-EQP-138 | 24d |
|  | 9 | **J120** |  | 2026-10-16 | 2026-11-25 |  |  |
| B12000-B-EQP-145 |  | Gallery 1203 - J120/Line-Ups // Set CRAH-DH1200-39 | 1d | 2026-10-16 | 2026-10-16 | B12000-B-EQP-130 SS | -9d |
| B12000-B-EQP-148 |  | Gallery 1203 - J120/Line-Ups // Set CRAH-DH1200-40 | 1d | 2026-10-19 | 2026-10-19 | B12000-B-EQP-145 | -9d |
| B12000-B-EQP-149 |  | Gallery 1203 - J120/Line-Ups // Set MOD J140-01 | 1d | 2026-10-19 | 2026-10-19 | B12000-B-EQP-148 FF | 30d |
| B12000-B-EQP-150 |  | Gallery 1203 - J120/Line-Ups // Set MOD J140-02 | 1d | 2026-10-19 | 2026-10-19 | B12000-B-EQP-149 SS | 30d |
| B12000-B-EQP-152 |  | Gallery 1203 - J120/Line-Ups // Pull Cable Tray Feed from MOD to CRAHU's | 5d | 2026-10-20 | 2026-10-26 | B12000-B-EQP-150 | 36d |
| B12000-B-EQP-154 |  | Gallery 1203 - J120/Line-Ups // Mount Electrial Gear for Chiller Controls | 10d | 2026-10-20 | 2026-11-02 | B12000-B-EQP-150 | 30d |
| B12000-B-EQP-215 |  | Gallery 1203 - J120/Line-Ups // Set CDU-DH1200-39 | 1d | 2026-10-20 | 2026-10-20 | B12000-B-EQP-150 | 44d |
| B12000-B-EQP-216 |  | Gallery 1203 - J120/Line-Ups // Set CDU-DH1200-40 | 1d | 2026-10-21 | 2026-10-21 | B12000-B-EQP-215 | 44d |
| B12000-B-EQP-151 |  | Gallery 1203 - J120/Line-Ups // Pull Feeder from SWD to MOD | 1d | 2026-10-22 | 2026-10-22 | B12000-B-EQP-150, B12000-B-EQP-216 | 44d |
| B12000-B-EQP-146 |  | Gallery 1203 - J120/Line-Ups // Connect CRAH units | 10d | 2026-10-23 | 2026-11-05 | B12000-B-EQP-148, B12000-B-EQP-145 SS+5d | 24d |
| B12000-B-EQP-153 |  | Gallery 1203 - J120/Line-Ups // Mechanical Connections to CRAHU Units | 10d | 2026-10-26 | 2026-11-06 | B12000-B-EQP-148 SS+5d | 28d |
| B12000-B-EQP-159 |  | Gallery 1203 - J120/Line-Ups // Pull Feeder and Branch circuits to MIsc equipment and Chiller controls | 10d | 2026-10-26 | 2026-11-06 | B12000-B-EQP-154 SS+4d | 30d |
| B12000-B-EQP-155 |  | Gallery 1203 - J120/Line-Ups // Pull Cable Tray Feed from MOD to CRAHU's | 5d | 2026-10-27 | 2026-11-02 | B12000-B-EQP-152 | 36d |
| B12000-B-EQP-158 |  | Gallery 1203 - J120/Line-Ups // Terminate CRAHU Electrical Connections | 5d | 2026-10-29 | 2026-11-04 | B12000-B-EQP-152, B12000-B-EQP-155 SS+2d | 36d |
| B12000-B-EQP-147 |  | Gallery 1203 - J120/Line-Ups // Condensate connections to Floor Drains | 10d | 2026-10-30 | 2026-11-13 | B12000-B-EQP-146 SS+5d | 24d |
| B12000-B-EQP-161 |  | Gallery 1203 - J120/Line-Ups // Teminate all Misc Equipment and Chiller Controls | 10d | 2026-10-30 | 2026-11-13 | B12000-B-EQP-159 SS+4d | 30d |
| B12000-B-EQP-157 |  | Gallery 1203 - J120/Line-Ups // Terminat Mod Panels | 1d | 2026-11-03 | 2026-11-03 | B12000-B-EQP-151, B12000-B-EQP-152, B12000-B-EQP-155 | 37d |
| B12000-B-EQP-156 |  | Gallery 1203 - J120/Line-Ups // Condensate connections to Floor Drains | 10d | 2026-11-06 | 2026-11-20 | B12000-B-EQP-147 SS+5d, B12000-B-EQP-153 SS+5d | 24d |
| B12000-B-EQP-162 |  | Gallery 1203 - J120/Line-Ups // Electrical Gear FOD Inspection Pre-Start Up | 2d | 2026-11-16 | 2026-11-17 | B12000-B-EQP-157, B12000-B-EQP-161, B12000-B-EQP-158 | 30d |
| B12000-B-EQP-160 |  | Gallery 1203 - J120/Line-Ups // Mechanical Gear FOD Inspection Pre-Start Up | 3d | 2026-11-23 | 2026-11-25 | B12000-B-EQP-146, B12000-B-EQP-153, B12000-B-EQP-147, B12000-B-EQP-156 | 24d |
|  | 10 | **K120** |  | 2026-10-19 | 2026-11-27 |  |  |
| B12000-B-EQP-163 |  | Gallery 1203 - K120/Line-Ups // Set CRAH-DH1200-41 | 1d | 2026-10-19 | 2026-10-19 | B12000-B-EQP-148 SS | -9d |
| B12000-B-EQP-166 |  | Gallery 1203 - K120/Line-Ups // Set CRAH-DH1200-42 | 1d | 2026-10-19 | 2026-10-19 | B12000-B-EQP-163 FF, B12000-B-EQP-163 SS | -9d |
| B12000-B-EQP-167 |  | Gallery 1203 - K120/Line-Ups // Set MOD K140-01 (Does No apply) | 1d | 2026-10-19 | 2026-10-19 | B12000-B-EQP-166 FF | 30d |
| B12000-B-EQP-168 |  | Gallery 1203 - K120/Line-Ups // Set MOD K140-02 (Does No apply) | 1d | 2026-10-19 | 2026-10-19 | B12000-B-EQP-167 SS | 30d |
| B12000-B-EQP-169 |  | Gallery 1203 - K120/Line-Ups // Pull Feeder from SWD to MOD | 1d | 2026-10-20 | 2026-10-20 | B12000-B-EQP-168 | 46d |
| B12000-B-EQP-170 |  | Gallery 1203 - K120/Line-Ups // Pull Cable Tray Feed from MOD to CRAHU's | 5d | 2026-10-20 | 2026-10-26 | B12000-B-EQP-168 | 36d |
| B12000-B-EQP-172 |  | Gallery 1203 - K120/Line-Ups // Mount Electrial Gear for Chiller Controls | 10d | 2026-10-20 | 2026-11-02 | B12000-B-EQP-168 | 30d |
| B12000-B-EQP-164 |  | Gallery 1203 - K120/Line-Ups // Connect CRAH units | 10d | 2026-10-26 | 2026-11-06 | B12000-B-EQP-166, B12000-B-EQP-163 SS+5d | 23d |
| B12000-B-EQP-171 |  | Gallery 1203 - K120/Line-Ups // Mechanical Connections to CRAHU Units | 10d | 2026-10-26 | 2026-11-06 | B12000-B-EQP-166 SS+5d | 28d |
| B12000-B-EQP-177 |  | Gallery 1203 - K120/Line-Ups // Pull Feeder and Branch circuits to MIsc equipment and Chiller controls | 10d | 2026-10-26 | 2026-11-06 | B12000-B-EQP-172 SS+4d | 30d |
| B12000-B-EQP-173 |  | Gallery 1203 - K120/Line-Ups // Pull Cable Tray Feed from MOD to CRAHU's | 5d | 2026-10-27 | 2026-11-02 | B12000-B-EQP-170 | 36d |
| B12000-B-EQP-176 |  | Gallery 1203 - K120/Line-Ups // Terminate CRAHU Electrical Connections | 5d | 2026-10-29 | 2026-11-04 | B12000-B-EQP-170, B12000-B-EQP-173 SS+2d | 36d |
| B12000-B-EQP-179 |  | Gallery 1203 - K120/Line-Ups // Teminate all Misc Equipment and Chiller Controls | 10d | 2026-10-30 | 2026-11-13 | B12000-B-EQP-177 SS+4d | 30d |
| B12000-B-EQP-165 |  | Gallery 1203 - K120/Line-Ups // Condensate connections to Floor Drains | 10d | 2026-11-02 | 2026-11-16 | B12000-B-EQP-164 SS+5d | 23d |
| B12000-B-EQP-175 |  | Gallery 1203 - K120/Line-Ups // Terminat Mod Panels | 1d | 2026-11-03 | 2026-11-03 | B12000-B-EQP-169, B12000-B-EQP-170, B12000-B-EQP-173 | 37d |
| B12000-B-EQP-174 |  | Gallery 1203 - K120/Line-Ups // Condensate connections to Floor Drains | 10d | 2026-11-09 | 2026-11-23 | B12000-B-EQP-165 SS+5d, B12000-B-EQP-171 SS+5d | 23d |
| B12000-B-EQP-180 |  | Gallery 1203 - K120/Line-Ups // Electrical Gear FOD Inspection Pre-Start Up | 2d | 2026-11-16 | 2026-11-17 | B12000-B-EQP-175, B12000-B-EQP-179, B12000-B-EQP-176 | 30d |
| B12000-B-EQP-178 |  | Gallery 1203 - K120/Line-Ups // Mechanical Gear FOD Inspection Pre-Start Up | 3d | 2026-11-24 | 2026-11-27 | B12000-B-EQP-164, B12000-B-EQP-171, B12000-B-EQP-165, B12000-B-EQP-174 | 23d |
|  | 11 | **R120** |  | 2026-09-30 | 2026-11-27 |  |  |
| B12000-B-EQP-187 |  | Gallery 1203 - R120/Line-Ups // Pull Feeder from SWD to MOD | 1d | 2026-09-30 | 2026-09-30 |  | 16d |
| B12000-B-EQP-188 |  | Gallery 1203 - R120/Line-Ups // Pull Cable Tray Feed from MOD to CRAHU's | 5d | 2026-09-30 | 2026-10-06 |  | 8d |
| B12000-B-EQP-191 |  | Gallery 1203 - R120/Line-Ups // Pull Cable Tray Feed from MOD to CRAHU's | 5d | 2026-09-30 | 2026-10-06 | B12000-B-EQP-188 SS | 8d |
| B12000-B-EQP-185 |  | Gallery 1203 - R120/Line-Ups // Set MOD R140-01 (No Apply) | 1d | 2026-10-01 | 2026-10-01 | ARC-DEL-ACT-01 | 178d |
| B12000-B-EQP-186 |  | Gallery 1203 - R120/Line-Ups // Set MOD R140-02 (Does No apply) | 1d | 2026-10-01 | 2026-10-01 | ARC-DEL-ACT-01 | 178d |
| B12000-B-EQP-193 |  | Gallery 1203 - R120/Line-Ups // Terminat Mod Panels | 1d | 2026-10-07 | 2026-10-07 | B12000-B-EQP-187, B12000-B-EQP-188, B12000-B-EQP-191 | 30d |
| B12000-B-EQP-194 |  | Gallery 1203 - R120/Line-Ups // Terminate CRAHU Electrical Connections | 5d | 2026-10-07 | 2026-10-14 | B12000-B-EQP-188, B12000-B-EQP-191 SS+2d | 26d |
| B12000-B-EQP-181 |  | Gallery 1203 - R120/Line-Ups // Set CRAH-DH1200-43 | 1d | 2026-10-19 | 2026-10-19 | B12000-B-EQP-166 SS | -9d |
| B12000-B-EQP-184 |  | Gallery 1203 - R120/Line-Ups // Set CRAH-DH1200-44 | 1d | 2026-10-19 | 2026-10-19 | B12000-B-EQP-181 FF, B12000-B-EQP-181 SS | -8d |
| B12000-B-EQP-190 |  | Gallery 1203 - R120/Line-Ups // Mount Electrial Gear for Chiller Controls | 10d | 2026-10-20 | 2026-11-02 | B12000-B-EQP-184 | -8d |
| B12000-B-EQP-195 |  | Gallery 1203 - R120/Line-Ups // Pull Feeder and Branch circuits to MIsc equipment and Chiller controls | 10d | 2026-10-20 | 2026-11-02 | B12000-B-EQP-190 SS | -8d |
| B12000-B-EQP-197 |  | Gallery 1203 - R120/Line-Ups // Teminate all Misc Equipment and Chiller Controls | 10d | 2026-10-20 | 2026-11-02 | B12000-B-EQP-195 SS | 13d |
| B12000-B-EQP-182 |  | Gallery 1203 - R120/Line-Ups // Connect CRAH units | 10d | 2026-10-26 | 2026-11-06 | B12000-B-EQP-184, B12000-B-EQP-181 SS+5d | -9d |

| ID | WBS | Task | Duration | Start | Finish | Predecessors | Complete | Total float |
| --- | --- | --- | --- | --- | --- | --- | --- | --- |
| B12000-B-EQP-189 |  | Gallery 1203 - R120/Line-Ups // Mechanical Connections to CRAHU Units | 10d | 2026-10-26 | 2026-11-06 | B12000-B-EQP-184 SS+5d |  | -4d |
| B12000-B-EQP-183 |  | Gallery 1203 - R120/Line-Ups // Condensate connections to Floor Drains | 10d | 2026-11-02 | 2026-11-16 | B12000-B-EQP-182 SS+5d |  | -9d |
| B12000-B-EQP-198 |  | Gallery 1203 - R120/Line-Ups // Electrical Gear FOD Inspection Pre-Start Up | 2d | 2026-11-03 | 2026-11-04 | B12000-B-EQP-193, B12000-B-EQP-197, B12000-B-EQP-194 |  | 13d |
| B12000-B-EQP-192 |  | Gallery 1203 - R120/Line-Ups // Condensate connections to Floor Drains | 10d | 2026-11-09 | 2026-11-23 | B12000-B-EQP-183 SS+5d, B12000-B-EQP-189 SS+5d |  | -9d |
| B12000-B-EQP-196 |  | Gallery 1203 - R120/Line-Ups // Mechanical Gear FOD Inspection Pre-Start Up | 3d | 2026-11-24 | 2026-11-27 | B12000-B-EQP-182, B12000-B-EQP-189, B12000-B-EQP-183, B12000-B-EQP-192 |  | -9d |
|  | 12 | **Equipment Connections** |  | 2026-10-01 | 2026-11-10 |  |  |  |
|  | 1 | **CRAH** |  | 2026-10-07 | 2026-10-19 |  |  |  |
| DH1200-004 |  | Gallery 1203 // DH 1200 / Elec Room // CRAH Duct Work Termination | 2d | 2026-10-07 | 2026-10-08 | B12000-B-EQP-191 |  | 8d |
| DH1200-003 |  | Gallery 1203 // DH 1200 / Elec Room // CRAH Chilled Water | 2d | 2026-10-09 | 2026-10-13 | DH1200-004 |  | 8d |
| DH1200-001 |  | Gallery 1203 // DH 1200 / Elec Room // CRAH Power Connections | 2d | 2026-10-14 | 2026-10-15 | DH1200-003 |  | 8d |
| DH1200-002 |  | Gallery 1203 // DH 1200 / Elec Room // CRAH LV Connections | 2d | 2026-10-16 | 2026-10-19 | DH1200-001 |  | 8d |
|  | 2 | **CDU** |  | 2026-11-03 | 2026-11-10 |  |  |  |
| DH1200-007 |  | Gallery 1203 // DH 1200 / Elec Room // CDU Chilled Water Connections | 2d | 2026-11-03 | 2026-11-04 | B12000-B-EQP-195 |  | -8d |
| DH1200-005 |  | Gallery 1203 // DH 1200 /Elec Room // CDU Power Connections | 2d | 2026-11-05 | 2026-11-06 | DH1200-007 |  | -8d |
| DH1200-006 |  | Gallery 1203 // DH 1200 / Elec Room // CDU Controls Connections | 2d | 2026-11-09 | 2026-11-10 | DH1200-005 |  | -8d |
|  | 3 | **MOD** |  | 2026-10-01 | 2026-10-06 |  |  |  |
| DH1200-008 |  | Gallery 1203 // DH 1200 / Elec Room // MOD Power Connections | 2d | 2026-10-01 | 2026-10-02 | B12000-B-EQP-187 |  | 16d |
| DH1200-009 |  | Gallery 1203 // DH 1200 / Elec Room // MOD LV Connections | 2d | 2026-10-05 | 2026-10-06 | DH1200-008 |  | 16d |
|  | 6 | **Corridors** |  | 2026-07-27 | 2026-11-05 |  |  |  |
|  | 1 | **Corridor 1000A (No apply)** |  |  |  |  |  |  |
|  | 3 | **Corridor 1000** |  | 2026-07-27 | 2026-10-27 |  |  |  |
| B12000.12078 |  | DH 1200/Corridor 1000 // Seal concrete | 1d | 2026-07-27 A | 2026-08-24 A | B12003.1000 | 100% |  |
| B12000.12071 |  | DH 1200/Corridor 1000 // MEPF high overhead install | 3d | 2026-07-28 A | 2026-09-11 A | B12000.12069 | 100% |  |
| B12000.12069 |  | DH 1200/Corridor 1000 // Frame walls | 3d | 2026-08-19 A | 2026-08-20 A | B1200100.1040 | 100% |  |
| B12000.12068 |  | DH 1200/Corridor 1000 // MEPF Overhead Hangers | 5d | 2026-08-20 A | 2026-09-15 A | B12000.12071 SS | 100% |  |
| B12000.12070 |  | DH 1200/Corridor 1000 // Install Top Down Sheetrock | 3d | 2026-08-21 A | 2026-08-31 A | B12000.12069 | 100% |  |
| B12000.12072 |  | DH 1200/Corridor 1000 // MEP rough in walls | 3d | 2026-08-24 A | 2026-09-04 A | B12000.12071 SS, B12000.12069, B12000.12068 SS | 100% |  |
| B12000.12074 |  | DH 1200/Corridor 1000 // Install Balance of Sheetrock on Walls | 5d | 2026-08-24 A | 2026-09-02 A | B12000.12070 SS | 100% |  |
| B12000.12073 |  | DH 1200/Corridor 1000 // In wall inspection | 1d | 2026-09-04 A | 2026-09-08 A | B12000.12072 | 100% |  |
| B12000.12075 |  | DH 1200/Corridor 1000 // Tape and finish walls | 8d | 2026-09-10 A | 2026-09-21 A | B12000.12070, B12000.12073, B12000.12074 | 100% |  |
| B12000.12077 |  | DH 1200/Corridor 1000 // Prime and Paint first coat walls | 3d | 2026-09-22 A | 2026-09-23 A | B12000.12075 | 100% |  |
| B12000.12076 |  | DH 1200/Corridor 1000 // Install wall door frames | 3d | 2026-09-30 | 2026-10-02 | B12000.12075, B12000.12069 SS+1d |  | 9d |
| B120001.3123 |  | DH 1200/Corridor 1000 // Install Overhead Cable Ladder / 36" Cable Tray - TFO | 5d | 2026-09-30 | 2026-10-06 | B12000.12071 |  | 2d |
| B12000.12079 |  | DH 1200/Corridor 1000 // Install lights and exit signs | 3d | 2026-10-05 | 2026-10-07 | B12000.12076, B12000.12077 |  | 9d |
| B120001.3124 |  | DH 1200/Corridor 1000 // Install Overhead HAC - TFO | 5d | 2026-10-07 | 2026-10-14 | B120001.3123 |  | 2d |
| B12000.12080 |  | DH 1200/Corridor 1000 // Final Coat Paint & Touchup Walls | 4d | 2026-10-08 | 2026-10-14 | B12000.12079 |  | 9d |
| B12000.12100 |  | DH 1200/Corridor 1000 // Electrical Equipment Install | 7d | 2026-10-15 | 2026-10-23 | B120001.3124, B12000.12080 FF |  | 2d |
| B12000.12081 |  | DH 1200/Corridor 1000 // Install MEP Devices and Trim | 2d | 2026-10-26 | 2026-10-27 | B12000.12100, B12000.12080 |  | 2d |
| B12000.12098 |  | DH 1200/Corridor 1000 // ready to Receive Equipment | 0d | 2026-10-27 | 2026-10-27 | B12000.12081 FF |  | 2d |
|  | 2 | **Corridor 1000E** |  | 2026-07-28 | 2026-11-05 |  |  |  |
| B12000.12092 |  | DH 1200/Corridor 1000C // Seal concrete | 1d | 2026-07-28 A | 2026-08-31 A | B12000.12078 SS | 100% |  |
| B12000.12082 |  | DH 1200/Corridor 1000C // MEPF Overhead Hangers | 5d | 2026-08-17 A | 2026-09-08 A | B12000.12092 | 100% |  |
| B12000.12083 |  | DH 1200/Corridor 1000C // Frame walls | 3d | 2026-09-01 A | 2026-09-11 A | B12000.12069, B12000.12082 | 100% |  |
| B12000.12086 |  | DH 1200/Corridor 1000C // MEP rough in walls | 3d | 2026-09-04 A | 2026-09-18 A | B12000.12083 | 100% |  |
| B12000.12090 |  | DH 1200/Corridor 1000C // Install wall door frames | 3d | 2026-09-14 A | 2026-09-16 A | B12000.12083 SS+1d | 100% |  |
| B12000.12085 |  | DH 1200/Corridor 1000C // MEPF high overhead install | 3d | 2026-09-24 A | 2026-10-02 | B12000.12092 |  | 6d |
| B12000.12084 |  | DH 1200/Corridor 1000C // Install Top Down Sheetrock | 3d | 2026-09-29 A | 2026-10-02 | B12000.12086 |  | -5d |
| B12000.12087 |  | DH 1200/Corridor 1000C // In wall inspection | 1d | 2026-09-30 | 2026-09-30 | B12000.12086 |  | -3d |
| B12000.12088 |  | DH 1200/Corridor 1000C // Install Balance of Sheetrock on Walls | 5d | 2026-10-05 | 2026-10-09 | B12000.12084, B12000.12087 |  | -5d |
| B120001.3125 |  | DH 1200/Corridor 1000C // Install Overhead Cable Ladder / 36" Cable Tray - TFO | 5d | 2026-10-05 | 2026-10-09 | B12000.12085 |  | 6d |
| B12000.12089 |  | DH 1200/Corridor 1000C // Tape and finish walls | 8d | 2026-10-13 | 2026-10-22 | B12000.12088 |  | -5d |
| B120001.3126 |  | DH 1200/Corridor 1000C // Install Overhead HAC - TFO | 5d | 2026-10-13 | 2026-10-19 | B120001.3125 |  | 6d |
| B12000.12091 |  | DH 1200/Corridor 1000C // Prime and Paint first coat walls | 3d | 2026-10-23 | 2026-10-27 | B12000.12089 |  | -5d |
| B12000.12093 |  | DH 1200/Corridor 1000C // Install lights and exit signs | 3d | 2026-10-28 | 2026-10-30 | B12000.12090, B12000.12091 |  | -5d |
| B12000.12101 |  | DH 1200/Corridor 1000C // Electrical Equipment Install | 7d | 2026-10-28 | 2026-11-05 | B12000.12094 FF |  | -5d |
| B12000.12094 |  | DH 1200/Corridor 1000C // Final Coat Paint & Touchup Walls | 4d | 2026-11-02 | 2026-11-05 | B12000.12093 |  | -5d |
| B12000.12095 |  | DH 1200/Corridor 1000C // Install MEP Devices and Trim | 2d | 2026-11-04 | 2026-11-05 | B120001.3126, B12000.12101 FF, B12000.12094 FF |  | -5d |
| B12000.12099 |  | DH 1200/Corridor 1000C // Ready to Receive Equipment | 0d | 2026-11-05 | 2026-11-05 | B12000.12095 FF |  | -5d |
|  | 10 | **Loading Dock 1030** |  | 2026-07-30 | 2026-11-17 |  |  |  |
| B12000B..1040 |  | DH 1200/Loading Dock // Frame Walls including Backing | 4d | 2026-07-30 A | 2026-09-14 A | B12000.12083 SS | 100% |  |
| B12000B..1060 |  | DH 1200/Loading Dock // MEPF Install Rough Wall | 2d | 2026-08-05 A | 2026-09-29 A | B12000B..1040 | 100% |  |
| B12000B..1010 |  | DH 1200/Loading Dock // MEPF Layout of Overhead Supports | 2d | 2026-09-28 A | 2026-10-01 | B12000B..1060 |  | -7d |
| B12000B..1020 |  | DH 1200/Loading Dock // MEPF Install High Overhead Systems | 6d | 2026-09-29 A | 2026-10-07 | B12000B..1010 SS |  | -7d |
| B12000B..1000 |  | DH 1200/Loading Dock // Seal Concrete | 2d | 2026-09-30 | 2026-10-01 | SOG.1448 |  | 16d |
| B12000B..1080 |  | DH 1200/Loading Dock // Rough Wall Inspspection (Approval to Close up) | 1d | 2026-09-30 | 2026-09-30 | B12000B..1060 |  | -2d |
| B12000B..1090 |  | DH 1200/Loading Dock // Install Balance of Sheetrock | 3d | 2026-10-08 | 2026-10-13 | B12000B..1080, B12000B..1020 |  | -7d |
| B12000B..1100 |  | DH 1200/Loading Dock // Tape and Finish Walls | 6d | 2026-10-14 | 2026-10-21 | B12000B..1090 |  | -7d |
| B12000B..1110 |  | DH 1200/Loading Dock // Prime and First Coat of Paint | 2d | 2026-10-22 | 2026-10-23 | B12000B..1100 |  | -7d |
| B12000B..1120 |  | DH 1200/Loading Dock // Install MEPF Overhead Ceiling Rough | 3d | 2026-10-26 | 2026-10-28 | B12000B..1110 |  | -7d |
| B12000B..1050 |  | DH 1200/Loading Dock // Install Door Frames | 1d | 2026-10-29 | 2026-10-29 | B12000B..1040 FF, B12000B..1120 |  | -6d |

| ID | WBS | Task | Duration | Start | Finish | Predecessors | Complete | Total float |
| --- | --- | --- | --- | --- | --- | --- | --- | --- |
| B12000B..1130 |  | DH 1200/Loading Dock // Install Lighting, Fire Alarm & Fire Protection | 2d | 2026-10-29 | 2026-10-30 | B12000B..1120 |  | -7d |
| B12000B..1140 |  | DH 1200/Loading Dock // Wall Touch up Final Coat of Paint | 3d | 2026-11-02 | 2026-11-04 | B12000B..1130, B12000B..1050 |  | -7d |
| B12000B..1150 |  | DH 1200/Loading Dock // Install Wall Base, Trim, and Devices | 3d | 2026-11-05 | 2026-11-09 | B12000B..1140, B12000B..1000 |  | -7d |
| B12000B..1161 |  | DH 1200/Loading Dock // Ready to receive Equipment | 0d | 2026-11-09 | 2026-11-09 | B12000B..1150 FF |  | -7d |
| B12000B..1160 |  | DH 1200/Loading Dock // Suffolk Pre Punch | 5d | 2026-11-10 | 2026-11-17 | B12000B..1161 |  | 30d |
|  | 11 | **IDF 1034** |  | 2026-07-28 | 2026-10-29 |  |  |  |
| B12002.1000 |  | DH 1200/IDF 1034 // Seal concrete | 2d | 2026-07-28 A | 2026-09-02 A | B12000.12092 | 100% |  |
| B12002.1030 |  | DH 1200/IDF 1034 // Frame walls | 5d | 2026-08-06 A | 2026-09-15 A | B12002.1010 SS | 100% |  |
| B12002.1040 |  | DH 1200/IDF 1034 // Install wall door frames | 3d | 2026-08-07 A | 2026-09-28 A | B12002.1030 SS+1d | 100% |  |
| B12002.1060 |  | DH 1200/IDF 1034 // MEP rough in walls | 3d | 2026-08-12 A | 2026-09-28 A | B12002.1040 | 100% |  |
| B12002.1080 |  | DH 1200/IDF 1034 // MEPF high overhead install | 3d | 2026-08-18 A | 2026-09-29 A | B12002.1060 | 100% |  |
| B12002.1010 |  | DH 1200/IDF 1034 // MEPF overhead layout | 5d | 2026-09-08 A | 2026-10-01 | B12002.1000, B12002.1000 FF | 60% | 0d |
| B12002.1050 |  | DH 1200/IDF 1034 // Install Top Down Sheetrock | 5d | 2026-09-30 | 2026-10-06 | B12002.1030 SS+3d |  | 1d |
| B12002.1070 |  | DH 1200/IDF 1034 // In wall inspection | 1d | 2026-09-30 | 2026-09-30 | B12002.1060 |  | 0d |
| B12002.1090 |  | DH 1200/IDF 1034 // Install Balance of Sheetrock on Walls | 5d | 2026-10-01 | 2026-10-07 | B12002.1070, B12002.1050 SS, B12002.1080 |  | 0d |
| B12002.1100 |  | DH 1200/IDF 1034 // Tape and finish walls | 8d | 2026-10-08 | 2026-10-20 | B12002.1090 |  | 0d |
| B12002.1110 |  | DH 1200/IDF 1034 // Prime and Paint first coat walls | 3d | 2026-10-16 | 2026-10-20 | B12002.1100 FF |  | 0d |
| B12002.1120 |  | DH 1200/IDF 1034 // Install lights and exit signs | 3d | 2026-10-21 | 2026-10-23 | B12002.1110 |  | 0d |
| B12002.1130 |  | DH 1200/IDF 1034 // Final Coat Paint & Touchup Walls | 4d | 2026-10-26 | 2026-10-29 | B12002.1120 |  | 0d |
| B12002.1140 |  | DH 1200/IDF 1034 // Install MEP Devices and Trim | 2d | 2026-10-28 | 2026-10-29 | B12002.1130 FF |  | 0d |
| B12002.1141 |  | DH 1200/IDF 1034 // ready to Receive Equipment | 0d | 2026-10-29 | 2026-10-29 | B12002.1140 FF |  | 0d |
|  | 12 | **Preaction 1033** |  | 2026-07-30 | 2026-11-05 |  |  |  |
| PRE.C3.1151 |  | DH 1200/Preaction 1033 // Preaction Seal concrete | 2d | 2026-07-30 A | 2026-09-04 A | B12002.1000, B12002.1000 FF | 100% |  |
| PRE.C3.1143 |  | DH 1200/Preaction 1033 // Preaction Frame walls | 5d | 2026-08-10 A | 2026-09-15 A | PRE.C3.1141 SS | 100% |  |
| PRE.C3.1142 |  | DH 1200/Preaction 1033 // Preaction Install wall door frames | 3d | 2026-08-11 A | 2026-09-28 A | PRE.C3.1143 SS+1d | 100% |  |
| PRE.C3.1144 |  | DH 1200/Preaction 1033 // Preaction MEP rough in walls | 3d | 2026-08-14 A | 2026-09-29 A | PRE.C3.1142 | 100% |  |
| PRE.C3.1141 |  | DH 1200/Preaction 1033 // Preaction MEPF overhead layout | 5d | 2026-09-08 A | 2026-10-01 | PRE.C3.1151 | 60% | -5d |
| PRE.C3.1147 |  | DH 1200/Preaction 1033 // Preaction MEPF high overhead install | 3d | 2026-09-29 A | 2026-10-02 | PRE.C3.1141 SS |  | -5d |
| PRE.C3.1145 |  | DH 1200/Preaction 1033 // Preaction In wall inspection | 1d | 2026-09-30 | 2026-09-30 | PRE.C3.1144 |  | -3d |
| PRE.C3.1146 |  | DH 1200/Preaction 1033 // Preaction Install Top Down Sheetrock | 5d | 2026-09-30 | 2026-10-06 | PRE.C3.1143 SS+3d |  | -2d |
| PRE.C3.1148 |  | DH 1200/Preaction 1033 // Preaction Install Balance of Sheetrock on Walls | 5d | 2026-10-05 | 2026-10-09 | PRE.C3.1145, PRE.C3.1146 SS, PRE.C3.1147 |  | -5d |
| PRE.C3.1149 |  | DH 1200/Preaction 1033 // Preaction Tape and finish walls | 8d | 2026-10-13 | 2026-10-22 | PRE.C3.1148 |  | -5d |
| PRE.C3.1150 |  | DH 1200/Preaction 1033 // Preaction Prime and Paint first coat walls | 3d | 2026-10-23 | 2026-10-27 | PRE.C3.1149 |  | -5d |
| PRE.C3.1152 |  | DH 1200/Preaction 1033 // Preaction Install lights and exit signs | 3d | 2026-10-28 | 2026-10-30 | PRE.C3.1150 |  | -5d |
| PRE.C3.1153 |  | DH 1200/Preaction 1033 // Preaction Final Coat Paint & Touchup Walls | 4d | 2026-11-02 | 2026-11-05 | PRE.C3.1152 |  | -5d |
| PRE.C3.1154 |  | DH 1200/Preaction 1033 // Preaction Install MEP Devices and Trim | 2d | 2026-11-04 | 2026-11-05 | PRE.C3.1153 FF |  | -5d |
| PRE.C3.1156 |  | DH 1200/Preaction 1033 // Ready to Receive Equipment | 0d | 2026-11-05 | 2026-11-05 | PRE.C3.1154 FF |  | -5d |
|  | 13 | **Restroom-Dock & Janitor** |  | 2026-08-12 | 2026-11-17 |  |  |  |
| B1200.1020 |  | DH 1200/Restroom-Dock & Janitor // RR-Doc-Jan Layout walls | 5d | 2026-08-12 A | 2026-09-18 A | PRE.C3.1143 SS+4d | 100% |  |
| B1200.1030 |  | DH 1200/Restroom-Dock & Janitor // RR-Doc-Jan Frame walls | 5d | 2026-08-19 A | 2026-09-25 A | B1200.1020 | 100% |  |
| B1200.1040 |  | DH 1200/Restroom-Dock & Janitor // RR-Doc-Jan Install wall door frames | 3d | 2026-08-20 A | 2026-09-29 A | B1200.1030 SS+1d | 100% |  |
| B1200.1010 |  | DH 1200/Restroom-Dock & Janitor // RR-Doc-Jan MEPF overhead layout | 5d | 2026-09-28 A | 2026-10-06 | B1200.1030 |  | 30d |
| B1200.1000 |  | DH 1200/Restroom-Dock & Janitor // RR-Doc-Jan Seal concrete | 2d | 2026-09-30 | 2026-10-01 | PRE.C3.1151 |  | 49d |
| B1200.1050 |  | DH 1200/Restroom-Dock & Janitor // RR-Doc-Jan Install Top Down Sheetrock | 5d | 2026-09-30 | 2026-10-06 | B1200.1030 SS+3d |  | 30d |
| B1200.1060 |  | DH 1200/Restroom-Dock & Janitor // RR-Doc-Jan MEP rough in walls | 3d | 2026-09-30 | 2026-10-02 | B1200.1040 |  | 34d |
| B1200.1070 |  | DH 1200/Restroom-Dock & Janitor // RR-Doc-Jan In wall inspection | 1d | 2026-10-05 | 2026-10-05 | B1200.1060 |  | 34d |
| B1200.1080 |  | DH 1200/Restroom-Dock & Janitor // RR-Doc-Jan MEPF high overhead install | 3d | 2026-10-07 | 2026-10-09 | B1200.1050, B1200.1010 |  | 30d |
| B1200.1090 |  | DH 1200/Restroom-Dock & Janitor // RR-Doc-Jan Install Balance of Sheetrock on Walls | 5d | 2026-10-13 | 2026-10-19 | B1200.1070, B1200.1050 SS, B1200.1080 |  | 30d |
| B1200.1100 |  | DH 1200/Restroom-Dock & Janitor // RR-Doc-Jan Tape and finish walls | 8d | 2026-10-20 | 2026-10-29 | B1200.1090, B1200.1000 FF |  | 30d |
| B1200.1110 |  | DH 1200/Restroom-Dock & Janitor // RR-Doc-Jan Prime and Paint first coat walls | 3d | 2026-10-30 | 2026-11-03 | B1200.1100 |  | 30d |
| B1200.1120 |  | DH 1200/Restroom-Dock & Janitor // RR-Doc-Jan Install lights and exit signs | 3d | 2026-11-04 | 2026-11-06 | B1200.1110 |  | 30d |
| B1200.1130 |  | DH 1200/Restroom-Dock & Janitor // RR-Doc-Jan Final Coat Paint & Touchup Walls | 4d | 2026-11-09 | 2026-11-13 | B1200.1120 |  | 30d |
| B1200.1140 |  | DH 1200/Restroom-Dock & Janitor // RR-Doc-Jan Install MEP Devices and Trim | 2d | 2026-11-16 | 2026-11-17 | B1200.1130 |  | 30d |
|  | 1 | **1200 Energization, Start-up & Commissioning** |  | 2026-11-12 | 2027-02-24 |  |  |  |
|  | 1 | **Energization & L3 Prefunctional Testing** |  | 2026-11-12 | 2027-01-15 |  |  |  |
| DH1200.L3CX.39 |  | DH1200 L3 Start | 0d | 2026-11-12 | 2026-11-12 | B120001.1180, B120001.3110, B120001.1240, B120001.1300, B120001.1310, B120001.1330, B120004.1140, B120004.1260, B120004.1280, B120004.1310, B120004.1250, B1200100.1110, B12000-A-EQP-215, DH1200.MG.A110.8685, DH1200.MG.A110.8689, DH1200.MG.A110.8692, DH1200-002, DH1200-006, DH1200-009, B12000.12081, B12000.12095, B12002.1140, PRE.C3.1154, B12000.12098, B12000.12099, B12000B..1161, B12002.1141, PRE.C3.1156, B12003.1141 |  | -8d |
| DH1200.L3CX.BMS.11 |  | DH1200 L3 PTPs & SOOs – BMS | 40d | 2026-11-12 | 2027-01-11 | DH1200.L3CX.ELEC.63 SS |  | -8d |
| DH1200.L3CX.ELEC.63 |  | DH1200 L3 FTEs | 5d | 2026-11-12 | 2026-11-18 | DH1200.L3CX.39 SS |  | -8d |
| DH1200.L3CX.ELEC.53 |  | DH1200 L3 Startup / Pre-Functional – ELECTRICAL | 15d | 2026-11-19 | 2026-12-10 | DH1200.L3CX.ELEC.63, B120004.1310, B12000-A-EQP-220, B12000-B-EQP-198 |  | 4d |
| DH1200.L3CX.MECH.33 |  | DH1200 L3 Startup / Pre-Functional – MECHANICAL | 20d | 2026-11-30 | 2026-12-28 | DH1200.L3CX.ELEC.63 SS+3d, B120001.1180, B12000-A-EQP-218, B12000-B-EQP-196, B120001.1330 |  | -9d |
| DH1200.L3CX.MECH.43 |  | DH1200 L3 TAB (Air, Water and Reports) – MECHANICAL | 10d | 2026-12-29 | 2027-01-12 | DH1200.L3CX.BMS.11 FF, DH1200.L3CX.MECH.33 |  | -9d |
| DH1200.L3CX.MECH.53 |  | DH1200 L3 FLS – MECHANICAL | 10d | 2026-12-31 | 2027-01-14 | DH1200.L3CX.ELEC.53, DH1200.L3CX.MECH.33, DH1200.L3CX.MECH.43 FF+2d |  | -9d |
| DH1200.L3CX.29 |  | DH1200 L3 Cx Complete | 0d | 2027-01-15 | 2027-01-15 | DH1200.L3CX.MECH.53 FF, DH1200.L3CX.MECH.43 FF |  | -9d |
|  | 2 | **L4 Function Testing** |  | 2026-12-17 | 2027-01-25 |  |  |  |
| DH1200.L4CX.COMM.140 |  | DH1200 L4 Cx | 25d | 2026-12-17 | 2027-01-25 | DH1200.L3CX.29 FF+6d |  | -2d |
|  | 3 | **L5 Integrated System Testing (IST)** |  | 2027-01-05 | 2027-02-24 |  |  |  |
| DH1200.L5CX.COMM.220 |  | DH1200 L5 Integrated Systems Testing - IST | 20d | 2027-01-05 | 2027-02-02 | DH1200.L4CX.COMM.140 FF+6d |  | -2d |
| DH1200.A2110.CO |  | DH 1200/L5 Integrated System Testing (IST) // DH1200– Phase Closeout Period O&M / TRAINING/ CLOSEOUT DOCS | 15d | 2027-02-03 | 2027-02-24 | DH1200.L5CX.COMM.230 |  | 53d |
| DH1200.L5CX.COMM.230 |  | DH1200 – IST / L5 Cx Complete | 0d | 2027-02-03 | 2027-02-03 | DH1200.L5CX.COMM.220 |  | -2d |
|  | ` | **Commissioning & Start Up** |  |  |  |  |  |  |

| ID | WBS | Task | Duration | Start | Finish | Predecessors | Complete | Total float |
| --- | --- | --- | --- | --- | --- | --- | --- | --- |
|  | 8 | **Data Hall 1400** |  | 2026-05-27 | 2027-04-21 |  |  |  |
|  | 10 | **Exterior Build Out** |  | 2026-05-27 | 2027-01-07 |  |  |  |
|  | 9 | **Electrical Yard** |  | 2026-09-24 | 2026-12-30 |  |  |  |
|  | 3 | **Electrical** |  | 2026-09-24 | 2026-12-30 |  |  |  |
|  | 1 | **Underground** |  | 2026-09-24 | 2026-11-05 |  |  |  |
|  | 1 | **Column Line 4.0 - 4.9** |  | 2026-09-24 | 2026-11-05 |  |  |  |
| DH.1400 |  | DH1400/Electrical Yard-Underground // Excavate From MVG to Transformers | 10d | 2026-09-24 A | 2026-10-14 | FDN.1244, DH.1300 |  | -10d |
| B1200378 |  | DH1400/Electrical Yard-Underground // Install Raceway from MVG to Transformers | 10d | 2026-10-15 | 2026-10-28 | DH.1400 |  | -10d |
| B1200379 |  | DH1400/Electrical Yard-Underground // Backfill Raceways from MVG to Transformers | 6d | 2026-10-29 | 2026-11-05 | B1200378, B1200378 FF |  | -10d |
|  | 2 | **Column-Line 4.0 - 4.9** |  |  |  |  |  |  |
|  | 2 | **Pads** |  | 2026-11-06 | 2026-11-27 |  |  |  |
| B1200388 |  | DH1400/Electrical Yard-Pads // Excavate / Form / Rebar /pour-Finish Pads (House Gen & (9) Xfmr) 0.1 to 1.4 Line | 6d | 2026-11-06 | 2026-11-16 | B1200386, B1200379 |  | -10d |
| B1200389 |  | DH1400/Electrical Yard-Pads // Pad Strip and Cure (House Gen & (9) Xfmr) 0.1 to 1.4 Line | 1d | 2026-11-17 | 2026-11-17 | B1200388 |  | -10d |
| B1200390 |  | DH1400/Electrical Yard-Pads // Excavate / Form / Rebar /pour-Finish Pads (16 Xfmrs) 1.4 to 1.8 Line | 6d | 2026-11-18 | 2026-11-25 | B1200388, B1200389 |  | -10d |
| B1200391 |  | DH1400/Electrical Yard-Pads // Pad Strip and Cure (16 Xfmrs) 1.4 to 1.8 Line | 1d | 2026-11-27 | 2026-11-27 | B1200390 |  | -10d |
|  | 3 | **Equipment** |  | 2026-11-30 | 2026-12-30 |  |  |  |
|  | 1 | **A140** |  | 2026-11-30 | 2026-12-01 |  |  |  |
| DH.14001 |  | DH1400/Electrical Yard // Set XFMR - XFMR-A140a | 1d | 2026-11-30 | 2026-11-30 | STRUCTURE.6940, B1200391 |  | -10d |
| DH.14002 |  | DH1400/Electrical Yard // Set XFMR - XFMR-A140p | 1d | 2026-12-01 | 2026-12-01 | DH.14001 |  | -10d |
|  | 2 | **B140** |  | 2026-12-02 | 2026-12-03 |  |  |  |
| DH.14003 |  | DH1400/Electrical Yard // Set XFMR - XFMR-B140a | 1d | 2026-12-02 | 2026-12-02 | DH.14002 |  | -10d |
| DH.14004 |  | DH1400/Electrical Yard // Set XFMR - XFMR-B140p | 1d | 2026-12-03 | 2026-12-03 | DH.14003 |  | -10d |
|  | 3 | **C140** |  | 2026-12-04 | 2026-12-07 |  |  |  |
| DH.14005 |  | DH1400/Electrical Yard // Set XFMR - XFMR-C140a | 1d | 2026-12-04 | 2026-12-04 | DH.14004 |  | -10d |
| DH.14006 |  | DH1400/Electrical Yard // Set XFMR - XFMR-C140p | 1d | 2026-12-07 | 2026-12-07 | DH.14005 |  | -10d |
|  | 4 | **D140** |  | 2026-12-08 | 2026-12-09 |  |  |  |
| DH.14007 |  | DH1400/Electrical Yard // Set XFMR - XFMR-D140a | 1d | 2026-12-08 | 2026-12-08 | DH.14006 |  | -10d |
| DH.14008 |  | DH1400/Electrical Yard // Set XFMR - XFMR-D140p | 1d | 2026-12-09 | 2026-12-09 | DH.14007 |  | -10d |
|  | 5 | **E140** |  | 2026-12-10 | 2026-12-11 |  |  |  |
| DH.14009 |  | DH1400/Electrical Yard // Set XFMR - XFMR-E140a | 1d | 2026-12-10 | 2026-12-10 | DH.14008 |  | -10d |
| DH.14000 |  | DH1400/Electrical Yard // Set XFMR - XFMR-E140p | 1d | 2026-12-11 | 2026-12-11 | DH.14009 |  | -10d |
|  | 6 | **F140** |  | 2026-12-14 | 2026-12-15 |  |  |  |
| DH.160012108 |  | DH1400/Electrical Yard // Set XFMR - XFMR-F140a | 1d | 2026-12-14 | 2026-12-14 | DH.14000 |  | -4d |
| DH.160012109 |  | DH1400/Electrical Yard // Set XFMR - XFMR-F140p | 1d | 2026-12-15 | 2026-12-15 | DH.160012108 |  | -4d |
|  | 7 | **G140** |  | 2026-12-16 | 2026-12-17 |  |  |  |
| DH.160012110 |  | DH1400/Electrical Yard // Set XFMR - XFMR-G140a | 1d | 2026-12-16 | 2026-12-16 | DH.160012109 |  | -4d |
| DH.160012111 |  | DH1400/Electrical Yard // Set XFMR - XFMR-G140p | 1d | 2026-12-17 | 2026-12-17 | DH.160012110 |  | -4d |
|  | 8 | **H140** |  | 2026-12-18 | 2026-12-21 |  |  |  |
| DH.160012112 |  | DH1400/Electrical Yard // Set XFMR - XFMR-H140a | 1d | 2026-12-18 | 2026-12-18 | DH.160012111 |  | -4d |
| DH.160012113 |  | DH1400/Electrical Yard // Set XFMR - XFMR-H140p | 1d | 2026-12-21 | 2026-12-21 | DH.160012112 |  | -4d |
|  | 9 | **J140** |  | 2026-12-22 | 2026-12-23 |  |  |  |
| DH.160012114 |  | DH1400/Electrical Yard // Set XFMR - XFMR-J140a | 1d | 2026-12-22 | 2026-12-22 | DH.160012113 |  | -4d |
| DH.160012115 |  | DH1400/Electrical Yard // Set XFMR - XFMR-J140p | 1d | 2026-12-23 | 2026-12-23 | DH.160012114 |  | -4d |
|  | 10 | **K140** |  | 2026-12-24 | 2026-12-28 |  |  |  |
| DH.160012116 |  | DH1400/Electrical Yard // Set XFMR - XFMR-K140a | 1d | 2026-12-24 | 2026-12-24 | DH.160012115 |  | -4d |
| DH.160012117 |  | DH1400/Electrical Yard // Set XFMR - XFMR-K140p | 1d | 2026-12-28 | 2026-12-28 | DH.160012116 |  | -4d |
|  | 11 | **R140** |  | 2026-12-29 | 2026-12-30 |  |  |  |
| DH.160012118 |  | DH1400/Electrical Yard // Set XFMR - XFMR-R140a | 1d | 2026-12-29 | 2026-12-29 | DH.160012117 |  | -4d |
| DH.160012119 |  | DH1400/Electrical Yard // Set XFMR - XFMR-R140p | 1d | 2026-12-30 | 2026-12-30 | DH.160012118 |  | -4d |
|  | 1 | **Mechanical Yard** |  | 2026-05-27 | 2027-01-07 |  |  |  |
|  | 1 | **Pads** |  | 2026-05-27 | 2026-09-11 |  |  |  |
| A5772 |  | DH1400/Mechanical Yard-Pads // Excavate / Form / Rebar / Pour Chiller Pads | 8d | 2026-05-27 A | 2026-06-05 A | A5748 SS | 100% |  |
| A5776 |  | DH1400/Mechanical Yard-Pads // Excavate / Form / Rebar / Pour Support and TES Pads (Column Lines 1.3 to 1.6) | 5d | 2026-07-15 A | 2026-07-21 A | A5772, A5772 SS | 100% |  |
| A5777 |  | DH1400/Mechanical Yard-Pads // Excavate / Form / Rebar / Pour Support and TES Pads (Column Lines 1.6 to 1.9) | 5d | 2026-08-21 A | 2026-09-11 A | A5776 | 100% |  |
|  | 5 | **Equipment** |  | 2026-09-30 | 2027-01-07 |  |  |  |
|  | 1 | **A140** |  | 2026-09-30 | 2026-10-06 |  |  |  |
| DH.140012001 |  | DH1400/Mechanical Yard-A140 // Set Chiller - CHLR-1CY40-A140 | 1d | 2026-09-30 | 2026-09-30 | STRUCTURE.6940, FDN.1244 |  | 39d |
| DH.140012002 |  | DH1400/Mechanical Yard-A140 // Set TES tank - TES-1CY40-A140 | 1d | 2026-10-01 | 2026-10-01 | A5777, DH.140012001 |  | 84d |
| DH.140012023 |  | DH1400/Mechanical Yard-A140 // Install CHWP | 1d | 2026-10-02 | 2026-10-02 | DH.140012002 |  | 84d |
| DH.140012024 |  | DH1400/Mechanical Yard-A140 // Install Mechanical Piping Mains (Building -to Line) | 1d | 2026-10-05 | 2026-10-05 | DH.140012023 |  | 84d |
| DH.140012025 |  | DH1400/Mechanical Yard-A140 // Install Mechanical Chiller to Mains | 1d | 2026-10-06 | 2026-10-06 | DH.140012024 |  | 84d |
|  | 2 | **B140** |  | 2026-12-14 | 2026-12-18 |  |  |  |
| DH.140012003 |  | DH1400/Mechanical Yard-B140 // Set Chiller - CHLR-1CY40-B140 | 1d | 2026-12-14 | 2026-12-14 | DH.140012001, DH.14000 |  | -10d |
| DH.140012004 |  | DH1400/Mechanical Yard-B140 // Set TES tank - TES-1CY40-B140 | 1d | 2026-12-15 | 2026-12-15 | DH.140012003 |  | 34d |
| DH.140012026 |  | DH1400/Mechanical Yard-B140 // Install CHWP | 1d | 2026-12-16 | 2026-12-16 | DH.140012004 |  | 34d |
| DH.140012027 |  | DH1400/Mechanical Yard-B140 // Install Mechanical Piping Mains (Building -to Line) | 1d | 2026-12-17 | 2026-12-17 | DH.140012026 |  | 34d |
| DH.140012028 |  | DH1400/Mechanical Yard-B140 // Install Mechanical Chiller to Mains | 1d | 2026-12-18 | 2026-12-18 | DH.140012027 |  | 34d |
|  | 3 | **C140** |  | 2026-12-14 | 2026-12-18 |  |  |  |
| DH.140012005 |  | DH1400/Mechanical Yard-C140 // Set Chiller - CHLR-1CY40-C140 | 1d | 2026-12-14 | 2026-12-14 | DH.140012003 SS |  | -10d |
| DH.140012006 |  | DH1400/Mechanical Yard-C140 // Set TES tank - TES-1CY40-C140 | 1d | 2026-12-15 | 2026-12-15 | DH.140012005 |  | 34d |

| ID | WBS | Task | Duration | Start | Finish | Predecessors | Complete | Total float |
| --- | --- | --- | --- | --- | --- | --- | --- | --- |
| DH.140012029 |  | DH1400/Mechanical Yard-C140 // Install CHWP | 1d | 2026-12-16 | 2026-12-16 | DH.140012006 |  | 34d |
| DH.140012030 |  | DH1400/Mechanical Yard-C140 // Install Mechanical Piping Mains (Building -to Line) | 1d | 2026-12-17 | 2026-12-17 | DH.140012029 |  | 34d |
| DH.140012031 |  | DH1400/Mechanical Yard-C140 // Install Mechanical Chiller to Mains | 1d | 2026-12-18 | 2026-12-18 | DH.140012030 |  | 34d |
|  | 4 | **D140** |  | 2026-12-14 | 2026-12-18 |  |  |  |
| DH.140012007 |  | DH1400/Mechanical Yard-D140 // Set Chiller - CHLR-1CY40-D140 | 1d | 2026-12-14 | 2026-12-14 | DH.140012005 SS |  | -10d |
| DH.140012008 |  | DH1400/Mechanical Yard-D140 // Set TES tank - TES-1CY40-D140 | 1d | 2026-12-15 | 2026-12-15 | DH.140012007 |  | 34d |
| DH.140012032 |  | DH1400/Mechanical Yard-D140 // Install CHWP | 1d | 2026-12-16 | 2026-12-16 | DH.140012008 |  | 34d |
| DH.140012033 |  | DH1400/Mechanical Yard-D140 // Install Mechanical Piping Mains (Building -to Line) | 1d | 2026-12-17 | 2026-12-17 | DH.140012032 |  | 34d |
| DH.140012034 |  | DH1400/Mechanical Yard-D140 // Install Mechanical Chiller to Mains | 1d | 2026-12-18 | 2026-12-18 | DH.140012033 |  | 34d |
|  | 5 | **E140** |  | 2026-12-15 | 2026-12-21 |  |  |  |
| DH.140012009 |  | DH1400/Mechanical Yard-E140 // Set Chiller - CHLR-1CY40-E140 | 1d | 2026-12-15 | 2026-12-15 | DH.140012007 |  | -10d |
| DH.140012010 |  | DH1400/Mechanical Yard-E140 // Set TES tank - TES-1CY40-E140 | 1d | 2026-12-16 | 2026-12-16 | DH.140012009 |  | 33d |
| DH.140012035 |  | DH1400/Mechanical Yard-E140 // Install CHWP | 1d | 2026-12-17 | 2026-12-17 | DH.140012010 |  | 33d |
| DH.140012036 |  | DH1400/Mechanical Yard-E140 // Install Mechanical Piping Mains (Building -to Line) | 1d | 2026-12-18 | 2026-12-18 | DH.140012035 |  | 33d |
| DH.140012037 |  | DH1400/Mechanical Yard-E140 // Install Mechanical Chiller to Mains | 1d | 2026-12-21 | 2026-12-21 | DH.140012036 |  | 33d |
|  | 6 | **F140** |  | 2026-12-15 | 2026-12-21 |  |  |  |
| DH.140012011 |  | DH1400/Mechanical Yard-F140 // Set Chiller - CHLR-1CY40-F140 | 1d | 2026-12-15 | 2026-12-15 | DH.140012009 SS |  | -10d |
| DH.140012012 |  | DH1400/Mechanical Yard-F140 // Set TES tank - TES-1CY40-F140 | 1d | 2026-12-16 | 2026-12-16 | DH.140012011 |  | 33d |
| DH.140012038 |  | DH1400/Mechanical Yard-F140 // Install CHWP | 1d | 2026-12-17 | 2026-12-17 | DH.140012012 |  | 33d |
| DH.140012039 |  | DH1400/Mechanical Yard-F140 // Install Mechanical Piping Mains (Building -to Line) | 1d | 2026-12-18 | 2026-12-18 | DH.140012038 |  | 33d |
| DH.140012040 |  | DH1400/Mechanical Yard-F140 // Install Mechanical Chiller to Mains | 1d | 2026-12-21 | 2026-12-21 | DH.140012039 |  | 33d |
|  | 7 | **G140** |  | 2026-12-15 | 2026-12-21 |  |  |  |
| DH.140012013 |  | DH1400/Mechanical Yard-G140 // Set Chiller - CHLR-1CY40-G140 | 1d | 2026-12-15 | 2026-12-15 | DH.140012011 SS |  | -10d |
| DH.140012014 |  | DH1400/Mechanical Yard-G140 // Set TES tank - TES-1CY40-G140 | 1d | 2026-12-16 | 2026-12-16 | DH.140012013 |  | 33d |
| DH.140012041 |  | DH1400/Mechanical Yard-G140 // Install CHWP | 1d | 2026-12-17 | 2026-12-17 | DH.140012014 |  | 33d |
| DH.140012042 |  | DH1400/Mechanical Yard-G140 // Install Mechanical Piping Mains (Building -to Line) | 1d | 2026-12-18 | 2026-12-18 | DH.140012041 |  | 33d |
| DH.140012043 |  | DH1400/Mechanical Yard-G140 // Install Mechanical Chiller to Mains | 1d | 2026-12-21 | 2026-12-21 | DH.140012042 |  | 33d |
|  | 8 | **H140** |  | 2026-12-16 | 2026-12-22 |  |  |  |
| DH.140012015 |  | DH1400/Mechanical Yard-H140 // Set Chiller - CHLR-1CY40-H140 | 1d | 2026-12-16 | 2026-12-16 | DH.140012013 |  | -10d |
| DH.140012016 |  | DH1400/Mechanical Yard-H140 // Set TES tank - TES-1CY40-H140 | 1d | 2026-12-17 | 2026-12-17 | DH.140012015 |  | 32d |
| DH.140012044 |  | DH1400/Mechanical Yard-H140 // Install CHWP | 1d | 2026-12-18 | 2026-12-18 | DH.140012016 |  | 32d |
| DH.140012045 |  | DH1400/Mechanical Yard-H140 // Install Mechanical Piping Mains (Building -to Line) | 1d | 2026-12-21 | 2026-12-21 | DH.140012044 |  | 32d |
| DH.140012046 |  | DH1400/Mechanical Yard-H140 // Install Mechanical Chiller to Mains | 1d | 2026-12-22 | 2026-12-22 | DH.140012045 |  | 32d |
|  | 9 | **J140** |  | 2026-12-16 | 2026-12-22 |  |  |  |
| DH.140012017 |  | DH1400/Mechanical Yard-J140 // Set Chiller - CHLR-1CY40-J140 | 1d | 2026-12-16 | 2026-12-16 | DH.140012015 SS |  | -10d |
| DH.140012018 |  | DH1400/Mechanical Yard-J140 // Set TES tank - TES-1CY40-J140 | 1d | 2026-12-17 | 2026-12-17 | DH.140012017 |  | 32d |
| DH.140012047 |  | DH1400/Mechanical Yard-J140 // Install CHWP | 1d | 2026-12-18 | 2026-12-18 | DH.140012018 |  | 32d |
| DH.140012048 |  | DH1400/Mechanical Yard-J140 // Install Mechanical Piping Mains (Building -to Line) | 1d | 2026-12-21 | 2026-12-21 | DH.140012047 |  | 32d |
| DH.140012049 |  | DH1400/Mechanical Yard-J140 // Install Mechanical Chiller to Mains | 1d | 2026-12-22 | 2026-12-22 | DH.140012048 |  | 32d |
|  | 10 | **K140** |  | 2026-12-16 | 2026-12-22 |  |  |  |
| DH.140012019 |  | DH1400/Mechanical Yard-K140 // Set Chiller - CHLR-1CY40-K140 | 1d | 2026-12-16 | 2026-12-16 | DH.140012017 SS |  | -10d |
| DH.140012020 |  | DH1400/Mechanical Yard-K140 // Set TES tank - TES-1CY40-K140 | 1d | 2026-12-17 | 2026-12-17 | DH.140012019 |  | 32d |
| DH.140012050 |  | DH1400/Mechanical Yard-K140 // Install CHWP | 1d | 2026-12-18 | 2026-12-18 | DH.140012020 |  | 32d |
| DH.140012051 |  | DH1400/Mechanical Yard-K140 // Install Mechanical Piping Mains (Building -to Line) | 1d | 2026-12-21 | 2026-12-21 | DH.140012050 |  | 32d |
| DH.140012052 |  | DH1400/Mechanical Yard-K140 // Install Mechanical Chiller to Mains | 1d | 2026-12-22 | 2026-12-22 | DH.140012051 |  | 32d |
|  | 11 | **R140** |  | 2026-12-16 | 2026-12-22 |  |  |  |
| DH.140012021 |  | DH1400/Mechanical Yard-R140 // Set Chiller - CHLR-1CY40-R140 | 1d | 2026-12-16 | 2026-12-16 | DH.140012019 SS |  | -10d |
| DH.140012022 |  | DH1400/Mechanical Yard-R140 // Set TES tank - TES-1CY40-R140 | 1d | 2026-12-17 | 2026-12-17 | DH.140012021 |  | -10d |
| DH.140012053 |  | DH1400/Mechanical Yard-R140 // Install CHWP | 1d | 2026-12-18 | 2026-12-18 | DH.140012022 |  | -10d |
| DH.140012054 |  | DH1400/Mechanical Yard-R140 // Install Mechanical Piping Mains (Building -to Line) | 1d | 2026-12-21 | 2026-12-21 | DH.140012053 |  | -10d |
| DH.140012055 |  | DH1400/Mechanical Yard-R140 // Install Mechanical Chiller to Mains | 1d | 2026-12-22 | 2026-12-22 | DH.140012054 |  | -10d |
|  | 12 | **Test & Flushing** |  | 2026-12-23 | 2027-01-07 |  |  |  |
| A5739 |  | DH1400/Mechanical Yard-Test & Flushing // Line Test & Checking | 2d | 2026-12-23 | 2026-12-24 | DH.140012055, DH.140012052, DH.140012049, DH.140012046, DH.140012043, DH.140012040, DH.140012037, DH.140012034, DH.140012031, DH.140012028, DH.140012025 |  | 35d |
| A5741 |  | DH1400/Mechanical Yard-Test & Flushing // Electrical & Controls Testing / Checking | 3d | 2026-12-28 | 2026-12-30 | A5739 |  | 35d |
| A5740 |  | DH1400/Mechanical Yard-Test & Flushing // Fill, Flush & Purge | 5d | 2026-12-31 | 2027-01-07 | A5741 |  | 35d |
|  | 2 | **Electrical & Controls** |  | 2026-09-02 | 2026-11-06 |  |  |  |
| A5778 |  | DH1400/Electrical & Controls // Excavate Raceways from Building to Chiller Pad | 8d | 2026-09-02 A | 2026-09-14 A | A5772, A5772 SS | 100% |  |
| A5779 |  | DH1400/Electrical & Controls // Install Raceway from Building To Chiller Pad | 8d | 2026-09-08 A | 2026-09-17 A | A5778 SS+4d | 100% |  |
| A5791 |  | DH1400/Electrical & Controls // Mechanical CWP Support Caisson Footings | 10d | 2026-09-15 A | 2026-09-28 A | A5778 | 100% |  |
| A5780 |  | DH1400/Electrical & Controls // Backfill Chiller Raceways from Building to Chiller Pad | 8d | 2026-09-18 A | 2026-09-23 A | A5778 | 100% |  |
| A5783 |  | DH1400/Electrical & Controls // Raceway connections to Chiller units | 6d | 2026-09-30 | 2026-10-07 | A5779, A5780 SS |  | 79d |
| A5785 |  | DH1400/Electrical & Controls // Install Panels and Raceways to CHWP | 10d | 2026-09-30 | 2026-10-14 | A5783 SS |  | 79d |
| A5786 |  | DH1400/Electrical & Controls // Install Controls conduits and wire to Chiller units | 12d | 2026-09-30 | 2026-10-16 | A5785 SS |  | 79d |
| A5789 |  | DH1400/Electrical & Controls // Pull and Terminate Feeders to Chiller units | 6d | 2026-10-08 | 2026-10-16 | A5783, A5780 SS |  | 79d |
| A5792 |  | DH1400/Electrical & Controls // Chiller units Ready to Energize | 6d | 2026-10-19 | 2026-10-26 | A5789, A5786, A5785 |  | 79d |
| A5793 |  | DH1400/Electrical & Controls // Fine Grade Install Landscape Fabric & Install Rock | 5d | 2026-11-02 | 2026-11-06 | A5791, A5786, A5792, A5789, A3360 |  | 75d |
|  | 2 | **Roof - RTUs** |  | 2026-08-10 | 2026-10-21 |  |  |  |
|  | 1 | **Column Lines 1.2 thru 2.0** |  | 2026-08-10 | 2026-10-21 |  |  |  |
| DH.140012058 |  | DH1400/Roof - RTUs // Set RTU-RT Units - RTU-RT- 011 | 1d | 2026-08-10 A | 2026-08-11 A | DH.130012064 | 100% |  |
| DH.140012057 |  | DH1400/Roof - RTUs // Set RTU-RT Units - RTU-RT- 012 | 1d | 2026-08-11 A | 2026-08-11 A | DH.140012058 SS+2d | 100% |  |

| ID | WBS | Task | Duration | Start | Finish | Predecessors | Complete | Total float | Constraint |
| --- | --- | --- | --- | --- | --- | --- | --- | --- | --- |
| DH.140012064 |  | DH1400/Roof - RTUs // Set RTU-RT Units - RTU-RT- 013 | 1d | 2026-08-11 A | 2026-08-11 A | DH.140012057 | 100% |  |  |
| DH.140012059 |  | DH1400/Roof - RTUs // Install Mechanical Piping | 15d | 2026-09-17 A | 2026-09-30 | DH.140012064, DH.140012058 | 100% | 74d |  |
| DH.140012056 |  | DH1400/Roof - RTUs // Install heat trace system | 15d | 2026-09-30 | 2026-10-21 | DH.140012059 |  | 87d |  |
| DH.14007841 |  | DH1400/Roof - RTUs // Install Electrical Conduit and Controls Piping | 15d | 2026-09-30 | 2026-10-21 | DH.140012064, DH.140012059 |  | 74d |  |
|  | 1 | **Interior Build Out** |  | 2026-08-10 | 2027-04-21 |  |  |  |  |
|  | 9 | **Flex 1000D10** |  | 2026-08-10 | 2026-12-11 |  |  |  |  |
| DH.1400.1000 |  | DH1400/Flex 1000D10 // Seal Concrete | 2d | 2026-08-10 A | 2026-08-13 A | SOG.1460 | 100% |  |  |
| DH.1400.1010 |  | DH1400/Flex 1000D10 // MEPF Layout of Overhead Supports | 2d | 2026-08-12 A | 2026-08-13 A | DH.1400.1000 | 100% |  |  |
| B120001.3159 |  | DH1400/Flex 1000D10 // Install Overhead Cable Ladder / 36" Cable Tray - TFO | 5d | 2026-09-30 | 2026-10-06 | DH.1400.1010, A5676 |  | 15d |  |
| B120001.3160 |  | DH1400/Flex 1000D10 // Install Overhead HAC - TFO | 5d | 2026-10-07 | 2026-10-14 | B120001.3159 |  | 15d |  |
| DH.1400.1020 |  | DH1400/Flex 1000D10 // MEPF Install High Overhead Systems | 6d | 2026-10-15 | 2026-10-22 | DH.1400.1010, B120001.3160 |  | 15d |  |
| DH.1400.1040 |  | DH1400/Flex 1000D10 // Frame Walls including Backing | 4d | 2026-10-23 | 2026-10-28 | DH.1400.1010, DH.1400.1020 |  | 15d |  |
| DH.1400.1070 |  | DH1400/Flex 1000D10 // Install Top Down Sheet Rock | 5d | 2026-10-27 | 2026-11-02 | DH.1400.1040 SS+2d, DH.1400.1020 |  | 15d |  |
| DH.1400.1060 |  | DH1400/Flex 1000D10 // MEPF Install Rough Wall | 2d | 2026-10-29 | 2026-10-30 | DH.1400.1040 |  | 15d |  |
| DH.1400.1080 |  | DH1400/Flex 1000D10 // Rough Wall Inspspection (Approval to Close up) | 1d | 2026-11-02 | 2026-11-02 | DH.1400.1060 |  | 15d |  |
| DH.1400.1090 |  | DH1400/Flex 1000D10 // Install Balance of Sheetrock | 3d | 2026-11-03 | 2026-11-05 | DH.1400.1080, DH.1400.1070 |  | 15d |  |
| DH.1400.1100 |  | DH1400/Flex 1000D10 // Tape and Finish Walls | 6d | 2026-11-06 | 2026-11-16 | DH.1400.1090 |  | 15d |  |
| DH.1400.1110 |  | DH1400/Flex 1000D10 // Prime and First Coat of Paint | 2d | 2026-11-17 | 2026-11-18 | DH.1400.1100 |  | 15d |  |
| DH.1400.1120 |  | DH1400/Flex 1000D10 // Install MEPF Overhead Ceiling Rough | 3d | 2026-11-19 | 2026-11-23 | DH.1400.1110 |  | 15d |  |
| DH.1400.1130 |  | DH1400/Flex 1000D10 // Install Lighting, Fire Alarm & Fire Protection | 2d | 2026-11-24 | 2026-11-25 | DH.1400.1120 |  | 15d |  |
| DH.1400.1140 |  | DH1400/Flex 1000D10 // Wall Touch up Final Coat of Paint | 3d | 2026-11-27 | 2026-12-01 | DH.1400.1130 |  | 15d |  |
| DH.1400.1050 |  | DH1400/Flex 1000D10 // Install Door Frames | 1d | 2026-12-02 | 2026-12-02 | DH.1400.1040 FF, DH.1400.1140 |  | 54d |  |
| DH.1400.1150 |  | DH1400/Flex 1000D10 // Install Wall Base, Trim, and Devices | 3d | 2026-12-02 | 2026-12-04 | DH.1400.1140 |  | 15d |  |
| DH.1400.3069 |  | DH1400/Flex 1000D10 // Ready to Receive Equipment | 0d | 2026-12-04 | 2026-12-04 | DH.1400.1150 FF |  | 15d |  |
| DH.1400.1160 |  | DH1400/Flex 1000D10 // Suffolk Pre Punch | 5d | 2026-12-07 | 2026-12-11 | DH.1400.1050, DH.1400.3069 |  | 52d |  |
|  | 7 | **Electrical Room #5401** |  | 2026-08-13 | 2027-01-12 |  |  |  |  |
| B120001.3048 |  | DH1400/Electrical Room #5401 // MEPF Layout of Overhead Supports | 2d | 2026-08-13 A | 2026-08-14 A | STRUCTURE.7480 | 100% |  |  |
| B120001.3161 |  | DH1400/Electrical Room #5401 // Install Overhead Cable Ladder / 36" Cable Tray - TFO | 5d | 2026-09-30 | 2026-10-06 | B120001.3048 |  | 17d |  |
| DH.1400.1170 |  | DH1400/Electrical Room #5401 // Install Overhead Buss duct | 2d | 2026-09-30 | 2026-10-01 | B120001.3048 |  | 18d |  |
| DH.1400.1180 |  | DH1400/Electrical Room #5401 // Install Cable Tray | 3d | 2026-10-01 | 2026-10-05 | DH.1400.1170 SS+1d |  | 18d |  |
| DH.1400.1220 |  | DH1400/Electrical Room #5401 // Pull Cable Tray Feeders (CRAHU/CDU) | 10d | 2026-10-06 | 2026-10-20 | DH.1400.1180 |  | 18d |  |
| B120001.3162 |  | DH1400/Electrical Room #5401 // Install Overhead HAC - TFO | 5d | 2026-10-07 | 2026-10-14 | B120001.3161 |  | 17d |  |
| B120001.3049 |  | DH1400/Electrical Room #5401 // Frame Walls including Backing | 4d | 2026-10-08 | 2026-10-14 | B120001.3048, DH.1400.1180, DH.14001040 |  | 16d |  |
| B120001.3053 |  | DH1400/Electrical Room #5401 // Install Top Down Sheet Rock | 5d | 2026-10-13 | 2026-10-19 | B120001.3049 SS+2d |  | 16d |  |
| B120001.3050 |  | DH1400/Electrical Room #5401 // Install Door Frames | 1d | 2026-10-15 | 2026-10-15 | B120001.3049 |  | 40d |  |
| B120001.3051 |  | DH1400/Electrical Room #5401 // MEPF Install High Overhead Systems | 6d | 2026-10-15 | 2026-10-22 | B120001.3048, B120001.3162 |  | 17d |  |
| B120001.3052 |  | DH1400/Electrical Room #5401 // MEPF Install Rough Wall | 2d | 2026-10-15 | 2026-10-16 | B120001.3049 |  | 16d |  |
| B120001.3054 |  | DH1400/Electrical Room #5401 // Rough Wall Inspspection (Approval to Close up) | 1d | 2026-10-19 | 2026-10-19 | B120001.3052 |  | 16d |  |
| B120001.3056 |  | DH1400/Electrical Room #5401 // Install Balance of Sheetrock | 3d | 2026-10-20 | 2026-10-22 | B120001.3054, B120001.3053 |  | 16d |  |
| DH.1300.3068 |  | DH1400/Electrical Room #5401 // Room Ready to Receive Equipment | 0d | 2026-10-22 | 2026-10-22 | B120001.3056 FF |  | 16d |  |
| DH.1300.3036 |  | DH1400/Electrical Room #5401 // Install Cable Tray | 3d | 2026-10-23 | 2026-10-27 | B120001.3051 |  | 17d |  |
| F.1000A.1231 |  | DH1400/Electrical Room #5401 // Rough-In Security | 2d | 2026-10-23 | 2026-10-26 | B120001.3051 |  | 28d |  |
| F.1000A.1485 |  | DH1400/Electrical Room #5401 // BMS & EPMS Rough-In | 2d | 2026-10-23 | 2026-10-26 | F.1000A.1231 FF, F.1000A.1231 SS |  | 40d |  |
| F.1000A.1232 |  | DH1400/Electrical Room #5401 // Pull & Test Security Cable | 3d | 2026-10-27 | 2026-10-29 | F.1000A.1231 |  | 28d |  |
| DH.1300.3038 |  | DH1400/Electrical Room #5401 // Install Cable Buss From Exterior | 3d | 2026-10-28 | 2026-10-30 | DH.1300.3036 |  | 17d |  |
| F.1000A.1233 |  | DH1400/Electrical Room #5401 // Install Security Devices | 2d | 2026-10-30 | 2026-11-02 | F.1000A.1232 |  | 28d |  |
| F.1000A.1234 |  | DH1400/Electrical Room #5401 // Mount & Terminate Security Devices | 5d | 2026-11-03 | 2026-11-09 | F.1000A.1233, B120001.3050 |  | 28d |  |
| DH.1300.3070 |  | DH1400/Electrical Room #5401 // DH1400 - OFCI Skid Ship Date (12/02/2026) First Shipment | 0d | 2026-12-02 | 2026-12-02 | DH.1300.3068 FF |  | -10d | finish on or after 2026-12-02 |
| ER.5101.3065 |  | DH1400/Electrical Room #5401 // Set Skid - SKID-A140 | 1d | 2026-12-02 | 2026-12-02 | DH.1400.1220, DH.1300.3068, DH.1300.3070 |  | -10d |  |
| ER.5101.3066 |  | DH1400/Electrical Room #5401 // Set Skid - SKID-B140 | 1d | 2026-12-02 | 2026-12-02 | ER.5101.3065 SS |  | -10d |  |
| ER.5101.3067 |  | DH1400/Electrical Room #5401 // Set Skid - SKID-C140 | 1d | 2026-12-02 | 2026-12-02 | ER.5101.3066 SS |  | -10d |  |
| ER.5101.3068 |  | DH1400/Electrical Room #5401 // Set Skid - SKID-D140 | 1d | 2026-12-02 | 2026-12-02 | ER.5101.3067 SS |  | -10d |  |
| DH.1300.3039 |  | DH1400/Electrical Room #5401 // Buss Duct Tie In to Elect Gear | 3d | 2026-12-03 | 2026-12-07 | B120001.3051, B120001.3053, DH.1300.3036, DH.1300.3038, ER.5101.3068 |  | -4d |  |
| ER.5101.3069 |  | DH1400/Electrical Room #5401 // Set Skid - SKID-E140 | 1d | 2026-12-03 | 2026-12-03 | ER.5101.3068 |  | -10d |  |
| DH.1400.1200 |  | DH1400/Electrical Room #5401 // Install Cable Buss From Exterior | 3d | 2026-12-04 | 2026-12-08 | ER.5101.3069, DH.1400.1180 |  | -10d |  |
| DH.1400.1250 |  | DH1400/Electrical Room #5401 // Set CRAH-ER5401- 01 | 1d | 2026-12-08 | 2026-12-08 | DH.1300.3039, ER.5101.3069 |  | -4d |  |
| DH.1400.1210 |  | DH1400/Electrical Room #5401 // Pull Cable Buss Feeders | 6d | 2026-12-09 | 2026-12-16 | ER.5101.3069, DH.1400.1200, B120001.3056 |  | -10d |  |
| DH.1400.3031 |  | DH1400/Electrical Room #5401 // Set CRAH-ER5401- 02 | 1d | 2026-12-09 | 2026-12-09 | DH.1400.1250 |  | -4d |  |
| DH.1400.3032 |  | DH1400/Electrical Room #5401 // Set CRAH-ER5401- 03 | 1d | 2026-12-10 | 2026-12-10 | DH.1400.3031 |  | -4d |  |
| DH.1400.3033 |  | DH1400/Electrical Room #5401 // Set CRAH-ER5401- 04 | 1d | 2026-12-11 | 2026-12-11 | DH.1400.3032 |  | -4d |  |
| DH.1400.3034 |  | DH1400/Electrical Room #5401 // Set CRAH-ER5401- 05 | 1d | 2026-12-14 | 2026-12-14 | DH.1400.3033 |  | -4d |  |
| DH.1400.3035 |  | DH1400/Electrical Room #5401 // Set CRAH-ER5401- 06 | 1d | 2026-12-15 | 2026-12-15 | DH.1400.3034 |  | -4d |  |
| ER.5101.3098 |  | DH1400/Electrical Room #5401 // Set PDU - PDU-R140-01 | 1d | 2026-12-16 | 2026-12-16 | DH.1400.3035 |  | -4d |  |
| DH.1400.1230 |  | DH1400/Electrical Room #5401 // Terminate Cable Buss Feeders | 3d | 2026-12-17 | 2026-12-21 | DH.1400.1210 |  | -3d |  |
| DH.1400.1240 |  | DH1400/Electrical Room #5401 // Land and Terminate Cabel Tray Feeders In Gear | 10d | 2026-12-17 | 2026-12-31 | DH.1400.1220, DH.1400.1210 |  | -5d |  |
| DH.1400.1290 |  | DH1400/Electrical Room #5401 // Pull Misc Feeder and Branch Circuits | 10d | 2026-12-17 | 2026-12-31 | DH.1400.1210 |  | -10d |  |
| ER.5101.3104 |  | DH1400/Electrical Room #5401 // Set UPS - UPS-R140 | 1d | 2026-12-17 | 2026-12-17 | ER.5101.3098 |  | -4d |  |
| DH.1400.1260 |  | DH1400/Electrical Room #5401 // Mechanical Connections to CRAHU | 5d | 2026-12-18 | 2026-12-24 | DH.1400.3035, DH.1400.1250, ER.5101.3104 |  | -4d |  |
| DH.1400.1320 |  | DH1400/Electrical Room #5401 // Buss Duct Tie In to Elect Gear | 3d | 2026-12-22 | 2026-12-24 | DH.1400.1170, DH.1400.1180, DH.1400.1230 |  | -3d |  |
| DH.1400.1300 |  | DH1400/Electrical Room #5401 // Land and Terminate Misc Feeder and Branch Circuits | 10d | 2026-12-24 | 2027-01-08 | DH.1400.1290 SS+5d |  | -10d |  |

| ID | WBS | Task | Duration | Start | Finish | Predecessors | Complete | Total float | Constraint |
| --- | --- | --- | --- | --- | --- | --- | --- | --- | --- |
| DH.1400.1270 |  | DH1400/Electrical Room #5401 // Install Condensate lines from CRAHU's | 2d | 2026-12-28 | 2026-12-29 | DH.1400.1260 |  | -3d |  |
| DH.1400.1280 |  | DH1400/Electrical Room #5401 // Install Elec Feeders to CRAHU's | 3d | 2026-12-28 | 2026-12-30 | DH.1400.1260, DH.1400.1180 |  | -4d |  |
| F.1000A.1235 |  | DH1400/Electrical Room #5401 // Test Security Devices | 2d | 2026-12-28 | 2026-12-29 | F.1000A.1485 FF, F.1000A.1234, DH.1400.1320 |  | -3d |  |
| DH.1400.1330 |  | DH1400/Electrical Room #5401 // Mechanical Equipment Pre-Start up | 2d | 2027-01-04 | 2027-01-05 | DH.1400.1280, DH.1400.1270, DH.1400.1260, DH.1400.1240 |  | -5d |  |
| DH.1400.1310 |  | DH1400/Electrical Room #5401 // Final FOD Check of all Panels | 2d | 2027-01-11 | 2027-01-12 | DH.1400.1230, DH.1400.1240, DH.1400.1320, DH.1400.1300, F.1000A.1235 |  | -10d |  |
|  | 2 | **Electrcal Room #5404** |  | 2026-08-17 | 2027-01-06 |  |  |  |  |
| B120001.3084 |  | DH1400/Electrical Room #5404 // MEPF Layout of Overhead Supports | 2d | 2026-08-17 A | 2026-08-18 A | B120001.3048 | 100% |  |  |
| B120001.3085 |  | DH1400/Electrical Room #5404 // MEPF Install High Overhead Systems | 6d | 2026-09-30 | 2026-10-07 | B120001.3084 |  | 32d |  |
| B120001.3163 |  | DH1400/Electrical Room #5404 // Install Overhead Cable Ladder / 36" Cable Tray - TFO | 5d | 2026-09-30 | 2026-10-06 | B120001.3084 |  | 17d |  |
| DH.1400.3043 |  | DH1400/Electrical Room #5404 // Install Overhead Buss duct | 2d | 2026-09-30 | 2026-10-01 | B120001.3084 |  | 26d |  |
| B120001.3164 |  | DH1400/Electrical Room #5404 // Install Overhead HAC - TFO | 5d | 2026-10-07 | 2026-10-14 | B120001.3163 |  | 17d |  |
| DH.1300.3063 |  | DH1400/Electrical Room #5404 // Install Cable Tray | 3d | 2026-10-08 | 2026-10-13 | B120001.3085 |  | 32d |  |
| F.1000A.1236 |  | DH1400/Electrical Room #5404 // Rough-In Security | 2d | 2026-10-08 | 2026-10-09 | B120001.3085 |  | 82d |  |
| F.1000A.1495 |  | DH1400/Electrical Room #5404 // BMS & EPMS Rough-In | 2d | 2026-10-08 | 2026-10-09 | F.1000A.1236 FF, F.1000A.1236 SS |  | 94d |  |
| F.1000A.1237 |  | DH1400/Electrical Room #5404 // Pull & Test Security Cable | 3d | 2026-10-13 | 2026-10-15 | F.1000A.1236 |  | 82d |  |
| DH.1400.3044 |  | DH1400/Electrical Room #5404 // Install Cable Tray | 3d | 2026-10-15 | 2026-10-19 | DH.1400.3043 SS+1d, B120001.3164 |  | 17d |  |
| F.1000A.1238 |  | DH1400/Electrical Room #5404 // Install Security Devices | 2d | 2026-10-16 | 2026-10-19 | F.1000A.1237 |  | 82d |  |
| B120001.3086 |  | DH1400/Electrical Room #5404 // Frame Walls including Backing | 4d | 2026-10-20 | 2026-10-23 | B120001.3084, DH.1400.3044 |  | 17d |  |
| DH.1400.3045 |  | DH1400/Electrical Room #5404 // Install Cable Buss From Exterior | 3d | 2026-10-20 | 2026-10-22 | DH.1400.3044 |  | 26d |  |
| DH.1400.3046 |  | DH1400/Electrical Room #5404 // Pull Cable Tray Feeders (CRAHU/CDU) | 10d | 2026-10-20 | 2026-11-02 | DH.1400.3044 |  | 19d |  |
| DH.1400.3058 |  | DH1400/Electrical Room #5404 // Buss Duct Tie In to Elect Gear | 3d | 2026-10-20 | 2026-10-22 | DH.1400.3043, DH.1400.3044 |  | 24d |  |
| B120001.3089 |  | DH1400/Electrical Room #5404 // Install Top Down Sheet Rock | 5d | 2026-10-22 | 2026-10-28 | B120001.3086 SS+2d |  | 17d |  |
| B120001.3087 |  | DH1400/Electrical Room #5404 // Install Door Frames | 1d | 2026-10-23 | 2026-10-23 | B120001.3086 FF |  | 78d |  |
| B120001.3088 |  | DH1400/Electrical Room #5404 // MEPF Install Rough Wall | 2d | 2026-10-26 | 2026-10-27 | B120001.3086 |  | 17d |  |
| F.1000A.1239 |  | DH1400/Electrical Room #5404 // Mount & Terminate Security Devices | 5d | 2026-10-26 | 2026-10-30 | F.1000A.1238, B120001.3087 |  | 78d |  |
| B120001.3090 |  | DH1400/Electrical Room #5404 // Rough Wall Inspspection (Approval to Close up) | 1d | 2026-10-28 | 2026-10-28 | B120001.3088 |  | 17d |  |
| B120001.3091 |  | DH1400/Electrical Room #5404 // Install Balance of Sheetrock | 3d | 2026-10-29 | 2026-11-02 | B120001.3090, B120001.3089 |  | 17d |  |
| DH.1400.3070 |  | DH1400/Electrical Room #5404 // Room Ready to Receive Equipment | 0d | 2026-11-02 | 2026-11-02 | B120001.3091 FF |  | 17d |  |
| DH.1400.3059 |  | DH1400/Electrical Room #5404 // Land and Terminate Cabel Tray Feeders In Gear | 10d | 2026-12-02 | 2026-12-15 | DH.1400.3046, DH.1400.3056 FF |  | 3d |  |
| DH.1400.3060 |  | DH1400/Electrical Room #5404 // Pull Misc Feeder and Branch Circuits | 10d | 2026-12-02 | 2026-12-15 | DH.1400.3056 FF |  | -4d |  |
| DH.1300.3072 |  | DH1400/Electrical Room #5404 // DH1400 - OFCI Skid Ship Date (12/08/2026) 2ND Shipment | 0d | 2026-12-08 | 2026-12-08 | DH.1400.3070 FF |  | -6d | finish on or after 2026-12-08 |
| DH.1400.3056 |  | DH1400/Electrical Room #5404 // Pull Cable Buss Feeders | 6d | 2026-12-08 | 2026-12-15 | ER.5101.3074 SS, DH.1400.3045, B120001.3091, DH.1400.3046 |  | -4d |  |
| ER.5101.3070 |  | DH1400/Electrical Room #5404 // Set Skid - SKID-F140 | 1d | 2026-12-08 | 2026-12-08 | DH.1400.3070, DH.1400.3058, ER.5101.3069, DH.1300.3072 |  | -6d |  |
| ER.5101.3071 |  | DH1400/Electrical Room #5404 // Set Skid - SKID-G140 | 1d | 2026-12-08 | 2026-12-08 | ER.5101.3070 SS |  | -6d |  |
| ER.5101.3072 |  | DH1400/Electrical Room #5404 // Set Skid - SKID-H140 | 1d | 2026-12-08 | 2026-12-08 | ER.5101.3071 SS |  | -6d |  |
| ER.5101.3073 |  | DH1400/Electrical Room #5404 // Set Skid - SKID-J140 | 1d | 2026-12-08 | 2026-12-08 | ER.5101.3072 SS |  | -6d |  |
| ER.5101.3074 |  | DH1400/Electrical Room #5404 // Set Skid - SKID-K140 | 1d | 2026-12-08 | 2026-12-08 | ER.5101.3073 SS |  | -6d |  |
| DH.1300.3064 |  | DH1400/Electrical Room #5404 // Install Cable Buss From Exterior | 3d | 2026-12-09 | 2026-12-11 | ER.5101.3074, DH.1300.3063 |  | -6d |  |
| DH.1300.3065 |  | DH1400/Electrical Room #5404 // Buss Duct Tie In to Elect Gear | 5d | 2026-12-14 | 2026-12-18 | B120001.3085, B120001.3089, DH.1300.3063, DH.1300.3064, ER.5101.3074 |  | -6d |  |
| DH.1400.3057 |  | DH1400/Electrical Room #5404 // Terminate Cable Buss Feeders | 3d | 2026-12-16 | 2026-12-18 | DH.1400.3056, DH.1400.3046, DH.1400.3059 |  | 3d |  |
| DH.1400.3062 |  | DH1400/Electrical Room #5404 // Land and Terminate Misc Feeder and Branch Circuits | 10d | 2026-12-16 | 2026-12-30 | DH.1400.3060 |  | -4d |  |
| DH.1400.3047 |  | DH1400/Electrical Room #5404 // Set CRAH-ER5404- 01 | 1d | 2026-12-21 | 2026-12-21 | DH.1300.3065, ER.5101.3074 |  | -6d |  |
| DH.1400.3048 |  | DH1400/Electrical Room #5404 // Set CRAH-ER5404- 02 | 1d | 2026-12-21 | 2026-12-21 | DH.1400.3047 SS |  | -6d |  |
| DH.1400.3049 |  | DH1400/Electrical Room #5404 // Set CRAH-ER5404- 03 | 1d | 2026-12-21 | 2026-12-21 | DH.1400.3048 SS |  | -6d |  |
| DH.1400.3050 |  | DH1400/Electrical Room #5404 // Set CRAH-ER5404- 04 | 1d | 2026-12-21 | 2026-12-21 | DH.1400.3049 SS |  | -6d |  |
| DH.1400.3051 |  | DH1400/Electrical Room #5404 // Set CRAH-ER5404- 05 | 1d | 2026-12-21 | 2026-12-21 | DH.1400.3050 FF |  | -6d |  |
| DH.1400.3052 |  | DH1400/Electrical Room #5404 // Set CRAH-ER5404- 06 | 1d | 2026-12-21 | 2026-12-21 | DH.1400.3051 FF |  | -6d |  |
| DH.1400.3053 |  | DH1400/Electrical Room #5404 // Mechanical Connections to CRAHU | 5d | 2026-12-22 | 2026-12-29 | DH.1400.3052, DH.1400.3047 |  | -6d |  |
| DH.1400.3054 |  | DH1400/Electrical Room #5404 // Install Condensate lines from CRAHU's | 2d | 2026-12-30 | 2026-12-31 | DH.1400.3053 |  | -5d |  |
| DH.1400.3055 |  | DH1400/Electrical Room #5404 // Install Elec Feeders to CRAHU's | 3d | 2026-12-30 | 2027-01-04 | DH.1400.3053, DH.1400.3044 |  | -6d |  |
| DH.1400.3063 |  | DH1400/Electrical Room #5404 // Final FOD Check of all Panels | 2d | 2026-12-31 | 2027-01-04 | DH.1400.3057, DH.1400.3059, DH.1400.3058, DH.1400.3062 |  | -4d |  |
| DH.1400.3061 |  | DH1400/Electrical Room #5404 // Mechanical Equipment Pre-Start up | 2d | 2027-01-05 | 2027-01-06 | DH.1400.3055, DH.1400.3054, DH.1400.3053, DH.1400.3059, DH.1400.3062 |  | -6d |  |
| F.1000A.1240 |  | DH1400/Electrical Room #5404 // Test Security Devices | 2d | 2027-01-05 | 2027-01-06 | F.1000A.1495 FF, F.1000A.1239, DH.1400.3055 |  | 36d |  |
|  | 3 | **Data Hall 1400** |  | 2026-09-09 | 2027-01-14 |  |  |  |  |
| DH.14006270 |  | DH 1400 // MEPF overhead layout | 3d | 2026-09-09 A | 2026-09-11 A | B120001.3048 | 100% |  |  |
| B120001.3165 |  | DH 1400 // Install Overhead Cable Ladder / 36" Cable Tray - TFO | 5d | 2026-09-14 A | 2026-10-01 | DH.14006270 | 60% | -10d |  |
| B120001.3166 |  | DH 1400 // Install Overhead HAC - TFO | 5d | 2026-10-02 | 2026-10-08 | B120001.3165 |  | -10d |  |
| DH.14006290 |  | DH 1400 // MEPF high overhead install | 10d | 2026-10-09 | 2026-10-23 | DH.14006270, B120001.3166 |  | -10d |  |
| DH.14006300 |  | DH 1400 // Frame walls | 10d | 2026-10-09 | 2026-10-23 | B120001.3166, DH.14006270 SS |  | -10d |  |
| DH.14006320 |  | DH 1400 // MEP rough in walls | 5d | 2026-10-26 | 2026-10-30 | DH.14006290, DH.14006300 |  | -10d |  |
| DH.14007800 |  | DH 1400 // Install Ceiling supports (rods/wires) no grid | 5d | 2026-10-26 | 2026-10-30 | DH.14006300 SS, DH.14006290 |  | 2d |  |
| F.1000A.1241 |  | DH 1400 // Rough-In Security | 2d | 2026-10-26 | 2026-10-27 | DH.14006290 |  | 66d |  |
| F.1000A.1505 |  | DH 1400 // BMS & EPMS Rough-In | 2d | 2026-10-26 | 2026-10-27 | F.1000A.1241 FF, F.1000A.1241 SS |  | 78d |  |
| F.1000A.1242 |  | DH 1400 // Pull & Test Security Cable | 3d | 2026-10-28 | 2026-10-30 | F.1000A.1241 |  | 66d |  |
| DH.140012067 |  | DH 1400 // Install 1-Side Sheet Rock (DH-Side) | 3d | 2026-11-02 | 2026-11-04 | DH.14006300, DH.14006320 |  | -10d |  |
| DH.14006220 |  | DH 1400 // Install ceiling grid system | 8d | 2026-11-02 | 2026-11-12 | DH.14007800 |  | 2d |  |
| DH.14006360 |  | DH 1400 // Tape and finish walls | 15d | 2026-11-05 | 2026-11-27 | DH.140012067, DH.14006300 SS |  | -10d |  |
| DH.14006250 |  | DH 1400 // Install overhead MEP and lighting | 5d | 2026-11-13 | 2026-11-19 | DH.14006220 |  | 2d |  |
| DH.14006240 |  | DH 1400 // Install ceiling grid tiles | 3d | 2026-11-20 | 2026-11-24 | DH.14006220 SS+3d, DH.14006250 |  | 2d |  |
| DH.14006260 |  | DH 1400 // Polish concrete | 5d | 2026-11-30 | 2026-12-04 | DH.14006360, DH.14006240 |  | 0d |  |

| ID | WBS | Task | Duration | Start | Finish | Predecessors | Total float |
| --- | --- | --- | --- | --- | --- | --- | --- |
| DH.14006310 |  | DH 1400 // Install wall door frames | 3d | 2026-11-30 | 2026-12-02 | DH.14006300 FF, DH.14006360 | 7d |
| F.1000A.1243 |  | DH 1400 // Install Security Devices | 2d | 2026-12-03 | 2026-12-04 | F.1000A.1242, DH.14006310 | 45d |
| DH.14006410 |  | DH 1400 // Prime and 1st coat of Paint | 5d | 2026-12-07 | 2026-12-11 | DH.14006360, DH.14006260 | 0d |
| DH.14007790 |  | DH 1400 // Final Paint & Touch up walls | 5d | 2026-12-14 | 2026-12-18 | DH.14006410, DH.14006220, DH.14006240, DH.14006310 | 0d |
| F.1000A.1244 |  | DH 1400 // Mount & Terminate Security Devices | 5d | 2026-12-14 | 2026-12-18 | F.1000A.1243, DH.14006410 | 40d |
| DH.14007810 |  | DH 1400 // Install MEPF Trim and Finishes | 5d | 2026-12-21 | 2026-12-28 | DH.14007790 | 0d |
| DH.160012150 |  | DH 1400 // Room Ready to Receive Equipment | 0d | 2026-12-28 | 2026-12-28 | DH.14007810 FF | 0d |
| F.1000A.1245 |  | DH 1400 // Test Security Devices | 2d | 2027-01-06 | 2027-01-07 | F.1000A.1505 FF, F.1000A.1244, DH.14007810 FS+5d | 30d |
| DH.14007820 |  | DH 1400 // Suffolk Pre Punch | 5d | 2027-01-08 | 2027-01-14 | DH.160012150, F.1000A.1245 | 30d |
|  | 15 | **PDU Gallery** |  | 2026-09-30 | 2026-11-19 |  |  |
| DH.14000.1000 |  | DH1400/PDU Gallery // PDU Gallery Seal concrete | 2d | 2026-09-30 | 2026-10-01 | SOG.1460, SOG.1460 FF | -3d |
| DH.14000.1010 |  | DH1400/PDU Gallery // PDU Gallery MEPF overhead layout | 5d | 2026-10-02 | 2026-10-08 | DH.14006270, DH.14000.1000 | 5d |
| B120001.3167 |  | DH1400/PDU Gallery // Install Overhead Cable Ladder / 36" Cable Tray - TFO | 5d | 2026-10-09 | 2026-10-16 | DH.14000.1010 | 25d |
| DH.14000.1040 |  | DH1400/PDU Gallery // PDU Gallery Frame walls | 5d | 2026-10-09 | 2026-10-16 | DH.14000.1010 | 32d |
| B120001.3168 |  | DH1400/PDU Gallery // Install Overhead HAC - TFO | 5d | 2026-10-19 | 2026-10-23 | B120001.3167 | 25d |
| DH.14000.1711 |  | DH1400/PDU Gallery // PDU Gallery MEP rough in walls | 3d | 2026-10-19 | 2026-10-21 | DH.14000.1040 | 32d |
| DH.14000.1030 |  | DH1400/PDU Gallery // PDU Gallery MEPF high overhead install | 3d | 2026-10-26 | 2026-10-28 | DH.14000.1010, B120001.3168 | 25d |
| DH.14000.1110 |  | DH1400/PDU Gallery // Install Cable Tray (From Elec Rm 5401 to CRAHU Gallery) | 2d | 2026-10-29 | 2026-10-30 | DH.14000.1030 | 25d |
| DH.14000.1070 |  | DH1400/PDU Gallery // PDU Gallery In wall inspection | 1d | 2026-11-02 | 2026-11-02 | DH.14000.1711, DH.14000.1110 | 25d |
| DH.14000.1060 |  | DH1400/PDU Gallery // PDU Gallery Install Sheetrock Top Down | 3d | 2026-11-03 | 2026-11-05 | DH.14000.1040 SS, DH.14000.1030, DH.14000.1070 | 25d |
| DH.14000.1080 |  | DH1400/PDU Gallery // PDU Gallery Install sheetrock on walls (Balance) | 5d | 2026-11-06 | 2026-11-13 | DH.14000.1070, DH.14000.1060 | 25d |
| DH.14000.1090 |  | DH1400/PDU Gallery // PDU Gallery Tape and finish walls | 1d | 2026-11-16 | 2026-11-16 | DH.14000.1080 | 25d |
| DH.14000.1050 |  | DH1400/PDU Gallery // PDU Gallery Install wall door frames | 1d | 2026-11-17 | 2026-11-17 | DH.14000.1040, DH.14000.1090 | 25d |
| DH.14000.1100 |  | DH1400/PDU Gallery // PDU Gallery Paint walls | 2d | 2026-11-18 | 2026-11-19 | DH.14000.1090, DH.14000.1050 | 25d |
| DH.14000.1712 |  | DH1400/PDU Gallery // PDU Gallery Ready to Receive Equipment | 0d | 2026-11-19 | 2026-11-19 | DH.14000.1100 FF | 25d |
|  | 14 | **CRAH/CDU Galleries** |  | 2026-09-28 | 2027-01-15 |  |  |
|  | 2 | **Gallery 1402** |  | 2026-09-28 | 2027-01-12 |  |  |
|  | 4 | **Architectural** |  | 2026-09-28 | 2026-12-15 |  |  |
| DH.1400700 |  | DH 1400/Gallery 1402 // Frame walls | 6d | 2026-09-28 A | 2026-10-07 | DH.1300030 FF | -10d |
| DH.1400670 |  | DH 1400/Gallery 1402 // MEPF overhead layout | 5d | 2026-09-30 | 2026-10-06 | DH.1400700 SS | -6d |
| DH.1400660 |  | DH 1400/Gallery 1402 // Seal concrete | 2d | 2026-10-02 | 2026-10-05 | DH.14000.1000 | -3d |
| B120001.3169 |  | DH 1400/Gallery 1402 // Install Overhead Cable Ladder / 36" Cable Tray - TFO | 5d | 2026-10-07 | 2026-10-14 | DH.1400670 | -6d |
| B120001.3170 |  | DH 1400/Gallery 1402 // Install Overhead HAC - TFO | 5d | 2026-10-07 | 2026-10-14 | B120001.3169 FF | -6d |
| DH.1400730 |  | DH 1400/Gallery 1402 // MEP rough in walls | 4d | 2026-10-08 | 2026-10-14 | DH.1400700 | -3d |
| DH.1400690 |  | DH 1400/Gallery 1402 // MEPF high overhead install | 10d | 2026-10-15 | 2026-10-28 | DH.1400670 SS, B120001.3170 | -6d |
| DH.1400740 |  | DH 1400/Gallery 1402 // In wall inspection | 1d | 2026-10-15 | 2026-10-15 | DH.1400730 | -3d |
| DH.1400720 |  | DH 1400/Gallery 1402 // Install Sheetrock Top Down | 6d | 2026-10-16 | 2026-10-23 | DH.1400700 SS+3d, DH.1400740 | -3d |
| DH.1400750 |  | DH 1400/Gallery 1402 // Install Balance of Sheetrock on walls | 6d | 2026-10-29 | 2026-11-05 | DH.1400690, DH.1400720 | -6d |
| F.1000A.1286 |  | DH 1400/Gallery 1402 // Rough-In Security | 2d | 2026-10-29 | 2026-10-30 | DH.1400690 | 63d |
| F.1000A.1287 |  | DH 1400/Gallery 1402 // Pull & Test Security Cable | 3d | 2026-11-02 | 2026-11-04 | F.1000A.1286 | 63d |
| F.1000A.1515 |  | DH 1400/Gallery 1402 // BMS & EPMS Rough-In | 2d | 2026-11-02 | 2026-11-03 | F.1000A.1286 FF, F.1000A.1286 | 71d |
| DH.1400770 |  | DH 1400/Gallery 1402 // Tape and finish walls | 8d | 2026-11-06 | 2026-11-18 | DH.1400750 | -6d |
| DH.1400710 |  | DH 1400/Gallery 1402 // Install wall door frames | 1d | 2026-11-19 | 2026-11-19 | DH.1400740, DH.1400770, DH.1400700 FF | 53d |
| DH.1400790 |  | DH 1400/Gallery 1402 // Prime and Paint walls | 4d | 2026-11-19 | 2026-11-24 | DH.1400770 | -6d |
| F.1000A.1288 |  | DH 1400/Gallery 1402 // Install Security Devices | 2d | 2026-11-20 | 2026-11-23 | F.1000A.1287, DH.1400710 | 53d |
| DH.160012151 |  | DH 1400/Gallery 1402 // Ready to Receive Equipment | 0d | 2026-11-24 | 2026-11-24 | DH.1400790 FF | -6d |
| DH.1400800 |  | DH 1400/Gallery 1402 // Touch up Walls and Fianl Paint | 5d | 2026-11-25 | 2026-12-02 | DH.1400710, DH.1400790 | 50d |
| F.1000A.1289 |  | DH 1400/Gallery 1402 // Mount & Terminate Security Devices | 5d | 2026-11-25 | 2026-12-02 | F.1000A.1288, DH.1400790 | 52d |
| DH.1400810 |  | DH 1400/Gallery 1402 // Install Trim and Devices | 2d | 2026-12-03 | 2026-12-04 | DH.1400800 | 50d |
| F.1000A.1290 |  | DH 1400/Gallery 1402 // Test Security Devices | 2d | 2026-12-07 | 2026-12-08 | F.1000A.1515, F.1000A.1289, DH.1400810 | 50d |
| DH.1400820 |  | DH 1400/Gallery 1402 // Suffolk Pre Punch | 5d | 2026-12-09 | 2026-12-15 | DH.160012151, F.1000A.1290 | 50d |
|  | 16 | **Raceway** |  |  |  |  |  |
|  | 3 | **Equipment Line-Ups** |  | 2026-11-30 | 2027-01-12 |  |  |
|  | 1 | **A140** |  | 2026-11-30 | 2026-12-31 |  |  |
| DH.1400A-EQP-1 |  | Gallery 1402 - A140/Line-Ups // Set CRAH-DH1400- 01 | 1d | 2026-11-30 | 2026-11-30 | DH.14006360, DH.160012151 | -8d |
| DH.1400A-EQP-3 |  | Gallery 1402 - A140/Line-Ups // Set CRAH-DH1400- 02 | 1d | 2026-11-30 | 2026-11-30 | DH.1400A-EQP-1 SS | -8d |
| DH.1400A-EQP-5 |  | Gallery 1402 - A140/Line-Ups // Set MOD-A140-01 | 1d | 2026-11-30 | 2026-11-30 | DH.1400A-EQP-3 FF | 41d |
| DH.1400A-EQP-6 |  | Gallery 1402 - A140/Line-Ups // Set MOD-A140-02 | 1d | 2026-11-30 | 2026-11-30 | DH.1400A-EQP-5 SS | 41d |
| DH.1400A-EQP-10 |  | Gallery 1402 - A140/Line-Ups // Pull Cable Tray Feed from MOD to CRAHU's | 5d | 2026-12-01 | 2026-12-07 | DH.1400A-EQP-6, DH.14000.1110 | 47d |
| DH.1400A-EQP-12 |  | Gallery 1402 - A140/Line-Ups // Mount Electrial Gear for Chiller Controls | 10d | 2026-12-01 | 2026-12-14 | DH.1400A-EQP-6 | 41d |
| DH.1400A-EQP-7 |  | Gallery 1402 - A140/Line-Ups // Set CDU-DH1400- 01 | 1d | 2026-12-01 | 2026-12-01 | DH.1400A-EQP-1 | 41d |
| DH.1400A-EQP-9 |  | Gallery 1402 - A140/Line-Ups // Pull Feeder from SWD to MOD | 1d | 2026-12-01 | 2026-12-01 | DH.1400A-EQP-6 | 57d |
| DH.1400A-EQP-8 |  | Gallery 1402 - A140/Line-Ups // Set CDU-DH1400- 02 | 1d | 2026-12-02 | 2026-12-02 | DH.1400A-EQP-3, DH.1400A-EQP-7 | 41d |
| DH.1400A-EQP-4 |  | Gallery 1402 - A140/Line-Ups // Condensate connections to Floor Drains | 10d | 2026-12-03 | 2026-12-16 | DH.1400A-EQP-8, DH.1400A-EQP-7, DH.1400A-EQP-3 | 41d |
| DH.1400A-EQP-11 |  | Gallery 1402 - A140/Line-Ups // Mechanical Connections to CRAHU Units | 10d | 2026-12-07 | 2026-12-18 | DH.1400A-EQP-3 SS+5d | 39d |
| DH.1400A-EQP-17 |  | Gallery 1402 - A140/Line-Ups // Pull Feeder and Branch circuits to MIsc equipment and Chiller controls | 10d | 2026-12-07 | 2026-12-18 | DH.1400A-EQP-12 SS+4d | 41d |
| DH.1400A-EQP-13 |  | Gallery 1402 - A140/Line-Ups // Pull Cable Tray Feed from MOD to CRAHU's | 5d | 2026-12-08 | 2026-12-14 | DH.1400A-EQP-10 | 47d |
| DH.1400A-EQP-16 |  | Gallery 1402 - A140/Line-Ups // Terminate CRAHU Electrical Connections | 5d | 2026-12-10 | 2026-12-16 | DH.1400A-EQP-10, DH.1400A-EQP-13 SS+2d | 47d |
| DH.1400A-EQP-19 |  | Gallery 1402 - A140/Line-Ups // Teminate all Misc Equipment and Chiller Controls | 10d | 2026-12-11 | 2026-12-24 | DH.1400A-EQP-17 SS+4d | 41d |
| DH.1400A-EQP-14 |  | Gallery 1402 - A140/Line-Ups // Condensate connections to Floor Drains | 10d | 2026-12-14 | 2026-12-28 | DH.1400A-EQP-4 SS+5d, DH.1400A-EQP-11 SS+5d, DH.140012025, DH.14007841 | 39d |

| ID | WBS | Task | Duration | Start | Finish | Predecessors | Total float |
| --- | --- | --- | --- | --- | --- | --- | --- |
| DH.1400A-EQP-15 |  | Gallery 1402 - A140/Line-Ups // Terminate Mod Panels | 1d | 2026-12-15 | 2026-12-15 | DH.1400A-EQP-9, DH.1400A-EQP-10, DH.1400A-EQP-13 | 48d |
| DH.1400A-EQP-20 |  | Gallery 1402 - A140/Line-Ups // Electrical Gear FOD Inspection Pre-Start Up | 2d | 2026-12-28 | 2026-12-29 | DH.1400A-EQP-15, DH.1400A-EQP-19, DH.1400A-EQP-16 | 41d |
| DH.1400A-EQP-18 |  | Gallery 1402 - A140/Line-Ups // Mechanical Gear FOD Inspection Pre-Start Up | 3d | 2026-12-29 | 2026-12-31 | DH.1400A-EQP-11, DH.1400A-EQP-4, DH.1400A-EQP-14, DH.1400A-EQP-3 | 39d |
|  | 2 | **B140** |  | 2026-11-30 | 2027-01-08 |  |  |
| DH.1400A-EQP-21 |  | Gallery 1402 - B140/Line-Ups // Set CRAH-DH1400- 03 | 1d | 2026-11-30 | 2026-11-30 | DH.1400A-EQP-3 SS | -8d |
| DH.1400A-EQP-23 |  | Gallery 1402 - B140/Line-Ups // Set CRAH-DH1400- 04 | 1d | 2026-11-30 | 2026-11-30 | DH.1400A-EQP-21 SS | -8d |
| DH.1400A-EQP-25 |  | Gallery 1402 - B140/Line-Ups // Set MOD-B140-01 | 1d | 2026-11-30 | 2026-11-30 | DH.1400A-EQP-23 FF | 41d |
| DH.1400A-EQP-26 |  | Gallery 1402 - B140/Line-Ups // Set MOD-B140-02 | 1d | 2026-11-30 | 2026-11-30 | DH.1400A-EQP-25 SS | 41d |
| DH.1400A-EQP-27 |  | Gallery 1402 - B140/Line-Ups // Set CDU-DH1400- 03 | 1d | 2026-12-01 | 2026-12-01 | DH.1400A-EQP-21 | 41d |
| DH.1400A-EQP-29 |  | Gallery 1402 - B140/Line-Ups // Pull Feeder from SWD to MOD | 1d | 2026-12-01 | 2026-12-01 | DH.1400A-EQP-26 | 57d |
| DH.1400A-EQP-30 |  | Gallery 1402 - B140/Line-Ups // Pull Cable Tray Feed from MOD to CRAHU's | 5d | 2026-12-01 | 2026-12-07 | DH.1400A-EQP-26 | 47d |
| DH.1400A-EQP-32 |  | Gallery 1402 - B140/Line-Ups // Mount Electrial Gear for Chiller Controls | 10d | 2026-12-01 | 2026-12-14 | DH.1400A-EQP-26 | 41d |
| DH.1400A-EQP-28 |  | Gallery 1402 - B140/Line-Ups // Set CDU-DH1400- 04 | 1d | 2026-12-02 | 2026-12-02 | DH.1400A-EQP-23, DH.1400A-EQP-27 | 41d |
| DH.1400A-EQP-24 |  | Gallery 1402 - B140/Line-Ups // Condensate connections to Floor Drains | 10d | 2026-12-03 | 2026-12-16 | DH.1400A-EQP-28, DH.1400A-EQP-27, DH.1400A-EQP-23 | 41d |
| DH.1400A-EQP-31 |  | Gallery 1402 - B140/Line-Ups // Mechanical Connections to CRAHU Units | 10d | 2026-12-07 | 2026-12-18 | DH.1400A-EQP-23 SS+5d | 39d |
| DH.1400A-EQP-37 |  | Gallery 1402 - B140/Line-Ups // Pull Feeder and Branch circuits to MIsc equipment and Chiller controls | 10d | 2026-12-07 | 2026-12-18 | DH.1400A-EQP-32 SS+4d | 41d |
| DH.1400A-EQP-33 |  | Gallery 1402 - B140/Line-Ups // Pull Cable Tray Feed from MOD to CRAHU's | 5d | 2026-12-08 | 2026-12-14 | DH.1400A-EQP-30 | 47d |
| DH.1400A-EQP-36 |  | Gallery 1402 - B140/Line-Ups // Terminate CRAHU Electrical Connections | 5d | 2026-12-10 | 2026-12-16 | DH.1400A-EQP-30, DH.1400A-EQP-33 SS+2d | 47d |
| DH.1400A-EQP-39 |  | Gallery 1402 - B140/Line-Ups // Teminate all Misc Equipment and Chiller Controls | 10d | 2026-12-11 | 2026-12-24 | DH.1400A-EQP-37 SS+4d | 41d |
| DH.1400A-EQP-35 |  | Gallery 1402 - B140/Line-Ups // Terminate Mod Panels | 1d | 2026-12-15 | 2026-12-15 | DH.1400A-EQP-29, DH.1400A-EQP-30, DH.1400A-EQP-33 | 48d |
| DH.1400A-EQP-34 |  | Gallery 1402 - B140/Line-Ups // Condensate connections to Floor Drains | 10d | 2026-12-21 | 2027-01-05 | DH.1400A-EQP-24 SS+5d, DH.1400A-EQP-31 SS+5d, DH.140012028 | 34d |
| DH.1400A-EQP-40 |  | Gallery 1402 - B140/Line-Ups // Electrical Gear FOD Inspection Pre-Start Up | 2d | 2026-12-28 | 2026-12-29 | DH.1400A-EQP-35, DH.1400A-EQP-39, DH.1400A-EQP-36 | 41d |
| DH.1400A-EQP-38 |  | Gallery 1402 - B140/Line-Ups // Mechanical Gear FOD Inspection Pre-Start Up | 3d | 2027-01-06 | 2027-01-08 | DH.1400A-EQP-31, DH.1400A-EQP-24, DH.1400A-EQP-34, DH.1400A-EQP-23 | 34d |
|  | 3 | **C140** |  | 2026-11-30 | 2027-01-08 |  |  |
| DH.1400A-EQP-41 |  | Gallery 1402 - C140/Line-Ups // Set CRAH-DH1400- 05 | 1d | 2026-11-30 | 2026-11-30 | DH.1400A-EQP-23 SS | -8d |
| DH.1400A-EQP-43 |  | Gallery 1402 - C140/Line-Ups // Set CRAH-DH1400- 06 | 1d | 2026-11-30 | 2026-11-30 | DH.1400A-EQP-41 SS | -8d |
| DH.1400A-EQP-45 |  | Gallery 1402 - C140/Line-Ups // Set MOD-C140-01 | 1d | 2026-11-30 | 2026-11-30 | DH.1400A-EQP-43 FF | 41d |
| DH.1400A-EQP-46 |  | Gallery 1402 - C140/Line-Ups // Set MOD-C140-02 | 1d | 2026-11-30 | 2026-11-30 | DH.1400A-EQP-45 SS | 41d |
| DH.1400A-EQP-47 |  | Gallery 1402 - C140/Line-Ups // Set CDU-DH1400- 05 | 1d | 2026-12-01 | 2026-12-01 | DH.1400A-EQP-41 | 41d |
| DH.1400A-EQP-49 |  | Gallery 1402 - C140/Line-Ups // Pull Feeder from SWD to MOD | 1d | 2026-12-01 | 2026-12-01 | DH.1400A-EQP-46 | 57d |
| DH.1400A-EQP-50 |  | Gallery 1402 - C140/Line-Ups // Pull Cable Tray Feed from MOD to CRAHU's | 5d | 2026-12-01 | 2026-12-07 | DH.1400A-EQP-46 | 47d |
| DH.1400A-EQP-52 |  | Gallery 1402 - C140/Line-Ups // Mount Electrial Gear for Chiller Controls | 10d | 2026-12-01 | 2026-12-14 | DH.1400A-EQP-46 | 41d |
| DH.1400A-EQP-48 |  | Gallery 1402 - C140/Line-Ups // Set CDU-DH1400- 06 | 1d | 2026-12-02 | 2026-12-02 | DH.1400A-EQP-43, DH.1400A-EQP-47 | 41d |
| DH.1400A-EQP-44 |  | Gallery 1402 - C140/Line-Ups // Condensate connections to Floor Drains | 10d | 2026-12-03 | 2026-12-16 | DH.1400A-EQP-48, DH.1400A-EQP-47, DH.1400A-EQP-43 | 41d |
| DH.1400A-EQP-51 |  | Gallery 1402 - C140/Line-Ups // Mechanical Connections to CRAHU Units | 10d | 2026-12-07 | 2026-12-18 | DH.1400A-EQP-43 SS+5d | 39d |
| DH.1400A-EQP-57 |  | Gallery 1402 - C140/Line-Ups // Pull Feeder and Branch circuits to MIsc equipment and Chiller controls | 10d | 2026-12-07 | 2026-12-18 | DH.1400A-EQP-52 SS+4d | 41d |
| DH.1400A-EQP-53 |  | Gallery 1402 - C140/Line-Ups // Pull Cable Tray Feed from MOD to CRAHU's | 5d | 2026-12-08 | 2026-12-14 | DH.1400A-EQP-50 | 47d |
| DH.1400A-EQP-56 |  | Gallery 1402 - C140/Line-Ups // Terminate CRAHU Electrical Connections | 5d | 2026-12-10 | 2026-12-16 | DH.1400A-EQP-50, DH.1400A-EQP-53 SS+2d | 47d |
| DH.1400A-EQP-59 |  | Gallery 1402 - C140/Line-Ups // Teminate all Misc Equipment and Chiller Controls | 10d | 2026-12-11 | 2026-12-24 | DH.1400A-EQP-57 SS+4d | 41d |
| DH.1400A-EQP-55 |  | Gallery 1402 - C140/Line-Ups // Terminate Mod Panels | 1d | 2026-12-15 | 2026-12-15 | DH.1400A-EQP-49, DH.1400A-EQP-50, DH.1400A-EQP-53 | 48d |
| DH.1400A-EQP-54 |  | Gallery 1402 - C140/Line-Ups // Condensate connections to Floor Drains | 10d | 2026-12-21 | 2027-01-05 | DH.1400A-EQP-44 SS+5d, DH.1400A-EQP-51 SS+5d, DH.140012031 | 34d |
| DH.1400A-EQP-60 |  | Gallery 1402 - C140/Line-Ups // Electrical Gear FOD Inspection Pre-Start Up | 2d | 2026-12-28 | 2026-12-29 | DH.1400A-EQP-55, DH.1400A-EQP-59, DH.1400A-EQP-56 | 41d |
| DH.1400A-EQP-58 |  | Gallery 1402 - C140/Line-Ups // Mechanical Gear FOD Inspection Pre-Start Up | 3d | 2027-01-06 | 2027-01-08 | DH.1400A-EQP-51, DH.1400A-EQP-44, DH.1400A-EQP-54, DH.1400A-EQP-43 | 34d |
|  | 4 | **D140** |  | 2026-12-01 | 2027-01-08 |  |  |
| DH.1400A-EQP-61 |  | Gallery 1402 - D140/Line-Ups // Set CRAH-DH1400- 07 | 1d | 2026-12-01 | 2026-12-01 | DH.1400A-EQP-43 | -8d |
| DH.1400A-EQP-63 |  | Gallery 1402 - D140/Line-Ups // Set CRAH-DH1400- 08 | 1d | 2026-12-01 | 2026-12-01 | DH.1400A-EQP-61 SS | -8d |
| DH.1400A-EQP-65 |  | Gallery 1402 - D140/Line-Ups // Set MOD-D140-01 | 1d | 2026-12-01 | 2026-12-01 | DH.1400A-EQP-63 FF | 40d |
| DH.1400A-EQP-66 |  | Gallery 1402 - D140/Line-Ups // Set MOD-D140-02 | 1d | 2026-12-01 | 2026-12-01 | DH.1400A-EQP-65 SS | 40d |
| DH.1400A-EQP-67 |  | Gallery 1402 - D140/Line-Ups // Set CDU-DH1400- 07 | 1d | 2026-12-02 | 2026-12-02 | DH.1400A-EQP-61 | 40d |
| DH.1400A-EQP-69 |  | Gallery 1402 - D140/Line-Ups // Pull Feeder from SWD to MOD | 1d | 2026-12-02 | 2026-12-02 | DH.1400A-EQP-66 | 56d |
| DH.1400A-EQP-70 |  | Gallery 1402 - D140/Line-Ups // Pull Cable Tray Feed from MOD to CRAHU's | 5d | 2026-12-02 | 2026-12-08 | DH.1400A-EQP-66 | 46d |
| DH.1400A-EQP-72 |  | Gallery 1402 - D140/Line-Ups // Mount Electrial Gear for Chiller Controls | 10d | 2026-12-02 | 2026-12-15 | DH.1400A-EQP-66 | 40d |
| DH.1400A-EQP-68 |  | Gallery 1402 - D140/Line-Ups // Set CDU-DH1400- 08 | 1d | 2026-12-03 | 2026-12-03 | DH.1400A-EQP-63, DH.1400A-EQP-67 | 40d |
| DH.1400A-EQP-64 |  | Gallery 1402 - D140/Line-Ups // Condensate connections to Floor Drains | 10d | 2026-12-04 | 2026-12-17 | DH.1400A-EQP-68, DH.1400A-EQP-67, DH.1400A-EQP-63 | 40d |
| DH.1400A-EQP-71 |  | Gallery 1402 - D140/Line-Ups // Mechanical Connections to CRAHU Units | 10d | 2026-12-08 | 2026-12-21 | DH.1400A-EQP-63 SS+5d | 38d |
| DH.1400A-EQP-77 |  | Gallery 1402 - D140/Line-Ups // Pull Feeder and Branch circuits to MIsc equipment and Chiller controls | 10d | 2026-12-08 | 2026-12-21 | DH.1400A-EQP-72 SS+4d | 40d |
| DH.1400A-EQP-73 |  | Gallery 1402 - D140/Line-Ups // Pull Cable Tray Feed from MOD to CRAHU's | 5d | 2026-12-09 | 2026-12-15 | DH.1400A-EQP-70 | 46d |
| DH.1400A-EQP-76 |  | Gallery 1402 - D140/Line-Ups // Terminate CRAHU Electrical Connections | 5d | 2026-12-11 | 2026-12-17 | DH.1400A-EQP-70, DH.1400A-EQP-73 SS+2d | 46d |
| DH.1400A-EQP-79 |  | Gallery 1402 - D140/Line-Ups // Teminate all Misc Equipment and Chiller Controls | 10d | 2026-12-14 | 2026-12-28 | DH.1400A-EQP-77 SS+4d | 40d |
| DH.1400A-EQP-75 |  | Gallery 1402 - D140/Line-Ups // Terminate Mod Panels | 1d | 2026-12-16 | 2026-12-16 | DH.1400A-EQP-69, DH.1400A-EQP-70, DH.1400A-EQP-73 | 47d |
| DH.1400A-EQP-74 |  | Gallery 1402 - D140/Line-Ups // Condensate connections to Floor Drains | 10d | 2026-12-21 | 2027-01-05 | DH.1400A-EQP-64 SS+5d, DH.1400A-EQP-71 SS+5d, DH.140012034 | 34d |
| DH.1400A-EQP-80 |  | Gallery 1402 - D140/Line-Ups // Electrical Gear FOD Inspection Pre-Start Up | 2d | 2026-12-29 | 2026-12-30 | DH.1400A-EQP-75, DH.1400A-EQP-79, DH.1400A-EQP-76 | 40d |
| DH.1400A-EQP-78 |  | Gallery 1402 - D140/Line-Ups // Mechanical Gear FOD Inspection Pre-Start Up | 3d | 2027-01-06 | 2027-01-08 | DH.1400A-EQP-71, DH.1400A-EQP-64, DH.1400A-EQP-74, DH.1400A-EQP-63 | 34d |
|  | 5 | **E140** |  | 2026-12-01 | 2027-01-11 |  |  |
| DH.1400A-EQP-81 |  | Gallery 1402 - D140/Line-Ups // Set CRAH-DH1400- 09 | 1d | 2026-12-01 | 2026-12-01 | DH.1400A-EQP-63 SS | -8d |
| DH.1400A-EQP-83 |  | Gallery 1402 - D140/Line-Ups // Set CRAH-DH1400- 10 | 1d | 2026-12-01 | 2026-12-01 | DH.1400A-EQP-81 SS | -8d |
| DH.1400A-EQP-85 |  | Gallery 1402 - D140/Line-Ups // Set MOD-E140-01 | 1d | 2026-12-01 | 2026-12-01 | DH.1400A-EQP-83 FF | 40d |
| DH.1400A-EQP-86 |  | Gallery 1402 - D140/Line-Ups // Set MOD-E140-02 | 1d | 2026-12-01 | 2026-12-01 | DH.1400A-EQP-85 SS | 40d |
| DH.1400A-EQP-87 |  | Gallery 1402 - D140/Line-Ups // Set CDU-DH1400- 09 | 1d | 2026-12-02 | 2026-12-02 | DH.1400A-EQP-81 | 40d |
| DH.1400A-EQP-89 |  | Gallery 1402 - D140/Line-Ups // Pull Feeder from SWD to MOD | 1d | 2026-12-02 | 2026-12-02 | DH.1400A-EQP-86 | 56d |

| ID | WBS | Task | Duration | Start | Finish | Predecessors | Total float |
| --- | --- | --- | --- | --- | --- | --- | --- |
| DH.1400A-EQP-90 |  | Gallery 1402 - D140/Line-Ups // Pull Cable Tray Feed from MOD to CRAHU's | 5d | 2026-12-02 | 2026-12-08 | DH.1400A-EQP-86 | 46d |
| DH.1400A-EQP-92 |  | Gallery 1402 - D140/Line-Ups // Mount Electrial Gear for Chiller Controls | 10d | 2026-12-02 | 2026-12-15 | DH.1400A-EQP-86 | 40d |
| DH.1400A-EQP-88 |  | Gallery 1402 - D140/Line-Ups // Set CDU-DH1400- 10 | 1d | 2026-12-03 | 2026-12-03 | DH.1400A-EQP-83, DH.1400A-EQP-87 | 40d |
| DH.1400A-EQP-84 |  | Gallery 1402 - D140/Line-Ups // Condensate connections to Floor Drains | 10d | 2026-12-04 | 2026-12-17 | DH.1400A-EQP-88, DH.1400A-EQP-87, DH.1400A-EQP-83 | 40d |
| DH.1400A-EQP-91 |  | Gallery 1402 - D140/Line-Ups // Mechanical Connections to CRAHU Units | 10d | 2026-12-08 | 2026-12-21 | DH.1400A-EQP-83 SS+5d | 38d |
| DH.1400A-EQP-97 |  | Gallery 1402 - D140/Line-Ups // Pull Feeder and Branch circuits to MIsc equipment and Chiller controls | 10d | 2026-12-08 | 2026-12-21 | DH.1400A-EQP-92 SS+4d | 40d |
| DH.1400A-EQP-93 |  | Gallery 1402 - D140/Line-Ups // Pull Cable Tray Feed from MOD to CRAHU's | 5d | 2026-12-09 | 2026-12-15 | DH.1400A-EQP-90 | 46d |
| DH.1400A-EQP-96 |  | Gallery 1402 - D140/Line-Ups // Terminate CRAHU Electrical Connections | 5d | 2026-12-11 | 2026-12-17 | DH.1400A-EQP-90, DH.1400A-EQP-93 SS+2d | 46d |
| DH.1400A-EQP-99 |  | Gallery 1402 - D140/Line-Ups // Teminate all Misc Equipment and Chiller Controls | 10d | 2026-12-14 | 2026-12-28 | DH.1400A-EQP-97 SS+4d | 40d |
| DH.1400A-EQP-95 |  | Gallery 1402 - D140/Line-Ups // Terminate Mod Panels | 1d | 2026-12-16 | 2026-12-16 | DH.1400A-EQP-89, DH.1400A-EQP-90, DH.1400A-EQP-93 | 47d |
| DH.1400A-EQP-94 |  | Gallery 1402 - D140/Line-Ups // Condensate connections to Floor Drains | 10d | 2026-12-22 | 2027-01-06 | DH.1400A-EQP-84 SS+5d, DH.1400A-EQP-91 SS+5d, DH.140012037 | 33d |
| DH.1400A-EQP-100 |  | Gallery 1402 - D140/Line-Ups // Electrical Gear FOD Inspection Pre-Start Up | 2d | 2026-12-29 | 2026-12-30 | DH.1400A-EQP-95, DH.1400A-EQP-99, DH.1400A-EQP-96 | 40d |
| DH.1400A-EQP-98 |  | Gallery 1402 - D140/Line-Ups // Mechanical Gear FOD Inspection Pre-Start Up | 3d | 2027-01-07 | 2027-01-11 | DH.1400A-EQP-91, DH.1400A-EQP-84, DH.1400A-EQP-94, DH.1400A-EQP-83 | 33d |
|  | 6 | **F140** |  | 2026-12-01 | 2027-01-11 |  |  |
| DH.1400A-EQP-101 |  | Gallery 1402 - F140/Line-Ups // Set CRAH-DH1400- 11 | 1d | 2026-12-01 | 2026-12-01 | DH.1400A-EQP-83 SS | -8d |
| DH.1400A-EQP-103 |  | Gallery 1402 - F140/Line-Ups // Set CRAH-DH1400- 12 | 1d | 2026-12-01 | 2026-12-01 | DH.1400A-EQP-101 SS | -8d |
| DH.1400A-EQP-105 |  | Gallery 1402 - F140/Line-Ups // Set MOD-F140-01 | 1d | 2026-12-01 | 2026-12-01 | DH.1400A-EQP-103 FF | 40d |
| DH.1400A-EQP-106 |  | Gallery 1402 - F140/Line-Ups // Set MOD-F140-02 | 1d | 2026-12-01 | 2026-12-01 | DH.1400A-EQP-105 SS | 40d |
| DH.1400A-EQP-107 |  | Gallery 1402 - F140/Line-Ups // Set CDU-DH1400- 11 | 1d | 2026-12-02 | 2026-12-02 | DH.1400A-EQP-101 | 40d |
| DH.1400A-EQP-109 |  | Gallery 1402 - F140/Line-Ups // Pull Feeder from SWD to MOD | 1d | 2026-12-02 | 2026-12-02 | DH.1400A-EQP-106 | 56d |
| DH.1400A-EQP-110 |  | Gallery 1402 - F140/Line-Ups // Pull Cable Tray Feed from MOD to CRAHU's | 5d | 2026-12-02 | 2026-12-08 | DH.1400A-EQP-106 | 46d |
| DH.1400A-EQP-112 |  | Gallery 1402 - F140/Line-Ups // Mount Electrial Gear for Chiller Controls | 10d | 2026-12-02 | 2026-12-15 | DH.1400A-EQP-106 | 40d |
| DH.1400A-EQP-108 |  | Gallery 1402 - F140/Line-Ups // Set CDU-DH1400- 12 | 1d | 2026-12-03 | 2026-12-03 | DH.1400A-EQP-103, DH.1400A-EQP-107 | 40d |
| DH.1400A-EQP-104 |  | Gallery 1402 - F140/Line-Ups // Condensate connections to Floor Drains | 10d | 2026-12-04 | 2026-12-17 | DH.1400A-EQP-108, DH.1400A-EQP-107, DH.1400A-EQP-103 | 40d |
| DH.1400A-EQP-111 |  | Gallery 1402 - F140/Line-Ups // Mechanical Connections to CRAHU Units | 10d | 2026-12-08 | 2026-12-21 | DH.1400A-EQP-103 SS+5d | 38d |
| DH.1400A-EQP-117 |  | Gallery 1402 - F140/Line-Ups // Pull Feeder and Branch circuits to MIsc equipment and Chiller controls | 10d | 2026-12-08 | 2026-12-21 | DH.1400A-EQP-112 SS+4d | 40d |
| DH.1400A-EQP-113 |  | Gallery 1402 - F140/Line-Ups // Pull Cable Tray Feed from MOD to CRAHU's | 5d | 2026-12-09 | 2026-12-15 | DH.1400A-EQP-110 | 46d |
| DH.1400A-EQP-116 |  | Gallery 1402 - F140/Line-Ups // Terminate CRAHU Electrical Connections | 5d | 2026-12-11 | 2026-12-17 | DH.1400A-EQP-110, DH.1400A-EQP-113 SS+2d | 46d |
| DH.1400A-EQP-119 |  | Gallery 1402 - F140/Line-Ups // Teminate all Misc Equipment and Chiller Controls | 10d | 2026-12-14 | 2026-12-28 | DH.1400A-EQP-117 SS+4d | 40d |
| DH.1400A-EQP-115 |  | Gallery 1402 - F140/Line-Ups // Terminate Mod Panels | 1d | 2026-12-16 | 2026-12-16 | DH.1400A-EQP-109, DH.1400A-EQP-110, DH.1400A-EQP-113 | 47d |
| DH.1400A-EQP-114 |  | Gallery 1402 - F140/Line-Ups // Condensate connections to Floor Drains | 10d | 2026-12-22 | 2027-01-06 | DH.1400A-EQP-104 SS+5d, DH.1400A-EQP-111 SS+5d, DH.140012040 | 33d |
| DH.1400A-EQP-120 |  | Gallery 1402 - F140/Line-Ups // Electrical Gear FOD Inspection Pre-Start Up | 2d | 2026-12-29 | 2026-12-30 | DH.1400A-EQP-115, DH.1400A-EQP-119, DH.1400A-EQP-116 | 40d |
| DH.1400A-EQP-118 |  | Gallery 1402 - F140/Line-Ups // Mechanical Gear FOD Inspection Pre-Start Up | 3d | 2027-01-07 | 2027-01-11 | DH.1400A-EQP-111, DH.1400A-EQP-104, DH.1400A-EQP-114, DH.1400A-EQP-103 | 33d |
|  | 7 | **G140** |  | 2026-12-02 | 2027-01-11 |  |  |
| DH.1400A-EQP-121 |  | Gallery 1402 - G140/Line-Ups // Set CRAH-DH1400- 13 | 1d | 2026-12-02 | 2026-12-02 | DH.1400A-EQP-103 | -8d |
| DH.1400A-EQP-123 |  | Gallery 1402 - G140/Line-Ups // Set CRAH-DH1400- 14 | 1d | 2026-12-02 | 2026-12-02 | DH.1400A-EQP-121 SS | -8d |
| DH.1400A-EQP-125 |  | Gallery 1402 - G140/Line-Ups // Set MOD-G140-01 | 1d | 2026-12-02 | 2026-12-02 | DH.1400A-EQP-123 FF | 39d |
| DH.1400A-EQP-126 |  | Gallery 1402 - G140/Line-Ups // Set MOD-G140-02 | 1d | 2026-12-02 | 2026-12-02 | DH.1400A-EQP-125 SS | 39d |
| DH.1400A-EQP-127 |  | Gallery 1402 - G140/Line-Ups // Set CDU-DH1400- 13 | 1d | 2026-12-03 | 2026-12-03 | DH.1400A-EQP-121 | 39d |
| DH.1400A-EQP-129 |  | Gallery 1402 - G140/Line-Ups // Pull Feeder from SWD to MOD | 1d | 2026-12-03 | 2026-12-03 | DH.1400A-EQP-126 | 55d |
| DH.1400A-EQP-130 |  | Gallery 1402 - G140/Line-Ups // Pull Cable Tray Feed from MOD to CRAHU's | 5d | 2026-12-03 | 2026-12-09 | DH.1400A-EQP-126 | 45d |
| DH.1400A-EQP-132 |  | Gallery 1402 - G140/Line-Ups // Mount Electrial Gear for Chiller Controls | 10d | 2026-12-03 | 2026-12-16 | DH.1400A-EQP-126 | 39d |
| DH.1400A-EQP-128 |  | Gallery 1402 - G140/Line-Ups // Set CDU-DH1400- 14 | 1d | 2026-12-04 | 2026-12-04 | DH.1400A-EQP-123, DH.1400A-EQP-127 | 39d |
| DH.1400A-EQP-124 |  | Gallery 1402 - G140/Line-Ups // Condensate connections to Floor Drains | 10d | 2026-12-07 | 2026-12-18 | DH.1400A-EQP-128, DH.1400A-EQP-127, DH.1400A-EQP-123 | 39d |
| DH.1400A-EQP-131 |  | Gallery 1402 - G140/Line-Ups // Mechanical Connections to CRAHU Units | 10d | 2026-12-09 | 2026-12-22 | DH.1400A-EQP-123 SS+5d | 37d |
| DH.1400A-EQP-137 |  | Gallery 1402 - G140/Line-Ups // Pull Feeder and Branch circuits to MIsc equipment and Chiller controls | 10d | 2026-12-09 | 2026-12-22 | DH.1400A-EQP-132 SS+4d | 39d |
| DH.1400A-EQP-133 |  | Gallery 1402 - G140/Line-Ups // Pull Cable Tray Feed from MOD to CRAHU's | 5d | 2026-12-10 | 2026-12-16 | DH.1400A-EQP-130 | 45d |
| DH.1400A-EQP-136 |  | Gallery 1402 - G140/Line-Ups // Terminate CRAHU Electrical Connections | 5d | 2026-12-14 | 2026-12-18 | DH.1400A-EQP-130, DH.1400A-EQP-133 SS+2d | 45d |
| DH.1400A-EQP-139 |  | Gallery 1402 - G140/Line-Ups // Teminate all Misc Equipment and Chiller Controls | 10d | 2026-12-15 | 2026-12-29 | DH.1400A-EQP-137 SS+4d | 39d |
| DH.1400A-EQP-135 |  | Gallery 1402 - G140/Line-Ups // Terminate Mod Panels | 1d | 2026-12-17 | 2026-12-17 | DH.1400A-EQP-129, DH.1400A-EQP-130, DH.1400A-EQP-133 | 46d |
| DH.1400A-EQP-134 |  | Gallery 1402 - G140/Line-Ups // Condensate connections to Floor Drains | 10d | 2026-12-22 | 2027-01-06 | DH.1400A-EQP-124 SS+5d, DH.1400A-EQP-131 SS+5d, DH.140012043 | 33d |
| DH.1400A-EQP-140 |  | Gallery 1402 - G140/Line-Ups // Electrical Gear FOD Inspection Pre-Start Up | 2d | 2026-12-30 | 2026-12-31 | DH.1400A-EQP-135, DH.1400A-EQP-139, DH.1400A-EQP-136 | 39d |
| DH.1400A-EQP-138 |  | Gallery 1402 - G140/Line-Ups // Mechanical Gear FOD Inspection Pre-Start Up | 3d | 2027-01-07 | 2027-01-11 | DH.1400A-EQP-131, DH.1400A-EQP-124, DH.1400A-EQP-134, DH.1400A-EQP-123 | 33d |
|  | 8 | **H140** |  | 2026-12-02 | 2027-01-12 |  |  |
| DH.1400A-EQP-141 |  | Gallery 1402 - H140/Line-Ups // Set CRAH-DH1400- 15 | 1d | 2026-12-02 | 2026-12-02 | DH.1400A-EQP-123 SS | -8d |
| DH.1400A-EQP-143 |  | Gallery 1402 - H140/Line-Ups // Set CRAH-DH1400- 16 | 1d | 2026-12-02 | 2026-12-02 | DH.1400A-EQP-141 SS | -8d |
| DH.1400A-EQP-145 |  | Gallery 1402 - H140/Line-Ups // Set MOD-H140-01 | 1d | 2026-12-02 | 2026-12-02 | DH.1400A-EQP-143 FF | 39d |
| DH.1400A-EQP-146 |  | Gallery 1402 - H140/Line-Ups // Set MOD-H140-02 | 1d | 2026-12-02 | 2026-12-02 | DH.1400A-EQP-145 SS | 39d |
| DH.1400A-EQP-147 |  | Gallery 1402 - H140/Line-Ups // Set CDU-DH1400- 15 | 1d | 2026-12-03 | 2026-12-03 | DH.1400A-EQP-141 | 39d |
| DH.1400A-EQP-149 |  | Gallery 1402 - H140/Line-Ups // Pull Feeder from SWD to MOD | 1d | 2026-12-03 | 2026-12-03 | DH.1400A-EQP-146 | 55d |
| DH.1400A-EQP-150 |  | Gallery 1402 - H140/Line-Ups // Pull Cable Tray Feed from MOD to CRAHU's | 5d | 2026-12-03 | 2026-12-09 | DH.1400A-EQP-146 | 45d |
| DH.1400A-EQP-152 |  | Gallery 1402 - H140/Line-Ups // Mount Electrial Gear for Chiller Controls | 10d | 2026-12-03 | 2026-12-16 | DH.1400A-EQP-146 | 39d |
| DH.1400A-EQP-148 |  | Gallery 1402 - H140/Line-Ups // Set CDU-DH1400- 16 | 1d | 2026-12-04 | 2026-12-04 | DH.1400A-EQP-143, DH.1400A-EQP-147 | 39d |
| DH.1400A-EQP-144 |  | Gallery 1402 - H140/Line-Ups // Condensate connections to Floor Drains | 10d | 2026-12-07 | 2026-12-18 | DH.1400A-EQP-148, DH.1400A-EQP-147, DH.1400A-EQP-143 | 39d |
| DH.1400A-EQP-151 |  | Gallery 1402 - H140/Line-Ups // Mechanical Connections to CRAHU Units | 10d | 2026-12-09 | 2026-12-22 | DH.1400A-EQP-143 SS+5d | 37d |
| DH.1400A-EQP-157 |  | Gallery 1402 - H140/Line-Ups // Pull Feeder and Branch circuits to MIsc equipment and Chiller controls | 10d | 2026-12-09 | 2026-12-22 | DH.1400A-EQP-152 SS+4d | 39d |
| DH.1400A-EQP-153 |  | Gallery 1402 - H140/Line-Ups // Pull Cable Tray Feed from MOD to CRAHU's | 5d | 2026-12-10 | 2026-12-16 | DH.1400A-EQP-150 | 45d |
| DH.1400A-EQP-156 |  | Gallery 1402 - H140/Line-Ups // Terminate CRAHU Electrical Connections | 5d | 2026-12-14 | 2026-12-18 | DH.1400A-EQP-150, DH.1400A-EQP-153 SS+2d | 45d |
| DH.1400A-EQP-159 |  | Gallery 1402 - H140/Line-Ups // Teminate all Misc Equipment and Chiller Controls | 10d | 2026-12-15 | 2026-12-29 | DH.1400A-EQP-157 SS+4d | 39d |
| DH.1400A-EQP-155 |  | Gallery 1402 - H140/Line-Ups // Terminate Mod Panels | 1d | 2026-12-17 | 2026-12-17 | DH.1400A-EQP-149, DH.1400A-EQP-150, DH.1400A-EQP-153 | 46d |

| ID | WBS | Task | Duration | Start | Finish | Predecessors | Total float |
| --- | --- | --- | --- | --- | --- | --- | --- |
| DH.1400A-EQP-154 |  | Gallery 1402 - H140/Line-Ups // Condensate connections to Floor Drains | 10d | 2026-12-23 | 2027-01-07 | DH.1400A-EQP-144 SS+5d, DH.1400A-EQP-151 SS+5d, DH.140012046 | 32d |
| DH.1400A-EQP-160 |  | Gallery 1402 - H140/Line-Ups // Electrical Gear FOD Inspection Pre-Start Up | 2d | 2026-12-30 | 2026-12-31 | DH.1400A-EQP-155, DH.1400A-EQP-159, DH.1400A-EQP-156 | 39d |
| DH.1400A-EQP-158 |  | Gallery 1402 - H140/Line-Ups // Mechanical Gear FOD Inspection Pre-Start Up | 3d | 2027-01-08 | 2027-01-12 | DH.1400A-EQP-151, DH.1400A-EQP-144, DH.1400A-EQP-154, DH.1400A-EQP-143 | 32d |
|  | 9 | **J140** |  | 2026-12-02 | 2027-01-12 |  |  |
| DH.1400A-EQP-161 |  | Gallery 1402 - J140/Line-Ups // Set CRAH-DH1400- 17 | 1d | 2026-12-02 | 2026-12-02 | DH.1400A-EQP-143 SS | -8d |
| DH.1400A-EQP-163 |  | Gallery 1402 - J140/Line-Ups // Set CRAH-DH1400- 18 | 1d | 2026-12-02 | 2026-12-02 | DH.1400A-EQP-161 SS | -8d |
| DH.1400A-EQP-165 |  | Gallery 1402 - J140/Line-Ups // Set MOD-J140-01 | 1d | 2026-12-02 | 2026-12-02 | DH.1400A-EQP-163 FF | 39d |
| DH.1400A-EQP-166 |  | Gallery 1402 - J140/Line-Ups // Set MOD-J140-02 | 1d | 2026-12-02 | 2026-12-02 | DH.1400A-EQP-165 SS | 39d |
| DH.1400A-EQP-167 |  | Gallery 1402 - J140/Line-Ups // Set CDU-DH1400- 17 | 1d | 2026-12-03 | 2026-12-03 | DH.1400A-EQP-161 | 39d |
| DH.1400A-EQP-169 |  | Gallery 1402 - J140/Line-Ups // Pull Feeder from SWD to MOD | 1d | 2026-12-03 | 2026-12-03 | DH.1400A-EQP-166 | 55d |
| DH.1400A-EQP-170 |  | Gallery 1402 - J140/Line-Ups // Pull Cable Tray Feed from MOD to CRAHU's | 5d | 2026-12-03 | 2026-12-09 | DH.1400A-EQP-166 | 45d |
| DH.1400A-EQP-172 |  | Gallery 1402 - J140/Line-Ups // Mount Electrial Gear for Chiller Controls | 10d | 2026-12-03 | 2026-12-16 | DH.1400A-EQP-166 | 39d |
| DH.1400A-EQP-168 |  | Gallery 1402 - J140/Line-Ups // Set CDU-DH1400- 18 | 1d | 2026-12-04 | 2026-12-04 | DH.1400A-EQP-163, DH.1400A-EQP-167 | 39d |
| DH.1400A-EQP-164 |  | Gallery 1402 - J140/Line-Ups // Condensate connections to Floor Drains | 10d | 2026-12-07 | 2026-12-18 | DH.1400A-EQP-168, DH.1400A-EQP-167, DH.1400A-EQP-163 | 39d |
| DH.1400A-EQP-171 |  | Gallery 1402 - J140/Line-Ups // Mechanical Connections to CRAHU Units | 10d | 2026-12-09 | 2026-12-22 | DH.1400A-EQP-163 SS+5d | 37d |
| DH.1400A-EQP-177 |  | Gallery 1402 - J140/Line-Ups // Pull Feeder and Branch circuits to MIsc equipment and Chiller controls | 10d | 2026-12-09 | 2026-12-22 | DH.1400A-EQP-172 SS+4d | 39d |
| DH.1400A-EQP-173 |  | Gallery 1402 - J140/Line-Ups // Pull Cable Tray Feed from MOD to CRAHU's | 5d | 2026-12-10 | 2026-12-16 | DH.1400A-EQP-170 | 45d |
| DH.1400A-EQP-176 |  | Gallery 1402 - J140/Line-Ups // Terminate CRAHU Electrical Connections | 5d | 2026-12-14 | 2026-12-18 | DH.1400A-EQP-170, DH.1400A-EQP-173 SS+2d | 45d |
| DH.1400A-EQP-179 |  | Gallery 1402 - J140/Line-Ups // Teminate all Misc Equipment and Chiller Controls | 10d | 2026-12-15 | 2026-12-29 | DH.1400A-EQP-177 SS+4d | 39d |
| DH.1400A-EQP-175 |  | Gallery 1402 - J140/Line-Ups // Terminate Mod Panels | 1d | 2026-12-17 | 2026-12-17 | DH.1400A-EQP-169, DH.1400A-EQP-170, DH.1400A-EQP-173 | 46d |
| DH.1400A-EQP-174 |  | Gallery 1402 - J140/Line-Ups // Condensate connections to Floor Drains | 10d | 2026-12-23 | 2027-01-07 | DH.1400A-EQP-164 SS+5d, DH.1400A-EQP-171 SS+5d, DH.140012049 | 32d |
| DH.1400A-EQP-180 |  | Gallery 1402 - J140/Line-Ups // Electrical Gear FOD Inspection Pre-Start Up | 2d | 2026-12-30 | 2026-12-31 | DH.1400A-EQP-175, DH.1400A-EQP-179, DH.1400A-EQP-176 | 39d |
| DH.1400A-EQP-178 |  | Gallery 1402 - J140/Line-Ups // Mechanical Gear FOD Inspection Pre-Start Up | 3d | 2027-01-08 | 2027-01-12 | DH.1400A-EQP-171, DH.1400A-EQP-164, DH.1400A-EQP-174, DH.1400A-EQP-163 | 32d |
|  | 10 | **K140** |  | 2026-12-03 | 2027-01-12 |  |  |
| DH.1400A-EQP-181 |  | Gallery 1402 - K140/Line-Ups // Set CRAH-DH1400- 19 | 1d | 2026-12-03 | 2026-12-03 | DH.1400A-EQP-163 | -8d |
| DH.1400A-EQP-183 |  | Gallery 1402 - K140/Line-Ups // Set CRAH-DH1400- 20 | 1d | 2026-12-03 | 2026-12-03 | DH.1400A-EQP-181 SS | -8d |
| DH.1400A-EQP-185 |  | Gallery 1402 - K140/Line-Ups // Set MOD-K140-01 | 1d | 2026-12-03 | 2026-12-03 | DH.1400A-EQP-183 FF | 38d |
| DH.1400A-EQP-186 |  | Gallery 1402 - K140/Line-Ups // Set MOD-K140-02 | 1d | 2026-12-03 | 2026-12-03 | DH.1400A-EQP-185 SS | 38d |
| DH.1400A-EQP-187 |  | Gallery 1402 - K140/Line-Ups // Set CDU-DH1400- 19 | 1d | 2026-12-04 | 2026-12-04 | DH.1400A-EQP-181 | 38d |
| DH.1400A-EQP-189 |  | Gallery 1402 - K140/Line-Ups // Pull Feeder from SWD to MOD | 1d | 2026-12-04 | 2026-12-04 | DH.1400A-EQP-186 | 54d |
| DH.1400A-EQP-190 |  | Gallery 1402 - K140/Line-Ups // Pull Cable Tray Feed from MOD to CRAHU's | 5d | 2026-12-04 | 2026-12-10 | DH.1400A-EQP-186 | 44d |
| DH.1400A-EQP-192 |  | Gallery 1402 - K140/Line-Ups // Mount Electrial Gear for Chiller Controls | 10d | 2026-12-04 | 2026-12-17 | DH.1400A-EQP-186 | 38d |
| DH.1400A-EQP-188 |  | Gallery 1402 - K140/Line-Ups // Set CDU-DH1400- 20 | 1d | 2026-12-07 | 2026-12-07 | DH.1400A-EQP-183, DH.1400A-EQP-187 | 38d |
| DH.1400A-EQP-184 |  | Gallery 1402 - K140/Line-Ups // Condensate connections to Floor Drains | 10d | 2026-12-08 | 2026-12-21 | DH.1400A-EQP-188, DH.1400A-EQP-187, DH.1400A-EQP-183 | 38d |
| DH.1400A-EQP-191 |  | Gallery 1402 - K140/Line-Ups // Mechanical Connections to CRAHU Units | 10d | 2026-12-10 | 2026-12-23 | DH.1400A-EQP-183 SS+5d | 36d |
| DH.1400A-EQP-197 |  | Gallery 1402 - K140/Line-Ups // Pull Feeder and Branch circuits to MIsc equipment and Chiller controls | 10d | 2026-12-10 | 2026-12-23 | DH.1400A-EQP-192 SS+4d | 38d |
| DH.1400A-EQP-193 |  | Gallery 1402 - K140/Line-Ups // Pull Cable Tray Feed from MOD to CRAHU's | 5d | 2026-12-11 | 2026-12-17 | DH.1400A-EQP-190 | 44d |
| DH.1400A-EQP-196 |  | Gallery 1402 - K140/Line-Ups // Terminate CRAHU Electrical Connections | 5d | 2026-12-15 | 2026-12-21 | DH.1400A-EQP-190, DH.1400A-EQP-193 SS+2d | 44d |
| DH.1400A-EQP-199 |  | Gallery 1402 - K140/Line-Ups // Teminate all Misc Equipment and Chiller Controls | 10d | 2026-12-16 | 2026-12-30 | DH.1400A-EQP-197 SS+4d | 38d |
| DH.1400A-EQP-195 |  | Gallery 1402 - K140/Line-Ups // Terminate Mod Panels | 1d | 2026-12-18 | 2026-12-18 | DH.1400A-EQP-189, DH.1400A-EQP-190, DH.1400A-EQP-193 | 45d |
| DH.1400A-EQP-194 |  | Gallery 1402 - K140/Line-Ups // Condensate connections to Floor Drains | 10d | 2026-12-23 | 2027-01-07 | DH.1400A-EQP-184 SS+5d, DH.1400A-EQP-191 SS+5d, DH.140012052 | 32d |
| DH.1400A-EQP-200 |  | Gallery 1402 - K140/Line-Ups // Electrical Gear FOD Inspection Pre-Start Up | 2d | 2026-12-31 | 2027-01-04 | DH.1400A-EQP-195, DH.1400A-EQP-199, DH.1400A-EQP-196 | 38d |
| DH.1400A-EQP-198 |  | Gallery 1402 - K140/Line-Ups // Mechanical Gear FOD Inspection Pre-Start Up | 3d | 2027-01-08 | 2027-01-12 | DH.1400A-EQP-191, DH.1400A-EQP-184, DH.1400A-EQP-194, DH.1400A-EQP-183 | 32d |
|  | 11 | **R140** |  | 2026-12-03 | 2027-01-12 |  |  |
| DH.1400A-EQP-201 |  | Gallery 1402 - R140/Line-Ups // Set CRAH-DH1400- 21 | 1d | 2026-12-03 | 2026-12-03 | DH.1400A-EQP-183 SS | -8d |
| DH.1400A-EQP-203 |  | Gallery 1402 - R140/Line-Ups // Set CRAH-DH1400- 22 | 1d | 2026-12-03 | 2026-12-03 | DH.1400A-EQP-201 SS | -8d |
| DH.1400A-EQP-205 |  | Gallery 1402 - R140/Line-Ups // Set MOD-R140-01 | 1d | 2026-12-03 | 2026-12-03 | DH.1400A-EQP-203 FF | -8d |
| DH.1400A-EQP-206 |  | Gallery 1402 - R140/Line-Ups // Set MOD-R140-02 | 1d | 2026-12-03 | 2026-12-03 | DH.1400A-EQP-205 SS | -8d |
| DH.1400A-EQP-207 |  | Gallery 1402 - R140/Line-Ups // Set CDU-DH1400- 21 | 1d | 2026-12-04 | 2026-12-04 | DH.1400A-EQP-201 | -4d |
| DH.1400A-EQP-210 |  | Gallery 1402 - R140/Line-Ups // Pull Cable Tray Feed from MOD to CRAHU's | 5d | 2026-12-04 | 2026-12-10 | DH.1400A-EQP-206 | -2d |
| DH.1400A-EQP-212 |  | Gallery 1402 - R140/Line-Ups // Mount Electrial Gear for Chiller Controls | 10d | 2026-12-04 | 2026-12-17 | DH.1400A-EQP-206 | -8d |
| DH.1400A-EQP-208 |  | Gallery 1402 - R140/Line-Ups // Set CDU-DH1400- 22 | 1d | 2026-12-07 | 2026-12-07 | DH.1400A-EQP-203, DH.1400A-EQP-207 | -4d |
| DH.1400A-EQP-204 |  | Gallery 1402 - R140/Line-Ups // Condensate connections to Floor Drains | 10d | 2026-12-08 | 2026-12-21 | DH.1400A-EQP-208, DH.1400A-EQP-207, DH.1400A-EQP-203 | -4d |
| DH.1400A-EQP-221 |  | Gallery 1402 - R140/Line-Ups // Set SWD-R140 | 1d | 2026-12-08 | 2026-12-08 | DH.1400A-EQP-208 | 7d |
| DH.1400A-EQP-222 |  | Gallery 1402 - R140/Line-Ups // Set SWD-TIE-R140 | 1d | 2026-12-09 | 2026-12-09 | DH.1400A-EQP-221 | 7d |
| DH.1400A-EQP-209 |  | Gallery 1402 - R140/Line-Ups // Pull Feeder from SWD to MOD | 1d | 2026-12-10 | 2026-12-10 | DH.1400A-EQP-206, DH.1400A-EQP-222 | 7d |
| DH.1400A-EQP-211 |  | Gallery 1402 - R140/Line-Ups // Mechanical Connections to CRAHU Units | 10d | 2026-12-10 | 2026-12-23 | DH.1400A-EQP-203 SS+5d | -6d |
| DH.1400A-EQP-217 |  | Gallery 1402 - R140/Line-Ups // Pull Feeder and Branch circuits to MIsc equipment and Chiller controls | 10d | 2026-12-10 | 2026-12-23 | DH.1400A-EQP-212 SS+4d | -8d |
| DH.1400A-EQP-213 |  | Gallery 1402 - R140/Line-Ups // Pull Cable Tray Feed from MOD to CRAHU's | 5d | 2026-12-11 | 2026-12-17 | DH.1400A-EQP-210 | -2d |
| DH.1400A-EQP-216 |  | Gallery 1402 - R140/Line-Ups // Terminate CRAHU Electrical Connections | 5d | 2026-12-15 | 2026-12-21 | DH.1400A-EQP-210, DH.1400A-EQP-213 SS+2d | 2d |
| DH.1400A-EQP-219 |  | Gallery 1402 - R140/Line-Ups // Teminate all Misc Equipment and Chiller Controls | 10d | 2026-12-16 | 2026-12-30 | DH.1400A-EQP-217 SS+4d | -8d |
| DH.1400A-EQP-215 |  | Gallery 1402 - R140/Line-Ups // Terminate Mod Panels | 1d | 2026-12-18 | 2026-12-18 | DH.1400A-EQP-209, DH.1400A-EQP-210, DH.1400A-EQP-213 | 3d |
| DH.1400A-EQP-214 |  | Gallery 1402 - R140/Line-Ups // Condensate connections to Floor Drains | 10d | 2026-12-23 | 2027-01-07 | DH.1400A-EQP-204 SS+5d, DH.1400A-EQP-211 SS+5d, DH.140012055 | -10d |
| DH.1400A-EQP-220 |  | Gallery 1402 - R140/Line-Ups // Electrical Gear FOD Inspection Pre-Start Up | 2d | 2026-12-31 | 2027-01-04 | DH.1400A-EQP-215, DH.1400A-EQP-219, DH.1400A-EQP-216 | -4d |
| DH.1400A-EQP-218 |  | Gallery 1402 - R140/Line-Ups // Mechanical Gear FOD Inspection Pre-Start Up | 3d | 2027-01-08 | 2027-01-12 | DH.1400A-EQP-211, DH.1400A-EQP-204, DH.1400A-EQP-214, DH.1400A-EQP-203 | -10d |
|  | 12 | **Equipment Connections** |  | 2026-12-11 | 2027-01-08 |  |  |
|  | 1 | **CRAH** |  | 2026-12-18 | 2026-12-30 |  |  |
| DH1400.MG.A110.8687 |  | Gallery 1402 // DH 1400 / Elec Room // CRAH Duct Work Termination | 2d | 2026-12-18 | 2026-12-21 | DH.1400A-EQP-213 | -2d |
| DH1400.MG.A110.8686 |  | Gallery 1402 // DH 1400 / Elec Room // CRAH Chilled Water | 2d | 2026-12-22 | 2026-12-23 | DH1400.MG.A110.8687 | -2d |
| DH1400.MG.A110.8684 |  | Gallery 1402 // DH 1400 / Elec Room // CRAH Power Connections | 2d | 2026-12-24 | 2026-12-28 | DH1400.MG.A110.8686 | -2d |

| ID | WBS | Task | Duration | Start | Finish | Predecessors | Total float |
| --- | --- | --- | --- | --- | --- | --- | --- |
| DH1400.MG.A110.8685 |  | Gallery 1402 // DH 1400 / Elec Room // CRAH LV Connections | 2d | 2026-12-29 | 2026-12-30 | DH1400.MG.A110.8684 | -2d |
|  | 2 | **CDU** |  | 2026-12-31 | 2027-01-08 |  |  |
| DH1400.MG.A110.8690 |  | Gallery 1402 // DH 1400 / Elec Room // CDU Chilled Water Connections | 2d | 2026-12-31 | 2027-01-04 | DH.1400A-EQP-219 | -8d |
| DH1400.MG.A110.8688 |  | Gallery 1402 // DH 1400 /Elec Room // CDU Power Connections | 2d | 2027-01-05 | 2027-01-06 | DH1400.MG.A110.8690 | -8d |
| DH1400.MG.A110.8689 |  | Gallery 1402 // DH 1400 / Elec Room // CDU Controls Connections | 2d | 2027-01-07 | 2027-01-08 | DH1400.MG.A110.8688 | -8d |
|  | 3 | **MOD** |  | 2026-12-11 | 2026-12-16 |  |  |
| DH1400.MG.A110.8691 |  | Gallery 1402 // DH 1400 / Elec Room // MOD Power Connections | 2d | 2026-12-11 | 2026-12-14 | DH.1400A-EQP-209 | 7d |
| DH1400.MG.A110.8692 |  | Gallery 1402 // DH 1400 / Elec Room // MOD LV Connections | 2d | 2026-12-15 | 2026-12-16 | DH1400.MG.A110.8691 | 7d |
|  | 4 | **Gallery 1403** |  | 2026-09-28 | 2027-01-15 |  |  |
|  | 1 | **Architectural** |  | 2026-09-28 | 2026-12-08 |  |  |
| DH.14001040 |  | DH 1400/Gallery 1403 // Frame walls | 6d | 2026-09-28 A | 2026-10-07 | DH.1400700 SS | -10d |
| DH.14001000 |  | DH 1400/Gallery 1403 // Seal concrete | 2d | 2026-09-30 | 2026-10-01 | DH.14000.1000 SS | 56d |
| DH.14001010 |  | DH 1400/Gallery 1403 // MEPF overhead layout | 5d | 2026-10-02 | 2026-10-08 | DH.14001000 | 56d |
| DH.14001070 |  | DH 1400/Gallery 1403 // MEP rough in walls | 4d | 2026-10-08 | 2026-10-14 | DH.14001040, DH.14001040 FF | -10d |
| B120001.3171 |  | DH 1400/Gallery 1403 // Install Overhead Cable Ladder / 36" Cable Tray - TFO | 5d | 2026-10-09 | 2026-10-16 | DH.14001010 | 56d |
| DH.14001080 |  | DH 1400/Gallery 1403 // In wall inspection | 1d | 2026-10-15 | 2026-10-15 | DH.14001070 | -10d |
| DH.14001050 |  | DH 1400/Gallery 1403 // Install Sheetrock Top Down | 6d | 2026-10-16 | 2026-10-23 | DH.1400660, DH.14001040 SS+3d, DH.14001080 | -10d |
| B120001.3172 |  | DH 1400/Gallery 1403 // Install Overhead HAC - TFO | 5d | 2026-10-19 | 2026-10-23 | B120001.3171 | 56d |
| DH.14001030 |  | DH 1400/Gallery 1403 // MEPF high overhead install | 10d | 2026-10-26 | 2026-11-06 | DH.14001010 SS, B120001.3172 | 56d |
| DH.14001090 |  | DH 1400/Gallery 1403 // Install Balance of Sheetrock on walls | 6d | 2026-10-26 | 2026-11-02 | DH.14001050 | -10d |
| DH.14001100 |  | DH 1400/Gallery 1403 // Tape and finish walls | 8d | 2026-11-03 | 2026-11-13 | DH.14001080, DH.14001090 | -10d |
| F.1000A.1291 |  | DH 1400/Gallery 1403 // Rough-In Security | 2d | 2026-11-09 | 2026-11-10 | DH.14001030 | 56d |
| F.1000A.1525 |  | DH 1400/Gallery 1403 // BMS & EPMS Rough-In | 2d | 2026-11-09 | 2026-11-10 | F.1000A.1291 FF, F.1000A.1291 SS | 68d |
| F.1000A.1292 |  | DH 1400/Gallery 1403 // Pull & Test Security Cable | 3d | 2026-11-12 | 2026-11-16 | F.1000A.1291 | 56d |
| DH.14001060 |  | DH 1400/Gallery 1403 // Install wall door frames | 2d | 2026-11-16 | 2026-11-17 | DH.14001100 | -8d |
| DH.14001110 |  | DH 1400/Gallery 1403 // Prime and Paint walls | 4d | 2026-11-16 | 2026-11-19 | DH.14001100 | -10d |
| F.1000A.1293 |  | DH 1400/Gallery 1403 // Install Security Devices | 2d | 2026-11-18 | 2026-11-19 | F.1000A.1292, DH.14001060 | 55d |
| DH.14001120 |  | DH 1400/Gallery 1403 // Touch up Walls and Fianl Paint | 5d | 2026-11-20 | 2026-11-27 | DH.14001060, DH.14001110 | -10d |
| F.1000A.1294 |  | DH 1400/Gallery 1403 // Mount & Terminate Security Devices | 5d | 2026-11-20 | 2026-11-27 | F.1000A.1293, DH.14001110 | 55d |
| DH.14001130 |  | DH 1400/Gallery 1403 // Install Trim and Devices | 2d | 2026-11-25 | 2026-11-27 | DH.14001120 FF | -10d |
| DH.160012152 |  | DH 1400/Gallery 1403 // Ready to Receive Equipment | 0d | 2026-11-27 | 2026-11-27 | DH.14001130 FF | -10d |
| F.1000A.1295 |  | DH 1400/Gallery 1403 // Test Security Devices | 2d | 2026-11-30 | 2026-12-01 | F.1000A.1525 FF, F.1000A.1294, DH.14001130 | 55d |
| DH.14001140 |  | DH 1400/Gallery 1403 // Suffolk Pre Punch | 5d | 2026-12-02 | 2026-12-08 | DH.160012152, F.1000A.1295 | 55d |
|  | 16 | **Raceway** |  |  |  |  |  |
|  | 3 | **Equipment Line-Ups** |  | 2026-11-30 | 2027-01-15 |  |  |
|  | 1 | **A140** |  | 2026-11-30 | 2026-12-31 |  |  |
| DH.1400B-EQP-1 |  | Gallery 1403 - A140/Line-Ups // Set CRAH-DH1400- 23 | 1d | 2026-11-30 | 2026-11-30 | DH.14006360, DH.160012152 | -10d |
| DH.1400B-EQP-4 |  | Gallery 1403 - A140/Line-Ups // Set CRAH-DH1400- 24 | 1d | 2026-11-30 | 2026-11-30 | DH.1400B-EQP-1 FF, DH.1400B-EQP-1 SS | -10d |
| DH.1400B-EQP-5 |  | Gallery 1403 - A140/Line-Ups // Set MOD A140-01 (Does No apply) | 1d | 2026-11-30 | 2026-11-30 | DH.1400B-EQP-4 FF | 41d |
| DH.1400B-EQP-6 |  | Gallery 1403 - A140/Line-Ups // Set MOD A140-02 (Does No apply) | 1d | 2026-11-30 | 2026-11-30 | DH.1400B-EQP-5 SS | 41d |
| DH.1400B-EQP-10 |  | Gallery 1403 - A140/Line-Ups // Mount Electrial Gear for Chiller Controls | 10d | 2026-12-01 | 2026-12-14 | DH.1400B-EQP-6 | 41d |
| DH.1400B-EQP-199 |  | Gallery 1403 - A140/Line-Ups // Set CDU-DH1400-23 | 1d | 2026-12-01 | 2026-12-01 | DH.1400B-EQP-6 | 55d |
| DH.1400B-EQP-3 |  | Gallery 1403 - A140/Line-Ups // Condensate connections to Floor Drains | 10d | 2026-12-01 | 2026-12-14 | DH.1400B-EQP-4, DH.1400B-EQP-1 SS | 43d |
| DH.1400B-EQP-8 |  | Gallery 1403 - A140/Line-Ups // Pull Cable Tray Feed from MOD to CRAHU's | 3d | 2026-12-01 | 2026-12-03 | DH.1400B-EQP-6 | 53d |
| DH.1400B-EQP-200 |  | Gallery 1403 - A140/Line-Ups // Set CDU-DH1400-24 | 1d | 2026-12-02 | 2026-12-02 | DH.1400B-EQP-199 | 55d |
| DH.1400B-EQP-7 |  | Gallery 1403 - A140/Line-Ups // Pull Feeder from SWD to MOD | 1d | 2026-12-03 | 2026-12-03 | DH.1400B-EQP-6, DH.1400B-EQP-200 | 55d |
| DH.1400B-EQP-13 |  | Gallery 1403 - A140/Line-Ups // Terminate MOD Panels | 1d | 2026-12-04 | 2026-12-04 | DH.1400B-EQP-7, DH.1400B-EQP-8 | 55d |
| DH.1400B-EQP-14 |  | Gallery 1403 - A140/Line-Ups // Terminate Electrical Connections - CRAHU | 3d | 2026-12-04 | 2026-12-08 | DH.1400B-EQP-8 | 53d |
| DH.1400B-EQP-15 |  | Gallery 1403 - A140/Line-Ups // Pull Feeder and Branch circuits to MIsc equipment and Chiller controls | 10d | 2026-12-07 | 2026-12-18 | DH.1400B-EQP-10 SS+4d | 41d |
| DH.1400B-EQP-9 |  | Gallery 1403 - A140/Line-Ups // Mechanical Connections to CRAHU Units | 5d | 2026-12-07 | 2026-12-11 | DH.1400B-EQP-4 SS+5d | 39d |
| DH.1400B-EQP-17 |  | Gallery 1403 - A140/Line-Ups // Teminate all Misc Equipment and Chiller Controls | 10d | 2026-12-11 | 2026-12-24 | DH.1400B-EQP-15 SS+4d | 41d |
| DH.1400B-EQP-12 |  | Gallery 1403 - A140/Line-Ups // Condensate connections to Floor Drains | 10d | 2026-12-14 | 2026-12-28 | DH.1400B-EQP-3 SS+5d, DH.1400B-EQP-9 SS+5d | 39d |
| DH.1400B-EQP-18 |  | Gallery 1403 - A140/Line-Ups // Electrical Gear FOD Inspection Pre-Start Up | 2d | 2026-12-28 | 2026-12-29 | DH.1400B-EQP-13, DH.1400B-EQP-17, DH.1400B-EQP-14 | 41d |
| DH.1400B-EQP-16 |  | Gallery 1403 - A140/Line-Ups // Mechanical Gear FOD Inspection Pre-Start Up | 3d | 2026-12-29 | 2026-12-31 | DH.1400B-EQP-4, DH.1400B-EQP-1 SS, DH.1400B-EQP-9, DH.1400B-EQP-3, DH.1400B-EQP-12 | 39d |
|  | 2 | **B140** |  | 2026-11-30 | 2027-01-08 |  |  |
| DH.1400B-EQP-19 |  | Gallery 1403 - B140/Line-Ups // Set CRAH-DH1400- 25 | 1d | 2026-11-30 | 2026-11-30 | DH.1400B-EQP-4 SS | -10d |
| DH.1400B-EQP-22 |  | Gallery 1403 - B140/Line-Ups // Set CRAH-DH1400- 26 | 1d | 2026-11-30 | 2026-11-30 | DH.1400B-EQP-19 FF, DH.1400B-EQP-19 SS | -10d |
| DH.1400B-EQP-23 |  | Gallery 1403 - B140/Line-Ups // Set MOD B140-01 (Does No apply) | 1d | 2026-11-30 | 2026-11-30 | DH.1400B-EQP-22 FF | 41d |
| DH.1400B-EQP-24 |  | Gallery 1403 - B140/Line-Ups // Set MOD B140-02 (Does No apply) | 1d | 2026-11-30 | 2026-11-30 | DH.1400B-EQP-23 SS | 41d |
| DH.1400B-EQP-201 |  | Gallery 1403 - B140/Line-Ups // Set CDU-DH1400-25 | 1d | 2026-12-01 | 2026-12-01 | DH.1400B-EQP-24 | 55d |
| DH.1400B-EQP-26 |  | Gallery 1403 - B140/Line-Ups // Pull Cable Tray Feed from MOD to CRAHU's | 5d | 2026-12-01 | 2026-12-07 | DH.1400B-EQP-24 | 47d |
| DH.1400B-EQP-28 |  | Gallery 1403 - B140/Line-Ups // Mount Electrial Gear for Chiller Controls | 10d | 2026-12-01 | 2026-12-14 | DH.1400B-EQP-24 | 41d |
| DH.1400B-EQP-202 |  | Gallery 1403 - B140/Line-Ups // Set CDU-DH1400-26 | 1d | 2026-12-02 | 2026-12-02 | DH.1400B-EQP-201, DH.1400B-EQP-201 FF | 55d |
| DH.1400B-EQP-25 |  | Gallery 1403 - B140/Line-Ups // Pull Feeder from SWD to MOD | 1d | 2026-12-03 | 2026-12-03 | DH.1400B-EQP-24, DH.1400B-EQP-202 | 55d |
| DH.1400B-EQP-20 |  | Gallery 1403 - B140/Line-Ups // Connect CRAH units | 10d | 2026-12-07 | 2026-12-18 | DH.1400B-EQP-22, DH.1400B-EQP-19 SS+5d | 34d |
| DH.1400B-EQP-27 |  | Gallery 1403 - B140/Line-Ups // Mechanical Connections to CRAHU Units | 10d | 2026-12-07 | 2026-12-18 | DH.1400B-EQP-22 SS+5d | 39d |
| DH.1400B-EQP-33 |  | Gallery 1403 - B140/Line-Ups // Pull Feeder and Branch circuits to MIsc equipment and Chiller controls | 10d | 2026-12-07 | 2026-12-18 | DH.1400B-EQP-28 SS+4d | 41d |
| DH.1400B-EQP-29 |  | Gallery 1403 - B140/Line-Ups // Pull Cable Tray Feed from MOD to CRAHU's | 5d | 2026-12-08 | 2026-12-14 | DH.1400B-EQP-26 | 47d |
| DH.1400B-EQP-32 |  | Gallery 1403 - B140/Line-Ups // Terminate CRAHU Electrical Connections | 5d | 2026-12-10 | 2026-12-16 | DH.1400B-EQP-26, DH.1400B-EQP-29 SS+2d | 47d |
| DH.1400B-EQP-35 |  | Gallery 1403 - B140/Line-Ups // Teminate all Misc Equipment and Chiller Controls | 10d | 2026-12-11 | 2026-12-24 | DH.1400B-EQP-33 SS+4d | 41d |

| ID | WBS | Task | Duration | Start | Finish | Predecessors | Total float |
| --- | --- | --- | --- | --- | --- | --- | --- |
| DH.1400B-EQP-21 |  | Gallery 1403 - B140/Line-Ups // Condensate connections to Floor Drains | 10d | 2026-12-14 | 2026-12-28 | DH.1400B-EQP-20 SS+5d | 34d |
| DH.1400B-EQP-31 |  | Gallery 1403 - B140/Line-Ups // Terminat Mod Panels | 1d | 2026-12-15 | 2026-12-15 | DH.1400B-EQP-25, DH.1400B-EQP-26, DH.1400B-EQP-29 | 48d |
| DH.1400B-EQP-30 |  | Gallery 1403 - B140/Line-Ups // Condensate connections to Floor Drains | 10d | 2026-12-21 | 2027-01-05 | DH.1400B-EQP-21 SS+5d, DH.1400B-EQP-27 SS+5d | 34d |
| DH.1400B-EQP-36 |  | Gallery 1403 - B140/Line-Ups // Electrical Gear FOD Inspection Pre-Start Up | 2d | 2026-12-28 | 2026-12-29 | DH.1400B-EQP-31, DH.1400B-EQP-35, DH.1400B-EQP-32 | 41d |
| DH.1400B-EQP-34 |  | Gallery 1403 - B140/Line-Ups // Mechanical Gear FOD Inspection Pre-Start Up | 3d | 2027-01-06 | 2027-01-08 | DH.1400B-EQP-20, DH.1400B-EQP-27, DH.1400B-EQP-21, DH.1400B-EQP-30 | 34d |
|  | 3 | **C140** |  | 2026-11-30 | 2027-01-08 |  |  |
| DH.1400B-EQP-37 |  | Gallery 1403 - C140/Line-Ups // Set CRAH-DH1400- 27 | 1d | 2026-11-30 | 2026-11-30 | DH.1400B-EQP-22 SS | -10d |
| DH.1400B-EQP-40 |  | Gallery 1403 - C140/Line-Ups // Set CRAH-DH1400- 28 | 1d | 2026-11-30 | 2026-11-30 | DH.1400B-EQP-37 FF, DH.1400B-EQP-37 SS | -10d |
| DH.1400B-EQP-41 |  | Gallery 1403 - C140/Line-Ups // Set MOD C140-01 (Does No apply) | 1d | 2026-11-30 | 2026-11-30 | DH.1400B-EQP-40 FF | 41d |
| DH.1400B-EQP-42 |  | Gallery 1403 - C140/Line-Ups // Set MOD C140-02 (Does No apply) | 1d | 2026-11-30 | 2026-11-30 | DH.1400B-EQP-41 SS | 41d |
| DH.1400B-EQP-203 |  | Gallery 1403 - C140/Line-Ups // Set CDU-DH1400-27 | 1d | 2026-12-01 | 2026-12-01 | DH.1400B-EQP-42 | 55d |
| DH.1400B-EQP-44 |  | Gallery 1403 - C140/Line-Ups // Pull Cable Tray Feed from MOD to CRAHU's | 5d | 2026-12-01 | 2026-12-07 | DH.1400B-EQP-42 | 47d |
| DH.1400B-EQP-46 |  | Gallery 1403 - C140/Line-Ups // Mount Electrial Gear for Chiller Controls | 10d | 2026-12-01 | 2026-12-14 | DH.1400B-EQP-42 | 41d |
| DH.1400B-EQP-204 |  | Gallery 1403 - C140/Line-Ups // Set CDU-DH1400-28 | 1d | 2026-12-02 | 2026-12-02 | DH.1400B-EQP-203, DH.1400B-EQP-203 FF | 55d |
| DH.1400B-EQP-43 |  | Gallery 1403 - C140/Line-Ups // Pull Feeder from SWD to MOD | 1d | 2026-12-03 | 2026-12-03 | DH.1400B-EQP-42, DH.1400B-EQP-204 | 55d |
| DH.1400B-EQP-38 |  | Gallery 1403 - C140/Line-Ups // Connect CRAH units | 10d | 2026-12-07 | 2026-12-18 | DH.1400B-EQP-40, DH.1400B-EQP-37 SS+5d | 34d |
| DH.1400B-EQP-45 |  | Gallery 1403 - C140/Line-Ups // Mechanical Connections to CRAHU Units | 10d | 2026-12-07 | 2026-12-18 | DH.1400B-EQP-40 SS+5d | 39d |
| DH.1400B-EQP-51 |  | Gallery 1403 - C140/Line-Ups // Pull Feeder and Branch circuits to MIsc equipment and Chiller controls | 10d | 2026-12-07 | 2026-12-18 | DH.1400B-EQP-46 SS+4d | 41d |
| DH.1400B-EQP-47 |  | Gallery 1403 - C140/Line-Ups // Pull Cable Tray Feed from MOD to CRAHU's | 5d | 2026-12-08 | 2026-12-14 | DH.1400B-EQP-44 | 47d |
| DH.1400B-EQP-50 |  | Gallery 1403 - C140/Line-Ups // Terminate CRAHU Electrical Connections | 5d | 2026-12-10 | 2026-12-16 | DH.1400B-EQP-44, DH.1400B-EQP-47 SS+2d | 47d |
| DH.1400B-EQP-53 |  | Gallery 1403 - C140/Line-Ups // Teminate all Misc Equipment and Chiller Controls | 10d | 2026-12-11 | 2026-12-24 | DH.1400B-EQP-51 SS+4d | 41d |
| DH.1400B-EQP-39 |  | Gallery 1403 - C140/Line-Ups // Condensate connections to Floor Drains | 10d | 2026-12-14 | 2026-12-28 | DH.1400B-EQP-38 SS+5d | 34d |
| DH.1400B-EQP-49 |  | Gallery 1403 - C140/Line-Ups // Terminat Mod Panels | 1d | 2026-12-15 | 2026-12-15 | DH.1400B-EQP-43, DH.1400B-EQP-44, DH.1400B-EQP-47 | 48d |
| DH.1400B-EQP-48 |  | Gallery 1403 - C140/Line-Ups // Condensate connections to Floor Drains | 10d | 2026-12-21 | 2027-01-05 | DH.1400B-EQP-39 SS+5d, DH.1400B-EQP-45 SS+5d | 34d |
| DH.1400B-EQP-54 |  | Gallery 1403 - C140/Line-Ups // Electrical Gear FOD Inspection Pre-Start Up | 2d | 2026-12-28 | 2026-12-29 | DH.1400B-EQP-49, DH.1400B-EQP-53, DH.1400B-EQP-50 | 41d |
| DH.1400B-EQP-52 |  | Gallery 1403 - C140/Line-Ups // Mechanical Gear FOD Inspection Pre-Start Up | 3d | 2027-01-06 | 2027-01-08 | DH.1400B-EQP-38, DH.1400B-EQP-45, DH.1400B-EQP-39, DH.1400B-EQP-48 | 34d |
|  | 4 | **D140** |  | 2026-12-01 | 2027-01-11 |  |  |
| DH.1400B-EQP-55 |  | Gallery 1403 - D140/Line-Ups // Set CRAH-DH1400- 29 | 1d | 2026-12-01 | 2026-12-01 | DH.1400B-EQP-40 | -10d |
| DH.1400B-EQP-58 |  | Gallery 1403 - D140/Line-Ups // Set CRAH-DH1400-30 | 1d | 2026-12-01 | 2026-12-01 | DH.1400B-EQP-55 FF, DH.1400B-EQP-55 SS | -10d |
| DH.1400B-EQP-59 |  | Gallery 1403 - D140/Line-Ups // Set MOD D140-01 (Does No apply) | 1d | 2026-12-01 | 2026-12-01 | DH.1400B-EQP-58 FF | 40d |
| DH.1400B-EQP-60 |  | Gallery 1403 - D140/Line-Ups // Set MOD D140-02 (Does No apply) | 1d | 2026-12-01 | 2026-12-01 | DH.1400B-EQP-59 SS | 40d |
| DH.1400B-EQP-205 |  | Gallery 1403 - D140/Line-Ups // Set CDU-DH1400-29 | 1d | 2026-12-02 | 2026-12-02 | DH.1400B-EQP-60 | 54d |
| DH.1400B-EQP-62 |  | Gallery 1403 - D140/Line-Ups // Pull Cable Tray Feed from MOD to CRAHU's | 5d | 2026-12-02 | 2026-12-08 | DH.1400B-EQP-60 | 46d |
| DH.1400B-EQP-64 |  | Gallery 1403 - D140/Line-Ups // Mount Electrial Gear for Chiller Controls | 10d | 2026-12-02 | 2026-12-15 | DH.1400B-EQP-60 | 40d |
| DH.1400B-EQP-206 |  | Gallery 1403 - D140/Line-Ups // Set CDU-DH1400-30 | 1d | 2026-12-03 | 2026-12-03 | DH.1400B-EQP-205 | 54d |
| DH.1400B-EQP-61 |  | Gallery 1403 - D140/Line-Ups // Pull Feeder from SWD to MOD | 1d | 2026-12-04 | 2026-12-04 | DH.1400B-EQP-60, DH.1400B-EQP-206 | 54d |
| DH.1400B-EQP-56 |  | Gallery 1403 - D140/Line-Ups // Connect CRAH units | 10d | 2026-12-08 | 2026-12-21 | DH.1400B-EQP-58, DH.1400B-EQP-55 SS+5d | 33d |
| DH.1400B-EQP-63 |  | Gallery 1403 - D140/Line-Ups // Mechanical Connections to CRAHU Units | 10d | 2026-12-08 | 2026-12-21 | DH.1400B-EQP-58 SS+5d | 38d |
| DH.1400B-EQP-69 |  | Gallery 1403 - D140/Line-Ups // Pull Feeder and Branch circuits to MIsc equipment and Chiller controls | 10d | 2026-12-08 | 2026-12-21 | DH.1400B-EQP-64 SS+4d | 40d |
| DH.1400B-EQP-65 |  | Gallery 1403 - D140/Line-Ups // Pull Cable Tray Feed from MOD to CRAHU's | 5d | 2026-12-09 | 2026-12-15 | DH.1400B-EQP-62 | 46d |
| DH.1400B-EQP-68 |  | Gallery 1403 - D140/Line-Ups // Terminate CRAHU Electrical Connections | 5d | 2026-12-11 | 2026-12-17 | DH.1400B-EQP-62, DH.1400B-EQP-65 SS+2d | 46d |
| DH.1400B-EQP-71 |  | Gallery 1403 - D140/Line-Ups // Teminate all Misc Equipment and Chiller Controls | 10d | 2026-12-14 | 2026-12-28 | DH.1400B-EQP-69 SS+4d | 40d |
| DH.1400B-EQP-57 |  | Gallery 1403 - D140/Line-Ups // Condensate connections to Floor Drains | 10d | 2026-12-15 | 2026-12-29 | DH.1400B-EQP-56 SS+5d | 33d |
| DH.1400B-EQP-67 |  | Gallery 1403 - D140/Line-Ups // Terminat Mod Panels | 1d | 2026-12-16 | 2026-12-16 | DH.1400B-EQP-61, DH.1400B-EQP-62, DH.1400B-EQP-65 | 47d |
| DH.1400B-EQP-66 |  | Gallery 1403 - D140/Line-Ups // Condensate connections to Floor Drains | 10d | 2026-12-22 | 2027-01-06 | DH.1400B-EQP-57 SS+5d, DH.1400B-EQP-63 SS+5d | 33d |
| DH.1400B-EQP-72 |  | Gallery 1403 - D140/Line-Ups // Electrical Gear FOD Inspection Pre-Start Up | 2d | 2026-12-29 | 2026-12-30 | DH.1400B-EQP-67, DH.1400B-EQP-71, DH.1400B-EQP-68 | 40d |
| DH.1400B-EQP-70 |  | Gallery 1403 - D140/Line-Ups // Mechanical Gear FOD Inspection Pre-Start Up | 3d | 2027-01-07 | 2027-01-11 | DH.1400B-EQP-56, DH.1400B-EQP-63, DH.1400B-EQP-57, DH.1400B-EQP-66 | 33d |
|  | 5 | **E140** |  | 2026-12-01 | 2027-01-11 |  |  |
| DH.1400B-EQP-73 |  | Gallery 1403 - E140/Line-Ups // Set CRAH-DH1400- 31 | 1d | 2026-12-01 | 2026-12-01 | DH.1400B-EQP-58 SS | -10d |
| DH.1400B-EQP-76 |  | Gallery 1403 - E140/Line-Ups // Set CRAH-DH1400-32 | 1d | 2026-12-01 | 2026-12-01 | DH.1400B-EQP-73 FF, DH.1400B-EQP-73 SS | -10d |
| DH.1400B-EQP-77 |  | Gallery 1403 - E140/Line-Ups // Set MOD E140-01 (Does No apply) | 1d | 2026-12-01 | 2026-12-01 | DH.1400B-EQP-76 FF | 40d |
| DH.1400B-EQP-78 |  | Gallery 1403 - E140/Line-Ups // Set MOD E140-02 (Does No apply) | 1d | 2026-12-01 | 2026-12-01 | DH.1400B-EQP-77 SS | 40d |
| DH.1400B-EQP-207 |  | Gallery 1403 - E140/Line-Ups // Set CDU-DH1400-31 | 1d | 2026-12-02 | 2026-12-02 | DH.1400B-EQP-78 | 54d |
| DH.1400B-EQP-80 |  | Gallery 1403 - E140/Line-Ups // Pull Cable Tray Feed from MOD to CRAHU's | 5d | 2026-12-02 | 2026-12-08 | DH.1400B-EQP-78 | 46d |
| DH.1400B-EQP-82 |  | Gallery 1403 - E140/Line-Ups // Mount Electrial Gear for Chiller Controls | 10d | 2026-12-02 | 2026-12-15 | DH.1400B-EQP-78 | 40d |
| DH.1400B-EQP-208 |  | Gallery 1403 - E140/Line-Ups // Set CDU-DH1400-32 | 1d | 2026-12-03 | 2026-12-03 | DH.1400B-EQP-207 | 54d |
| DH.1400B-EQP-79 |  | Gallery 1403 - E140/Line-Ups // Pull Feeder from SWD to MOD | 1d | 2026-12-04 | 2026-12-04 | DH.1400B-EQP-78, DH.1400B-EQP-208 | 54d |
| DH.1400B-EQP-74 |  | Gallery 1403 - E140/Line-Ups // Connect CRAH units | 10d | 2026-12-08 | 2026-12-21 | DH.1400B-EQP-76, DH.1400B-EQP-73 SS+5d | 33d |
| DH.1400B-EQP-81 |  | Gallery 1403 - E140/Line-Ups // Mechanical Connections to CRAHU Units | 10d | 2026-12-08 | 2026-12-21 | DH.1400B-EQP-76 SS+5d | 38d |
| DH.1400B-EQP-87 |  | Gallery 1403 - E140/Line-Ups // Pull Feeder and Branch circuits to MIsc equipment and Chiller controls | 10d | 2026-12-08 | 2026-12-21 | DH.1400B-EQP-82 SS+4d | 40d |
| DH.1400B-EQP-83 |  | Gallery 1403 - E140/Line-Ups // Pull Cable Tray Feed from MOD to CRAHU's | 5d | 2026-12-09 | 2026-12-15 | DH.1400B-EQP-80 | 46d |
| DH.1400B-EQP-86 |  | Gallery 1403 - E140/Line-Ups // Terminate CRAHU Electrical Connections | 5d | 2026-12-11 | 2026-12-17 | DH.1400B-EQP-80, DH.1400B-EQP-83 SS+2d | 46d |
| DH.1400B-EQP-89 |  | Gallery 1403 - E140/Line-Ups // Teminate all Misc Equipment and Chiller Controls | 10d | 2026-12-14 | 2026-12-28 | DH.1400B-EQP-87 SS+4d | 40d |
| DH.1400B-EQP-75 |  | Gallery 1403 - E140/Line-Ups // Condensate connections to Floor Drains | 10d | 2026-12-15 | 2026-12-29 | DH.1400B-EQP-74 SS+5d | 33d |
| DH.1400B-EQP-85 |  | Gallery 1403 - E140/Line-Ups // Terminat Mod Panels | 1d | 2026-12-16 | 2026-12-16 | DH.1400B-EQP-79, DH.1400B-EQP-80, DH.1400B-EQP-83 | 47d |
| DH.1400B-EQP-84 |  | Gallery 1403 - E140/Line-Ups // Condensate connections to Floor Drains | 10d | 2026-12-22 | 2027-01-06 | DH.1400B-EQP-75 SS+5d, DH.1400B-EQP-81 SS+5d | 33d |
| DH.1400B-EQP-90 |  | Gallery 1403 - E140/Line-Ups // Electrical Gear FOD Inspection Pre-Start Up | 2d | 2026-12-29 | 2026-12-30 | DH.1400B-EQP-85, DH.1400B-EQP-89, DH.1400B-EQP-86 | 40d |
| DH.1400B-EQP-88 |  | Gallery 1403 - E140/Line-Ups // Mechanical Gear FOD Inspection Pre-Start Up | 3d | 2027-01-07 | 2027-01-11 | DH.1400B-EQP-74, DH.1400B-EQP-81, DH.1400B-EQP-75, DH.1400B-EQP-84 | 33d |
|  | 6 | **F140** |  | 2026-12-01 | 2027-01-11 |  |  |
| DH.1400B-EQP-91 |  | Gallery 1403 - F140/Line-Ups // Set CRAH-DH1400-33 | 1d | 2026-12-01 | 2026-12-01 | DH.1400B-EQP-76 SS | -10d |

| ID | WBS | Task | Duration | Start | Finish | Predecessors | Total float |
| --- | --- | --- | --- | --- | --- | --- | --- |
| DH.1400B-EQP-94 |  | Gallery 1403 - F140/Line-Ups // Set CRAH-DH1400-34 | 1d | 2026-12-01 | 2026-12-01 | DH.1400B-EQP-91 FF, DH.1400B-EQP-91 SS | -10d |
| DH.1400B-EQP-95 |  | Gallery 1403 - F140/Line-Ups // Set MOD F140-01 (Does No apply) | 1d | 2026-12-01 | 2026-12-01 | DH.1400B-EQP-94 FF | 40d |
| DH.1400B-EQP-96 |  | Gallery 1403 - F140/Line-Ups // Set MOD F140-02 (Does No apply) | 1d | 2026-12-01 | 2026-12-01 | DH.1400B-EQP-95 SS | 40d |
| DH.1400B-EQP-100 |  | Gallery 1403 - F140/Line-Ups // Mount Electrial Gear for Chiller Controls | 10d | 2026-12-02 | 2026-12-15 | DH.1400B-EQP-96 | 40d |
| DH.1400B-EQP-209 |  | Gallery 1403 - F140/Line-Ups // Set CDU-DH1400-33 | 1d | 2026-12-02 | 2026-12-02 | DH.1400B-EQP-96 | 54d |
| DH.1400B-EQP-98 |  | Gallery 1403 - F140/Line-Ups // Pull Cable Tray Feed from MOD to CRAHU's | 5d | 2026-12-02 | 2026-12-08 | DH.1400B-EQP-96 | 46d |
| DH.1400B-EQP-210 |  | Gallery 1403 - F140/Line-Ups // Set CDU-DH1400-34 | 1d | 2026-12-03 | 2026-12-03 | DH.1400B-EQP-209 | 54d |
| DH.1400B-EQP-97 |  | Gallery 1403 - F140/Line-Ups // Pull Feeder from SWD to MOD | 1d | 2026-12-04 | 2026-12-04 | DH.1400B-EQP-96, DH.1400B-EQP-210 | 54d |
| DH.1400B-EQP-105 |  | Gallery 1403 - F140/Line-Ups // Pull Feeder and Branch circuits to MIsc equipment and Chiller controls | 10d | 2026-12-08 | 2026-12-21 | DH.1400B-EQP-100 SS+4d | 40d |
| DH.1400B-EQP-92 |  | Gallery 1403 - F140/Line-Ups // Connect CRAH units | 10d | 2026-12-08 | 2026-12-21 | DH.1400B-EQP-94, DH.1400B-EQP-91 SS+5d | 33d |
| DH.1400B-EQP-99 |  | Gallery 1403 - F140/Line-Ups // Mechanical Connections to CRAHU Units | 10d | 2026-12-08 | 2026-12-21 | DH.1400B-EQP-94 SS+5d | 38d |
| DH.1400B-EQP-101 |  | Gallery 1403 - F140/Line-Ups // Pull Cable Tray Feed from MOD to CRAHU's | 5d | 2026-12-09 | 2026-12-15 | DH.1400B-EQP-98 | 46d |
| DH.1400B-EQP-104 |  | Gallery 1403 - F140/Line-Ups // Terminate CRAHU Electrical Connections | 5d | 2026-12-11 | 2026-12-17 | DH.1400B-EQP-98, DH.1400B-EQP-101 SS+2d | 46d |
| DH.1400B-EQP-107 |  | Gallery 1403 - F140/Line-Ups // Teminate all Misc Equipment and Chiller Controls | 10d | 2026-12-14 | 2026-12-28 | DH.1400B-EQP-105 SS+4d | 40d |
| DH.1400B-EQP-93 |  | Gallery 1403 - F140/Line-Ups // Condensate connections to Floor Drains | 10d | 2026-12-15 | 2026-12-29 | DH.1400B-EQP-92 SS+5d | 33d |
| DH.1400B-EQP-103 |  | Gallery 1403 - F140/Line-Ups // Terminat Mod Panels | 1d | 2026-12-16 | 2026-12-16 | DH.1400B-EQP-97, DH.1400B-EQP-98, DH.1400B-EQP-101 | 47d |
| DH.1400B-EQP-102 |  | Gallery 1403 - F140/Line-Ups // Condensate connections to Floor Drains | 10d | 2026-12-22 | 2027-01-06 | DH.1400B-EQP-93 SS+5d, DH.1400B-EQP-99 SS+5d | 33d |
| DH.1400B-EQP-108 |  | Gallery 1403 - F140/Line-Ups // Electrical Gear FOD Inspection Pre-Start Up | 2d | 2026-12-29 | 2026-12-30 | DH.1400B-EQP-103, DH.1400B-EQP-107, DH.1400B-EQP-104 | 40d |
| DH.1400B-EQP-106 |  | Gallery 1403 - F140/Line-Ups // Mechanical Gear FOD Inspection Pre-Start Up | 3d | 2027-01-07 | 2027-01-11 | DH.1400B-EQP-92, DH.1400B-EQP-99, DH.1400B-EQP-93, DH.1400B-EQP-102 | 33d |
|  | 7 | **G140** |  | 2026-12-02 | 2027-01-12 |  |  |
| DH.1400B-EQP-109 |  | Gallery 1403 - G140/Line-Ups // Set CRAH-DH1400-35 | 1d | 2026-12-02 | 2026-12-02 | DH.1400B-EQP-94 | -10d |
| DH.1400B-EQP-112 |  | Gallery 1403 - G140/Line-Ups // Set CRAH-DH1400-36 | 1d | 2026-12-03 | 2026-12-03 | DH.1400B-EQP-109 | -10d |
| DH.1400B-EQP-113 |  | Gallery 1403 - G140/Line-Ups // Set MOD G140-01 (Does No apply) | 1d | 2026-12-03 | 2026-12-03 | DH.1400B-EQP-112 FF | 38d |
| DH.1400B-EQP-114 |  | Gallery 1403 - G140/Line-Ups // Set MOD G140-02 (Does No apply) | 1d | 2026-12-03 | 2026-12-03 | DH.1400B-EQP-113 SS | 38d |
| DH.1400B-EQP-116 |  | Gallery 1403 - G140/Line-Ups // Pull Cable Tray Feed from MOD to CRAHU's | 5d | 2026-12-04 | 2026-12-10 | DH.1400B-EQP-114 | 44d |
| DH.1400B-EQP-118 |  | Gallery 1403 - G140/Line-Ups // Mount Electrial Gear for Chiller Controls | 10d | 2026-12-04 | 2026-12-17 | DH.1400B-EQP-114 | 38d |
| DH.1400B-EQP-211 |  | Gallery 1403 - G140/Line-Ups // Set CDU-DH1400-35 | 1d | 2026-12-04 | 2026-12-04 | DH.1400B-EQP-114 | 52d |
| DH.1400B-EQP-212 |  | Gallery 1403 - G140/Line-Ups // Set CDU-DH1400-36 | 1d | 2026-12-07 | 2026-12-07 | DH.1400B-EQP-211 | 52d |
| DH.1400B-EQP-115 |  | Gallery 1403 - G140/Line-Ups // Pull Feeder from SWD to MOD | 1d | 2026-12-08 | 2026-12-08 | DH.1400B-EQP-114, DH.1400B-EQP-212 | 52d |
| DH.1400B-EQP-110 |  | Gallery 1403 - G140/Line-Ups // Connect CRAH units | 10d | 2026-12-09 | 2026-12-22 | DH.1400B-EQP-112, DH.1400B-EQP-109 SS+5d | 32d |
| DH.1400B-EQP-117 |  | Gallery 1403 - G140/Line-Ups // Mechanical Connections to CRAHU Units | 10d | 2026-12-10 | 2026-12-23 | DH.1400B-EQP-112 SS+5d | 36d |
| DH.1400B-EQP-123 |  | Gallery 1403 - G140/Line-Ups // Pull Feeder and Branch circuits to MIsc equipment and Chiller controls | 10d | 2026-12-10 | 2026-12-23 | DH.1400B-EQP-118 SS+4d | 38d |
| DH.1400B-EQP-119 |  | Gallery 1403 - G140/Line-Ups // Pull Cable Tray Feed from MOD to CRAHU's | 5d | 2026-12-11 | 2026-12-17 | DH.1400B-EQP-116 | 44d |
| DH.1400B-EQP-122 |  | Gallery 1403 - G140/Line-Ups // Terminate CRAHU Electrical Connections | 5d | 2026-12-15 | 2026-12-21 | DH.1400B-EQP-116, DH.1400B-EQP-119 SS+2d | 44d |
| DH.1400B-EQP-111 |  | Gallery 1403 - G140/Line-Ups // Condensate connections to Floor Drains | 10d | 2026-12-16 | 2026-12-30 | DH.1400B-EQP-110 SS+5d | 32d |
| DH.1400B-EQP-125 |  | Gallery 1403 - G140/Line-Ups // Teminate all Misc Equipment and Chiller Controls | 10d | 2026-12-16 | 2026-12-30 | DH.1400B-EQP-123 SS+4d | 38d |
| DH.1400B-EQP-121 |  | Gallery 1403 - G140/Line-Ups // Terminat Mod Panels | 1d | 2026-12-18 | 2026-12-18 | DH.1400B-EQP-115, DH.1400B-EQP-116, DH.1400B-EQP-119 | 45d |
| DH.1400B-EQP-120 |  | Gallery 1403 - G140/Line-Ups // Condensate connections to Floor Drains | 10d | 2026-12-23 | 2027-01-07 | DH.1400B-EQP-111 SS+5d, DH.1400B-EQP-117 SS+5d | 32d |
| DH.1400B-EQP-126 |  | Gallery 1403 - G140/Line-Ups // Electrical Gear FOD Inspection Pre-Start Up | 2d | 2026-12-31 | 2027-01-04 | DH.1400B-EQP-121, DH.1400B-EQP-125, DH.1400B-EQP-122 | 38d |
| DH.1400B-EQP-124 |  | Gallery 1403 - G140/Line-Ups // Mechanical Gear FOD Inspection Pre-Start Up | 3d | 2027-01-08 | 2027-01-12 | DH.1400B-EQP-110, DH.1400B-EQP-117, DH.1400B-EQP-111, DH.1400B-EQP-120 | 32d |
|  | 8 | **H140** |  | 2026-12-04 | 2027-01-14 |  |  |
| DH.1400B-EQP-127 |  | Gallery 1403 - H140/Line-Ups // Set CRAH-DH1400-37 | 1d | 2026-12-04 | 2026-12-04 | DH.1400B-EQP-112 | -10d |
| DH.1400B-EQP-130 |  | Gallery 1403 - H140/Line-Ups // Set CRAH-DH1400-38 | 1d | 2026-12-04 | 2026-12-04 | DH.1400B-EQP-127 FF, DH.1400B-EQP-127 SS | -10d |
| DH.1400B-EQP-131 |  | Gallery 1403 - H140/Line-Ups // Set MOD H140-01 | 1d | 2026-12-04 | 2026-12-04 | DH.1400B-EQP-130 FF | 37d |
| DH.1400B-EQP-132 |  | Gallery 1403 - H140/Line-Ups // Set MOD H140-02 | 1d | 2026-12-04 | 2026-12-04 | DH.1400B-EQP-131 SS | 37d |
| DH.1400B-EQP-134 |  | Gallery 1403 - H140/Line-Ups // Pull Cable Tray Feed from MOD to CRAHU's | 5d | 2026-12-07 | 2026-12-11 | DH.1400B-EQP-132 | 43d |
| DH.1400B-EQP-136 |  | Gallery 1403 - H140/Line-Ups // Mount Electrial Gear for Chiller Controls | 10d | 2026-12-07 | 2026-12-18 | DH.1400B-EQP-132 | 37d |
| DH.1400B-EQP-213 |  | Gallery 1403 - H140/Line-Ups // Set CDU-DH1400-37 | 1d | 2026-12-07 | 2026-12-07 | DH.1400B-EQP-132 | 51d |
| DH.1400B-EQP-214 |  | Gallery 1403 - H140/Line-Ups // Set CDU-DH1400-38 | 1d | 2026-12-08 | 2026-12-08 | DH.1400B-EQP-213 | 51d |
| DH.1400B-EQP-133 |  | Gallery 1403 - H140/Line-Ups // Pull Feeder from SWD to MOD | 1d | 2026-12-09 | 2026-12-09 | DH.1400B-EQP-132, DH.1400B-EQP-214 | 51d |
| DH.1400B-EQP-128 |  | Gallery 1403 - H140/Line-Ups // Connect CRAH units | 10d | 2026-12-11 | 2026-12-24 | DH.1400B-EQP-130, DH.1400B-EQP-127 SS+5d | 30d |
| DH.1400B-EQP-135 |  | Gallery 1403 - H140/Line-Ups // Mechanical Connections to CRAHU Units | 10d | 2026-12-11 | 2026-12-24 | DH.1400B-EQP-130 SS+5d | 35d |
| DH.1400B-EQP-141 |  | Gallery 1403 - H140/Line-Ups // Pull Feeder and Branch circuits to MIsc equipment and Chiller controls | 10d | 2026-12-11 | 2026-12-24 | DH.1400B-EQP-136 SS+4d | 37d |
| DH.1400B-EQP-137 |  | Gallery 1403 - H140/Line-Ups // Pull Cable Tray Feed from MOD to CRAHU's | 5d | 2026-12-14 | 2026-12-18 | DH.1400B-EQP-134 | 43d |
| DH.1400B-EQP-140 |  | Gallery 1403 - H140/Line-Ups // Terminate CRAHU Electrical Connections | 5d | 2026-12-16 | 2026-12-22 | DH.1400B-EQP-134, DH.1400B-EQP-137 SS+2d | 43d |
| DH.1400B-EQP-143 |  | Gallery 1403 - H140/Line-Ups // Teminate all Misc Equipment and Chiller Controls | 10d | 2026-12-17 | 2026-12-31 | DH.1400B-EQP-141 SS+4d | 37d |
| DH.1400B-EQP-129 |  | Gallery 1403 - H140/Line-Ups // Condensate connections to Floor Drains | 10d | 2026-12-18 | 2027-01-04 | DH.1400B-EQP-128 SS+5d | 30d |
| DH.1400B-EQP-139 |  | Gallery 1403 - H140/Line-Ups // Terminat Mod Panels | 1d | 2026-12-21 | 2026-12-21 | DH.1400B-EQP-133, DH.1400B-EQP-134, DH.1400B-EQP-137 | 44d |
| DH.1400B-EQP-138 |  | Gallery 1403 - H140/Line-Ups // Condensate connections to Floor Drains | 10d | 2026-12-28 | 2027-01-11 | DH.1400B-EQP-129 SS+5d, DH.1400B-EQP-135 SS+5d | 30d |
| DH.1400B-EQP-144 |  | Gallery 1403 - H140/Line-Ups // Electrical Gear FOD Inspection Pre-Start Up | 2d | 2027-01-04 | 2027-01-05 | DH.1400B-EQP-139, DH.1400B-EQP-143, DH.1400B-EQP-140 | 37d |
| DH.1400B-EQP-142 |  | Gallery 1403 - H140/Line-Ups // Mechanical Gear FOD Inspection Pre-Start Up | 3d | 2027-01-12 | 2027-01-14 | DH.1400B-EQP-128, DH.1400B-EQP-135, DH.1400B-EQP-129, DH.1400B-EQP-138 | 30d |
|  | 9 | **J140** |  | 2026-12-07 | 2027-01-15 |  |  |
| DH.1400B-EQP-145 |  | Gallery 1403 - J140/Line-Ups // Set CRAH-DH1400-39 | 1d | 2026-12-07 | 2026-12-07 | DH.1400B-EQP-130 | -10d |
| DH.1400B-EQP-148 |  | Gallery 1403 - J140/Line-Ups // Set CRAH-DH1400-40 | 1d | 2026-12-07 | 2026-12-07 | DH.1400B-EQP-145 FF, DH.1400B-EQP-145 SS | -9d |
| DH.1400B-EQP-149 |  | Gallery 1403 - J140/Line-Ups // Set MOD J140-01 | 1d | 2026-12-07 | 2026-12-07 | DH.1400B-EQP-148 FF | 36d |
| DH.1400B-EQP-150 |  | Gallery 1403 - J140/Line-Ups // Set MOD J140-02 | 1d | 2026-12-07 | 2026-12-07 | DH.1400B-EQP-149 SS | 36d |
| DH.1400B-EQP-152 |  | Gallery 1403 - J140/Line-Ups // Pull Cable Tray Feed from MOD to CRAHU's | 5d | 2026-12-08 | 2026-12-14 | DH.1400B-EQP-150 | 42d |
| DH.1400B-EQP-154 |  | Gallery 1403 - J140/Line-Ups // Mount Electrial Gear for Chiller Controls | 10d | 2026-12-08 | 2026-12-21 | DH.1400B-EQP-150 | 36d |
| DH.1400B-EQP-215 |  | Gallery 1403 - J140/Line-Ups // Set CDU-DH1400-39 | 1d | 2026-12-08 | 2026-12-08 | DH.1400B-EQP-150 | 50d |
| DH.1400B-EQP-216 |  | Gallery 1403 - J140/Line-Ups // Set CDU-DH1400-40 | 1d | 2026-12-09 | 2026-12-09 | DH.1400B-EQP-215 | 50d |

| ID | WBS | Task | Duration | Start | Finish | Predecessors | Total float |
| --- | --- | --- | --- | --- | --- | --- | --- |
| DH.1400B-EQP-151 |  | Gallery 1403 - J140/Line-Ups // Pull Feeder from SWD to MOD | 1d | 2026-12-10 | 2026-12-10 | DH.1400B-EQP-150, DH.1400B-EQP-216 | 50d |
| DH.1400B-EQP-146 |  | Gallery 1403 - J140/Line-Ups // Connect CRAH units | 10d | 2026-12-14 | 2026-12-28 | DH.1400B-EQP-148, DH.1400B-EQP-145 SS+5d | -10d |
| DH.1400B-EQP-153 |  | Gallery 1403 - J140/Line-Ups // Mechanical Connections to CRAHU Units | 10d | 2026-12-14 | 2026-12-28 | DH.1400B-EQP-148 SS+5d | -5d |
| DH.1400B-EQP-159 |  | Gallery 1403 - J140/Line-Ups // Pull Feeder and Branch circuits to MIsc equipment and Chiller controls | 10d | 2026-12-14 | 2026-12-28 | DH.1400B-EQP-154 SS+4d | 36d |
| DH.1400B-EQP-155 |  | Gallery 1403 - J140/Line-Ups // Pull Cable Tray Feed from MOD to CRAHU's | 5d | 2026-12-15 | 2026-12-21 | DH.1400B-EQP-152 | 42d |
| DH.1400B-EQP-158 |  | Gallery 1403 - J140/Line-Ups // Terminate CRAHU Electrical Connections | 5d | 2026-12-17 | 2026-12-23 | DH.1400B-EQP-152, DH.1400B-EQP-155 SS+2d | 42d |
| DH.1400B-EQP-161 |  | Gallery 1403 - J140/Line-Ups // Teminate all Misc Equipment and Chiller Controls | 10d | 2026-12-18 | 2027-01-04 | DH.1400B-EQP-159 SS+4d | 36d |
| DH.1400B-EQP-147 |  | Gallery 1403 - J140/Line-Ups // Condensate connections to Floor Drains | 10d | 2026-12-21 | 2027-01-05 | DH.1400B-EQP-146 SS+5d | -10d |
| DH.1400B-EQP-157 |  | Gallery 1403 - J140/Line-Ups // Terminat Mod Panels | 1d | 2026-12-22 | 2026-12-22 | DH.1400B-EQP-151, DH.1400B-EQP-152, DH.1400B-EQP-155 | 43d |
| DH.1400B-EQP-156 |  | Gallery 1403 - J140/Line-Ups // Condensate connections to Floor Drains | 10d | 2026-12-29 | 2027-01-12 | DH.1400B-EQP-147 SS+5d, DH.1400B-EQP-153 SS+5d | -10d |
| DH.1400B-EQP-162 |  | Gallery 1403 - J140/Line-Ups // Electrical Gear FOD Inspection Pre-Start Up | 2d | 2027-01-05 | 2027-01-06 | DH.1400B-EQP-157, DH.1400B-EQP-161, DH.1400B-EQP-158 | 36d |
| DH.1400B-EQP-160 |  | Gallery 1403 - J140/Line-Ups // Mechanical Gear FOD Inspection Pre-Start Up | 3d | 2027-01-13 | 2027-01-15 | DH.1400B-EQP-146, DH.1400B-EQP-147, DH.1400B-EQP-153, DH.1400B-EQP-156 | 29d |
|  | 10 | **K140** |  | 2026-12-08 | 2027-01-12 |  |  |
| DH.1400B-EQP-163 |  | Gallery 1403 - K140/Line-Ups // Set CRAH-DH1400-41 | 1d | 2026-12-08 | 2026-12-08 | DH.1400B-EQP-148 | -9d |
| DH.1400B-EQP-166 |  | Gallery 1403 - K140/Line-Ups // Set CRAH-DH1400-42 | 1d | 2026-12-08 | 2026-12-08 | DH.1400B-EQP-163 FF, DH.1400B-EQP-163 SS | -9d |
| DH.1400B-EQP-167 |  | Gallery 1403 - K140/Line-Ups // Set MOD K140-01 (Does No apply) | 1d | 2026-12-08 | 2026-12-08 | DH.1400B-EQP-166 FF | 35d |
| DH.1400B-EQP-168 |  | Gallery 1403 - K140/Line-Ups // Set MOD K140-02 (Does No apply) | 1d | 2026-12-08 | 2026-12-08 | DH.1400B-EQP-167 SS | 35d |
| DH.1400B-EQP-169 |  | Gallery 1403 - K140/Line-Ups // Pull Feeder from SWD to MOD | 1d | 2026-12-09 | 2026-12-09 | DH.1400B-EQP-168 | 51d |
| DH.1400B-EQP-170 |  | Gallery 1403 - K140/Line-Ups // Pull Cable Tray Feed from MOD to CRAHU's | 5d | 2026-12-09 | 2026-12-15 | DH.1400B-EQP-168 | 41d |
| DH.1400B-EQP-172 |  | Gallery 1403 - K140/Line-Ups // Mount Electrial Gear for Chiller Controls | 10d | 2026-12-09 | 2026-12-22 | DH.1400B-EQP-168 | 35d |
| DH.1400B-EQP-164 |  | Gallery 1403 - K140/Line-Ups // Connect CRAH units | 10d | 2026-12-15 | 2026-12-29 | DH.1400B-EQP-166, DH.1400B-EQP-163 SS+5d | 38d |
| DH.1400B-EQP-171 |  | Gallery 1403 - K140/Line-Ups // Mechanical Connections to CRAHU Units | 10d | 2026-12-15 | 2026-12-29 | DH.1400B-EQP-166 SS+5d | 33d |
| DH.1400B-EQP-177 |  | Gallery 1403 - K140/Line-Ups // Pull Feeder and Branch circuits to MIsc equipment and Chiller controls | 10d | 2026-12-15 | 2026-12-29 | DH.1400B-EQP-172 SS+4d | 35d |
| DH.1400B-EQP-173 |  | Gallery 1403 - K140/Line-Ups // Pull Cable Tray Feed from MOD to CRAHU's | 5d | 2026-12-16 | 2026-12-22 | DH.1400B-EQP-170 | 41d |
| DH.1400B-EQP-176 |  | Gallery 1403 - K140/Line-Ups // Terminate CRAHU Electrical Connections | 5d | 2026-12-18 | 2026-12-24 | DH.1400B-EQP-170, DH.1400B-EQP-173 SS+2d | 41d |
| DH.1400B-EQP-179 |  | Gallery 1403 - K140/Line-Ups // Teminate all Misc Equipment and Chiller Controls | 10d | 2026-12-21 | 2027-01-05 | DH.1400B-EQP-177 SS+4d | 35d |
| DH.1400B-EQP-174 |  | Gallery 1403 - K140/Line-Ups // Condensate connections to Floor Drains | 10d | 2026-12-23 | 2027-01-07 | DH.1400B-EQP-171 SS+5d, DH.1400B-EQP-164 SS, DH.140012052 | 32d |
| DH.1400B-EQP-175 |  | Gallery 1403 - K140/Line-Ups // Terminat Mod Panels | 1d | 2026-12-23 | 2026-12-23 | DH.1400B-EQP-169, DH.1400B-EQP-170, DH.1400B-EQP-173 | 42d |
| DH.1400B-EQP-180 |  | Gallery 1403 - K140/Line-Ups // Electrical Gear FOD Inspection Pre-Start Up | 2d | 2027-01-06 | 2027-01-07 | DH.1400B-EQP-175, DH.1400B-EQP-179, DH.1400B-EQP-176 | 35d |
| DH.1400B-EQP-178 |  | Gallery 1403 - K140/Line-Ups // Mechanical Gear FOD Inspection Pre-Start Up | 3d | 2027-01-08 | 2027-01-12 | DH.1400B-EQP-164, DH.1400B-EQP-171, DH.1400B-EQP-174, DH.1400B-EQP-164 SS | 32d |
|  | 11 | **R140** |  | 2026-12-08 | 2027-01-12 |  |  |
| DH.1400B-EQP-181 |  | Gallery 1403 - R140/Line-Ups // Set CRAH-DH1400-43 | 1d | 2026-12-08 | 2026-12-08 | DH.1400B-EQP-166 SS | -9d |
| DH.1400B-EQP-184 |  | Gallery 1403 - R140/Line-Ups // Set CRAH-DH1400-44 | 1d | 2026-12-08 | 2026-12-08 | DH.1400B-EQP-181 FF, DH.1400B-EQP-181 SS | -5d |
| DH.1400B-EQP-185 |  | Gallery 1403 - R140/Line-Ups // Set MOD R140-01 (No Apply) | 1d | 2026-12-08 | 2026-12-08 | DH.1400B-EQP-184 FF | -3d |
| DH.1400B-EQP-186 |  | Gallery 1403 - R140/Line-Ups // Set MOD R140-02 (Does No apply) | 1d | 2026-12-08 | 2026-12-08 | DH.1400B-EQP-185 SS | -3d |
| DH.1400B-EQP-187 |  | Gallery 1403 - R140/Line-Ups // Pull Feeder from SWD to MOD | 1d | 2026-12-09 | 2026-12-09 | DH.1400B-EQP-186 | 8d |
| DH.1400B-EQP-188 |  | Gallery 1403 - R140/Line-Ups // Pull Cable Tray Feed from MOD to CRAHU's | 5d | 2026-12-09 | 2026-12-15 | DH.1400B-EQP-186 | -1d |
| DH.1400B-EQP-190 |  | Gallery 1403 - R140/Line-Ups // Mount Electrial Gear for Chiller Controls | 10d | 2026-12-09 | 2026-12-22 | DH.1400B-EQP-186 | -3d |
| DH.1400B-EQP-195 |  | Gallery 1403 - R140/Line-Ups // Pull Feeder and Branch circuits to MIsc equipment and Chiller controls | 10d | 2026-12-09 | 2026-12-22 | DH.1400B-EQP-190 SS | -3d |
| DH.1400B-EQP-197 |  | Gallery 1403 - R140/Line-Ups // Teminate all Misc Equipment and Chiller Controls | 10d | 2026-12-09 | 2026-12-22 | DH.1400B-EQP-195 SS | -3d |
| DH.1400B-EQP-182 |  | Gallery 1403 - R140/Line-Ups // Connect CRAH units | 10d | 2026-12-15 | 2026-12-29 | DH.1400B-EQP-184, DH.1400B-EQP-181 SS+5d | -9d |
| DH.1400B-EQP-189 |  | Gallery 1403 - R140/Line-Ups // Mechanical Connections to CRAHU Units | 10d | 2026-12-15 | 2026-12-29 | DH.1400B-EQP-184 SS+5d | -4d |
| DH.1400B-EQP-191 |  | Gallery 1403 - R140/Line-Ups // Pull Cable Tray Feed from MOD to CRAHU's | 5d | 2026-12-16 | 2026-12-22 | DH.1400B-EQP-188 | -1d |
| DH.1400B-EQP-194 |  | Gallery 1403 - R140/Line-Ups // Terminate CRAHU Electrical Connections | 5d | 2026-12-18 | 2026-12-24 | DH.1400B-EQP-188, DH.1400B-EQP-191 SS+2d | -1d |
| DH.1400B-EQP-183 |  | Gallery 1403 - R140/Line-Ups // Condensate connections to Floor Drains | 10d | 2026-12-23 | 2027-01-07 | DH.1400B-EQP-182 SS+5d, DH.140012055 | -10d |
| DH.1400B-EQP-193 |  | Gallery 1403 - R140/Line-Ups // Terminat Mod Panels | 1d | 2026-12-23 | 2026-12-23 | DH.1400B-EQP-187, DH.1400B-EQP-188, DH.1400B-EQP-191 | 0d |
| DH.1400B-EQP-198 |  | Gallery 1403 - R140/Line-Ups // Electrical Gear FOD Inspection Pre-Start Up | 2d | 2026-12-31 | 2027-01-04 | DH.1400B-EQP-193, DH.1400B-EQP-197, DH.1400B-EQP-194, DH.160012119 | -4d |
| DH.1400B-EQP-196 |  | Gallery 1403 - R140/Line-Ups // Mechanical Gear FOD Inspection Pre-Start Up | 3d | 2027-01-08 | 2027-01-12 | DH.1400B-EQP-182, DH.1400B-EQP-189, DH.1400B-EQP-183, DH.1400B-EQP-183 SS, DH.1400B-EQP-189 SS | -10d |
|  | 12 | **Equipment Connections** |  | 2026-12-10 | 2026-12-31 |  |  |
|  | 1 | **CRAH** |  | 2026-12-16 | 2026-12-28 |  |  |
| DH1400-004 |  | Gallery 1403 // DH 1400 / Elec Room // CRAH Duct Work Termination | 2d | 2026-12-16 | 2026-12-17 | DH.1400B-EQP-188 | 0d |
| DH1400-003 |  | Gallery 1403 // DH 1400 / Elec Room // CRAH Chilled Water | 2d | 2026-12-18 | 2026-12-21 | DH1400-004 | 0d |
| DH1400-001 |  | Gallery 1403 // DH 1400 / Elec Room // CRAH Power Connections | 2d | 2026-12-22 | 2026-12-23 | DH1400-003 | 0d |
| DH1400-002 |  | Gallery 1403 // DH 1400 / Elec Room // CRAH LV Connections | 2d | 2026-12-24 | 2026-12-28 | DH1400-001 | 0d |
|  | 2 | **CDU** |  | 2026-12-23 | 2026-12-31 |  |  |
| DH1400-007 |  | Gallery 1403 // DH 1400 / Elec Room // CDU Chilled Water Connections | 2d | 2026-12-23 | 2026-12-24 | DH.1400B-EQP-197 | -3d |
| DH1400-005 |  | Gallery 1403 // DH 1400 /Elec Room // CDU Power Connections | 2d | 2026-12-28 | 2026-12-29 | DH1400-007 | -3d |
| DH1400-006 |  | Gallery 1403 // DH 1400 / Elec Room // CDU Controls Connections | 2d | 2026-12-30 | 2026-12-31 | DH1400-005 | -3d |
|  | 3 | **MOD** |  | 2026-12-10 | 2026-12-15 |  |  |
| DH1400-008 |  | Gallery 1403 // DH 1400 / Elec Room // MOD Power Connections | 2d | 2026-12-10 | 2026-12-11 | DH.1400B-EQP-187 | 8d |
| DH1400-009 |  | Gallery 1403 // DH 1400 / Elec Room // MOD LV Connections | 2d | 2026-12-14 | 2026-12-15 | DH1400-008 | 8d |
|  | 6 | **Corridors** |  | 2026-10-06 | 2026-12-24 |  |  |
|  | 1 | **Corridor 1000A (DO NOT APPLY)** |  |  |  |  |  |
|  | 3 | **Corridor 1000** |  | 2026-10-06 | 2026-12-15 |  |  |
| DH.140012078 |  | DH 1400/Corridor 1000 // Seal concrete | 1d | 2026-10-06 | 2026-10-06 | DH.1400660 | 1d |
| DH.140012068 |  | DH 1400/Corridor 1000 // MEPF Overhead Hangers | 5d | 2026-10-07 | 2026-10-14 | DH.140012078 | 8d |
| DH.140012069 |  | DH 1400/Corridor 1000 // Frame walls | 3d | 2026-10-08 | 2026-10-13 | DH.1400700 | 16d |
| B120001.3175 |  | DH 1400/Corridor 1000 // Install Overhead Cable Ladder / 36" Cable Tray - TFO | 5d | 2026-10-15 | 2026-10-21 | DH.140012068 | 8d |
| DH.140012071 |  | DH 1400/Corridor 1000 // MEPF high overhead install | 3d | 2026-10-15 | 2026-10-19 | DH.140012068 | 15d |
| B120001.3176 |  | DH 1400/Corridor 1000 // Install Overhead HAC - TFO | 5d | 2026-10-22 | 2026-10-28 | B120001.3175 | 8d |

| ID | WBS | Task | Duration | Start | Finish | Predecessors | Total float |
| --- | --- | --- | --- | --- | --- | --- | --- |
| DH.140012072 |  | DH 1400/Corridor 1000 // MEP rough in walls | 3d | 2026-10-29 | 2026-11-02 | DH.140012071, DH.140012069, B120001.3176 | 8d |
| DH.140012073 |  | DH 1400/Corridor 1000 // In wall inspection | 1d | 2026-11-03 | 2026-11-03 | DH.140012072 | 8d |
| DH.140012070 |  | DH 1400/Corridor 1000 // Install Top Down Sheetrock | 3d | 2026-11-04 | 2026-11-06 | DH.140012069 SS+3d, DH.140012073 | 8d |
| DH.140012074 |  | DH 1400/Corridor 1000 // Install Balance of Sheetrock on Walls | 5d | 2026-11-09 | 2026-11-16 | DH.140012070 | 8d |
| DH.140012075 |  | DH 1400/Corridor 1000 // Tape and finish walls | 8d | 2026-11-17 | 2026-11-27 | DH.140012074 | 8d |
| DH.140012076 |  | DH 1400/Corridor 1000 // Install wall door frames | 3d | 2026-11-30 | 2026-12-02 | DH.140012075, DH.140012069 SS+1d | 8d |
| DH.140012077 |  | DH 1400/Corridor 1000 // Prime and Paint first coat walls | 3d | 2026-11-30 | 2026-12-02 | DH.140012075 | 8d |
| DH.140012079 |  | DH 1400/Corridor 1000 // Install lights and exit signs | 3d | 2026-12-03 | 2026-12-07 | DH.140012076, DH.140012077 | 8d |
| DH.140012080 |  | DH 1400/Corridor 1000 // Final Coat Paint & Touchup Walls | 4d | 2026-12-08 | 2026-12-11 | DH.140012079 | 8d |
| DH.140012081 |  | DH 1400/Corridor 1000 // Install MEP Devices and Trim | 2d | 2026-12-14 | 2026-12-15 | DH.140012080 | 8d |
| DH.160012154 |  | DH 1400/Corridor 1000 // Ready to Receive Equipment | 0d | 2026-12-15 | 2026-12-15 | DH.140012081 FF | 8d |
|  | 2 | **Corridor 1000E** |  | 2026-10-07 | 2026-12-24 |  |  |
| DH.140012092 |  | DH 1400/Corridor 1000E // Seal concrete | 1d | 2026-10-07 | 2026-10-07 | DH.140012078 | 1d |
| DH.140012085 |  | DH 1400/Corridor 1000E // MEPF high overhead install | 3d | 2026-10-08 | 2026-10-13 | DH.140012092 | 1d |
| B120001.3177 |  | DH 1400/Corridor 1000E // Install Overhead Cable Ladder / 36" Cable Tray - TFO | 5d | 2026-10-14 | 2026-10-20 | DH.140012085 | 1d |
| B120001.3178 |  | DH 1400/Corridor 1000E // Install Overhead HAC - TFO | 5d | 2026-10-21 | 2026-10-27 | B120001.3177 | 1d |
| DH.140012082 |  | DH 1400/Corridor 1000E // MEPF Overhead Hangers | 5d | 2026-10-28 | 2026-11-03 | DH.140012068, DH.140012092, B120001.3178 | 1d |
| DH.140012083 |  | DH 1400/Corridor 1000E // Frame walls | 3d | 2026-11-04 | 2026-11-06 | DH.140012069, DH.140012082 | 1d |
| DH.140012086 |  | DH 1400/Corridor 1000E // MEP rough in walls | 3d | 2026-11-09 | 2026-11-12 | DH.140012085, DH.140012083 | 1d |
| DH.140012087 |  | DH 1400/Corridor 1000E // In wall inspection | 1d | 2026-11-13 | 2026-11-13 | DH.140012086 | 1d |
| DH.140012084 |  | DH 1400/Corridor 1000E // Install Top Down Sheetrock | 3d | 2026-11-16 | 2026-11-18 | DH.140012083 SS+3d, DH.140012087 | 1d |
| DH.140012088 |  | DH 1400/Corridor 1000E // Install Balance of Sheetrock on Walls | 5d | 2026-11-19 | 2026-11-25 | DH.140012087, DH.140012085, DH.140012084 | 1d |
| DH.140012089 |  | DH 1400/Corridor 1000E // Tape and finish walls | 8d | 2026-11-27 | 2026-12-08 | DH.140012088 | 1d |
| DH.140012090 |  | DH 1400/Corridor 1000E // Install wall door frames | 3d | 2026-12-09 | 2026-12-11 | DH.140012089, DH.140012083 SS+1d | 1d |
| DH.140012091 |  | DH 1400/Corridor 1000E // Prime and Paint first coat walls | 3d | 2026-12-09 | 2026-12-11 | DH.140012089 | 1d |
| DH.140012093 |  | DH 1400/Corridor 1000E // Install lights and exit signs | 3d | 2026-12-14 | 2026-12-16 | DH.140012090, DH.140012091 | 1d |
| DH.140012094 |  | DH 1400/Corridor 1000E // Final Coat Paint & Touchup Walls | 4d | 2026-12-17 | 2026-12-22 | DH.140012093 | 1d |
| DH.140012095 |  | DH 1400/Corridor 1000E // Install MEP Devices and Trim | 2d | 2026-12-23 | 2026-12-24 | DH.140012094 | 1d |
| DH.160012155 |  | DH 1400/Corridor 1000E // Ready to Receive Equipment | 0d | 2026-12-24 | 2026-12-24 | DH.140012095 FF | 1d |
|  | 10 | **Flex 1000B10 *** No Flex - Loading Dock****** |  |  |  |  |  |
|  | 11 | **IDF 1054 (Missing Activities)** |  |  |  |  |  |
|  | 12 | **Preaction 1053 (Missing Activities)** |  |  |  |  |  |
|  | 13 | **Restroom-Dock & Janitor** |  | 2026-10-09 | 2026-12-18 |  |  |
| DH.1400010 |  | DH 1400/Restroom-Dock & Janitor // RR-Doc-Jan MEPF overhead layout | 5d | 2026-10-09 | 2026-10-16 | DH.14000.1010 | 5d |
| DH.1400020 |  | DH 1400/Restroom-Dock & Janitor // RR-Doc-Jan Layout walls | 5d | 2026-10-19 | 2026-10-23 | DH.1400010 | 5d |
| DH.1400030 |  | DH 1400/Restroom-Dock & Janitor // RR-Doc-Jan Frame walls | 5d | 2026-10-26 | 2026-10-30 | DH.1400020 | 5d |
| DH.1400040 |  | DH 1400/Restroom-Dock & Janitor // RR-Doc-Jan Install wall door frames | 3d | 2026-10-27 | 2026-10-29 | DH.1400030 SS+1d | 8d |
| DH.1400050 |  | DH 1400/Restroom-Dock & Janitor // RR-Doc-Jan Install Top Down Sheetrock | 5d | 2026-10-29 | 2026-11-04 | DH.1400030 SS+3d | 5d |
| DH.1400060 |  | DH 1400/Restroom-Dock & Janitor // RR-Doc-Jan MEP rough in walls | 3d | 2026-10-30 | 2026-11-03 | DH.1400040 | 8d |
| DH.1400070 |  | DH 1400/Restroom-Dock & Janitor // RR-Doc-Jan In wall inspection | 1d | 2026-11-04 | 2026-11-04 | DH.1400060 | 8d |
| DH.1400080 |  | DH 1400/Restroom-Dock & Janitor // RR-Doc-Jan MEPF high overhead install | 3d | 2026-11-05 | 2026-11-09 | DH.1400050 | 5d |
| DH.1400090 |  | DH 1400/Restroom-Dock & Janitor // RR-Doc-Jan Install Balance of Sheetrock on Walls | 5d | 2026-11-10 | 2026-11-17 | DH.1400070, DH.1400050 SS, DH.1400080 | 5d |
| DH.1400100 |  | DH 1400/Restroom-Dock & Janitor // RR-Doc-Jan Tape and finish walls | 8d | 2026-11-18 | 2026-11-30 | DH.1400090 | 5d |
| DH.1400000 |  | DH 1400/Restroom-Dock & Janitor // RR-Doc-Jan Seal concrete | 5d | 2026-12-01 | 2026-12-07 | DH.1400100 | 5d |
| DH.1400110 |  | DH 1400/Restroom-Dock & Janitor // RR-Doc-Jan Prime and Paint first coat walls | 3d | 2026-12-01 | 2026-12-03 | DH.1400100 | 7d |
| DH.1400120 |  | DH 1400/Restroom-Dock & Janitor // RR-Doc-Jan Install lights and exit signs | 3d | 2026-12-08 | 2026-12-10 | DH.1400110, DH.1400000 | 5d |
| DH.1400130 |  | DH 1400/Restroom-Dock & Janitor // RR-Doc-Jan Final Coat Paint & Touchup Walls | 4d | 2026-12-11 | 2026-12-16 | DH.1400120 | 5d |
| DH.1400140 |  | DH 1400/Restroom-Dock & Janitor // RR-Doc-Jan Install MEP Devices and Trim | 2d | 2026-12-17 | 2026-12-18 | DH.1400130 | 5d |
|  | 4 | **1400 Energization, Start-up & Commissioning** |  | 2027-01-13 | 2027-04-21 |  |  |
|  | 1 | **Energization & L3 Prefunctional Testing** |  | 2027-01-13 | 2027-03-16 |  |  |
| DH1400.L3CX.79 |  | DH1400 L3 Start | 0d | 2027-01-13 | 2027-01-13 | DH.1400.3069, DH.1400.1180, DH.1300.3068, DH.1300.3036, DH.1400.1240, DH.1400.1300, DH.1400.1330, DH.1400.1310, DH.1300.3063, DH.1400.3044, DH.1400.3070, DH.1400.3059, DH.1400.3062, DH.1400.3061, DH.1400.3063, DH.160012150, DH.14000.1110, DH.14000.1712, DH.160012151, DH.1400A-EQP-215, DH.1400A-EQP-220, DH.1400A-EQP-218, DH1400.MG.A110.8685, DH1400.MG.A110.8689, DH1400.MG.A110.8692, DH.160012152, DH.1400B-EQP-198, DH.1400B-EQP-196, DH1400-002, DH1400-006, DH1400-009, DH.140012081, DH.160012154, DH.140012095, DH.160012155, DH.1400140, DH.1400B-EQP-156 | -10d |
| DH1400.L3CX.BMS.31 |  | DH1400 L3 PTPs & SOOs – BMS | 40d | 2027-01-13 | 2027-03-11 | DH1400.L3CX.ELEC.103 SS | -10d |
| DH1400.L3CX.ELEC.103 |  | DH1400 L3 FTEs | 5d | 2027-01-13 | 2027-01-20 | DH1400.L3CX.79 SS | -10d |
| DH1400.L3CX.MECH.93 |  | DH1400 L3 Startup / Pre-Functional – MECHANICAL | 20d | 2027-01-19 | 2027-02-16 | DH1400.L3CX.ELEC.103 SS+3d | -3d |
| DH1400.L3CX.ELEC.93 |  | DH1400 L3 Startup / Pre-Functional – ELECTRICAL | 15d | 2027-01-21 | 2027-02-10 | DH1400.L3CX.ELEC.103 | 2d |
| DH1400.L3CX.MECH.103 |  | DH1400 L3 TAB (Air, Water and Reports) – MECHANICAL | 10d | 2027-02-26 | 2027-03-11 | DH1400.L3CX.BMS.31 FF, DH1400.L3CX.MECH.93 | -10d |
| DH1400.L3CX.MECH.113 |  | DH1400 L3 FLS – MECHANICAL | 10d | 2027-03-02 | 2027-03-15 | DH1400.L3CX.ELEC.93, DH1400.L3CX.MECH.93, DH1400.L3CX.MECH.103 FF+2d | -10d |
| DH1400.L3CX.69 |  | DH1400 L3 Cx Complete | 0d | 2027-03-16 | 2027-03-16 | DH1400.L3CX.MECH.113 FF, DH1400.L3CX.MECH.103 FF | -10d |
|  | 2 | **L4 Function Testing** |  | 2027-02-17 | 2027-03-23 |  |  |
| DH1400.L4CX.COMM.160 |  | DH1400 L4 Cx | 25d | 2027-02-17 | 2027-03-23 | DH1400.L3CX.69 FF+6d | 0d |
|  | 3 | **L5 Integrated System Testing (IST)** |  | 2027-03-04 | 2027-04-21 |  |  |
| DH1400.L5CX.COMM.260 |  | DH1400 L5 Integrated Systems Testing - IST | 20d | 2027-03-04 | 2027-03-31 | DH1400.L4CX.COMM.160 FF+6d | 0d |
| DH1400.A2110.CO |  | DH1400– Phase Closeout Period O&M / TRAINING/ CLOSEOUT DOCS | 15d | 2027-04-01 | 2027-04-21 | DH1400.L5CX.COMM.270 | 13d |
| DH1400.L5CX.COMM.270 |  | DH1400 – IST / L5 Cx Complete | 0d | 2027-04-01 | 2027-04-01 | DH1400.L5CX.COMM.260 | 0d |
|  | 2 | **Commissioning & Start Up** |  |  |  |  |  |
|  | 4 | **Data Hall 1600** |  | 2026-07-21 | 2027-06-22 |  |  |
|  | 10 | **Exterior Build Out** |  | 2026-07-21 | 2027-02-16 |  |  |
|  | 9 | **Electrical Yard** |  | 2026-10-23 | 2027-02-16 |  |  |
|  | 3 | **Electrical** |  | 2026-10-23 | 2027-02-16 |  |  |
|  | 1 | **Underground** |  | 2026-10-23 | 2026-12-01 |  |  |

| ID | WBS | Task | Duration | Start | Finish | Predecessors | Complete | Total float |
| --- | --- | --- | --- | --- | --- | --- | --- | --- |
|  | 1 | **Column Line 6.0 - 6.9** |  | 2026-10-23 | 2026-12-01 |  |  |  |
| DH.1600 |  | DH1600/Electrical Yard-Underground // Excavate From MVG to Transformers | 10d | 2026-10-23 | 2026-11-05 | FDN.1252, STRUCTURE.7020, B1200381, DH.1500 |  | 9d |
| B1200382 |  | DH1600/Electrical Yard-Underground // Install Raceway from MVG to Transformers | 10d | 2026-11-06 | 2026-11-20 | DH.1600 |  | 9d |
| B1200383 |  | DH1600/Electrical Yard-Underground // Backfill Raceways from MVG to Transformers | 6d | 2026-11-23 | 2026-12-01 | B1200382, B1200382 FF |  | 9d |
|  | 2 | **Column-Line 6.0 - 6.9** |  |  |  |  |  |  |
|  | 2 | **Pads** |  | 2026-12-02 | 2027-01-13 |  |  |  |
| B1200397 |  | DH1600/Electrical Yard-Pads // Excavate / Form / Rebar /pour-Finish XFMR Pads | 10d | 2026-12-02 | 2026-12-15 | B1200394, B1200383 |  | 9d |
| B1200398 |  | DH1600/Electrical Yard-Pads // Pad Strip and Cure Xfmr) | 8d | 2026-12-16 | 2026-12-28 | B1200397 |  | 9d |
| B1200399 |  | DH1600/Electrical Yard-Pads // Excavate / Form / Rebar /pour-Finish Pads | 6d | 2026-12-29 | 2027-01-06 | B1200397, B1200398 |  | 9d |
| B1200400 |  | DH1600/Electrical Yard-Pads // Pad Strip and Cure XFMR Pads | 5d | 2027-01-07 | 2027-01-13 | B1200399 |  | 9d |
|  | 3 | **Equipment** |  | 2027-01-14 | 2027-02-16 |  |  |  |
|  | 1 | **A160** |  | 2027-01-14 | 2027-01-15 |  |  |  |
| DH.16001 |  | DH1600/Electrical Yard // Set XFMR - XFMR-A160a | 1d | 2027-01-14 | 2027-01-14 | STRUCTURE.7020, B1200400, B1200398, B1200397 |  | 9d |
| DH.16002 |  | DH1600/Electrical Yard // Set XFMR - XFMR-A160p | 1d | 2027-01-15 | 2027-01-15 | DH.16001 |  | 9d |
|  | 2 | **B160** |  | 2027-01-19 | 2027-01-20 |  |  |  |
| DH.16003 |  | DH1600/Electrical Yard // Set XFMR - XFMR-B160a | 1d | 2027-01-19 | 2027-01-19 | DH.16002 |  | 9d |
| DH.16004 |  | DH1600/Electrical Yard // Set XFMR - XFMR-B160p | 1d | 2027-01-20 | 2027-01-20 | DH.16003 |  | 9d |
|  | 3 | **C160** |  | 2027-01-21 | 2027-01-22 |  |  |  |
| DH.16005 |  | DH1600/Electrical Yard // Set XFMR - XFMR-C160a | 1d | 2027-01-21 | 2027-01-21 | DH.16004 |  | 9d |
| DH.16006 |  | DH1600/Electrical Yard // Set XFMR - XFMR-C160p | 1d | 2027-01-22 | 2027-01-22 | DH.16005 |  | 9d |
|  | 4 | **D160** |  | 2027-01-25 | 2027-01-26 |  |  |  |
| DH.16007 |  | DH1600/Electrical Yard // Set XFMR - XFMR-D160a | 1d | 2027-01-25 | 2027-01-25 | DH.16006 |  | 9d |
| DH.16008 |  | DH1600/Electrical Yard // Set XFMR - XFMR-D160p | 1d | 2027-01-26 | 2027-01-26 | DH.16007 |  | 9d |
|  | 5 | **E160** |  | 2027-01-27 | 2027-01-28 |  |  |  |
| DH.16009 |  | DH1600/Electrical Yard // Set XFMR - XFMR-E160a | 1d | 2027-01-27 | 2027-01-27 | DH.16008 |  | 9d |
| DH.16000 |  | DH1600/Electrical Yard // Set XFMR - XFMR-E160p | 1d | 2027-01-28 | 2027-01-28 | DH.16009 |  | 9d |
|  | 6 | **F160** |  | 2027-01-29 | 2027-02-01 |  |  |  |
| DH.160012132 |  | DH1600/Electrical Yard // Set XFMR - XFMR-F160a | 1d | 2027-01-29 | 2027-01-29 | DH.16000 |  | 9d |
| DH.160012133 |  | DH1600/Electrical Yard // Set XFMR - XFMR-F160p | 1d | 2027-02-01 | 2027-02-01 | DH.160012132 |  | 9d |
|  | 7 | **G160** |  | 2027-02-02 | 2027-02-03 |  |  |  |
| DH.160012134 |  | DH1600/Electrical Yard // Set XFMR - XFMR-G160a | 1d | 2027-02-02 | 2027-02-02 | DH.160012133 |  | 9d |
| DH.160012135 |  | DH1600/Electrical Yard // Set XFMR - XFMR-G160p | 1d | 2027-02-03 | 2027-02-03 | DH.160012134 |  | 9d |
|  | 8 | **H160** |  | 2027-02-04 | 2027-02-05 |  |  |  |
| DH.160012136 |  | DH1600/Electrical Yard // Set XFMR - XFMR-H160a | 1d | 2027-02-04 | 2027-02-04 | DH.160012135 |  | 9d |
| DH.160012137 |  | DH1600/Electrical Yard // Set XFMR - XFMR-H160p | 1d | 2027-02-05 | 2027-02-05 | DH.160012136 |  | 9d |
|  | 9 | **J160** |  | 2027-02-08 | 2027-02-09 |  |  |  |
| DH.160012138 |  | DH1600/Electrical Yard // Set XFMR - XFMR-J160a | 1d | 2027-02-08 | 2027-02-08 | DH.160012137 |  | 9d |
| DH.160012139 |  | DH1600/Electrical Yard // Set XFMR - XFMR-J160p | 1d | 2027-02-09 | 2027-02-09 | DH.160012138 |  | 9d |
|  | 10 | **K160** |  | 2027-02-10 | 2027-02-11 |  |  |  |
| DH.160012140 |  | DH1600/Electrical Yard // Set XFMR - XFMR-K160a | 1d | 2027-02-10 | 2027-02-10 | DH.160012139 |  | 9d |
| DH.160012141 |  | DH1600/Electrical Yard // Set XFMR - XFMR-K160p | 1d | 2027-02-11 | 2027-02-11 | DH.160012140 |  | 9d |
|  | 11 | **R160** |  | 2027-02-12 | 2027-02-16 |  |  |  |
| DH.160012142 |  | DH1600/Electrical Yard // Set XFMR - XFMR-R160a | 1d | 2027-02-12 | 2027-02-12 | DH.160012141 |  | 9d |
| DH.160012143 |  | DH1600/Electrical Yard // Set XFMR - XFMR-R160p | 1d | 2027-02-16 | 2027-02-16 | DH.160012142 |  | 9d |
|  | 1 | **Mechanical Yard** |  | 2026-07-21 | 2026-12-02 |  |  |  |
|  | 1 | **Pads** |  | 2026-07-21 | 2026-09-03 |  |  |  |
| A5838 |  | DH1600/Mechanical Yard-Pads // Excavate / Form / Rebar / Pour Chiller Pads | 8d | 2026-07-21 A | 2026-07-30 A | A5796, A3210 SS, FDN.1070 SS, A3210 | 100% |  |
| A5840 |  | DH1600/Mechanical Yard-Pads // Excavate / Form / Rebar / Pour Support and TES Pads (Column Lines 1 to 1.3) | 5d | 2026-08-03 A | 2026-08-26 A | A5838 | 100% |  |
| A5843 |  | DH1600/Mechanical Yard-Pads // Excavate / Form / Rebar / Pour TES Tank Pad | 8d | 2026-08-24 A | 2026-09-02 A | A5838 SS | 100% |  |
| A5841 |  | DH1600/Mechanical Yard-Pads // Excavate / Form / Rebar / Pour Support and TES Pads (Column Lines 1.3 to 1.6) | 5d | 2026-08-28 A | 2026-09-03 A | A5840 | 100% |  |
| A5842 |  | DH1600/Mechanical Yard-Pads // Excavate / Form / Rebar / Pour Support and TES Pads (Column Lines 1.6 to 1.9) | 5d | 2026-08-28 A | 2026-09-03 A | A5841 SS | 100% |  |
|  | 5 | **Equipment** |  | 2026-09-30 | 2026-11-04 |  |  |  |
|  | 1 | **A160** |  | 2026-09-30 | 2026-10-06 |  |  |  |
| DH.160012001 |  | DH1600/Mechanical Yard-A160 // Set Chiller - CHLR-1CY40-A160 | 1d | 2026-09-30 | 2026-09-30 | A5838 SS, STRUCTURE.7020, FDN.1252, A5843 |  | 121d |
| DH.160012002 |  | DH1600/Mechanical Yard-A160 // Set TES tank - TES-1CY40-A160 | 1d | 2026-10-01 | 2026-10-01 | DH.160012001 |  | 131d |
| DH.160012023 |  | DH1600/Mechanical Yard-A160 // Install CHWP | 1d | 2026-10-02 | 2026-10-02 | DH.160012002 |  | 131d |
| DH.160012024 |  | DH1600/Mechanical Yard-A160 // Install Mechanical Piping Mains (Building -to Line) | 1d | 2026-10-05 | 2026-10-05 | DH.160012023 |  | 131d |
| DH.160012025 |  | DH1600/Mechanical Yard-A160 // Install Mechanical Chiller to Mains | 1d | 2026-10-06 | 2026-10-06 | DH.160012024 |  | 131d |
|  | 2 | **B160** |  | 2026-10-01 | 2026-10-07 |  |  |  |
| DH.160012003 |  | DH1600/Mechanical Yard-B160 // Set Chiller - CHLR-1CY40-B160 | 1d | 2026-10-01 | 2026-10-01 | DH.160012001 |  | 121d |
| DH.160012004 |  | DH1600/Mechanical Yard-B160 // Set TES tank - TES-1CY40-B160 | 1d | 2026-10-02 | 2026-10-02 | DH.160012003 |  | 130d |
| DH.160012026 |  | DH1600/Mechanical Yard-B160 // Install CHWP | 1d | 2026-10-05 | 2026-10-05 | DH.160012004 |  | 130d |
| DH.160012027 |  | DH1600/Mechanical Yard-B160 // Install Mechanical Piping Mains (Building -to Line) | 1d | 2026-10-06 | 2026-10-06 | DH.160012026 |  | 130d |
| DH.160012028 |  | DH1600/Mechanical Yard-B160 // Install Mechanical Chiller to Mains | 1d | 2026-10-07 | 2026-10-07 | DH.160012027 |  | 130d |
|  | 3 | **C160** |  | 2026-10-02 | 2026-10-08 |  |  |  |
| DH.160012005 |  | DH1600/Mechanical Yard-C160 // Set Chiller - CHLR-1CY40-C160 | 1d | 2026-10-02 | 2026-10-02 | DH.160012003 |  | 121d |
| DH.160012006 |  | DH1600/Mechanical Yard-C160 // Set TES tank - TES-1CY40-C160 | 1d | 2026-10-05 | 2026-10-05 | DH.160012005 |  | 129d |
| DH.160012029 |  | DH1600/Mechanical Yard-C160 // Install CHWP | 1d | 2026-10-06 | 2026-10-06 | DH.160012006 |  | 129d |
| DH.160012030 |  | DH1600/Mechanical Yard-C160 // Install Mechanical Piping Mains (Building -to Line) | 1d | 2026-10-07 | 2026-10-07 | DH.160012029 |  | 129d |
| DH.160012031 |  | DH1600/Mechanical Yard-C160 // Install Mechanical Chiller to Mains | 1d | 2026-10-08 | 2026-10-08 | DH.160012030 |  | 129d |

| ID | WBS | Task | Duration | Start | Finish | Predecessors | Complete | Total float |
| --- | --- | --- | --- | --- | --- | --- | --- | --- |
|  | 4 | **D160** |  | 2026-10-05 | 2026-10-09 |  |  |  |
| DH.160012007 |  | DH1600/Mechanical Yard-D160 // Set Chiller - CHLR-1CY40-D160 | 1d | 2026-10-05 | 2026-10-05 | DH.160012005 |  | 121d |
| DH.160012008 |  | DH1600/Mechanical Yard-D160 // Set TES tank - TES-1CY40-D160 | 1d | 2026-10-06 | 2026-10-06 | DH.160012007 |  | 128d |
| DH.160012032 |  | DH1600/Mechanical Yard-D160 // Install CHWP | 1d | 2026-10-07 | 2026-10-07 | DH.160012008 |  | 128d |
| DH.160012033 |  | DH1600/Mechanical Yard-D160 // Install Mechanical Piping Mains (Building -to Line) | 1d | 2026-10-08 | 2026-10-08 | DH.160012032 |  | 128d |
| DH.160012034 |  | DH1600/Mechanical Yard-D160 // Install Mechanical Chiller to Mains | 1d | 2026-10-09 | 2026-10-09 | DH.160012033 |  | 128d |
|  | 5 | **E160** |  | 2026-10-06 | 2026-10-13 |  |  |  |
| DH.160012009 |  | DH1600/Mechanical Yard-E160 // Set Chiller - CHLR-1CY40-E160 | 1d | 2026-10-06 | 2026-10-06 | DH.160012007 |  | 121d |
| DH.160012010 |  | DH1600/Mechanical Yard-E160 // Set TES tank - TES-1CY40-E160 | 1d | 2026-10-07 | 2026-10-07 | DH.160012009 |  | 127d |
| DH.160012035 |  | DH1600/Mechanical Yard-E160 // Install CHWP | 1d | 2026-10-08 | 2026-10-08 | DH.160012010 |  | 127d |
| DH.160012036 |  | DH1600/Mechanical Yard-E160 // Install Mechanical Piping Mains (Building -to Line) | 1d | 2026-10-09 | 2026-10-09 | DH.160012035 |  | 127d |
| DH.160012037 |  | DH1600/Mechanical Yard-E160 // Install Mechanical Chiller to Mains | 1d | 2026-10-13 | 2026-10-13 | DH.160012036 |  | 127d |
|  | 6 | **F160** |  | 2026-10-07 | 2026-10-14 |  |  |  |
| DH.160012011 |  | DH1600/Mechanical Yard-F160 // Set Chiller - CHLR-1CY40-F160 | 1d | 2026-10-07 | 2026-10-07 | DH.160012009 |  | 121d |
| DH.160012012 |  | DH1600/Mechanical Yard-F160 // Set TES tank - TES-1CY40-F160 | 1d | 2026-10-08 | 2026-10-08 | DH.160012011 |  | 126d |
| DH.160012038 |  | DH1600/Mechanical Yard-F160 // Install CHWP | 1d | 2026-10-09 | 2026-10-09 | DH.160012012 |  | 126d |
| DH.160012039 |  | DH1600/Mechanical Yard-F160 // Install Mechanical Piping Mains (Building -to Line) | 1d | 2026-10-13 | 2026-10-13 | DH.160012038 |  | 126d |
| DH.160012040 |  | DH1600/Mechanical Yard-F160 // Install Mechanical Chiller to Mains | 1d | 2026-10-14 | 2026-10-14 | DH.160012039 |  | 126d |
|  | 7 | **G160** |  | 2026-10-08 | 2026-10-15 |  |  |  |
| DH.160012013 |  | DH1600/Mechanical Yard-G160 // Set Chiller - CHLR-1CY40-G160 | 1d | 2026-10-08 | 2026-10-08 | DH.160012011 |  | 121d |
| DH.160012014 |  | DH1600/Mechanical Yard-G160 // Set TES tank - TES-1CY40-G160 | 1d | 2026-10-09 | 2026-10-09 | DH.160012013 |  | 125d |
| DH.160012041 |  | DH1600/Mechanical Yard-G160 // Install CHWP | 1d | 2026-10-13 | 2026-10-13 | DH.160012014 |  | 125d |
| DH.160012042 |  | DH1600/Mechanical Yard-G160 // Install Mechanical Piping Mains (Building -to Line) | 1d | 2026-10-14 | 2026-10-14 | DH.160012041 |  | 125d |
| DH.160012043 |  | DH1600/Mechanical Yard-G160 // Install Mechanical Chiller to Mains | 1d | 2026-10-15 | 2026-10-15 | DH.160012042 |  | 125d |
|  | 8 | **H160** |  | 2026-10-09 | 2026-10-16 |  |  |  |
| DH.160012015 |  | DH1600/Mechanical Yard-H160 // Set Chiller - CHLR-1CY40-H160 | 1d | 2026-10-09 | 2026-10-09 | DH.160012013 |  | 121d |
| DH.160012016 |  | DH1600/Mechanical Yard-H160 // Set TES tank - TES-1CY40-H160 | 1d | 2026-10-13 | 2026-10-13 | DH.160012015 |  | 124d |
| DH.160012044 |  | DH1600/Mechanical Yard-H160 // Install CHWP | 1d | 2026-10-14 | 2026-10-14 | DH.160012016 |  | 124d |
| DH.160012045 |  | DH1600/Mechanical Yard-H160 // Install Mechanical Piping Mains (Building -to Line) | 1d | 2026-10-15 | 2026-10-15 | DH.160012044 |  | 124d |
| DH.160012046 |  | DH1600/Mechanical Yard-H160 // Install Mechanical Chiller to Mains | 1d | 2026-10-16 | 2026-10-16 | DH.160012045 |  | 124d |
|  | 9 | **J160** |  | 2026-10-13 | 2026-10-19 |  |  |  |
| DH.160012017 |  | DH1600/Mechanical Yard-J160 // Set Chiller - CHLR-1CY40-J160 | 1d | 2026-10-13 | 2026-10-13 | DH.160012015 |  | 121d |
| DH.160012018 |  | DH1600/Mechanical Yard-J160 // Set TES tank - TES-1CY40-J160 | 1d | 2026-10-14 | 2026-10-14 | DH.160012017 |  | 123d |
| DH.160012047 |  | DH1600/Mechanical Yard-J160 // Install CHWP | 1d | 2026-10-15 | 2026-10-15 | DH.160012018 |  | 123d |
| DH.160012048 |  | DH1600/Mechanical Yard-J160 // Install Mechanical Piping Mains (Building -to Line) | 1d | 2026-10-16 | 2026-10-16 | DH.160012047 |  | 123d |
| DH.160012049 |  | DH1600/Mechanical Yard-J160 // Install Mechanical Chiller to Mains | 1d | 2026-10-19 | 2026-10-19 | DH.160012048 |  | 123d |
|  | 10 | **K160** |  | 2026-10-14 | 2026-10-20 |  |  |  |
| DH.160012019 |  | DH1600/Mechanical Yard-K160 // Set Chiller - CHLR-1CY40-K160 | 1d | 2026-10-14 | 2026-10-14 | DH.160012017 |  | 121d |
| DH.160012020 |  | DH1600/Mechanical Yard-K160 // Set TES tank - TES-1CY40-K160 | 1d | 2026-10-15 | 2026-10-15 | DH.160012019 |  | 122d |
| DH.160012050 |  | DH1600/Mechanical Yard-K160 // Install CHWP | 1d | 2026-10-16 | 2026-10-16 | DH.160012020 |  | 122d |
| DH.160012051 |  | DH1600/Mechanical Yard-K160 // Install Mechanical Piping Mains (Building -to Line) | 1d | 2026-10-19 | 2026-10-19 | DH.160012050 |  | 122d |
| DH.160012052 |  | DH1600/Mechanical Yard-K160 // Install Mechanical Chiller to Mains | 1d | 2026-10-20 | 2026-10-20 | DH.160012051 |  | 122d |
|  | 11 | **R160** |  | 2026-10-15 | 2026-10-21 |  |  |  |
| DH.160012021 |  | DH1600/Mechanical Yard-R160 // Set Chiller - CHLR-1CY40-R160 | 1d | 2026-10-15 | 2026-10-15 | DH.160012019 |  | 121d |
| DH.160012022 |  | DH1600/Mechanical Yard-R160 // Set TES tank - TES-1CY40-R160 | 1d | 2026-10-16 | 2026-10-16 | DH.160012021 |  | 121d |
| DH.160012053 |  | DH1600/Mechanical Yard-R160 // Install CHWP | 1d | 2026-10-19 | 2026-10-19 | DH.160012022 |  | 121d |
| DH.160012054 |  | DH1600/Mechanical Yard-R160 // Install Mechanical Piping Mains (Building -to Line) | 1d | 2026-10-20 | 2026-10-20 | DH.160012053 |  | 121d |
| DH.160012055 |  | DH1600/Mechanical Yard-R160 // Install Mechanical Chiller to Mains | 1d | 2026-10-21 | 2026-10-21 | DH.160012054 |  | 121d |
|  | 12 | **Test & Flushing** |  | 2026-10-22 | 2026-11-04 |  |  |  |
| A5745 |  | DH1600/Mechanical Yard-Test & Flushing // Line Test & Checking | 2d | 2026-10-22 | 2026-10-23 | DH.160012055, DH.160012052, DH.160012049, DH.160012046, DH.160012043, DH.160012025, DH.160012028, DH.160012031, DH.160012034, DH.160012037, DH.160012040 |  | 121d |
| A5747 |  | DH1600/Mechanical Yard-Test & Flushing // Electrical & Controls Testing / Checking | 3d | 2026-10-26 | 2026-10-28 | A5745 |  | 121d |
| A5746 |  | DH1600/Mechanical Yard-Test & Flushing // Fill, Flush & Purge | 5d | 2026-10-29 | 2026-11-04 | A5747 |  | 121d |
|  | 2 | **Electrical & Controls** |  | 2026-09-30 | 2026-12-02 |  |  |  |
| A5820 |  | DH1600/Electrical & Controls // Backfill Chiller Raceways from Building to Chiller Pad | 8d | 2026-09-30 | 2026-10-09 | A5843 |  | 103d |
| A5821 |  | DH1600/Electrical & Controls // Excavate Raceways from Building to Chiller Pad | 8d | 2026-10-06 | 2026-10-16 | A5838 SS, A5820 SS+4d |  | 103d |
| A5824 |  | DH1600/Electrical & Controls // Install Raceway from Building To Chiller Pad | 8d | 2026-10-13 | 2026-10-22 | A5821 SS+4d |  | 103d |
| A5826 |  | DH1600/Electrical & Controls // Raceway connections to Chiller units | 6d | 2026-10-23 | 2026-10-30 | A5842, A5821, A5838, A5824 |  | 103d |
| A5827 |  | DH1600/Electrical & Controls // Install Panels and Raceways to CHWP | 10d | 2026-10-23 | 2026-11-05 | A5826 SS, A5820 |  | 103d |
| A5833 |  | DH1600/Electrical & Controls // Mechanical CWP Support Caisson Footings | 10d | 2026-10-23 | 2026-11-05 | A5827 SS, A5824 SS |  | 115d |
| A5831 |  | DH1600/Electrical & Controls // Pull and Terminate Feeders to Chiller units | 6d | 2026-11-02 | 2026-11-09 | A5826, A5827 SS, A5824 SS |  | 113d |
| A5830 |  | DH1600/Electrical & Controls // Install Controls conduits and wire to Chiller units | 12d | 2026-11-06 | 2026-11-24 | A5827 |  | 103d |
| A5835 |  | DH1600/Electrical & Controls // Fine Grade Install Landscape Fabric & Install Rock | 5d | 2026-11-06 | 2026-11-13 | A5833, A5827 SS, A5824 SS |  | 115d |
| A5834 |  | DH1600/Electrical & Controls // Chiller units Ready to Energize | 5d | 2026-11-25 | 2026-12-02 | A5831, A5827, A5830, A5827 SS, A5824 SS |  | 103d |
|  | 2 | **Roof - RTUs** |  | 2026-08-20 | 2026-11-12 |  |  |  |
|  | 1 | **Column Lines 1.2 thru 2.0** |  | 2026-08-20 | 2026-11-12 |  |  |  |
| DH.160012058 |  | DH1600/Roof - RTUs // RTU-RT- 017 | 1d | 2026-08-20 A | 2026-08-27 A | DH.150012064 | 100% |  |
| DH.160012057 |  | DH1600/Roof - RTUs // RTU-RT- 018 | 1d | 2026-08-24 A | 2026-08-31 A | DH.160012058 SS+2d | 100% |  |
| DH.160012064 |  | DH1600/Roof - RTUs // RTU-RT- 019 | 1d | 2026-08-25 A | 2026-09-01 A | DH.160012057 | 100% |  |
| DH.160012059 |  | DH1600/Roof - RTUs // Install Mechanical Piping | 15d | 2026-09-02 A | 2026-09-23 A | DH.160012064, DH.160012058 | 100% |  |
| DH.160012056 |  | DH1600/Roof - RTUs // Install heat trace system | 15d | 2026-09-30 | 2026-10-21 | DH.160012059 |  | 103d |

| ID | WBS | Task | Duration | Start | Finish | Predecessors | Complete | Total float | Constraint |
| --- | --- | --- | --- | --- | --- | --- | --- | --- | --- |
| DH.16007841 |  | DH1600/Roof - RTUs // Install Electrical Conduit and Controls Piping | 15d | 2026-10-22 | 2026-11-12 | DH.160012064, DH.160012059, DH.160012056 |  | 103d |  |
|  | 1 | **Interior Build Out** |  | 2026-07-24 | 2027-06-22 |  |  |  |  |
|  | 9 | **Flex 1000F10** |  | 2026-08-24 | 2026-12-18 |  |  |  |  |
| DH.1600.1000 |  | DH1600/Flex 1000F10 // Seal Concrete | 5d | 2026-08-24 A | 2026-09-29 A | SOG.1472 | 100% |  |  |
| DH.1600.1010 |  | DH1600/Flex 1000F10 // MEPF Layout of Overhead Supports | 2d | 2026-08-31 A | 2026-09-22 A | STRUCTURE.7540 | 100% |  |  |
| B120001.3187 |  | DH1600/Flex 1000F10 // Install Overhead Cable Ladder / 36" Cable Tray - TFO | 5d | 2026-09-30 | 2026-10-06 | DH.1600.1010, A5690 |  | 54d |  |
| B120001.3188 |  | DH1600/Flex 1000F10 // Install Overhead HAC - TFO | 5d | 2026-10-07 | 2026-10-14 | B120001.3187 |  | 54d |  |
| DH.1600.1020 |  | DH1600/Flex 1000F10 // MEPF Install High Overhead Systems | 6d | 2026-10-15 | 2026-10-22 | DH.1600.1010, B120001.3188 |  | 54d |  |
| DH.1600.1040 |  | DH1600/Flex 1000F10 // Frame Walls including Backing | 4d | 2026-10-23 | 2026-10-28 | DH.1600.1000, DH.1600.1010, DH.1600.1020 |  | 54d |  |
| DH.1600.1060 |  | DH1600/Flex 1000F10 // MEPF Install Rough Wall | 2d | 2026-10-29 | 2026-10-30 | DH.1600.1040 |  | 54d |  |
| DH.1600.1080 |  | DH1600/Flex 1000F10 // Rough Wall Inspection (Approval to Close up) | 1d | 2026-11-02 | 2026-11-02 | DH.1600.1060 |  | 54d |  |
| DH.1600.1070 |  | DH1600/Flex 1000F10 // Install Top Down Sheet Rock | 5d | 2026-11-03 | 2026-11-09 | DH.1600.1040 SS+2d, DH.1600.1080 |  | 54d |  |
| DH.1600.1090 |  | DH1600/Flex 1000F10 // Install Balance of Sheetrock | 3d | 2026-11-10 | 2026-11-13 | DH.1600.1070 |  | 54d |  |
| DH.1600.1100 |  | DH1600/Flex 1000F10 // Tape and Finish Walls | 6d | 2026-11-16 | 2026-11-23 | DH.1600.1090 |  | 54d |  |
| DH.1600.1110 |  | DH1600/Flex 1000F10 // Prime and First Coat of Paint | 2d | 2026-11-24 | 2026-11-25 | DH.1600.1100 |  | 54d |  |
| DH.1600.1120 |  | DH1600/Flex 1000F10 // Install MEPF Overhead Ceiling Rough | 3d | 2026-11-27 | 2026-12-01 | DH.1600.1110 |  | 54d |  |
| DH.1600.1050 |  | DH1600/Flex 1000F10 // Install Door Frames | 1d | 2026-12-02 | 2026-12-02 | DH.1600.1040 FF, DH.1600.1120 |  | 58d |  |
| DH.1600.1130 |  | DH1600/Flex 1000F10 // Install Lighting, Fire Alarm & Fire Protection | 2d | 2026-12-02 | 2026-12-03 | DH.1600.1120 |  | 54d |  |
| DH.1600.1140 |  | DH1600/Flex 1000F10 // Wall Touch up Final Coat of Paint | 3d | 2026-12-04 | 2026-12-08 | DH.1600.1130 |  | 54d |  |
| DH.1600.1150 |  | DH1600/Flex 1000F10 // Install Wall Base, Trim, and Devices | 3d | 2026-12-09 | 2026-12-11 | DH.1600.1140, DH.1600.1050 |  | 54d |  |
| DH.1600.3058 |  | DH1600/Flex 1000F10 // Ready to Receive Equipment | 0d | 2026-12-11 | 2026-12-11 | DH.1600.1150 FF |  | 54d |  |
| DH.1600.1160 |  | DH1600/Flex 1000F10 // Suffolk Pre Punch | 5d | 2026-12-14 | 2026-12-18 | DH.1600.3058 |  | 111d |  |
|  | 7 | **Electrical Room #5601** |  | 2026-09-02 | 2027-02-26 |  |  |  |  |
| B120001.3065 |  | DH1600/Electrical Room #5601 // MEPF Layout of Overhead Supports | 2d | 2026-09-02 A | 2026-09-24 A | DH.1600.1010 | 100% |  |  |
| B120001.3068 |  | DH1600/Electrical Room #5601 // MEPF Install High Overhead Systems | 6d | 2026-09-30 | 2026-10-07 | B120001.3065 |  | 48d |  |
| B120001.3189 |  | DH1600/Electrical Room #5601 // Install Overhead Cable Ladder / 36" Cable Tray - TFO | 5d | 2026-09-30 | 2026-10-06 | B120001.3065 |  | 28d |  |
| B120001.3190 |  | DH1600/Electrical Room #5601 // Install Overhead HAC - TFO | 5d | 2026-10-07 | 2026-10-14 | B120001.3189 |  | 28d |  |
| F.1000A.1261 |  | DH1600/Electrical Room #5601 // Rough-In Security | 2d | 2026-10-08 | 2026-10-09 | B120001.3068 |  | 82d |  |
| F.1000A.1585 |  | DH1600/Electrical Room #5601 // BMS & EPMS Rough-In | 2d | 2026-10-08 | 2026-10-09 | F.1000A.1261 FF, F.1000A.1261 SS |  | 94d |  |
| F.1000A.1262 |  | DH1600/Electrical Room #5601 // Pull & Test Security Cable | 3d | 2026-10-13 | 2026-10-15 | F.1000A.1261 |  | 82d |  |
| DH.1400.3040 |  | DH1600/Electrical Room #5601 // Install Overhead Buss duct | 2d | 2026-10-15 | 2026-10-16 | B120001.3065, B120001.3190 |  | 28d |  |
| DH.1400.3041 |  | DH1600/Electrical Room #5601 // Install Cable Tray | 3d | 2026-10-16 | 2026-10-20 | DH.1400.3040 SS+1d |  | 28d |  |
| B120001.3066 |  | DH1600/Electrical Room #5601 // Frame Walls including Backing | 4d | 2026-10-21 | 2026-10-26 | B120001.3065, DH.1400.3041 |  | 28d |  |
| B120001.3069 |  | DH1600/Electrical Room #5601 // MEPF Install Rough Wall | 2d | 2026-10-27 | 2026-10-28 | B120001.3066 |  | 28d |  |
| B120001.3071 |  | DH1600/Electrical Room #5601 // Rough Wall Inspspection (Approval to Close up) | 1d | 2026-10-29 | 2026-10-29 | B120001.3069 |  | 28d |  |
| B120001.3070 |  | DH1600/Electrical Room #5601 // Install Top Down Sheet Rock | 5d | 2026-10-30 | 2026-11-05 | B120001.3066 SS+2d, B120001.3071 |  | 28d |  |
| DH.1600.1220 |  | DH1600/Electrical Room #5601 // Pull Cable Tray Feeders (CRAHU/CDU) | 10d | 2026-10-30 | 2026-11-13 | B120001.3071 |  | 61d |  |
| DH.1600.1290 |  | DH1600/Electrical Room #5601 // Pull Misc Feeder and Branch Circuits | 10d | 2026-11-06 | 2026-11-20 | B120001.3068, B120001.3070 |  | 28d |  |
| DH.1600.1240 |  | DH1600/Electrical Room #5601 // Land and Terminate Cabel Tray Feeders In Gear | 10d | 2026-11-16 | 2026-11-30 | DH.1600.1220 |  | 61d |  |
| DH.1600.1300 |  | DH1600/Electrical Room #5601 // Land and Terminate Misc Feeder and Branch Circuits | 10d | 2026-11-23 | 2026-12-07 | DH.1600.1290 |  | 28d |  |
| B120001.3067 |  | DH1600/Electrical Room #5601 // Install Door Frames | 1d | 2026-12-08 | 2026-12-08 | B120001.3066 FF, DH.1600.1300 |  | 28d |  |
| DH.1600.3059 |  | DH1600/Electrical Room #5601 // Room Ready to Receive Equipment | 0d | 2026-12-08 | 2026-12-08 | B120001.3067, B120001.3070 FF |  | 28d |  |
| F.1000A.1263 |  | DH1600/Electrical Room #5601 // Install Security Devices | 2d | 2026-12-09 | 2026-12-10 | F.1000A.1262, B120001.3067 |  | 46d |  |
| F.1000A.1264 |  | DH1600/Electrical Room #5601 // Mount & Terminate Security Devices | 5d | 2026-12-11 | 2026-12-17 | F.1000A.1263, B120001.3067 |  | 46d |  |
| F.1000A.1265 |  | DH1600/Electrical Room #5601 // Test Security Devices | 2d | 2026-12-18 | 2026-12-21 | F.1000A.1585 FF, F.1000A.1264 |  | 46d |  |
| DH.1600.3061 |  | DH1600/Electrical Room #5601 // DH1600 - OFCI Skid Ship Date (02/01/2027) First Shipment | 0d | 2027-02-01 | 2027-02-01 | DH.1600.3059 FF |  | -7d | finish on or after 2027-02-01 |
| ER.5101.3085 |  | DH1600/Electrical Room #5601 // Set Skid - SKID-A160 | 1d | 2027-02-01 | 2027-02-01 | B120001.3068, DH.1600.3059, DH.1600.3061 |  | -7d |  |
| ER.5101.3086 |  | DH1600/Electrical Room #5601 // Set Skid - SKID-B160 | 1d | 2027-02-01 | 2027-02-01 | ER.5101.3085 SS |  | -7d |  |
| ER.5101.3087 |  | DH1600/Electrical Room #5601 // Set Skid - SKID-C160 | 1d | 2027-02-02 | 2027-02-02 | ER.5101.3086 |  | -7d |  |
| ER.5101.3088 |  | DH1600/Electrical Room #5601 // Set Skid - SKID-D160 | 1d | 2027-02-02 | 2027-02-02 | ER.5101.3087 SS |  | -7d |  |
| ER.5101.3089 |  | DH1600/Electrical Room #5601 // Set Skid - SKID-E160 | 1d | 2027-02-03 | 2027-02-03 | ER.5101.3088 |  | -7d |  |
| DH.1600.1200 |  | DH1600/Electrical Room #5601 // Install Cable Buss From Exterior | 3d | 2027-02-04 | 2027-02-08 | ER.5101.3089, B120001.3071, DH.1400.3041 |  | 5d |  |
| DH.1600.1250 |  | DH1600/Electrical Room #5601 // Set CRAH-ER5601- 01 | 1d | 2027-02-04 | 2027-02-04 | ER.5101.3089 |  | 3d |  |
| DH.1600.1320 |  | DH1600/Electrical Room #5601 // Buss Duct Tie In to Elect Gear | 3d | 2027-02-04 | 2027-02-08 | ER.5101.3089, B120001.3071 |  | 14d |  |
| DH.1600.3031 |  | DH1600/Electrical Room #5601 // Set CRAH-ER5601- 02 | 1d | 2027-02-05 | 2027-02-05 | DH.1600.1250 |  | 3d |  |
| DH.1600.3032 |  | DH1600/Electrical Room #5601 // Set CRAH-ER5601- 03 | 1d | 2027-02-08 | 2027-02-08 | DH.1600.3031 |  | 3d |  |
| DH.1600.1210 |  | DH1600/Electrical Room #5601 // Pull Cable Buss Feeders | 6d | 2027-02-09 | 2027-02-17 | DH.1600.1200 |  | 5d |  |
| DH.1600.3033 |  | DH1600/Electrical Room #5601 // Set CRAH-ER5601- 04 | 1d | 2027-02-09 | 2027-02-09 | DH.1600.3032 |  | 3d |  |
| DH.1600.3034 |  | DH1600/Electrical Room #5601 // Set CRAH-ER5601- 05 | 1d | 2027-02-10 | 2027-02-10 | DH.1600.3033 |  | 3d |  |
| DH.1600.3035 |  | DH1600/Electrical Room #5601 // Set CRAH-ER5601- 06 | 1d | 2027-02-11 | 2027-02-11 | DH.1600.3034 |  | 3d |  |
| DH.1600.1260 |  | DH1600/Electrical Room #5601 // Mechanical Connections to CRAHU | 5d | 2027-02-12 | 2027-02-19 | DH.1600.3035 |  | 3d |  |
| ER.5101.3100 |  | DH1600/Electrical Room #5601 // Set PDU - PDU-R160-01 | 1d | 2027-02-12 | 2027-02-12 | B120001.3070, DH.1600.3035 |  | 6d |  |
| ER.5101.3106 |  | DH1600/Electrical Room #5601 // Set UPS - UPS-R160 | 1d | 2027-02-16 | 2027-02-16 | ER.5101.3100 |  | 6d |  |
| DH.1600.1230 |  | DH1600/Electrical Room #5601 // Terminate Cable Buss Feeders | 3d | 2027-02-18 | 2027-02-22 | DH.1600.1210, ER.5101.3106 |  | 5d |  |
| DH.1600.1270 |  | DH1600/Electrical Room #5601 // Install Condensate lines from CRAHU's | 2d | 2027-02-22 | 2027-02-23 | DH.1600.1260 |  | 4d |  |
| DH.1600.1280 |  | DH1600/Electrical Room #5601 // Install Elec Feeders to CRAHU's | 3d | 2027-02-22 | 2027-02-24 | DH.1600.1260, B120001.3071 |  | 3d |  |
| DH.1600.1310 |  | DH1600/Electrical Room #5601 // Final FOD Check of all Panels | 2d | 2027-02-23 | 2027-02-24 | DH.1600.1230, DH.1600.1240, DH.1600.1320, DH.1600.1300, B120001.3067, F.1000A.1265 |  | 5d |  |
| DH.1600.1330 |  | DH1600/Electrical Room #5601 // Mechanical Equipment Pre-Start up | 2d | 2027-02-25 | 2027-02-26 | DH.1600.1280, DH.1600.1270, DH.1600.1260, DH.1600.1240, F.1000A.1265 |  | 3d |  |
|  | 2 | **Electrcal Room #5604** |  | 2026-09-04 | 2027-03-16 |  |  |  |  |
| B120001.3100 |  | DH1600/Electrical Room #5604 // MEPF Layout of Overhead Supports | 2d | 2026-09-04 A | 2026-09-25 A | B120001.3065 SS | 100% |  |  |

| ID | WBS | Task | Duration | Start | Finish | Predecessors | Complete | Total float | Constraint |
| --- | --- | --- | --- | --- | --- | --- | --- | --- | --- |
| B120001.3103 |  | DH1600/Electrical Room #5604 // MEPF Install High Overhead Systems | 6d | 2026-09-30 | 2026-10-07 | B120001.3100 |  | 61d |  |
| B120001.3191 |  | DH1600/Electrical Room #5604 // Install Overhead Cable Ladder / 36" Cable Tray - TFO | 5d | 2026-09-30 | 2026-10-06 | B120001.3100 |  | 47d |  |
| B120001.3192 |  | DH1600/Electrical Room #5604 // Install Overhead HAC - TFO | 5d | 2026-09-30 | 2026-10-06 | B120001.3191 FF |  | 47d |  |
| DH.1400.3067 |  | DH1600/Electrical Room #5604 // Install Overhead Buss duct | 2d | 2026-09-30 | 2026-10-01 | B120001.3100 |  | 51d |  |
| DH.1400.3068 |  | DH1600/Electrical Room #5604 // Install Cable Tray | 3d | 2026-10-07 | 2026-10-09 | DH.1400.3067 SS+1d, B120001.3192 |  | 47d |  |
| F.1000A.1266 |  | DH1600/Electrical Room #5604 // Rough-In Security | 2d | 2026-10-08 | 2026-10-09 | B120001.3103 |  | 82d |  |
| F.1000A.1595 |  | DH1600/Electrical Room #5604 // BMS & EPMS Rough-In | 2d | 2026-10-08 | 2026-10-09 | F.1000A.1266 FF, F.1000A.1266 SS |  | 94d |  |
| B120001.3101 |  | DH1600/Electrical Room #5604 // Frame Walls including Backing | 4d | 2026-10-13 | 2026-10-16 | B120001.3100, DH.1400.3068 |  | 47d |  |
| F.1000A.1267 |  | DH1600/Electrical Room #5604 // Pull & Test Security Cable | 3d | 2026-10-13 | 2026-10-15 | F.1000A.1266 |  | 82d |  |
| B120001.3104 |  | DH1600/Electrical Room #5604 // MEPF Install Rough Wall | 2d | 2026-10-19 | 2026-10-20 | B120001.3101 |  | 47d |  |
| B120001.3105 |  | DH1600/Electrical Room #5604 // Rough Wall Inspspection (Approval to Close up) | 1d | 2026-10-21 | 2026-10-21 | B120001.3104 |  | 47d |  |
| B120001.3106 |  | DH1600/Electrical Room #5604 // Install Top Down Sheet Rock | 5d | 2026-10-22 | 2026-10-28 | B120001.3101 SS+2d, B120001.3105 |  | 47d |  |
| DH.1600.3036 |  | DH1600/Electrical Room #5604 // Install Overhead Buss duct | 2d | 2026-10-22 | 2026-10-23 | B120001.3105 |  | 53d |  |
| DH.1600.3037 |  | DH1600/Electrical Room #5604 // Install Cable Tray | 3d | 2026-10-23 | 2026-10-27 | DH.1600.3036 SS+1d |  | 53d |  |
| DH.1600.3047 |  | DH1600/Electrical Room #5604 // Pull Misc Feeder and Branch Circuits | 10d | 2026-10-29 | 2026-11-12 | B120001.3103, B120001.3106 |  | 47d |  |
| DH.1600.3053 |  | DH1600/Electrical Room #5604 // Pull Cable Tray Feeders (CRAHU/CDU) | 10d | 2026-10-29 | 2026-11-12 | DH.1600.3037, B120001.3103, B120001.3106, DH.1400.3068 |  | 52d |  |
| B120001.3102 |  | DH1600/Electrical Room #5604 // Install Door Frames | 1d | 2026-11-13 | 2026-11-13 | DH.1600.3047, B120001.3101 FF |  | 47d |  |
| DH.1600.3055 |  | DH1600/Electrical Room #5604 // Land and Terminate Cabel Tray Feeders In Gear | 10d | 2026-11-13 | 2026-11-27 | DH.1600.3053 |  | 52d |  |
| DH.1600.3060 |  | DH1600/Electrical Room #5604 // Room Ready to Receive Equipment | 0d | 2026-11-13 | 2026-11-13 | B120001.3102, B120001.3106 |  | 47d |  |
| F.1000A.1268 |  | DH1600/Electrical Room #5604 // Install Security Devices | 2d | 2026-11-16 | 2026-11-17 | F.1000A.1267, B120001.3102 |  | 62d |  |
| F.1000A.1269 |  | DH1600/Electrical Room #5604 // Mount & Terminate Security Devices | 5d | 2026-11-18 | 2026-11-24 | F.1000A.1268, B120001.3102 |  | 62d |  |
| DH.1600.3054 |  | DH1600/Electrical Room #5604 // Land and Terminate Misc Feeder and Branch Circuits | 10d | 2026-11-30 | 2026-12-11 | DH.1600.3055, DH.1600.3047 |  | 52d |  |
| DH.1600.3062 |  | DH1600/Electrical Room #5604 // DH1600 - OFCI Skid Ship Date (02/06/2027) 2ND Shipment | 0d | 2027-02-08 | 2027-02-08 | DH.1600.3060 FF |  | -9d | finish on or after 2027-02-06 |
| ER.5101.3090 |  | DH1600/Electrical Room #5604 // Set Skid - SKID-F160 | 1d | 2027-02-08 | 2027-02-08 | ER.5101.3089, DH.1600.3062 |  | -9d |  |
| ER.5101.3091 |  | DH1600/Electrical Room #5604 // Set Skid - SKID-G160 | 1d | 2027-02-08 | 2027-02-08 | ER.5101.3090 SS |  | -9d |  |
| ER.5101.3092 |  | DH1600/Electrical Room #5604 // Set Skid - SKID-H160 | 1d | 2027-02-09 | 2027-02-09 | ER.5101.3091 |  | -9d |  |
| ER.5101.3093 |  | DH1600/Electrical Room #5604 // Set Skid - SKID-J160 | 1d | 2027-02-09 | 2027-02-09 | ER.5101.3092 SS |  | -9d |  |
| ER.5101.3094 |  | DH1600/Electrical Room #5604 // Set Skid - SKID-K160 | 1d | 2027-02-10 | 2027-02-10 | ER.5101.3093 |  | -9d |  |
| DH.1600.3044 |  | DH1600/Electrical Room #5604 // Install Cable Buss From Exterior | 3d | 2027-02-11 | 2027-02-16 | ER.5101.3094, DH.1600.3037 |  | -9d |  |
| DH.1600.3038 |  | DH1600/Electrical Room #5604 // Set CRAH-ER5604- 01 | 1d | 2027-02-17 | 2027-02-17 | DH.1600.3044, B120001.3103, B120001.3106, DH.1400.3068, ER.5101.3094 |  | -9d |  |
| DH.1600.3045 |  | DH1600/Electrical Room #5604 // Buss Duct Tie In to Elect Gear | 3d | 2027-02-17 | 2027-02-19 | DH.1600.3044, DH.1600.3036, DH.1600.3037 |  | 6d |  |
| DH.1600.3049 |  | DH1600/Electrical Room #5604 // Pull Cable Buss Feeders | 6d | 2027-02-17 | 2027-02-24 | DH.1600.3044 |  | 0d |  |
| DH.1600.3039 |  | DH1600/Electrical Room #5604 // Set CRAH-ER5604- 02 | 1d | 2027-02-18 | 2027-02-18 | DH.1600.3038 |  | -9d |  |
| DH.1600.3041 |  | DH1600/Electrical Room #5604 // Set CRAH-ER5604- 03 | 1d | 2027-02-19 | 2027-02-19 | DH.1600.3039 |  | -9d |  |
| DH.1600.3042 |  | DH1600/Electrical Room #5604 // Set CRAH-ER5604- 04 | 1d | 2027-02-22 | 2027-02-22 | DH.1600.3041 |  | -9d |  |
| DH.1600.3043 |  | DH1600/Electrical Room #5604 // Set CRAH-ER5604- 05 | 1d | 2027-02-23 | 2027-02-23 | DH.1600.3042 |  | -9d |  |
| DH.1600.3046 |  | DH1600/Electrical Room #5604 // Set CRAH-ER5604- 06 | 1d | 2027-02-24 | 2027-02-24 | DH.1600.3043 |  | -9d |  |
| DH.1600.3048 |  | DH1600/Electrical Room #5604 // Mechanical Connections to CRAHU | 5d | 2027-02-25 | 2027-03-03 | DH.1600.3046, DH.1600.3038 |  | -9d |  |
| DH.1600.3052 |  | DH1600/Electrical Room #5604 // Terminate Cable Buss Feeders | 3d | 2027-02-25 | 2027-03-01 | DH.1600.3049, DH.1600.3037, B120001.3103, B120001.3106, DH.1400.3068 |  | 0d |  |
| DH.1600.3050 |  | DH1600/Electrical Room #5604 // Install Condensate lines from CRAHU's | 2d | 2027-03-04 | 2027-03-05 | DH.1600.3048 |  | -8d |  |
| DH.1600.3051 |  | DH1600/Electrical Room #5604 // Install Elec Feeders to CRAHU's | 3d | 2027-03-04 | 2027-03-08 | DH.1600.3048, DH.1600.3037 |  | -9d |  |
| DH.1600.3057 |  | DH1600/Electrical Room #5604 // Mechanical Equipment Pre-Start up | 2d | 2027-03-09 | 2027-03-10 | DH.1600.3051, DH.1600.3050, DH.1600.3048, DH.1600.3055 |  | -9d |  |
| F.1000A.1270 |  | DH1600/Electrical Room #5604 // Test Security Devices | 2d | 2027-03-11 | 2027-03-12 | F.1000A.1595 FF, F.1000A.1269, DH.1600.3057 |  | -9d |  |
| DH.1600.3056 |  | DH1600/Electrical Room #5604 // Final FOD Check of all Panels | 2d | 2027-03-15 | 2027-03-16 | DH.1600.3052, DH.1600.3055, DH.1600.3045, DH.1600.3054, B120001.3102, F.1000A.1270 |  | -9d |  |
|  | 3 | **Data Hall 1600** |  | 2026-07-24 | 2027-01-14 |  |  |  |  |
| DH.16006270 |  | DH 1600 // MEPF overhead layout | 3d | 2026-07-24 A | 2026-09-24 A | STRUCTURE.7540 | 100% |  |  |
| DH.16006300 |  | DH 1600 // Frame walls | 10d | 2026-09-17 A | 2026-10-09 | DH.16006270 SS | 20% | 42d |  |
| B120001.3193 |  | DH 1600 // Install Overhead Cable Ladder / 36" Cable Tray - TFO | 5d | 2026-09-30 | 2026-10-06 | DH.16006270 |  | 25d |  |
| B120001.3194 |  | DH 1600 // Install Overhead HAC - TFO | 5d | 2026-10-07 | 2026-10-14 | B120001.3193 |  | 25d |  |
| DH.16006320 |  | DH 1600 // MEP rough in walls | 5d | 2026-10-13 | 2026-10-19 | DH.16006300 |  | 42d |  |
| DH.16006290 |  | DH 1600 // MEPF high overhead install | 10d | 2026-10-15 | 2026-10-28 | DH.16006270, B120001.3194 |  | 25d |  |
| DH.16007800 |  | DH 1600 // Install Ceiling supports (rods/wires) no grid | 5d | 2026-10-29 | 2026-11-04 | DH.16006300 SS, DH.16006290 |  | 25d |  |
| DH.16006220 |  | DH 1600 // Install ceiling grid system | 8d | 2026-11-05 | 2026-11-17 | DH.16007800 |  | 53d |  |
| F.1000A.1271 |  | DH 1600 // Rough-In Security | 2d | 2026-11-05 | 2026-11-06 | DH.16007800, DH.16006290 |  | 25d |  |
| F.1000A.1605 |  | DH 1600 // BMS & EPMS Rough-In | 2d | 2026-11-05 | 2026-11-06 | F.1000A.1271 FF, F.1000A.1271 SS |  | 119d |  |
| F.1000A.1272 |  | DH 1600 // Pull & Test Security Cable | 3d | 2026-11-09 | 2026-11-12 | F.1000A.1271 |  | 25d |  |
| DH.160012067 |  | DH 1600 // Install 1-Side Sheet Rock (DH-Side) | 3d | 2026-11-13 | 2026-11-17 | F.1000A.1272, DH.16006320, DH.16006300 |  | 25d |  |
| DH.16006250 |  | DH 1600 // Install overhead MEP and lighting | 5d | 2026-11-18 | 2026-11-24 | DH.16006220 |  | 53d |  |
| DH.16006360 |  | DH 1600 // Tape and finish walls | 15d | 2026-11-18 | 2026-12-09 | DH.16007800, DH.16006320, DH.160012067, DH.16006300 SS |  | 25d |  |
| DH.16006240 |  | DH 1600 // Install ceiling grid tiles | 3d | 2026-11-25 | 2026-11-30 | DH.16006220 SS+3d, DH.16006250 |  | 53d |  |
| DH.16006260 |  | DH 1600 // Polish concrete | 5d | 2026-12-10 | 2026-12-16 | DH.16006360 |  | 41d |  |
| DH.16006410 |  | DH 1600 // Prime and 1st coat of Paint | 5d | 2026-12-10 | 2026-12-16 | DH.16006360 |  | 41d |  |
| DH.16006310 |  | DH 1600 // Install wall door frames | 3d | 2026-12-17 | 2026-12-21 | DH.16006300 FF, DH.16006260 |  | 81d |  |
| DH.16007790 |  | DH 1600 // Final Paint & Touch up walls | 5d | 2026-12-17 | 2026-12-23 | DH.16006410, DH.16006220, DH.16006240, DH.16006260 |  | 41d |  |
| DH.16007810 |  | DH 1600 // Install MEPF Trim and Finishes | 5d | 2026-12-24 | 2026-12-31 | DH.16007790 |  | 41d |  |
| F.1000A.1273 |  | DH 1600 // Install Security Devices | 2d | 2026-12-24 | 2026-12-28 | F.1000A.1272, DH.16007790, DH.16006310 |  | 79d |  |
| F.1000A.1274 |  | DH 1600 // Mount & Terminate Security Devices | 5d | 2026-12-29 | 2027-01-05 | F.1000A.1273, DH.16006410 |  | 79d |  |
| DH.160012162 |  | DH 1600 // Room Ready to Receive Equipment | 0d | 2026-12-31 | 2026-12-31 | DH.16007810 |  | 41d |  |
| F.1000A.1275 |  | DH 1600 // Test Security Devices | 2d | 2027-01-06 | 2027-01-07 | F.1000A.1605 FF, F.1000A.1274, DH.16007810 |  | 79d |  |
| DH.16007820 |  | DH 1600 // Suffolk Pre Punch | 5d | 2027-01-08 | 2027-01-14 | DH.160012162, F.1000A.1275 |  | 94d |  |

| ID | WBS | Task | Duration | Start | Finish | Predecessors | Complete | Total float |
| --- | --- | --- | --- | --- | --- | --- | --- | --- |
|  | 15 | **PDU Gallery** |  | 2026-08-24 | 2026-11-23 |  |  |  |
| DH.16000.1000 |  | DH1600/PDU Gallery // Seal concrete | 5d | 2026-08-24 A | 2026-09-29 A | SOG.1472 | 100% |  |
| DH.16000.1010 |  | DH1600/PDU Gallery // MEPF overhead layout | 5d | 2026-09-29 A | 2026-09-30 | DH.16006270, DH.16000.1000 | 100% | 55d |
| B120001.3195 |  | DH1600/PDU Gallery // Install Overhead Cable Ladder / 36" Cable Tray - TFO | 5d | 2026-09-30 | 2026-10-06 | DH.16000.1010 |  | 67d |
| B120001.3196 |  | DH1600/PDU Gallery // Install Overhead HAC - TFO | 5d | 2026-10-07 | 2026-10-14 | B120001.3195 |  | 67d |
| DH.16000.1030 |  | DH1600/PDU Gallery // MEPF high overhead install | 3d | 2026-10-15 | 2026-10-19 | DH.16000.1010 SS, DH.16000.1010, B120001.3196 |  | 67d |
| DH.16000.1110 |  | DH1600/PDU Gallery // Install Cable Tray (From Elec Rm 5601 to CRAHU Gallery) | 2d | 2026-10-20 | 2026-10-21 | DH.16000.1030 |  | 67d |
| DH.16000.1040 |  | DH1600/PDU Gallery // Frame walls | 5d | 2026-10-22 | 2026-10-28 | DH.16000.1010, DH.16000.1030, DH.16000.1110 |  | 67d |
| DH.16000.1711 |  | DH1600/PDU Gallery // MEP rough in walls | 3d | 2026-10-29 | 2026-11-02 | DH.16000.1040 |  | 67d |
| DH.16000.1070 |  | DH1600/PDU Gallery // In wall inspection | 1d | 2026-11-03 | 2026-11-03 | DH.16000.1711 |  | 67d |
| DH.16000.1060 |  | DH1600/PDU Gallery // Install Sheetrock Top Down | 3d | 2026-11-04 | 2026-11-06 | DH.16000.1070 |  | 67d |
| DH.16000.1080 |  | DH1600/PDU Gallery // Install sheetrock on walls | 5d | 2026-11-09 | 2026-11-16 | DH.16000.1060 |  | 67d |
| DH.16000.1050 |  | DH1600/PDU Gallery // Install wall door frames | 1d | 2026-11-17 | 2026-11-17 | DH.16000.1040, DH.16000.1080 |  | 67d |
| DH.16000.1090 |  | DH1600/PDU Gallery // Tape and finish walls | 1d | 2026-11-17 | 2026-11-17 | DH.16000.1080 |  | 67d |
| DH.16000.1100 |  | DH1600/PDU Gallery // Paint walls | 2d | 2026-11-18 | 2026-11-19 | DH.16000.1090, DH.16000.1050 |  | 67d |
| DH.16000.1712 |  | DH1600/PDU Gallery // ready to Receive Equipment | 2d | 2026-11-20 | 2026-11-23 | DH.16000.1100 |  | 67d |
|  | 14 | **CRAH/CDU Galleries** |  | 2026-09-30 | 2027-03-01 |  |  |  |
|  | 2 | **Gallery 1602** |  | 2026-09-30 | 2027-02-18 |  |  |  |
|  | 4 | **Architectural** |  | 2026-09-30 | 2026-12-24 |  |  |  |
| DH.1600660 |  | DH 1600/Gallery 1602 // Seal concrete | 2d | 2026-09-30 | 2026-10-01 | DH.16000.1000 |  | 2d |
| DH.1600670 |  | DH 1600/Gallery 1602 // MEPF overhead layout | 5d | 2026-10-02 | 2026-10-08 | DH.1600660 |  | 24d |
| B120001.3197 |  | DH 1600/Gallery 1602 // Install Overhead Cable Ladder / 36" Cable Tray - TFO | 5d | 2026-10-09 | 2026-10-16 | DH.1600670 |  | 24d |
| DH.1600700 |  | DH 1600/Gallery 1602 // Frame walls | 6d | 2026-10-09 | 2026-10-19 | DH.1600670 |  | 27d |
| B120001.3198 |  | DH 1600/Gallery 1602 // Install Overhead HAC - TFO | 5d | 2026-10-19 | 2026-10-23 | B120001.3197 |  | 24d |
| DH.1600730 |  | DH 1600/Gallery 1602 // MEP rough in walls | 4d | 2026-10-20 | 2026-10-23 | DH.1600700 |  | 27d |
| DH.1600690 |  | DH 1600/Gallery 1602 // MEPF high overhead install | 10d | 2026-10-26 | 2026-11-06 | DH.1600670 SS, B120001.3198 |  | 24d |
| DH.1600740 |  | DH 1600/Gallery 1602 // In wall inspection | 1d | 2026-10-26 | 2026-10-26 | DH.1600730 |  | 27d |
| DH.1600720 |  | DH 1600/Gallery 1602 // Install Sheetrock Top Down | 6d | 2026-10-27 | 2026-11-03 | DH.1600700 SS+3d, DH.1600740 |  | 27d |
| DH.1600750 |  | DH 1600/Gallery 1602 // Install Balance of Sheetrock on walls | 6d | 2026-11-09 | 2026-11-17 | DH.1600690, DH.1600720 |  | 24d |
| F.1000A.1306 |  | DH 1600/Gallery 1602 // Rough-In Security | 2d | 2026-11-09 | 2026-11-10 | DH.1600690 |  | 105d |
| F.1000A.1615 |  | DH 1600/Gallery 1602 // BMS & EPMS Rough-In | 2d | 2026-11-09 | 2026-11-10 | F.1000A.1306 FF, F.1000A.1306 SS |  | 117d |
| F.1000A.1307 |  | DH 1600/Gallery 1602 // Pull & Test Security Cable | 3d | 2026-11-12 | 2026-11-16 | F.1000A.1306 |  | 105d |
| DH.1600770 |  | DH 1600/Gallery 1602 // Tape and finish walls | 8d | 2026-11-18 | 2026-11-30 | DH.1600750 |  | 24d |
| DH.1600710 |  | DH 1600/Gallery 1602 // Install wall door frames | 1d | 2026-12-01 | 2026-12-01 | DH.1600770, DH.1600700 FF |  | 27d |
| DH.1600790 |  | DH 1600/Gallery 1602 // Prime and Paint walls | 4d | 2026-12-01 | 2026-12-04 | DH.1600770 |  | 24d |
| F.1000A.1308 |  | DH 1600/Gallery 1602 // Install Security Devices | 2d | 2026-12-02 | 2026-12-03 | F.1000A.1307, DH.1600710 |  | 95d |
| DH.1600800 |  | DH 1600/Gallery 1602 // Touch up Walls and Fianl Paint | 5d | 2026-12-07 | 2026-12-11 | DH.1600710, DH.1600790 |  | 24d |
| F.1000A.1309 |  | DH 1600/Gallery 1602 // Mount & Terminate Security Devices | 5d | 2026-12-07 | 2026-12-11 | F.1000A.1308, DH.1600790 |  | 94d |
| DH.1600810 |  | DH 1600/Gallery 1602 // Install Trim and Devices | 2d | 2026-12-14 | 2026-12-15 | DH.1600800 |  | 24d |
| DH.160012163 |  | DH 1600/Gallery 1602 // Ready to receive Equipment | 0d | 2026-12-15 | 2026-12-15 | DH.1600810 FF |  | 24d |
| F.1000A.1310 |  | DH 1600/Gallery 1602 // Test Security Devices | 2d | 2026-12-16 | 2026-12-17 | F.1000A.1615 FF, F.1000A.1309, DH.1600810 |  | 92d |
| DH.1600820 |  | DH 1600/Gallery 1602 // Suffolk Pre Punch | 5d | 2026-12-18 | 2026-12-24 | DH.160012163, F.1000A.1310 |  | 107d |
|  | 16 | **Raceway** |  |  |  |  |  |  |
|  | 3 | **Equipment Line-Ups** |  | 2026-12-16 | 2027-02-18 |  |  |  |
|  | 1 | **A160** |  | 2026-12-16 | 2027-01-15 |  |  |  |
| DH.1600A-EQP-1 |  | Gallery 1602 - A160/Line-Ups // Set CRAH-DH1600- 01 | 1d | 2026-12-16 | 2026-12-16 | DH.16006360, DH.160012163 |  | 24d |
| DH.1600A-EQP-3 |  | Gallery 1602 - A160/Line-Ups // Set CRAH-DH1600- 02 | 1d | 2026-12-16 | 2026-12-16 | DH.1600A-EQP-1 SS |  | 24d |
| DH.1600A-EQP-5 |  | Gallery 1602 - A160/Line-Ups // Set MOD-A160-01 | 1d | 2026-12-16 | 2026-12-16 | DH.1600A-EQP-3 FF |  | 73d |
| DH.1600A-EQP-6 |  | Gallery 1602 - A160/Line-Ups // Set MOD-A160-02 | 1d | 2026-12-16 | 2026-12-16 | DH.1600A-EQP-5 SS |  | 73d |
| DH.1600A-EQP-10 |  | Gallery 1602 - A160/Line-Ups // Pull Cable Tray Feed from MOD to CRAHU's | 5d | 2026-12-17 | 2026-12-23 | DH.1600A-EQP-6 |  | 79d |
| DH.1600A-EQP-12 |  | Gallery 1602 - A160/Line-Ups // Mount Electrial Gear for Chiller Controls | 10d | 2026-12-17 | 2026-12-31 | DH.1600A-EQP-6 |  | 73d |
| DH.1600A-EQP-7 |  | Gallery 1602 - A160/Line-Ups // Set CDU-DH1600- 01 | 1d | 2026-12-17 | 2026-12-17 | DH.1600A-EQP-1 |  | 78d |
| DH.1600A-EQP-9 |  | Gallery 1602 - A160/Line-Ups // Pull Feeder from SWD to MOD | 1d | 2026-12-17 | 2026-12-17 | DH.1600A-EQP-6 |  | 89d |
| DH.1600A-EQP-8 |  | Gallery 1602 - A160/Line-Ups // Set CDU-DH1600- 02 | 1d | 2026-12-18 | 2026-12-18 | DH.1600A-EQP-3, DH.1600A-EQP-7 |  | 78d |
| DH.1600A-EQP-4 |  | Gallery 1602 - A160/Line-Ups // Condensate connections to Floor Drains | 10d | 2026-12-21 | 2027-01-05 | DH.1600A-EQP-8, DH.1600A-EQP-7, DH.1600A-EQP-3, DH.16007841 |  | 78d |
| DH.1600A-EQP-11 |  | Gallery 1602 - A160/Line-Ups // Mechanical Connections to CRAHU Units | 10d | 2026-12-23 | 2027-01-07 | DH.1600A-EQP-3 SS+5d |  | 76d |
| DH.1600A-EQP-17 |  | Gallery 1602 - A160/Line-Ups // Pull Feeder and Branch circuits to MIsc equipment and Chiller controls | 10d | 2026-12-23 | 2027-01-07 | DH.1600A-EQP-12 SS+4d |  | 73d |
| DH.1600A-EQP-13 |  | Gallery 1602 - A160/Line-Ups // Pull Cable Tray Feed from MOD to CRAHU's | 5d | 2026-12-24 | 2026-12-31 | DH.1600A-EQP-10 |  | 79d |
| DH.1600A-EQP-16 |  | Gallery 1602 - A160/Line-Ups // Terminate CRAHU Electrical Connections | 5d | 2026-12-29 | 2027-01-05 | DH.1600A-EQP-10, DH.1600A-EQP-13 SS+2d |  | 79d |
| DH.1600A-EQP-19 |  | Gallery 1602 - A160/Line-Ups // Teminate all Misc Equipment and Chiller Controls | 10d | 2026-12-30 | 2027-01-13 | DH.1600A-EQP-17 SS+4d |  | 73d |
| DH.1600A-EQP-15 |  | Gallery 1602 - A160/Line-Ups // Terminate Mod Panels | 1d | 2027-01-04 | 2027-01-04 | DH.1600A-EQP-9, DH.1600A-EQP-10, DH.1600A-EQP-13 |  | 80d |
| DH.1600A-EQP-18 |  | Gallery 1602 - A160/Line-Ups // Mechanical Gear FOD Inspection Pre-Start Up | 3d | 2027-01-08 | 2027-01-12 | DH.1600A-EQP-11, DH.1600A-EQP-4, DH.1600A-EQP-3, DH.1600A-EQP-4 SS, DH.1600A-EQP-11 SS, DH.16007841 |  | 76d |
| DH.1600A-EQP-20 |  | Gallery 1602 - A160/Line-Ups // Electrical Gear FOD Inspection Pre-Start Up | 2d | 2027-01-14 | 2027-01-15 | DH.1600A-EQP-15, DH.1600A-EQP-19, DH.1600A-EQP-16 |  | 73d |
|  | 2 | **B160** |  | 2026-12-16 | 2027-01-20 |  |  |  |
| DH.1600A-EQP-21 |  | Gallery 1602 - B160/Line-Ups // Set CRAH-DH1600- 03 | 1d | 2026-12-16 | 2026-12-16 | DH.1600A-EQP-3 SS |  | 24d |
| DH.1600A-EQP-23 |  | Gallery 1602 - B160/Line-Ups // Set CRAH-DH1600- 04 | 1d | 2026-12-16 | 2026-12-16 | DH.1600A-EQP-21 SS |  | 24d |
| DH.1600A-EQP-25 |  | Gallery 1602 - B160/Line-Ups // Set MOD-B160-01 | 1d | 2026-12-16 | 2026-12-16 | DH.1600A-EQP-23 FF |  | 73d |
| DH.1600A-EQP-26 |  | Gallery 1602 - B160/Line-Ups // Set MOD-B160-02 | 1d | 2026-12-16 | 2026-12-16 | DH.1600A-EQP-25 SS |  | 73d |
| DH.1600A-EQP-27 |  | Gallery 1602 - B160/Line-Ups // Set CDU-DH1600- 03 | 1d | 2026-12-17 | 2026-12-17 | DH.1600A-EQP-21 |  | 73d |
| DH.1600A-EQP-29 |  | Gallery 1602 - B160/Line-Ups // Pull Feeder from SWD to MOD | 1d | 2026-12-17 | 2026-12-17 | DH.1600A-EQP-26 |  | 89d |

| ID | WBS | Task | Duration | Start | Finish | Predecessors | Total float |
| --- | --- | --- | --- | --- | --- | --- | --- |
| DH.1600A-EQP-30 |  | Gallery 1602 - B160/Line-Ups // Pull Cable Tray Feed from MOD to CRAHU's | 5d | 2026-12-17 | 2026-12-23 | DH.1600A-EQP-26 | 79d |
| DH.1600A-EQP-32 |  | Gallery 1602 - B160/Line-Ups // Mount Electrial Gear for Chiller Controls | 10d | 2026-12-17 | 2026-12-31 | DH.1600A-EQP-26 | 73d |
| DH.1600A-EQP-28 |  | Gallery 1602 - B160/Line-Ups // Set CDU-DH1600- 04 | 1d | 2026-12-18 | 2026-12-18 | DH.1600A-EQP-23, DH.1600A-EQP-27 | 73d |
| DH.1600A-EQP-24 |  | Gallery 1602 - B160/Line-Ups // Condensate connections to Floor Drains | 10d | 2026-12-21 | 2027-01-05 | DH.1600A-EQP-28, DH.1600A-EQP-27, DH.1600A-EQP-23 | 73d |
| DH.1600A-EQP-31 |  | Gallery 1602 - B160/Line-Ups // Mechanical Connections to CRAHU Units | 10d | 2026-12-23 | 2027-01-07 | DH.1600A-EQP-23 SS+5d | 71d |
| DH.1600A-EQP-37 |  | Gallery 1602 - B160/Line-Ups // Pull Feeder and Branch circuits to MIsc equipment and Chiller controls | 10d | 2026-12-23 | 2027-01-07 | DH.1600A-EQP-32 SS+4d | 73d |
| DH.1600A-EQP-33 |  | Gallery 1602 - B160/Line-Ups // Pull Cable Tray Feed from MOD to CRAHU's | 5d | 2026-12-24 | 2026-12-31 | DH.1600A-EQP-30 | 79d |
| DH.1600A-EQP-36 |  | Gallery 1602 - B160/Line-Ups // Terminate CRAHU Electrical Connections | 5d | 2026-12-29 | 2027-01-05 | DH.1600A-EQP-30, DH.1600A-EQP-33 SS+2d | 79d |
| DH.1600A-EQP-39 |  | Gallery 1602 - B160/Line-Ups // Teminate all Misc Equipment and Chiller Controls | 10d | 2026-12-30 | 2027-01-13 | DH.1600A-EQP-37 SS+4d | 73d |
| DH.1600A-EQP-34 |  | Gallery 1602 - B160/Line-Ups // Condensate connections to Floor Drains | 10d | 2026-12-31 | 2027-01-14 | DH.1600A-EQP-24 SS+5d, DH.1600A-EQP-31 SS+5d | 71d |
| DH.1600A-EQP-35 |  | Gallery 1602 - B160/Line-Ups // Terminate Mod Panels | 1d | 2027-01-04 | 2027-01-04 | DH.1600A-EQP-29, DH.1600A-EQP-30, DH.1600A-EQP-33 | 80d |
| DH.1600A-EQP-40 |  | Gallery 1602 - B160/Line-Ups // Electrical Gear FOD Inspection Pre-Start Up | 2d | 2027-01-14 | 2027-01-15 | DH.1600A-EQP-35, DH.1600A-EQP-39, DH.1600A-EQP-36 | 73d |
| DH.1600A-EQP-38 |  | Gallery 1602 - B160/Line-Ups // Mechanical Gear FOD Inspection Pre-Start Up | 3d | 2027-01-15 | 2027-01-20 | DH.1600A-EQP-31, DH.1600A-EQP-24, DH.1600A-EQP-34, DH.1600A-EQP-23 | 71d |
|  | 3 | **C160** |  | 2026-12-16 | 2027-01-20 |  |  |
| DH.1600A-EQP-41 |  | Gallery 1602 - C160/Line-Ups // Set CRAH-DH1600- 05 | 1d | 2026-12-16 | 2026-12-16 | DH.1600A-EQP-23 SS | 24d |
| DH.1600A-EQP-43 |  | Gallery 1602 - C160/Line-Ups // Set CRAH-DH1600- 06 | 1d | 2026-12-16 | 2026-12-16 | DH.1600A-EQP-41 SS | 24d |
| DH.1600A-EQP-45 |  | Gallery 1602 - C160/Line-Ups // Set MOD-C160-01 | 1d | 2026-12-16 | 2026-12-16 | DH.1600A-EQP-43 FF | 73d |
| DH.1600A-EQP-46 |  | Gallery 1602 - C160/Line-Ups // Set MOD-C160-02 | 1d | 2026-12-16 | 2026-12-16 | DH.1600A-EQP-45 SS | 73d |
| DH.1600A-EQP-47 |  | Gallery 1602 - C160/Line-Ups // Set CDU-DH1600- 05 | 1d | 2026-12-17 | 2026-12-17 | DH.1600A-EQP-41 | 73d |
| DH.1600A-EQP-49 |  | Gallery 1602 - C160/Line-Ups // Pull Feeder from SWD to MOD | 1d | 2026-12-17 | 2026-12-17 | DH.1600A-EQP-46 | 89d |
| DH.1600A-EQP-50 |  | Gallery 1602 - C160/Line-Ups // Pull Cable Tray Feed from MOD to CRAHU's | 5d | 2026-12-17 | 2026-12-23 | DH.1600A-EQP-46 | 79d |
| DH.1600A-EQP-52 |  | Gallery 1602 - C160/Line-Ups // Mount Electrial Gear for Chiller Controls | 10d | 2026-12-17 | 2026-12-31 | DH.1600A-EQP-46 | 73d |
| DH.1600A-EQP-48 |  | Gallery 1602 - C160/Line-Ups // Set CDU-DH1600- 06 | 1d | 2026-12-18 | 2026-12-18 | DH.1600A-EQP-43, DH.1600A-EQP-47 | 73d |
| DH.1600A-EQP-44 |  | Gallery 1602 - C160/Line-Ups // Condensate connections to Floor Drains | 10d | 2026-12-21 | 2027-01-05 | DH.1600A-EQP-48, DH.1600A-EQP-47, DH.1600A-EQP-43 | 73d |
| DH.1600A-EQP-51 |  | Gallery 1602 - C160/Line-Ups // Mechanical Connections to CRAHU Units | 10d | 2026-12-23 | 2027-01-07 | DH.1600A-EQP-43 SS+5d | 71d |
| DH.1600A-EQP-57 |  | Gallery 1602 - C160/Line-Ups // Pull Feeder and Branch circuits to MIsc equipment and Chiller controls | 10d | 2026-12-23 | 2027-01-07 | DH.1600A-EQP-52 SS+4d | 73d |
| DH.1600A-EQP-53 |  | Gallery 1602 - C160/Line-Ups // Pull Cable Tray Feed from MOD to CRAHU's | 5d | 2026-12-24 | 2026-12-31 | DH.1600A-EQP-50 | 79d |
| DH.1600A-EQP-56 |  | Gallery 1602 - C160/Line-Ups // Terminate CRAHU Electrical Connections | 5d | 2026-12-29 | 2027-01-05 | DH.1600A-EQP-50, DH.1600A-EQP-53 SS+2d | 79d |
| DH.1600A-EQP-59 |  | Gallery 1602 - C160/Line-Ups // Teminate all Misc Equipment and Chiller Controls | 10d | 2026-12-30 | 2027-01-13 | DH.1600A-EQP-57 SS+4d | 73d |
| DH.1600A-EQP-54 |  | Gallery 1602 - C160/Line-Ups // Condensate connections to Floor Drains | 10d | 2026-12-31 | 2027-01-14 | DH.1600A-EQP-44 SS+5d, DH.1600A-EQP-51 SS+5d | 71d |
| DH.1600A-EQP-55 |  | Gallery 1602 - C160/Line-Ups // Terminate Mod Panels | 1d | 2027-01-04 | 2027-01-04 | DH.1600A-EQP-49, DH.1600A-EQP-50, DH.1600A-EQP-53 | 80d |
| DH.1600A-EQP-60 |  | Gallery 1602 - C160/Line-Ups // Electrical Gear FOD Inspection Pre-Start Up | 2d | 2027-01-14 | 2027-01-15 | DH.1600A-EQP-55, DH.1600A-EQP-59, DH.1600A-EQP-56 | 73d |
| DH.1600A-EQP-58 |  | Gallery 1602 - C160/Line-Ups // Mechanical Gear FOD Inspection Pre-Start Up | 3d | 2027-01-15 | 2027-01-20 | DH.1600A-EQP-51, DH.1600A-EQP-44, DH.1600A-EQP-54, DH.1600A-EQP-43 | 71d |
|  | 4 | **D160** |  | 2026-12-17 | 2027-01-21 |  |  |
| DH.1600A-EQP-61 |  | Gallery 1602 - D160/Line-Ups // Set CRAH-DH1600- 07 | 1d | 2026-12-17 | 2026-12-17 | DH.1600A-EQP-43 | 24d |
| DH.1600A-EQP-63 |  | Gallery 1602 - D160/Line-Ups // Set CRAH-DH1600- 08 | 1d | 2026-12-17 | 2026-12-17 | DH.1600A-EQP-61 SS | 24d |
| DH.1600A-EQP-65 |  | Gallery 1602 - D160/Line-Ups // Set MOD-D160-01 | 1d | 2026-12-17 | 2026-12-17 | DH.1600A-EQP-63 FF | 72d |
| DH.1600A-EQP-66 |  | Gallery 1602 - D160/Line-Ups // Set MOD-D160-02 | 1d | 2026-12-17 | 2026-12-17 | DH.1600A-EQP-65 SS | 72d |
| DH.1600A-EQP-67 |  | Gallery 1602 - D160/Line-Ups // Set CDU-DH1600- 07 | 1d | 2026-12-18 | 2026-12-18 | DH.1600A-EQP-61 | 72d |
| DH.1600A-EQP-69 |  | Gallery 1602 - D160/Line-Ups // Pull Feeder from SWD to MOD | 1d | 2026-12-18 | 2026-12-18 | DH.1600A-EQP-66 | 88d |
| DH.1600A-EQP-70 |  | Gallery 1602 - D160/Line-Ups // Pull Cable Tray Feed from MOD to CRAHU's | 5d | 2026-12-18 | 2026-12-24 | DH.1600A-EQP-66 | 78d |
| DH.1600A-EQP-72 |  | Gallery 1602 - D160/Line-Ups // Mount Electrial Gear for Chiller Controls | 10d | 2026-12-18 | 2027-01-04 | DH.1600A-EQP-66 | 72d |
| DH.1600A-EQP-68 |  | Gallery 1602 - D160/Line-Ups // Set CDU-DH1600- 08 | 1d | 2026-12-21 | 2026-12-21 | DH.1600A-EQP-63, DH.1600A-EQP-67 | 72d |
| DH.1600A-EQP-64 |  | Gallery 1602 - D160/Line-Ups // Condensate connections to Floor Drains | 10d | 2026-12-22 | 2027-01-06 | DH.1600A-EQP-68, DH.1600A-EQP-67, DH.1600A-EQP-63 | 72d |
| DH.1600A-EQP-71 |  | Gallery 1602 - D160/Line-Ups // Mechanical Connections to CRAHU Units | 10d | 2026-12-24 | 2027-01-08 | DH.1600A-EQP-63 SS+5d | 70d |
| DH.1600A-EQP-77 |  | Gallery 1602 - D160/Line-Ups // Pull Feeder and Branch circuits to MIsc equipment and Chiller controls | 10d | 2026-12-24 | 2027-01-08 | DH.1600A-EQP-72 SS+4d | 72d |
| DH.1600A-EQP-73 |  | Gallery 1602 - D160/Line-Ups // Pull Cable Tray Feed from MOD to CRAHU's | 5d | 2026-12-28 | 2027-01-04 | DH.1600A-EQP-70 | 78d |
| DH.1600A-EQP-76 |  | Gallery 1602 - D160/Line-Ups // Terminate CRAHU Electrical Connections | 5d | 2026-12-30 | 2027-01-06 | DH.1600A-EQP-70, DH.1600A-EQP-73 SS+2d | 78d |
| DH.1600A-EQP-79 |  | Gallery 1602 - D160/Line-Ups // Teminate all Misc Equipment and Chiller Controls | 10d | 2026-12-31 | 2027-01-14 | DH.1600A-EQP-77 SS+4d | 72d |
| DH.1600A-EQP-74 |  | Gallery 1602 - D160/Line-Ups // Condensate connections to Floor Drains | 10d | 2027-01-04 | 2027-01-15 | DH.1600A-EQP-64 SS+5d, DH.1600A-EQP-71 SS+5d | 70d |
| DH.1600A-EQP-75 |  | Gallery 1602 - D160/Line-Ups // Terminate Mod Panels | 1d | 2027-01-05 | 2027-01-05 | DH.1600A-EQP-69, DH.1600A-EQP-70, DH.1600A-EQP-73 | 79d |
| DH.1600A-EQP-80 |  | Gallery 1602 - D160/Line-Ups // Electrical Gear FOD Inspection Pre-Start Up | 2d | 2027-01-15 | 2027-01-19 | DH.1600A-EQP-75, DH.1600A-EQP-79, DH.1600A-EQP-76 | 72d |
| DH.1600A-EQP-78 |  | Gallery 1602 - D160/Line-Ups // Mechanical Gear FOD Inspection Pre-Start Up | 3d | 2027-01-19 | 2027-01-21 | DH.1600A-EQP-71, DH.1600A-EQP-64, DH.1600A-EQP-74, DH.1600A-EQP-63 | 70d |
|  | 5 | **E160** |  | 2026-12-17 | 2027-01-21 |  |  |
| DH.1600A-EQP-81 |  | Gallery 1602 - E160/Line-Ups // Set CRAH-DH1600- 09 | 1d | 2026-12-17 | 2026-12-17 | DH.1600A-EQP-63 SS | 24d |
| DH.1600A-EQP-83 |  | Gallery 1602 - E160/Line-Ups // Set CRAH-DH1600- 10 | 1d | 2026-12-17 | 2026-12-17 | DH.1600A-EQP-81 SS | 24d |
| DH.1600A-EQP-85 |  | Gallery 1602 - E160/Line-Ups // Set MOD-E160-01 | 1d | 2026-12-17 | 2026-12-17 | DH.1600A-EQP-83 FF | 72d |
| DH.1600A-EQP-86 |  | Gallery 1602 - E160/Line-Ups // Set MOD-E160-02 | 1d | 2026-12-17 | 2026-12-17 | DH.1600A-EQP-85 SS | 72d |
| DH.1600A-EQP-87 |  | Gallery 1602 - E160/Line-Ups // Set CDU-DH1600- 09 | 1d | 2026-12-18 | 2026-12-18 | DH.1600A-EQP-81 | 72d |
| DH.1600A-EQP-89 |  | Gallery 1602 - E160/Line-Ups // Pull Feeder from SWD to MOD | 1d | 2026-12-18 | 2026-12-18 | DH.1600A-EQP-86 | 88d |
| DH.1600A-EQP-90 |  | Gallery 1602 - E160/Line-Ups // Pull Cable Tray Feed from MOD to CRAHU's | 5d | 2026-12-18 | 2026-12-24 | DH.1600A-EQP-86 | 78d |
| DH.1600A-EQP-92 |  | Gallery 1602 - E160/Line-Ups // Mount Electrial Gear for Chiller Controls | 10d | 2026-12-18 | 2027-01-04 | DH.1600A-EQP-86 | 72d |
| DH.1600A-EQP-88 |  | Gallery 1602 - E160/Line-Ups // Set CDU-DH1600- 10 | 1d | 2026-12-21 | 2026-12-21 | DH.1600A-EQP-83, DH.1600A-EQP-87 | 72d |
| DH.1600A-EQP-84 |  | Gallery 1602 - E160/Line-Ups // Condensate connections to Floor Drains | 10d | 2026-12-22 | 2027-01-06 | DH.1600A-EQP-88, DH.1600A-EQP-87, DH.1600A-EQP-83 | 72d |
| DH.1600A-EQP-91 |  | Gallery 1602 - E160/Line-Ups // Mechanical Connections to CRAHU Units | 10d | 2026-12-24 | 2027-01-08 | DH.1600A-EQP-83 SS+5d | 70d |
| DH.1600A-EQP-97 |  | Gallery 1602 - E160/Line-Ups // Pull Feeder and Branch circuits to MIsc equipment and Chiller controls | 10d | 2026-12-24 | 2027-01-08 | DH.1600A-EQP-92 SS+4d | 72d |
| DH.1600A-EQP-93 |  | Gallery 1602 - E160/Line-Ups // Pull Cable Tray Feed from MOD to CRAHU's | 5d | 2026-12-28 | 2027-01-04 | DH.1600A-EQP-90 | 78d |
| DH.1600A-EQP-96 |  | Gallery 1602 - E160/Line-Ups // Terminate CRAHU Electrical Connections | 5d | 2026-12-30 | 2027-01-06 | DH.1600A-EQP-90, DH.1600A-EQP-93 SS+2d | 78d |
| DH.1600A-EQP-99 |  | Gallery 1602 - E160/Line-Ups // Teminate all Misc Equipment and Chiller Controls | 10d | 2026-12-31 | 2027-01-14 | DH.1600A-EQP-97 SS+4d | 72d |
| DH.1600A-EQP-94 |  | Gallery 1602 - E160/Line-Ups // Condensate connections to Floor Drains | 10d | 2027-01-04 | 2027-01-15 | DH.1600A-EQP-84 SS+5d, DH.1600A-EQP-91 SS+5d | 70d |

| ID | WBS | Task | Duration | Start | Finish | Predecessors | Total float |
| --- | --- | --- | --- | --- | --- | --- | --- |
| DH.1600A-EQP-95 |  | Gallery 1602 - E160/Line-Ups // Terminate Mod Panels | 1d | 2027-01-05 | 2027-01-05 | DH.1600A-EQP-89, DH.1600A-EQP-90, DH.1600A-EQP-93 | 79d |
| DH.1600A-EQP-100 |  | Gallery 1602 - E160/Line-Ups // Electrical Gear FOD Inspection Pre-Start Up | 2d | 2027-01-15 | 2027-01-19 | DH.1600A-EQP-95, DH.1600A-EQP-99, DH.1600A-EQP-96 | 72d |
| DH.1600A-EQP-98 |  | Gallery 1602 - E160/Line-Ups // Mechanical Gear FOD Inspection Pre-Start Up | 3d | 2027-01-19 | 2027-01-21 | DH.1600A-EQP-91, DH.1600A-EQP-84, DH.1600A-EQP-94, DH.1600A-EQP-83 | 70d |
|  | 6 | **F160** |  | 2026-12-17 | 2027-01-21 |  |  |
| DH.1600A-EQP-101 |  | Gallery 1602 - F160/Line-Ups // Set CRAH-DH1600- 11 | 1d | 2026-12-17 | 2026-12-17 | DH.1600A-EQP-83 SS | 24d |
| DH.1600A-EQP-103 |  | Gallery 1602 - F160/Line-Ups // Set CRAH-DH1600- 12 | 1d | 2026-12-17 | 2026-12-17 | DH.1600A-EQP-101 SS | 24d |
| DH.1600A-EQP-105 |  | Gallery 1602 - F160/Line-Ups // Set MOD-F160-01 | 1d | 2026-12-17 | 2026-12-17 | DH.1600A-EQP-103 FF | 72d |
| DH.1600A-EQP-106 |  | Gallery 1602 - F160/Line-Ups // Set MOD-F160-02 | 1d | 2026-12-17 | 2026-12-17 | DH.1600A-EQP-105 SS | 72d |
| DH.1600A-EQP-107 |  | Gallery 1602 - F160/Line-Ups // Set CDU-DH1600- 11 | 1d | 2026-12-18 | 2026-12-18 | DH.1600A-EQP-101 | 72d |
| DH.1600A-EQP-109 |  | Gallery 1602 - F160/Line-Ups // Pull Feeder from SWD to MOD | 1d | 2026-12-18 | 2026-12-18 | DH.1600A-EQP-106 | 88d |
| DH.1600A-EQP-110 |  | Gallery 1602 - F160/Line-Ups // Pull Cable Tray Feed from MOD to CRAHU's | 5d | 2026-12-18 | 2026-12-24 | DH.1600A-EQP-106 | 78d |
| DH.1600A-EQP-112 |  | Gallery 1602 - F160/Line-Ups // Mount Electrial Gear for Chiller Controls | 10d | 2026-12-18 | 2027-01-04 | DH.1600A-EQP-106 | 72d |
| DH.1600A-EQP-108 |  | Gallery 1602 - F160/Line-Ups // Set CDU-DH1600- 12 | 1d | 2026-12-21 | 2026-12-21 | DH.1600A-EQP-103, DH.1600A-EQP-107 | 72d |
| DH.1600A-EQP-104 |  | Gallery 1602 - F160/Line-Ups // Condensate connections to Floor Drains | 10d | 2026-12-22 | 2027-01-06 | DH.1600A-EQP-108, DH.1600A-EQP-107, DH.1600A-EQP-103 | 72d |
| DH.1600A-EQP-111 |  | Gallery 1602 - F160/Line-Ups // Mechanical Connections to CRAHU Units | 10d | 2026-12-24 | 2027-01-08 | DH.1600A-EQP-103 SS+5d | 70d |
| DH.1600A-EQP-117 |  | Gallery 1602 - F160/Line-Ups // Pull Feeder and Branch circuits to MIsc equipment and Chiller controls | 10d | 2026-12-24 | 2027-01-08 | DH.1600A-EQP-112 SS+4d | 72d |
| DH.1600A-EQP-113 |  | Gallery 1602 - F160/Line-Ups // Pull Cable Tray Feed from MOD to CRAHU's | 5d | 2026-12-28 | 2027-01-04 | DH.1600A-EQP-110 | 78d |
| DH.1600A-EQP-116 |  | Gallery 1602 - F160/Line-Ups // Terminate CRAHU Electrical Connections | 5d | 2026-12-30 | 2027-01-06 | DH.1600A-EQP-110, DH.1600A-EQP-113 SS+2d | 78d |
| DH.1600A-EQP-119 |  | Gallery 1602 - F160/Line-Ups // Teminate all Misc Equipment and Chiller Controls | 10d | 2026-12-31 | 2027-01-14 | DH.1600A-EQP-117 SS+4d | 72d |
| DH.1600A-EQP-114 |  | Gallery 1602 - F160/Line-Ups // Condensate connections to Floor Drains | 10d | 2027-01-04 | 2027-01-15 | DH.1600A-EQP-104 SS+5d, DH.1600A-EQP-111 SS+5d | 70d |
| DH.1600A-EQP-115 |  | Gallery 1602 - F160/Line-Ups // Terminate Mod Panels | 1d | 2027-01-05 | 2027-01-05 | DH.1600A-EQP-109, DH.1600A-EQP-110, DH.1600A-EQP-113 | 79d |
| DH.1600A-EQP-120 |  | Gallery 1602 - F160/Line-Ups // Electrical Gear FOD Inspection Pre-Start Up | 2d | 2027-01-15 | 2027-01-19 | DH.1600A-EQP-115, DH.1600A-EQP-119, DH.1600A-EQP-116 | 72d |
| DH.1600A-EQP-118 |  | Gallery 1602 - F160/Line-Ups // Mechanical Gear FOD Inspection Pre-Start Up | 3d | 2027-01-19 | 2027-01-21 | DH.1600A-EQP-111, DH.1600A-EQP-104, DH.1600A-EQP-114, DH.1600A-EQP-103 | 70d |
|  | 7 | **G160** |  | 2026-12-18 | 2027-01-22 |  |  |
| DH.1600A-EQP-121 |  | Gallery 1602 - G160/Line-Ups // Set CRAH-DH1600- 13 | 1d | 2026-12-18 | 2026-12-18 | DH.1600A-EQP-103 | 24d |
| DH.1600A-EQP-123 |  | Gallery 1602 - G160/Line-Ups // Set CRAH-DH1600- 14 | 1d | 2026-12-18 | 2026-12-18 | DH.1600A-EQP-121 SS | 24d |
| DH.1600A-EQP-125 |  | Gallery 1602 - G160/Line-Ups // Set MOD-G160-01 | 1d | 2026-12-18 | 2026-12-18 | DH.1600A-EQP-123 FF | 71d |
| DH.1600A-EQP-126 |  | Gallery 1602 - G160/Line-Ups // Set MOD-G160-02 | 1d | 2026-12-18 | 2026-12-18 | DH.1600A-EQP-125 SS | 71d |
| DH.1600A-EQP-127 |  | Gallery 1602 - G160/Line-Ups // Set CDU-DH1600- 13 | 1d | 2026-12-21 | 2026-12-21 | DH.1600A-EQP-121 | 71d |
| DH.1600A-EQP-129 |  | Gallery 1602 - G160/Line-Ups // Pull Feeder from SWD to MOD | 1d | 2026-12-21 | 2026-12-21 | DH.1600A-EQP-126 | 87d |
| DH.1600A-EQP-130 |  | Gallery 1602 - G160/Line-Ups // Pull Cable Tray Feed from MOD to CRAHU's | 5d | 2026-12-21 | 2026-12-28 | DH.1600A-EQP-126 | 77d |
| DH.1600A-EQP-132 |  | Gallery 1602 - G160/Line-Ups // Mount Electrial Gear for Chiller Controls | 10d | 2026-12-21 | 2027-01-05 | DH.1600A-EQP-126 | 71d |
| DH.1600A-EQP-128 |  | Gallery 1602 - G160/Line-Ups // Set CDU-DH1600- 14 | 1d | 2026-12-22 | 2026-12-22 | DH.1600A-EQP-123, DH.1600A-EQP-127 | 71d |
| DH.1600A-EQP-124 |  | Gallery 1602 - G160/Line-Ups // Condensate connections to Floor Drains | 10d | 2026-12-23 | 2027-01-07 | DH.1600A-EQP-128, DH.1600A-EQP-127, DH.1600A-EQP-123 | 71d |
| DH.1600A-EQP-131 |  | Gallery 1602 - G160/Line-Ups // Mechanical Connections to CRAHU Units | 10d | 2026-12-28 | 2027-01-11 | DH.1600A-EQP-123 SS+5d | 69d |
| DH.1600A-EQP-137 |  | Gallery 1602 - G160/Line-Ups // Pull Feeder and Branch circuits to MIsc equipment and Chiller controls | 10d | 2026-12-28 | 2027-01-11 | DH.1600A-EQP-132 SS+4d | 71d |
| DH.1600A-EQP-133 |  | Gallery 1602 - G160/Line-Ups // Pull Cable Tray Feed from MOD to CRAHU's | 5d | 2026-12-29 | 2027-01-05 | DH.1600A-EQP-130 | 77d |
| DH.1600A-EQP-136 |  | Gallery 1602 - G160/Line-Ups // Terminate CRAHU Electrical Connections | 5d | 2026-12-31 | 2027-01-07 | DH.1600A-EQP-130, DH.1600A-EQP-133 SS+2d | 77d |
| DH.1600A-EQP-139 |  | Gallery 1602 - G160/Line-Ups // Teminate all Misc Equipment and Chiller Controls | 10d | 2027-01-04 | 2027-01-15 | DH.1600A-EQP-137 SS+4d | 71d |
| DH.1600A-EQP-134 |  | Gallery 1602 - G160/Line-Ups // Condensate connections to Floor Drains | 10d | 2027-01-05 | 2027-01-19 | DH.1600A-EQP-124 SS+5d, DH.1600A-EQP-131 SS+5d | 69d |
| DH.1600A-EQP-135 |  | Gallery 1602 - G160/Line-Ups // Terminate Mod Panels | 1d | 2027-01-06 | 2027-01-06 | DH.1600A-EQP-129, DH.1600A-EQP-130, DH.1600A-EQP-133 | 78d |
| DH.1600A-EQP-140 |  | Gallery 1602 - G160/Line-Ups // Electrical Gear FOD Inspection Pre-Start Up | 2d | 2027-01-19 | 2027-01-20 | DH.1600A-EQP-135, DH.1600A-EQP-139, DH.1600A-EQP-136 | 71d |
| DH.1600A-EQP-138 |  | Gallery 1602 - G160/Line-Ups // Mechanical Gear FOD Inspection Pre-Start Up | 3d | 2027-01-20 | 2027-01-22 | DH.1600A-EQP-131, DH.1600A-EQP-124, DH.1600A-EQP-134, DH.1600A-EQP-123 | 69d |
|  | 8 | **H160** |  | 2026-12-18 | 2027-01-22 |  |  |
| DH.1600A-EQP-141 |  | Gallery 1602 - H160/Line-Ups // Set CRAH-DH1600- 15 | 1d | 2026-12-18 | 2026-12-18 | DH.1600A-EQP-123 SS | 24d |
| DH.1600A-EQP-143 |  | Gallery 1602 - H160/Line-Ups // Set CRAH-DH1600- 16 | 1d | 2026-12-18 | 2026-12-18 | DH.1600A-EQP-141 SS | 24d |
| DH.1600A-EQP-145 |  | Gallery 1602 - H160/Line-Ups // Set MOD-H160-01 | 1d | 2026-12-18 | 2026-12-18 | DH.1600A-EQP-143 FF | 71d |
| DH.1600A-EQP-146 |  | Gallery 1602 - H160/Line-Ups // Set MOD-H160-02 | 1d | 2026-12-18 | 2026-12-18 | DH.1600A-EQP-145 SS | 71d |
| DH.1600A-EQP-147 |  | Gallery 1602 - H160/Line-Ups // Set CDU-DH1600- 15 | 1d | 2026-12-21 | 2026-12-21 | DH.1600A-EQP-141 | 71d |
| DH.1600A-EQP-149 |  | Gallery 1602 - H160/Line-Ups // Pull Feeder from SWD to MOD | 1d | 2026-12-21 | 2026-12-21 | DH.1600A-EQP-146 | 87d |
| DH.1600A-EQP-150 |  | Gallery 1602 - H160/Line-Ups // Pull Cable Tray Feed from MOD to CRAHU's | 5d | 2026-12-21 | 2026-12-28 | DH.1600A-EQP-146 | 77d |
| DH.1600A-EQP-152 |  | Gallery 1602 - H160/Line-Ups // Mount Electrial Gear for Chiller Controls | 10d | 2026-12-21 | 2027-01-05 | DH.1600A-EQP-146 | 71d |
| DH.1600A-EQP-148 |  | Gallery 1602 - H160/Line-Ups // Set CDU-DH1600- 16 | 1d | 2026-12-22 | 2026-12-22 | DH.1600A-EQP-143, DH.1600A-EQP-147 | 71d |
| DH.1600A-EQP-144 |  | Gallery 1602 - H160/Line-Ups // Condensate connections to Floor Drains | 10d | 2026-12-23 | 2027-01-07 | DH.1600A-EQP-148, DH.1600A-EQP-147, DH.1600A-EQP-143 | 71d |
| DH.1600A-EQP-151 |  | Gallery 1602 - H160/Line-Ups // Mechanical Connections to CRAHU Units | 10d | 2026-12-28 | 2027-01-11 | DH.1600A-EQP-143 SS+5d | 69d |
| DH.1600A-EQP-157 |  | Gallery 1602 - H160/Line-Ups // Pull Feeder and Branch circuits to MIsc equipment and Chiller controls | 10d | 2026-12-28 | 2027-01-11 | DH.1600A-EQP-152 SS+4d | 71d |
| DH.1600A-EQP-153 |  | Gallery 1602 - H160/Line-Ups // Pull Cable Tray Feed from MOD to CRAHU's | 5d | 2026-12-29 | 2027-01-05 | DH.1600A-EQP-150 | 77d |
| DH.1600A-EQP-156 |  | Gallery 1602 - H160/Line-Ups // Terminate CRAHU Electrical Connections | 5d | 2026-12-31 | 2027-01-07 | DH.1600A-EQP-150, DH.1600A-EQP-153 SS+2d | 77d |
| DH.1600A-EQP-159 |  | Gallery 1602 - H160/Line-Ups // Teminate all Misc Equipment and Chiller Controls | 10d | 2027-01-04 | 2027-01-15 | DH.1600A-EQP-157 SS+4d | 71d |
| DH.1600A-EQP-154 |  | Gallery 1602 - H160/Line-Ups // Condensate connections to Floor Drains | 10d | 2027-01-05 | 2027-01-19 | DH.1600A-EQP-144 SS+5d, DH.1600A-EQP-151 SS+5d | 69d |
| DH.1600A-EQP-155 |  | Gallery 1602 - H160/Line-Ups // Terminate Mod Panels | 1d | 2027-01-06 | 2027-01-06 | DH.1600A-EQP-149, DH.1600A-EQP-150, DH.1600A-EQP-153 | 78d |
| DH.1600A-EQP-160 |  | Gallery 1602 - H160/Line-Ups // Electrical Gear FOD Inspection Pre-Start Up | 2d | 2027-01-19 | 2027-01-20 | DH.1600A-EQP-155, DH.1600A-EQP-159, DH.1600A-EQP-156 | 71d |
| DH.1600A-EQP-158 |  | Gallery 1602 - H160/Line-Ups // Mechanical Gear FOD Inspection Pre-Start Up | 3d | 2027-01-20 | 2027-01-22 | DH.1600A-EQP-151, DH.1600A-EQP-144, DH.1600A-EQP-154, DH.1600A-EQP-143 | 69d |
|  | 9 | **J160** |  | 2026-12-18 | 2027-01-22 |  |  |
| DH.1600A-EQP-161 |  | Gallery 1602 - J160/Line-Ups // Set CRAH-DH1600- 17 | 1d | 2026-12-18 | 2026-12-18 | DH.1600A-EQP-143 SS | 24d |
| DH.1600A-EQP-163 |  | Gallery 1602 - J160/Line-Ups // Set CRAH-DH1600- 18 | 1d | 2026-12-18 | 2026-12-18 | DH.1600A-EQP-161 SS | 24d |
| DH.1600A-EQP-165 |  | Gallery 1602 - J160/Line-Ups // Set MOD-J160-01 | 1d | 2026-12-18 | 2026-12-18 | DH.1600A-EQP-163 FF | 71d |
| DH.1600A-EQP-166 |  | Gallery 1602 - J160/Line-Ups // Set MOD-J160-02 | 1d | 2026-12-18 | 2026-12-18 | DH.1600A-EQP-165 SS | 71d |
| DH.1600A-EQP-167 |  | Gallery 1602 - J160/Line-Ups // Set CDU-DH1600- 17 | 1d | 2026-12-21 | 2026-12-21 | DH.1600A-EQP-161 | 71d |
| DH.1600A-EQP-169 |  | Gallery 1602 - J160/Line-Ups // Pull Feeder from SWD to MOD | 1d | 2026-12-21 | 2026-12-21 | DH.1600A-EQP-166 | 87d |

| ID | WBS | Task | Duration | Start | Finish | Predecessors | Total float |
| --- | --- | --- | --- | --- | --- | --- | --- |
| DH.1600A-EQP-170 |  | Gallery 1602 - J160/Line-Ups // Pull Cable Tray Feed from MOD to CRAHU's | 5d | 2026-12-21 | 2026-12-28 | DH.1600A-EQP-166 | 77d |
| DH.1600A-EQP-172 |  | Gallery 1602 - J160/Line-Ups // Mount Electrial Gear for Chiller Controls | 10d | 2026-12-21 | 2027-01-05 | DH.1600A-EQP-166 | 71d |
| DH.1600A-EQP-168 |  | Gallery 1602 - J160/Line-Ups // Set CDU-DH1600- 18 | 1d | 2026-12-22 | 2026-12-22 | DH.1600A-EQP-163, DH.1600A-EQP-167 | 71d |
| DH.1600A-EQP-164 |  | Gallery 1602 - J160/Line-Ups // Condensate connections to Floor Drains | 10d | 2026-12-23 | 2027-01-07 | DH.1600A-EQP-168, DH.1600A-EQP-167, DH.1600A-EQP-163 | 71d |
| DH.1600A-EQP-171 |  | Gallery 1602 - J160/Line-Ups // Mechanical Connections to CRAHU Units | 10d | 2026-12-28 | 2027-01-11 | DH.1600A-EQP-163 SS+5d | 69d |
| DH.1600A-EQP-177 |  | Gallery 1602 - J160/Line-Ups // Pull Feeder and Branch circuits to MIsc equipment and Chiller controls | 10d | 2026-12-28 | 2027-01-11 | DH.1600A-EQP-172 SS+4d | 71d |
| DH.1600A-EQP-173 |  | Gallery 1602 - J160/Line-Ups // Pull Cable Tray Feed from MOD to CRAHU's | 5d | 2026-12-29 | 2027-01-05 | DH.1600A-EQP-170 | 77d |
| DH.1600A-EQP-176 |  | Gallery 1602 - J160/Line-Ups // Terminate CRAHU Electrical Connections | 5d | 2026-12-31 | 2027-01-07 | DH.1600A-EQP-170, DH.1600A-EQP-173 SS+2d | 77d |
| DH.1600A-EQP-179 |  | Gallery 1602 - J160/Line-Ups // Teminate all Misc Equipment and Chiller Controls | 10d | 2027-01-04 | 2027-01-15 | DH.1600A-EQP-177 SS+4d | 71d |
| DH.1600A-EQP-174 |  | Gallery 1602 - J160/Line-Ups // Condensate connections to Floor Drains | 10d | 2027-01-05 | 2027-01-19 | DH.1600A-EQP-164 SS+5d, DH.1600A-EQP-171 SS+5d | 69d |
| DH.1600A-EQP-175 |  | Gallery 1602 - J160/Line-Ups // Terminate Mod Panels | 1d | 2027-01-06 | 2027-01-06 | DH.1600A-EQP-169, DH.1600A-EQP-170, DH.1600A-EQP-173 | 78d |
| DH.1600A-EQP-180 |  | Gallery 1602 - J160/Line-Ups // Electrical Gear FOD Inspection Pre-Start Up | 2d | 2027-01-19 | 2027-01-20 | DH.1600A-EQP-175, DH.1600A-EQP-179, DH.1600A-EQP-176 | 71d |
| DH.1600A-EQP-178 |  | Gallery 1602 - J160/Line-Ups // Mechanical Gear FOD Inspection Pre-Start Up | 3d | 2027-01-20 | 2027-01-22 | DH.1600A-EQP-171, DH.1600A-EQP-164, DH.1600A-EQP-174, DH.1600A-EQP-163 | 69d |
|  | 10 | **K160** |  | 2026-12-21 | 2027-01-25 |  |  |
| DH.1600A-EQP-181 |  | Gallery 1602 - K160/Line-Ups // Set CRAH-DH1600- 19 | 1d | 2026-12-21 | 2026-12-21 | DH.1600A-EQP-163 | 24d |
| DH.1600A-EQP-183 |  | Gallery 1602 - K160/Line-Ups // Set CRAH-DH1600- 20 | 1d | 2026-12-21 | 2026-12-21 | DH.1600A-EQP-181 SS | 24d |
| DH.1600A-EQP-185 |  | Gallery 1602 - K160/Line-Ups // Set MOD-K160-01 | 1d | 2026-12-21 | 2026-12-21 | DH.1600A-EQP-183 FF | 70d |
| DH.1600A-EQP-186 |  | Gallery 1602 - K160/Line-Ups // Set MOD-K160-02 | 1d | 2026-12-21 | 2026-12-21 | DH.1600A-EQP-185 SS | 70d |
| DH.1600A-EQP-187 |  | Gallery 1602 - K160/Line-Ups // Set CDU-DH1600- 19 | 1d | 2026-12-22 | 2026-12-22 | DH.1600A-EQP-181 | 70d |
| DH.1600A-EQP-189 |  | Gallery 1602 - K160/Line-Ups // Pull Feeder from SWD to MOD | 1d | 2026-12-22 | 2026-12-22 | DH.1600A-EQP-186 | 86d |
| DH.1600A-EQP-190 |  | Gallery 1602 - K160/Line-Ups // Pull Cable Tray Feed from MOD to CRAHU's | 5d | 2026-12-22 | 2026-12-29 | DH.1600A-EQP-186 | 76d |
| DH.1600A-EQP-192 |  | Gallery 1602 - K160/Line-Ups // Mount Electrial Gear for Chiller Controls | 10d | 2026-12-22 | 2027-01-06 | DH.1600A-EQP-186 | 70d |
| DH.1600A-EQP-188 |  | Gallery 1602 - K160/Line-Ups // Set CDU-DH1600- 20 | 1d | 2026-12-23 | 2026-12-23 | DH.1600A-EQP-183, DH.1600A-EQP-187 | 70d |
| DH.1600A-EQP-184 |  | Gallery 1602 - K160/Line-Ups // Condensate connections to Floor Drains | 10d | 2026-12-24 | 2027-01-08 | DH.1600A-EQP-188, DH.1600A-EQP-187, DH.1600A-EQP-183 | 70d |
| DH.1600A-EQP-191 |  | Gallery 1602 - K160/Line-Ups // Mechanical Connections to CRAHU Units | 10d | 2026-12-29 | 2027-01-12 | DH.1600A-EQP-183 SS+5d | 68d |
| DH.1600A-EQP-197 |  | Gallery 1602 - K160/Line-Ups // Pull Feeder and Branch circuits to MIsc equipment and Chiller controls | 10d | 2026-12-29 | 2027-01-12 | DH.1600A-EQP-192 SS+4d | 70d |
| DH.1600A-EQP-193 |  | Gallery 1602 - K160/Line-Ups // Pull Cable Tray Feed from MOD to CRAHU's | 5d | 2026-12-30 | 2027-01-06 | DH.1600A-EQP-190 | 76d |
| DH.1600A-EQP-196 |  | Gallery 1602 - K160/Line-Ups // Terminate CRAHU Electrical Connections | 5d | 2027-01-04 | 2027-01-08 | DH.1600A-EQP-190, DH.1600A-EQP-193 SS+2d | 76d |
| DH.1600A-EQP-199 |  | Gallery 1602 - K160/Line-Ups // Teminate all Misc Equipment and Chiller Controls | 10d | 2027-01-05 | 2027-01-19 | DH.1600A-EQP-197 SS+4d | 70d |
| DH.1600A-EQP-194 |  | Gallery 1602 - K160/Line-Ups // Condensate connections to Floor Drains | 10d | 2027-01-06 | 2027-01-20 | DH.1600A-EQP-184 SS+5d, DH.1600A-EQP-191 SS+5d | 68d |
| DH.1600A-EQP-195 |  | Gallery 1602 - K160/Line-Ups // Terminate Mod Panels | 1d | 2027-01-07 | 2027-01-07 | DH.1600A-EQP-189, DH.1600A-EQP-190, DH.1600A-EQP-193 | 77d |
| DH.1600A-EQP-200 |  | Gallery 1602 - K160/Line-Ups // Electrical Gear FOD Inspection Pre-Start Up | 2d | 2027-01-20 | 2027-01-21 | DH.1600A-EQP-195, DH.1600A-EQP-199, DH.1600A-EQP-196 | 70d |
| DH.1600A-EQP-198 |  | Gallery 1602 - K160/Line-Ups // Mechanical Gear FOD Inspection Pre-Start Up | 3d | 2027-01-21 | 2027-01-25 | DH.1600A-EQP-191, DH.1600A-EQP-184, DH.1600A-EQP-194, DH.1600A-EQP-183 | 68d |
|  | 11 | **R160** |  | 2026-12-21 | 2027-02-18 |  |  |
| DH.1600A-EQP-201 |  | Gallery 1602 - R160/Line-Ups // Set CRAH-DH1600- 21 | 1d | 2026-12-21 | 2026-12-21 | DH.1600A-EQP-183 SS | 24d |
| DH.1600A-EQP-203 |  | Gallery 1602 - R160/Line-Ups // Set CRAH-DH1600- 22 | 1d | 2026-12-21 | 2026-12-21 | DH.1600A-EQP-201 SS | 24d |
| DH.1600A-EQP-205 |  | Gallery 1602 - R160/Line-Ups // Set MOD-R160-01 | 1d | 2026-12-21 | 2026-12-21 | DH.1600A-EQP-203 FF | 24d |
| DH.1600A-EQP-206 |  | Gallery 1602 - R160/Line-Ups // Set MOD-R160-02 | 1d | 2026-12-21 | 2026-12-21 | DH.1600A-EQP-205 SS | 24d |
| DH.1600A-EQP-207 |  | Gallery 1602 - R160/Line-Ups // Set CDU-DH1600- 21 | 1d | 2026-12-22 | 2026-12-22 | DH.1600A-EQP-201 | 28d |
| DH.1600A-EQP-210 |  | Gallery 1602 - R160/Line-Ups // Pull Cable Tray Feed from MOD to CRAHU's | 5d | 2026-12-22 | 2026-12-29 | DH.1600A-EQP-206 | 30d |
| DH.1600A-EQP-212 |  | Gallery 1602 - R160/Line-Ups // Mount Electrial Gear for Chiller Controls | 10d | 2026-12-22 | 2027-01-06 | DH.1600A-EQP-206 | 24d |
| DH.1600A-EQP-208 |  | Gallery 1602 - R160/Line-Ups // Set CDU-DH1600- 22 | 1d | 2026-12-23 | 2026-12-23 | DH.1600A-EQP-203, DH.1600A-EQP-207 | 28d |
| DH.1600A-EQP-204 |  | Gallery 1602 - R160/Line-Ups // Condensate connections to Floor Drains | 10d | 2026-12-24 | 2027-01-08 | DH.1600A-EQP-208, DH.1600A-EQP-207, DH.1600A-EQP-203 | 28d |
| DH.1600A-EQP-221 |  | Gallery 1602 - R160/Line-Ups // Set SWD-R160 | 1d | 2026-12-24 | 2026-12-24 | DH.1600A-EQP-208 | 39d |
| DH.1600A-EQP-222 |  | Gallery 1602 - R160/Line-Ups // Set SWD-TIE-R160 | 1d | 2026-12-28 | 2026-12-28 | DH.1600A-EQP-221 | 39d |
| DH.1600A-EQP-209 |  | Gallery 1602 - R160/Line-Ups // Pull Feeder from SWD to MOD | 1d | 2026-12-29 | 2026-12-29 | DH.1600A-EQP-206, DH.1600A-EQP-222 | 39d |
| DH.1600A-EQP-211 |  | Gallery 1602 - R160/Line-Ups // Mechanical Connections to CRAHU Units | 10d | 2026-12-29 | 2027-01-12 | DH.1600A-EQP-203 SS+5d | 26d |
| DH.1600A-EQP-217 |  | Gallery 1602 - R160/Line-Ups // Pull Feeder and Branch circuits to MIsc equipment and Chiller controls | 10d | 2026-12-29 | 2027-01-12 | DH.1600A-EQP-212 SS+4d | 24d |
| DH.1600A-EQP-213 |  | Gallery 1602 - R160/Line-Ups // Pull Cable Tray Feed from MOD to CRAHU's | 5d | 2026-12-30 | 2027-01-06 | DH.1600A-EQP-210 | 30d |
| DH.1600A-EQP-216 |  | Gallery 1602 - R160/Line-Ups // Terminate CRAHU Electrical Connections | 5d | 2027-01-04 | 2027-01-08 | DH.1600A-EQP-210, DH.1600A-EQP-213 SS+2d | 34d |
| DH.1600A-EQP-219 |  | Gallery 1602 - R160/Line-Ups // Teminate all Misc Equipment and Chiller Controls | 10d | 2027-01-05 | 2027-01-19 | DH.1600A-EQP-217 SS+4d | 24d |
| DH.1600A-EQP-214 |  | Gallery 1602 - R160/Line-Ups // Condensate connections to Floor Drains | 10d | 2027-01-06 | 2027-01-20 | DH.1600A-EQP-204 SS+5d, DH.1600A-EQP-211 SS+5d | 26d |
| DH.1600A-EQP-215 |  | Gallery 1602 - R160/Line-Ups // Terminate Mod Panels | 1d | 2027-01-07 | 2027-01-07 | DH.1600A-EQP-209, DH.1600A-EQP-210, DH.1600A-EQP-213 | 35d |
| DH.1600A-EQP-218 |  | Gallery 1602 - R160/Line-Ups // Mechanical Gear FOD Inspection Pre-Start Up | 3d | 2027-01-21 | 2027-01-25 | DH.1600A-EQP-211, DH.1600A-EQP-204, DH.1600A-EQP-214, DH.1600A-EQP-203 | 26d |
| DH.1600A-EQP-220 |  | Gallery 1602 - R160/Line-Ups // Electrical Gear FOD Inspection Pre-Start Up | 2d | 2027-02-17 | 2027-02-18 | DH.1600A-EQP-215, DH.1600A-EQP-219, DH.1600A-EQP-216, DH.160012143 | 9d |
|  | 12 | **Equipment Connections** |  | 2026-12-30 | 2027-01-27 |  |  |
|  | 1 | **CRAH** |  | 2027-01-07 | 2027-01-19 |  |  |
| DH1600.MG.A110.8687 |  | Gallery 1602 // DH 1600 / Elec Room // CRAH Duct Work Termination | 2d | 2027-01-07 | 2027-01-08 | DH.1600A-EQP-213 | 30d |
| DH1600.MG.A110.8686 |  | Gallery 1602 // DH 1600 / Elec Room // CRAH Chilled Water | 2d | 2027-01-11 | 2027-01-12 | DH1600.MG.A110.8687 | 30d |
| DH1600.MG.A110.8684 |  | Gallery 1602 // DH 1600 / Elec Room // CRAH Power Connections | 2d | 2027-01-13 | 2027-01-14 | DH1600.MG.A110.8686 | 30d |
| DH1600.MG.A110.8685 |  | Gallery 1602 // DH 1600 / Elec Room // CRAH LV Connections | 2d | 2027-01-15 | 2027-01-19 | DH1600.MG.A110.8684 | 30d |
|  | 2 | **CDU** |  | 2027-01-20 | 2027-01-27 |  |  |
| DH1600.MG.A110.8690 |  | Gallery 1602 // DH 1600 / Elec Room // CDU Chilled Water Connections | 2d | 2027-01-20 | 2027-01-21 | DH.1600A-EQP-219 | 24d |
| DH1600.MG.A110.8688 |  | Gallery 1602 // DH 1600 /Elec Room // CDU Power Connections | 2d | 2027-01-22 | 2027-01-25 | DH1600.MG.A110.8690 | 24d |
| DH1600.MG.A110.8689 |  | Gallery 1602 // DH 1600 / Elec Room // CDU Controls Connections | 2d | 2027-01-26 | 2027-01-27 | DH1600.MG.A110.8688 | 24d |
|  | 3 | **MOD** |  | 2026-12-30 | 2027-01-05 |  |  |
| DH1600.MG.A110.8691 |  | Gallery 1602 // DH 1600 / Elec Room // MOD Power Connections | 2d | 2026-12-30 | 2026-12-31 | DH.1600A-EQP-209 | 39d |
| DH1600.MG.A110.8692 |  | Gallery 1602 // DH 1600 / Elec Room // MOD LV Connections | 2d | 2027-01-04 | 2027-01-05 | DH1600.MG.A110.8691 | 39d |
|  | 4 | **Gallery 1603** |  | 2026-10-02 | 2027-03-01 |  |  |
|  | 1 | **Architectural** |  | 2026-10-02 | 2027-01-25 |  |  |

| ID | WBS | Task | Duration | Start | Finish | Predecessors | Total float |
| --- | --- | --- | --- | --- | --- | --- | --- |
| DH.16001000 |  | DH 1600/Gallery 1603 // Seal concrete | 2d | 2026-10-02 | 2026-10-05 | DH.1600660 | 2d |
| DH.16001010 |  | DH 1600/Gallery 1603 // MEPF overhead layout | 5d | 2026-10-06 | 2026-10-13 | DH.16001000 | 2d |
| B120001.3199 |  | DH 1600/Gallery 1603 // Install Overhead Cable Ladder / 36" Cable Tray - TFO | 5d | 2026-10-14 | 2026-10-20 | DH.16001010 | 2d |
| B120001.3200 |  | DH 1600/Gallery 1603 // Install Overhead HAC - TFO | 5d | 2026-10-21 | 2026-10-27 | B120001.3199 | 2d |
| DH.16001030 |  | DH 1600/Gallery 1603 // MEPF high overhead install | 10d | 2026-10-28 | 2026-11-10 | DH.16001010 SS, B120001.3200 | 2d |
| DH.16001040 |  | DH 1600/Gallery 1603 // Frame walls | 6d | 2026-11-12 | 2026-11-19 | DH.16001010, DH.16001030 | 2d |
| F.1000A.1311 |  | DH 1600/Gallery 1603 // Rough-In Security | 2d | 2026-11-12 | 2026-11-13 | DH.16001030 | 103d |
| F.1000A.1625 |  | DH 1600/Gallery 1603 // BMS & EPMS Rough-In | 2d | 2026-11-12 | 2026-11-13 | F.1000A.1311 FF, F.1000A.1311 SS | 115d |
| F.1000A.1312 |  | DH 1600/Gallery 1603 // Pull & Test Security Cable | 3d | 2026-11-16 | 2026-11-18 | F.1000A.1311 | 103d |
| DH.16001070 |  | DH 1600/Gallery 1603 // MEP rough in walls | 4d | 2026-11-20 | 2026-11-25 | DH.16001040 | 2d |
| DH.16001080 |  | DH 1600/Gallery 1603 // In wall inspection | 1d | 2026-11-27 | 2026-11-27 | DH.16001070 | 2d |
| DH.16001050 |  | DH 1600/Gallery 1603 // Install Sheetrock Top Down | 6d | 2026-11-30 | 2026-12-07 | DH.16001040 SS+3d, DH.16001080 | 2d |
| DH.16001090 |  | DH 1600/Gallery 1603 // Install Balance of Sheetrock on walls | 6d | 2026-12-08 | 2026-12-15 | DH.16001030, DH.16001050 | 2d |
| DH.16001100 |  | DH 1600/Gallery 1603 // Tape and finish walls | 8d | 2026-12-16 | 2026-12-28 | DH.16001090 | 2d |
| DH.16001060 |  | DH 1600/Gallery 1603 // Install wall door frames | 2d | 2026-12-29 | 2026-12-30 | DH.16001100 | 4d |
| DH.16001110 |  | DH 1600/Gallery 1603 // Prime and Paint walls | 4d | 2026-12-29 | 2027-01-04 | DH.16001100 | 2d |
| F.1000A.1313 |  | DH 1600/Gallery 1603 // Install Security Devices | 2d | 2026-12-31 | 2027-01-04 | F.1000A.1312, DH.16001060 | 75d |
| DH.16001120 |  | DH 1600/Gallery 1603 // Touch up Walls and Fianl Paint | 5d | 2027-01-05 | 2027-01-11 | DH.16001060, DH.16001110 | 2d |
| F.1000A.1314 |  | DH 1600/Gallery 1603 // Mount & Terminate Security Devices | 5d | 2027-01-05 | 2027-01-11 | F.1000A.1313, DH.16001110 | 75d |
| DH.16001130 |  | DH 1600/Gallery 1603 // Install Trim and Devices | 2d | 2027-01-12 | 2027-01-13 | DH.16001120 | 2d |
| DH.160012164 |  | DH 1600/Gallery 1603 // Ready to Receive Equipment | 0d | 2027-01-13 | 2027-01-13 | DH.16001130 FF | 2d |
| F.1000A.1315 |  | DH 1600/Gallery 1603 // Test Security Devices | 2d | 2027-01-14 | 2027-01-15 | F.1000A.1625 FF, F.1000A.1314, DH.16001130 | 73d |
| DH.16001140 |  | DH 1600/Gallery 1603 // Suffolk Pre Punch | 5d | 2027-01-19 | 2027-01-25 | DH.160012164, F.1000A.1315 | 88d |
|  | 16 | **Raceway** |  |  |  |  |  |
|  | 3 | **Equipment Line-Ups** |  | 2027-01-14 | 2027-03-01 |  |  |
|  | 1 | **A160** |  | 2027-01-14 | 2027-02-17 |  |  |
| DH.1600B-EQP-1 |  | Gallery 1603 - A160/Line-Ups // Set CRAH-DH1600- 23 | 1d | 2027-01-14 | 2027-01-14 | DH.16006360, DH.160012164 | 2d |
| DH.1600B-EQP-4 |  | Gallery 1603 - A160/Line-Ups // Set CRAH-DH1600- 24 | 1d | 2027-01-14 | 2027-01-14 | DH.1600B-EQP-1 FF, DH.1600B-EQP-1 SS | 2d |
| DH.1600B-EQP-5 |  | Gallery 1603 - A160/Line-Ups // Set MOD A140-01 (Does No apply) | 1d | 2027-01-14 | 2027-01-14 | DH.1600B-EQP-4 FF | 54d |
| DH.1600B-EQP-6 |  | Gallery 1603 - A160/Line-Ups // Set MOD A140-02 (Does No apply) | 1d | 2027-01-14 | 2027-01-14 | DH.1600B-EQP-5 SS | 54d |
| DH.1600B-EQP-10 |  | Gallery 1603 - A160/Line-Ups // Mount Electrial Gear for Chiller Controls | 10d | 2027-01-15 | 2027-01-29 | DH.1600B-EQP-6 | 54d |
| DH.1600B-EQP-199 |  | Gallery 1603 - A160/Line-Ups // Set CDU-DH1600-23 | 1d | 2027-01-15 | 2027-01-15 | DH.1600B-EQP-6 | 68d |
| DH.1600B-EQP-3 |  | Gallery 1603 - A160/Line-Ups // Condensate connections to Floor Drains | 10d | 2027-01-15 | 2027-01-29 | DH.1600B-EQP-4, DH.1600B-EQP-1 SS | 56d |
| DH.1600B-EQP-8 |  | Gallery 1603 - A160/Line-Ups // Pull Cable Tray Feed from MOD to CRAHU's | 3d | 2027-01-15 | 2027-01-20 | DH.1600B-EQP-6 | 66d |
| DH.1600B-EQP-200 |  | Gallery 1603 - A160/Line-Ups // Set CDU-DH1600-24 | 1d | 2027-01-19 | 2027-01-19 | DH.1600B-EQP-199 | 68d |
| DH.1600B-EQP-7 |  | Gallery 1603 - A160/Line-Ups // Pull Feeder from SWD to MOD | 1d | 2027-01-20 | 2027-01-20 | DH.1600B-EQP-6, DH.1600B-EQP-200 | 68d |
| DH.1600B-EQP-13 |  | Gallery 1603 - A160/Line-Ups // Terminate MOD Panels | 1d | 2027-01-21 | 2027-01-21 | DH.1600B-EQP-7, DH.1600B-EQP-8 | 68d |
| DH.1600B-EQP-14 |  | Gallery 1603 - A160/Line-Ups // Terminate Electrical Connections - CRAHU | 3d | 2027-01-21 | 2027-01-25 | DH.1600B-EQP-8 | 66d |
| DH.1600B-EQP-15 |  | Gallery 1603 - A160/Line-Ups // Pull Feeder and Branch circuits to MIsc equipment and Chiller controls | 10d | 2027-01-22 | 2027-02-04 | DH.1600B-EQP-10 SS+4d | 54d |
| DH.1600B-EQP-9 |  | Gallery 1603 - A160/Line-Ups // Mechanical Connections to CRAHU Units | 5d | 2027-01-22 | 2027-01-28 | DH.1600B-EQP-4 SS+5d | 52d |
| DH.1600B-EQP-17 |  | Gallery 1603 - A160/Line-Ups // Teminate all Misc Equipment and Chiller Controls | 10d | 2027-01-28 | 2027-02-10 | DH.1600B-EQP-15 SS+4d | 54d |
| DH.1600B-EQP-12 |  | Gallery 1603 - A160/Line-Ups // Condensate connections to Floor Drains | 10d | 2027-01-29 | 2027-02-11 | DH.1600B-EQP-3 SS+5d, DH.1600B-EQP-9 SS+5d | 52d |
| DH.1600B-EQP-18 |  | Gallery 1603 - A160/Line-Ups // Electrical Gear FOD Inspection Pre-Start Up | 2d | 2027-02-11 | 2027-02-12 | DH.1600B-EQP-13, DH.1600B-EQP-17, DH.1600B-EQP-14 | 54d |
| DH.1600B-EQP-16 |  | Gallery 1603 - A160/Line-Ups // Mechanical Gear FOD Inspection Pre-Start Up | 3d | 2027-02-12 | 2027-02-17 | DH.1600B-EQP-4, DH.1600B-EQP-1 SS, DH.1600B-EQP-9, DH.1600B-EQP-3, DH.1600B-EQP-12 | 52d |
|  | 2 | **B160** |  | 2027-01-14 | 2027-02-24 |  |  |
| DH.1600B-EQP-19 |  | Gallery 1603 - B160/Line-Ups // Set CRAH-DH1600- 25 | 1d | 2027-01-14 | 2027-01-14 | DH.1600B-EQP-4 SS | 2d |
| DH.1600B-EQP-22 |  | Gallery 1603 - B160/Line-Ups // Set CRAH-DH1600- 26 | 1d | 2027-01-14 | 2027-01-14 | DH.1600B-EQP-19 FF, DH.1600B-EQP-19 SS | 2d |
| DH.1600B-EQP-23 |  | Gallery 1603 - B160/Line-Ups // Set MOD B140-01 (Does No apply) | 1d | 2027-01-14 | 2027-01-14 | DH.1600B-EQP-22 FF | 54d |
| DH.1600B-EQP-24 |  | Gallery 1603 - B160/Line-Ups // Set MOD B140-02 (Does No apply) | 1d | 2027-01-14 | 2027-01-14 | DH.1600B-EQP-23 SS | 54d |
| DH.1600B-EQP-201 |  | Gallery 1603 - B160/Line-Ups // Set CDU-DH1600-25 | 1d | 2027-01-15 | 2027-01-15 | DH.1600B-EQP-24 | 68d |
| DH.1600B-EQP-26 |  | Gallery 1603 - B160/Line-Ups // Pull Cable Tray Feed from MOD to CRAHU's | 5d | 2027-01-15 | 2027-01-22 | DH.1600B-EQP-24 | 60d |
| DH.1600B-EQP-28 |  | Gallery 1603 - B160/Line-Ups // Mount Electrial Gear for Chiller Controls | 10d | 2027-01-15 | 2027-01-29 | DH.1600B-EQP-24 | 54d |
| DH.1600B-EQP-202 |  | Gallery 1603 - B160/Line-Ups // Set CDU-DH1600-26 | 1d | 2027-01-19 | 2027-01-19 | DH.1600B-EQP-201, DH.1600B-EQP-201 FF | 68d |
| DH.1600B-EQP-25 |  | Gallery 1603 - B160/Line-Ups // Pull Feeder from SWD to MOD | 1d | 2027-01-20 | 2027-01-20 | DH.1600B-EQP-24, DH.1600B-EQP-202 | 68d |
| DH.1600B-EQP-20 |  | Gallery 1603 - B160/Line-Ups // Connect CRAH units | 10d | 2027-01-22 | 2027-02-04 | DH.1600B-EQP-22, DH.1600B-EQP-19 SS+5d | 47d |
| DH.1600B-EQP-27 |  | Gallery 1603 - B160/Line-Ups // Mechanical Connections to CRAHU Units | 10d | 2027-01-22 | 2027-02-04 | DH.1600B-EQP-22 SS+5d | 52d |
| DH.1600B-EQP-33 |  | Gallery 1603 - B160/Line-Ups // Pull Feeder and Branch circuits to MIsc equipment and Chiller controls | 10d | 2027-01-22 | 2027-02-04 | DH.1600B-EQP-28 SS+4d | 54d |
| DH.1600B-EQP-29 |  | Gallery 1603 - B160/Line-Ups // Pull Cable Tray Feed from MOD to CRAHU's | 5d | 2027-01-25 | 2027-01-29 | DH.1600B-EQP-26 | 60d |
| DH.1600B-EQP-32 |  | Gallery 1603 - B160/Line-Ups // Terminate CRAHU Electrical Connections | 5d | 2027-01-27 | 2027-02-02 | DH.1600B-EQP-26, DH.1600B-EQP-29 SS+2d | 60d |
| DH.1600B-EQP-35 |  | Gallery 1603 - B160/Line-Ups // Teminate all Misc Equipment and Chiller Controls | 10d | 2027-01-28 | 2027-02-10 | DH.1600B-EQP-33 SS+4d | 54d |
| DH.1600B-EQP-21 |  | Gallery 1603 - B160/Line-Ups // Condensate connections to Floor Drains | 10d | 2027-01-29 | 2027-02-11 | DH.1600B-EQP-20 SS+5d | 47d |
| DH.1600B-EQP-31 |  | Gallery 1603 - B160/Line-Ups // Terminat Mod Panels | 1d | 2027-02-01 | 2027-02-01 | DH.1600B-EQP-25, DH.1600B-EQP-26, DH.1600B-EQP-29 | 61d |
| DH.1600B-EQP-30 |  | Gallery 1603 - B160/Line-Ups // Condensate connections to Floor Drains | 10d | 2027-02-05 | 2027-02-19 | DH.1600B-EQP-21 SS+5d, DH.1600B-EQP-27 SS+5d | 47d |
| DH.1600B-EQP-36 |  | Gallery 1603 - B160/Line-Ups // Electrical Gear FOD Inspection Pre-Start Up | 2d | 2027-02-11 | 2027-02-12 | DH.1600B-EQP-31, DH.1600B-EQP-35, DH.1600B-EQP-32 | 54d |
| DH.1600B-EQP-34 |  | Gallery 1603 - B160/Line-Ups // Mechanical Gear FOD Inspection Pre-Start Up | 3d | 2027-02-22 | 2027-02-24 | DH.1600B-EQP-20, DH.1600B-EQP-27, DH.1600B-EQP-21, DH.1600B-EQP-30 | 47d |
|  | 3 | **C160** |  | 2027-01-14 | 2027-02-24 |  |  |
| DH.1600B-EQP-37 |  | Gallery 1603 - C160/Line-Ups // Set CRAH-DH1600- 27 | 1d | 2027-01-14 | 2027-01-14 | DH.1600B-EQP-22 SS | 2d |
| DH.1600B-EQP-40 |  | Gallery 1603 - C160/Line-Ups // Set CRAH-DH1600- 28 | 1d | 2027-01-14 | 2027-01-14 | DH.1600B-EQP-37 FF, DH.1600B-EQP-37 SS | 2d |
| DH.1600B-EQP-41 |  | Gallery 1603 - C160/Line-Ups // Set MOD C140-01 (Does No apply) | 1d | 2027-01-14 | 2027-01-14 | DH.1600B-EQP-40 FF | 54d |
| DH.1600B-EQP-42 |  | Gallery 1603 - C160/Line-Ups // Set MOD C140-02 (Does No apply) | 1d | 2027-01-14 | 2027-01-14 | DH.1600B-EQP-41 SS | 54d |

| ID | WBS | Task | Duration | Start | Finish | Predecessors | Total float |
| --- | --- | --- | --- | --- | --- | --- | --- |
| DH.1600B-EQP-203 |  | Gallery 1603 - C160/Line-Ups // Set CDU-DH1600-27 | 1d | 2027-01-15 | 2027-01-15 | DH.1600B-EQP-42 | 68d |
| DH.1600B-EQP-44 |  | Gallery 1603 - C160/Line-Ups // Pull Cable Tray Feed from MOD to CRAHU's | 5d | 2027-01-15 | 2027-01-22 | DH.1600B-EQP-42 | 60d |
| DH.1600B-EQP-46 |  | Gallery 1603 - C160/Line-Ups // Mount Electrial Gear for Chiller Controls | 10d | 2027-01-15 | 2027-01-29 | DH.1600B-EQP-42 | 54d |
| DH.1600B-EQP-204 |  | Gallery 1603 - C160/Line-Ups // Set CDU-DH1600-28 | 1d | 2027-01-19 | 2027-01-19 | DH.1600B-EQP-203, DH.1600B-EQP-203 FF | 68d |
| DH.1600B-EQP-43 |  | Gallery 1603 - C160/Line-Ups // Pull Feeder from SWD to MOD | 1d | 2027-01-20 | 2027-01-20 | DH.1600B-EQP-42, DH.1600B-EQP-204 | 68d |
| DH.1600B-EQP-38 |  | Gallery 1603 - C160/Line-Ups // Connect CRAH units | 10d | 2027-01-22 | 2027-02-04 | DH.1600B-EQP-40, DH.1600B-EQP-37 SS+5d | 47d |
| DH.1600B-EQP-45 |  | Gallery 1603 - C160/Line-Ups // Mechanical Connections to CRAHU Units | 10d | 2027-01-22 | 2027-02-04 | DH.1600B-EQP-40 SS+5d | 52d |
| DH.1600B-EQP-51 |  | Gallery 1603 - C160/Line-Ups // Pull Feeder and Branch circuits to MIsc equipment and Chiller controls | 10d | 2027-01-22 | 2027-02-04 | DH.1600B-EQP-46 SS+4d | 54d |
| DH.1600B-EQP-47 |  | Gallery 1603 - C160/Line-Ups // Pull Cable Tray Feed from MOD to CRAHU's | 5d | 2027-01-25 | 2027-01-29 | DH.1600B-EQP-44 | 60d |
| DH.1600B-EQP-50 |  | Gallery 1603 - C160/Line-Ups // Terminate CRAHU Electrical Connections | 5d | 2027-01-27 | 2027-02-02 | DH.1600B-EQP-44, DH.1600B-EQP-47 SS+2d | 60d |
| DH.1600B-EQP-53 |  | Gallery 1603 - C160/Line-Ups // Teminate all Misc Equipment and Chiller Controls | 10d | 2027-01-28 | 2027-02-10 | DH.1600B-EQP-51 SS+4d | 54d |
| DH.1600B-EQP-39 |  | Gallery 1603 - C160/Line-Ups // Condensate connections to Floor Drains | 10d | 2027-01-29 | 2027-02-11 | DH.1600B-EQP-38 SS+5d | 47d |
| DH.1600B-EQP-49 |  | Gallery 1603 - C160/Line-Ups // Terminat Mod Panels | 1d | 2027-02-01 | 2027-02-01 | DH.1600B-EQP-43, DH.1600B-EQP-44, DH.1600B-EQP-47 | 61d |
| DH.1600B-EQP-48 |  | Gallery 1603 - C160/Line-Ups // Condensate connections to Floor Drains | 10d | 2027-02-05 | 2027-02-19 | DH.1600B-EQP-39 SS+5d, DH.1600B-EQP-45 SS+5d | 47d |
| DH.1600B-EQP-54 |  | Gallery 1603 - C160/Line-Ups // Electrical Gear FOD Inspection Pre-Start Up | 2d | 2027-02-11 | 2027-02-12 | DH.1600B-EQP-49, DH.1600B-EQP-53, DH.1600B-EQP-50 | 54d |
| DH.1600B-EQP-52 |  | Gallery 1603 - C160/Line-Ups // Mechanical Gear FOD Inspection Pre-Start Up | 3d | 2027-02-22 | 2027-02-24 | DH.1600B-EQP-38, DH.1600B-EQP-45, DH.1600B-EQP-39, DH.1600B-EQP-48 | 47d |
|  | 4 | **D160** |  | 2027-01-15 | 2027-02-25 |  |  |
| DH.1600B-EQP-55 |  | Gallery 1603 - D160/Line-Ups // Set CRAH-DH1600- 29 | 1d | 2027-01-15 | 2027-01-15 | DH.1600B-EQP-40 | 2d |
| DH.1600B-EQP-58 |  | Gallery 1603 - D160/Line-Ups // Set CRAH-DH1600-30 | 1d | 2027-01-15 | 2027-01-15 | DH.1600B-EQP-55 FF, DH.1600B-EQP-55 SS | 2d |
| DH.1600B-EQP-59 |  | Gallery 1603 - D160/Line-Ups // Set MOD D140-01 (Does No apply) | 1d | 2027-01-15 | 2027-01-15 | DH.1600B-EQP-58 FF | 53d |
| DH.1600B-EQP-60 |  | Gallery 1603 - D160/Line-Ups // Set MOD D140-02 (Does No apply) | 1d | 2027-01-15 | 2027-01-15 | DH.1600B-EQP-59 SS | 53d |
| DH.1600B-EQP-205 |  | Gallery 1603 - D160/Line-Ups // Set CDU-DH1600-29 | 1d | 2027-01-19 | 2027-01-19 | DH.1600B-EQP-60 | 67d |
| DH.1600B-EQP-62 |  | Gallery 1603 - D160/Line-Ups // Pull Cable Tray Feed from MOD to CRAHU's | 5d | 2027-01-19 | 2027-01-25 | DH.1600B-EQP-60 | 59d |
| DH.1600B-EQP-64 |  | Gallery 1603 - D160/Line-Ups // Mount Electrial Gear for Chiller Controls | 10d | 2027-01-19 | 2027-02-01 | DH.1600B-EQP-60 | 53d |
| DH.1600B-EQP-206 |  | Gallery 1603 - D160/Line-Ups // Set CDU-DH1600-30 | 1d | 2027-01-20 | 2027-01-20 | DH.1600B-EQP-205 | 67d |
| DH.1600B-EQP-61 |  | Gallery 1603 - D160/Line-Ups // Pull Feeder from SWD to MOD | 1d | 2027-01-21 | 2027-01-21 | DH.1600B-EQP-60, DH.1600B-EQP-206 | 67d |
| DH.1600B-EQP-56 |  | Gallery 1603 - D160/Line-Ups // Connect CRAH units | 10d | 2027-01-25 | 2027-02-05 | DH.1600B-EQP-58, DH.1600B-EQP-55 SS+5d | 46d |
| DH.1600B-EQP-63 |  | Gallery 1603 - D160/Line-Ups // Mechanical Connections to CRAHU Units | 10d | 2027-01-25 | 2027-02-05 | DH.1600B-EQP-58 SS+5d | 51d |
| DH.1600B-EQP-69 |  | Gallery 1603 - D160/Line-Ups // Pull Feeder and Branch circuits to MIsc equipment and Chiller controls | 10d | 2027-01-25 | 2027-02-05 | DH.1600B-EQP-64 SS+4d | 53d |
| DH.1600B-EQP-65 |  | Gallery 1603 - D160/Line-Ups // Pull Cable Tray Feed from MOD to CRAHU's | 5d | 2027-01-26 | 2027-02-01 | DH.1600B-EQP-62 | 59d |
| DH.1600B-EQP-68 |  | Gallery 1603 - D160/Line-Ups // Terminate CRAHU Electrical Connections | 5d | 2027-01-28 | 2027-02-03 | DH.1600B-EQP-62, DH.1600B-EQP-65 SS+2d | 59d |
| DH.1600B-EQP-71 |  | Gallery 1603 - D160/Line-Ups // Teminate all Misc Equipment and Chiller Controls | 10d | 2027-01-29 | 2027-02-11 | DH.1600B-EQP-69 SS+4d | 53d |
| DH.1600B-EQP-57 |  | Gallery 1603 - D160/Line-Ups // Condensate connections to Floor Drains | 10d | 2027-02-01 | 2027-02-12 | DH.1600B-EQP-56 SS+5d | 46d |
| DH.1600B-EQP-67 |  | Gallery 1603 - D160/Line-Ups // Terminat Mod Panels | 1d | 2027-02-02 | 2027-02-02 | DH.1600B-EQP-61, DH.1600B-EQP-62, DH.1600B-EQP-65 | 60d |
| DH.1600B-EQP-66 |  | Gallery 1603 - D160/Line-Ups // Condensate connections to Floor Drains | 10d | 2027-02-08 | 2027-02-22 | DH.1600B-EQP-57 SS+5d, DH.1600B-EQP-63 SS+5d | 46d |
| DH.1600B-EQP-72 |  | Gallery 1603 - D160/Line-Ups // Electrical Gear FOD Inspection Pre-Start Up | 2d | 2027-02-12 | 2027-02-16 | DH.1600B-EQP-67, DH.1600B-EQP-71, DH.1600B-EQP-68 | 53d |
| DH.1600B-EQP-70 |  | Gallery 1603 - D160/Line-Ups // Mechanical Gear FOD Inspection Pre-Start Up | 3d | 2027-02-23 | 2027-02-25 | DH.1600B-EQP-56, DH.1600B-EQP-63, DH.1600B-EQP-57, DH.1600B-EQP-66 | 46d |
|  | 5 | **E160** |  | 2027-01-15 | 2027-02-25 |  |  |
| DH.1600B-EQP-73 |  | Gallery 1603 - E160/Line-Ups // Set CRAH-DH1600- 31 | 1d | 2027-01-15 | 2027-01-15 | DH.1600B-EQP-58 SS | 2d |
| DH.1600B-EQP-76 |  | Gallery 1603 - E160/Line-Ups // Set CRAH-DH1600-32 | 1d | 2027-01-15 | 2027-01-15 | DH.1600B-EQP-73 FF, DH.1600B-EQP-73 SS | 2d |
| DH.1600B-EQP-77 |  | Gallery 1603 - E160/Line-Ups // Set MOD E140-01 (Does No apply) | 1d | 2027-01-15 | 2027-01-15 | DH.1600B-EQP-76 FF | 53d |
| DH.1600B-EQP-78 |  | Gallery 1603 - E160/Line-Ups // Set MOD E140-02 (Does No apply) | 1d | 2027-01-15 | 2027-01-15 | DH.1600B-EQP-77 SS | 53d |
| DH.1600B-EQP-207 |  | Gallery 1603 - E160/Line-Ups // Set CDU-DH1600-31 | 1d | 2027-01-19 | 2027-01-19 | DH.1600B-EQP-78 | 67d |
| DH.1600B-EQP-80 |  | Gallery 1603 - E160/Line-Ups // Pull Cable Tray Feed from MOD to CRAHU's | 5d | 2027-01-19 | 2027-01-25 | DH.1600B-EQP-78 | 59d |
| DH.1600B-EQP-82 |  | Gallery 1603 - E160/Line-Ups // Mount Electrial Gear for Chiller Controls | 10d | 2027-01-19 | 2027-02-01 | DH.1600B-EQP-78 | 53d |
| DH.1600B-EQP-208 |  | Gallery 1603 - E160/Line-Ups // Set CDU-DH1600-32 | 1d | 2027-01-20 | 2027-01-20 | DH.1600B-EQP-207 | 67d |
| DH.1600B-EQP-79 |  | Gallery 1603 - E160/Line-Ups // Pull Feeder from SWD to MOD | 1d | 2027-01-21 | 2027-01-21 | DH.1600B-EQP-78, DH.1600B-EQP-208 | 67d |
| DH.1600B-EQP-74 |  | Gallery 1603 - E160/Line-Ups // Connect CRAH units | 10d | 2027-01-25 | 2027-02-05 | DH.1600B-EQP-76, DH.1600B-EQP-73 SS+5d | 46d |
| DH.1600B-EQP-81 |  | Gallery 1603 - E160/Line-Ups // Mechanical Connections to CRAHU Units | 10d | 2027-01-25 | 2027-02-05 | DH.1600B-EQP-76 SS+5d | 51d |
| DH.1600B-EQP-87 |  | Gallery 1603 - E160/Line-Ups // Pull Feeder and Branch circuits to MIsc equipment and Chiller controls | 10d | 2027-01-25 | 2027-02-05 | DH.1600B-EQP-82 SS+4d | 53d |
| DH.1600B-EQP-83 |  | Gallery 1603 - E160/Line-Ups // Pull Cable Tray Feed from MOD to CRAHU's | 5d | 2027-01-26 | 2027-02-01 | DH.1600B-EQP-80 | 59d |
| DH.1600B-EQP-86 |  | Gallery 1603 - E160/Line-Ups // Terminate CRAHU Electrical Connections | 5d | 2027-01-28 | 2027-02-03 | DH.1600B-EQP-80, DH.1600B-EQP-83 SS+2d | 59d |
| DH.1600B-EQP-89 |  | Gallery 1603 - E160/Line-Ups // Teminate all Misc Equipment and Chiller Controls | 10d | 2027-01-29 | 2027-02-11 | DH.1600B-EQP-87 SS+4d | 53d |
| DH.1600B-EQP-75 |  | Gallery 1603 - E160/Line-Ups // Condensate connections to Floor Drains | 10d | 2027-02-01 | 2027-02-12 | DH.1600B-EQP-74 SS+5d | 46d |
| DH.1600B-EQP-85 |  | Gallery 1603 - E160/Line-Ups // Terminat Mod Panels | 1d | 2027-02-02 | 2027-02-02 | DH.1600B-EQP-79, DH.1600B-EQP-80, DH.1600B-EQP-83 | 60d |
| DH.1600B-EQP-84 |  | Gallery 1603 - E160/Line-Ups // Condensate connections to Floor Drains | 10d | 2027-02-08 | 2027-02-22 | DH.1600B-EQP-75 SS+5d, DH.1600B-EQP-81 SS+5d | 46d |
| DH.1600B-EQP-90 |  | Gallery 1603 - E160/Line-Ups // Electrical Gear FOD Inspection Pre-Start Up | 2d | 2027-02-12 | 2027-02-16 | DH.1600B-EQP-85, DH.1600B-EQP-89, DH.1600B-EQP-86 | 53d |
| DH.1600B-EQP-88 |  | Gallery 1603 - E160/Line-Ups // Mechanical Gear FOD Inspection Pre-Start Up | 3d | 2027-02-23 | 2027-02-25 | DH.1600B-EQP-74, DH.1600B-EQP-81, DH.1600B-EQP-75, DH.1600B-EQP-84 | 46d |
|  | 6 | **F160** |  | 2027-01-15 | 2027-02-25 |  |  |
| DH.1600B-EQP-91 |  | Gallery 1603 - F160/Line-Ups // Set CRAH-DH1600-33 | 1d | 2027-01-15 | 2027-01-15 | DH.1600B-EQP-76 SS | 2d |
| DH.1600B-EQP-94 |  | Gallery 1603 - F160/Line-Ups // Set CRAH-DH1600-34 | 1d | 2027-01-15 | 2027-01-15 | DH.1600B-EQP-91 FF, DH.1600B-EQP-91 SS | 2d |
| DH.1600B-EQP-95 |  | Gallery 1603 - F160/Line-Ups // Set MOD F140-01 (Does No apply) | 1d | 2027-01-15 | 2027-01-15 | DH.1600B-EQP-94 FF | 53d |
| DH.1600B-EQP-96 |  | Gallery 1603 - F160/Line-Ups // Set MOD F140-02 (Does No apply) | 1d | 2027-01-15 | 2027-01-15 | DH.1600B-EQP-95 SS | 53d |
| DH.1600B-EQP-100 |  | Gallery 1603 - F160/Line-Ups // Mount Electrial Gear for Chiller Controls | 10d | 2027-01-19 | 2027-02-01 | DH.1600B-EQP-96 | 53d |
| DH.1600B-EQP-209 |  | Gallery 1603 - F160/Line-Ups // Set CDU-DH1600-33 | 1d | 2027-01-19 | 2027-01-19 | DH.1600B-EQP-96 | 67d |
| DH.1600B-EQP-98 |  | Gallery 1603 - F160/Line-Ups // Pull Cable Tray Feed from MOD to CRAHU's | 5d | 2027-01-19 | 2027-01-25 | DH.1600B-EQP-96 | 59d |
| DH.1600B-EQP-210 |  | Gallery 1603 - F160/Line-Ups // Set CDU-DH1600-34 | 1d | 2027-01-20 | 2027-01-20 | DH.1600B-EQP-209 | 67d |
| DH.1600B-EQP-97 |  | Gallery 1603 - F160/Line-Ups // Pull Feeder from SWD to MOD | 1d | 2027-01-21 | 2027-01-21 | DH.1600B-EQP-96, DH.1600B-EQP-210 | 67d |
| DH.1600B-EQP-105 |  | Gallery 1603 - F160/Line-Ups // Pull Feeder and Branch circuits to MIsc equipment and Chiller controls | 10d | 2027-01-25 | 2027-02-05 | DH.1600B-EQP-100 SS+4d | 53d |
| DH.1600B-EQP-92 |  | Gallery 1603 - F160/Line-Ups // Connect CRAH units | 10d | 2027-01-25 | 2027-02-05 | DH.1600B-EQP-94, DH.1600B-EQP-91 SS+5d | 46d |

| ID | WBS | Task | Duration | Start | Finish | Predecessors | Total float |
| --- | --- | --- | --- | --- | --- | --- | --- |
| DH.1600B-EQP-99 |  | Gallery 1603 - F160/Line-Ups // Mechanical Connections to CRAHU Units | 10d | 2027-01-25 | 2027-02-05 | DH.1600B-EQP-94 SS+5d | 51d |
| DH.1600B-EQP-101 |  | Gallery 1603 - F160/Line-Ups // Pull Cable Tray Feed from MOD to CRAHU's | 5d | 2027-01-26 | 2027-02-01 | DH.1600B-EQP-98 | 59d |
| DH.1600B-EQP-104 |  | Gallery 1603 - F160/Line-Ups // Terminate CRAHU Electrical Connections | 5d | 2027-01-28 | 2027-02-03 | DH.1600B-EQP-98, DH.1600B-EQP-101 SS+2d | 59d |
| DH.1600B-EQP-107 |  | Gallery 1603 - F160/Line-Ups // Teminate all Misc Equipment and Chiller Controls | 10d | 2027-01-29 | 2027-02-11 | DH.1600B-EQP-105 SS+4d | 53d |
| DH.1600B-EQP-93 |  | Gallery 1603 - F160/Line-Ups // Condensate connections to Floor Drains | 10d | 2027-02-01 | 2027-02-12 | DH.1600B-EQP-92 SS+5d | 46d |
| DH.1600B-EQP-103 |  | Gallery 1603 - F160/Line-Ups // Terminat Mod Panels | 1d | 2027-02-02 | 2027-02-02 | DH.1600B-EQP-97, DH.1600B-EQP-98, DH.1600B-EQP-101 | 60d |
| DH.1600B-EQP-102 |  | Gallery 1603 - F160/Line-Ups // Condensate connections to Floor Drains | 10d | 2027-02-08 | 2027-02-22 | DH.1600B-EQP-93 SS+5d, DH.1600B-EQP-99 SS+5d | 46d |
| DH.1600B-EQP-108 |  | Gallery 1603 - F160/Line-Ups // Electrical Gear FOD Inspection Pre-Start Up | 2d | 2027-02-12 | 2027-02-16 | DH.1600B-EQP-103, DH.1600B-EQP-107, DH.1600B-EQP-104 | 53d |
| DH.1600B-EQP-106 |  | Gallery 1603 - F160/Line-Ups // Mechanical Gear FOD Inspection Pre-Start Up | 3d | 2027-02-23 | 2027-02-25 | DH.1600B-EQP-92, DH.1600B-EQP-99, DH.1600B-EQP-93, DH.1600B-EQP-102 | 46d |
|  | 7 | **G160** |  | 2027-01-19 | 2027-02-26 |  |  |
| DH.1600B-EQP-109 |  | Gallery 1603 - G160/Line-Ups // Set CRAH-DH1600-35 | 1d | 2027-01-19 | 2027-01-19 | DH.1600B-EQP-94 | 2d |
| DH.1600B-EQP-112 |  | Gallery 1603 - G160/Line-Ups // Set CRAH-DH1600-36 | 1d | 2027-01-19 | 2027-01-19 | DH.1600B-EQP-109 FF, DH.1600B-EQP-109 SS | 2d |
| DH.1600B-EQP-113 |  | Gallery 1603 - G160/Line-Ups // Set MOD G140-01 (Does No apply) | 1d | 2027-01-19 | 2027-01-19 | DH.1600B-EQP-112 FF | 52d |
| DH.1600B-EQP-114 |  | Gallery 1603 - G160/Line-Ups // Set MOD G140-02 (Does No apply) | 1d | 2027-01-19 | 2027-01-19 | DH.1600B-EQP-113 SS | 52d |
| DH.1600B-EQP-116 |  | Gallery 1603 - G160/Line-Ups // Pull Cable Tray Feed from MOD to CRAHU's | 5d | 2027-01-20 | 2027-01-26 | DH.1600B-EQP-114 | 58d |
| DH.1600B-EQP-118 |  | Gallery 1603 - G160/Line-Ups // Mount Electrial Gear for Chiller Controls | 10d | 2027-01-20 | 2027-02-02 | DH.1600B-EQP-114 | 52d |
| DH.1600B-EQP-211 |  | Gallery 1603 - G160/Line-Ups // Set CDU-DH1600-35 | 1d | 2027-01-20 | 2027-01-20 | DH.1600B-EQP-114 | 66d |
| DH.1600B-EQP-212 |  | Gallery 1603 - G160/Line-Ups // Set CDU-DH1600-36 | 1d | 2027-01-21 | 2027-01-21 | DH.1600B-EQP-211 | 66d |
| DH.1600B-EQP-115 |  | Gallery 1603 - G160/Line-Ups // Pull Feeder from SWD to MOD | 1d | 2027-01-22 | 2027-01-22 | DH.1600B-EQP-114, DH.1600B-EQP-212 | 66d |
| DH.1600B-EQP-110 |  | Gallery 1603 - G160/Line-Ups // Connect CRAH units | 10d | 2027-01-26 | 2027-02-08 | DH.1600B-EQP-112, DH.1600B-EQP-109 SS+5d | 45d |
| DH.1600B-EQP-117 |  | Gallery 1603 - G160/Line-Ups // Mechanical Connections to CRAHU Units | 10d | 2027-01-26 | 2027-02-08 | DH.1600B-EQP-112 SS+5d | 50d |
| DH.1600B-EQP-123 |  | Gallery 1603 - G160/Line-Ups // Pull Feeder and Branch circuits to MIsc equipment and Chiller controls | 10d | 2027-01-26 | 2027-02-08 | DH.1600B-EQP-118 SS+4d | 52d |
| DH.1600B-EQP-119 |  | Gallery 1603 - G160/Line-Ups // Pull Cable Tray Feed from MOD to CRAHU's | 5d | 2027-01-27 | 2027-02-02 | DH.1600B-EQP-116 | 58d |
| DH.1600B-EQP-122 |  | Gallery 1603 - G160/Line-Ups // Terminate CRAHU Electrical Connections | 5d | 2027-01-29 | 2027-02-04 | DH.1600B-EQP-116, DH.1600B-EQP-119 SS+2d | 58d |
| DH.1600B-EQP-125 |  | Gallery 1603 - G160/Line-Ups // Teminate all Misc Equipment and Chiller Controls | 10d | 2027-02-01 | 2027-02-12 | DH.1600B-EQP-123 SS+4d | 52d |
| DH.1600B-EQP-111 |  | Gallery 1603 - G160/Line-Ups // Condensate connections to Floor Drains | 10d | 2027-02-02 | 2027-02-16 | DH.1600B-EQP-110 SS+5d | 45d |
| DH.1600B-EQP-121 |  | Gallery 1603 - G160/Line-Ups // Terminat Mod Panels | 1d | 2027-02-03 | 2027-02-03 | DH.1600B-EQP-115, DH.1600B-EQP-116, DH.1600B-EQP-119 | 59d |
| DH.1600B-EQP-120 |  | Gallery 1603 - G160/Line-Ups // Condensate connections to Floor Drains | 10d | 2027-02-09 | 2027-02-23 | DH.1600B-EQP-111 SS+5d, DH.1600B-EQP-117 SS+5d | 45d |
| DH.1600B-EQP-126 |  | Gallery 1603 - G160/Line-Ups // Electrical Gear FOD Inspection Pre-Start Up | 2d | 2027-02-16 | 2027-02-17 | DH.1600B-EQP-121, DH.1600B-EQP-125, DH.1600B-EQP-122 | 52d |
| DH.1600B-EQP-124 |  | Gallery 1603 - G160/Line-Ups // Mechanical Gear FOD Inspection Pre-Start Up | 3d | 2027-02-24 | 2027-02-26 | DH.1600B-EQP-110, DH.1600B-EQP-117, DH.1600B-EQP-111, DH.1600B-EQP-120 | 45d |
|  | 8 | **H160** |  | 2027-01-19 | 2027-02-26 |  |  |
| DH.1600B-EQP-127 |  | Gallery 1603 - H160/Line-Ups // Set CRAH-DH1600-37 | 1d | 2027-01-19 | 2027-01-19 | DH.1600B-EQP-112 SS | 2d |
| DH.1600B-EQP-130 |  | Gallery 1603 - H160/Line-Ups // Set CRAH-DH1600-38 | 1d | 2027-01-19 | 2027-01-19 | DH.1600B-EQP-127 FF, DH.1600B-EQP-127 SS | 2d |
| DH.1600B-EQP-131 |  | Gallery 1603 - H160/Line-Ups // Set MOD H140-01 | 1d | 2027-01-19 | 2027-01-19 | DH.1600B-EQP-130 FF | 52d |
| DH.1600B-EQP-132 |  | Gallery 1603 - H160/Line-Ups // Set MOD H140-02 | 1d | 2027-01-19 | 2027-01-19 | DH.1600B-EQP-131 SS | 52d |
| DH.1600B-EQP-134 |  | Gallery 1603 - H160/Line-Ups // Pull Cable Tray Feed from MOD to CRAHU's | 5d | 2027-01-20 | 2027-01-26 | DH.1600B-EQP-132 | 58d |
| DH.1600B-EQP-136 |  | Gallery 1603 - H160/Line-Ups // Mount Electrial Gear for Chiller Controls | 10d | 2027-01-20 | 2027-02-02 | DH.1600B-EQP-132 | 52d |
| DH.1600B-EQP-213 |  | Gallery 1603 - H160/Line-Ups // Set CDU-DH1600-37 | 1d | 2027-01-20 | 2027-01-20 | DH.1600B-EQP-132 | 66d |
| DH.1600B-EQP-214 |  | Gallery 1603 - H160/Line-Ups // Set CDU-DH1600-38 | 1d | 2027-01-21 | 2027-01-21 | DH.1600B-EQP-213 | 66d |
| DH.1600B-EQP-133 |  | Gallery 1603 - H160/Line-Ups // Pull Feeder from SWD to MOD | 1d | 2027-01-22 | 2027-01-22 | DH.1600B-EQP-132, DH.1600B-EQP-214 | 66d |
| DH.1600B-EQP-128 |  | Gallery 1603 - H160/Line-Ups // Connect CRAH units | 10d | 2027-01-26 | 2027-02-08 | DH.1600B-EQP-130, DH.1600B-EQP-127 SS+5d | 45d |
| DH.1600B-EQP-135 |  | Gallery 1603 - H160/Line-Ups // Mechanical Connections to CRAHU Units | 10d | 2027-01-26 | 2027-02-08 | DH.1600B-EQP-130 SS+5d | 50d |
| DH.1600B-EQP-141 |  | Gallery 1603 - H160/Line-Ups // Pull Feeder and Branch circuits to MIsc equipment and Chiller controls | 10d | 2027-01-26 | 2027-02-08 | DH.1600B-EQP-136 SS+4d | 52d |
| DH.1600B-EQP-137 |  | Gallery 1603 - H160/Line-Ups // Pull Cable Tray Feed from MOD to CRAHU's | 5d | 2027-01-27 | 2027-02-02 | DH.1600B-EQP-134 | 58d |
| DH.1600B-EQP-140 |  | Gallery 1603 - H160/Line-Ups // Terminate CRAHU Electrical Connections | 5d | 2027-01-29 | 2027-02-04 | DH.1600B-EQP-134, DH.1600B-EQP-137 SS+2d | 58d |
| DH.1600B-EQP-143 |  | Gallery 1603 - H160/Line-Ups // Teminate all Misc Equipment and Chiller Controls | 10d | 2027-02-01 | 2027-02-12 | DH.1600B-EQP-141 SS+4d | 52d |
| DH.1600B-EQP-129 |  | Gallery 1603 - H160/Line-Ups // Condensate connections to Floor Drains | 10d | 2027-02-02 | 2027-02-16 | DH.1600B-EQP-128 SS+5d | 45d |
| DH.1600B-EQP-139 |  | Gallery 1603 - H160/Line-Ups // Terminat Mod Panels | 1d | 2027-02-03 | 2027-02-03 | DH.1600B-EQP-133, DH.1600B-EQP-134, DH.1600B-EQP-137 | 59d |
| DH.1600B-EQP-138 |  | Gallery 1603 - H160/Line-Ups // Condensate connections to Floor Drains | 10d | 2027-02-09 | 2027-02-23 | DH.1600B-EQP-129 SS+5d, DH.1600B-EQP-135 SS+5d | 45d |
| DH.1600B-EQP-144 |  | Gallery 1603 - H160/Line-Ups // Electrical Gear FOD Inspection Pre-Start Up | 2d | 2027-02-16 | 2027-02-17 | DH.1600B-EQP-139, DH.1600B-EQP-143, DH.1600B-EQP-140 | 52d |
| DH.1600B-EQP-142 |  | Gallery 1603 - H160/Line-Ups // Mechanical Gear FOD Inspection Pre-Start Up | 3d | 2027-02-24 | 2027-02-26 | DH.1600B-EQP-128, DH.1600B-EQP-135, DH.1600B-EQP-129, DH.1600B-EQP-138 | 45d |
|  | 9 | **J160** |  | 2027-01-19 | 2027-02-26 |  |  |
| DH.1600B-EQP-145 |  | Gallery 1603 - J160/Line-Ups // Set CRAH-DH1600-39 | 1d | 2027-01-19 | 2027-01-19 | DH.1600B-EQP-130 SS | 2d |
| DH.1600B-EQP-148 |  | Gallery 1603 - J160/Line-Ups // Set CRAH-DH1600-40 | 1d | 2027-01-19 | 2027-01-19 | DH.1600B-EQP-145 FF, DH.1600B-EQP-145 SS | 2d |
| DH.1600B-EQP-149 |  | Gallery 1603 - J160/Line-Ups // Set MOD J140-01 | 1d | 2027-01-19 | 2027-01-19 | DH.1600B-EQP-148 FF | 52d |
| DH.1600B-EQP-150 |  | Gallery 1603 - J160/Line-Ups // Set MOD J140-02 | 1d | 2027-01-19 | 2027-01-19 | DH.1600B-EQP-149 SS | 52d |
| DH.1600B-EQP-152 |  | Gallery 1603 - J160/Line-Ups // Pull Cable Tray Feed from MOD to CRAHU's | 5d | 2027-01-20 | 2027-01-26 | DH.1600B-EQP-150 | 58d |
| DH.1600B-EQP-154 |  | Gallery 1603 - J160/Line-Ups // Mount Electrial Gear for Chiller Controls | 10d | 2027-01-20 | 2027-02-02 | DH.1600B-EQP-150 | 52d |
| DH.1600B-EQP-215 |  | Gallery 1603 - J160/Line-Ups // Set CDU-DH1600-39 | 1d | 2027-01-20 | 2027-01-20 | DH.1600B-EQP-150 | 66d |
| DH.1600B-EQP-216 |  | Gallery 1603 - J160/Line-Ups // Set CDU-DH1600-40 | 1d | 2027-01-21 | 2027-01-21 | DH.1600B-EQP-215 | 66d |
| DH.1600B-EQP-151 |  | Gallery 1603 - J160/Line-Ups // Pull Feeder from SWD to MOD | 1d | 2027-01-22 | 2027-01-22 | DH.1600B-EQP-150, DH.1600B-EQP-216 | 66d |
| DH.1600B-EQP-146 |  | Gallery 1603 - J160/Line-Ups // Connect CRAH units | 10d | 2027-01-26 | 2027-02-08 | DH.1600B-EQP-148, DH.1600B-EQP-145 SS+5d | 45d |
| DH.1600B-EQP-153 |  | Gallery 1603 - J160/Line-Ups // Mechanical Connections to CRAHU Units | 10d | 2027-01-26 | 2027-02-08 | DH.1600B-EQP-148 SS+5d | 50d |
| DH.1600B-EQP-159 |  | Gallery 1603 - J160/Line-Ups // Pull Feeder and Branch circuits to MIsc equipment and Chiller controls | 10d | 2027-01-26 | 2027-02-08 | DH.1600B-EQP-154 SS+4d | 52d |
| DH.1600B-EQP-155 |  | Gallery 1603 - J160/Line-Ups // Pull Cable Tray Feed from MOD to CRAHU's | 5d | 2027-01-27 | 2027-02-02 | DH.1600B-EQP-152 | 58d |
| DH.1600B-EQP-158 |  | Gallery 1603 - J160/Line-Ups // Terminate CRAHU Electrical Connections | 5d | 2027-01-29 | 2027-02-04 | DH.1600B-EQP-152, DH.1600B-EQP-155 SS+2d | 58d |
| DH.1600B-EQP-161 |  | Gallery 1603 - J160/Line-Ups // Teminate all Misc Equipment and Chiller Controls | 10d | 2027-02-01 | 2027-02-12 | DH.1600B-EQP-159 SS+4d | 52d |
| DH.1600B-EQP-147 |  | Gallery 1603 - J160/Line-Ups // Condensate connections to Floor Drains | 10d | 2027-02-02 | 2027-02-16 | DH.1600B-EQP-146 SS+5d | 45d |
| DH.1600B-EQP-157 |  | Gallery 1603 - J160/Line-Ups // Terminat Mod Panels | 1d | 2027-02-03 | 2027-02-03 | DH.1600B-EQP-151, DH.1600B-EQP-152, DH.1600B-EQP-155 | 59d |
| DH.1600B-EQP-156 |  | Gallery 1603 - J160/Line-Ups // Condensate connections to Floor Drains | 10d | 2027-02-09 | 2027-02-23 | DH.1600B-EQP-147 SS+5d, DH.1600B-EQP-153 SS+5d | 45d |

| ID | WBS | Task | Duration | Start | Finish | Predecessors | Total float |
| --- | --- | --- | --- | --- | --- | --- | --- |
| DH.1600B-EQP-162 |  | Gallery 1603 - J160/Line-Ups // Electrical Gear FOD Inspection Pre-Start Up | 2d | 2027-02-16 | 2027-02-17 | DH.1600B-EQP-157, DH.1600B-EQP-161, DH.1600B-EQP-158 | 52d |
| DH.1600B-EQP-160 |  | Gallery 1603 - J160/Line-Ups // Mechanical Gear FOD Inspection Pre-Start Up | 3d | 2027-02-24 | 2027-02-26 | DH.1600B-EQP-146, DH.1600B-EQP-153, DH.1600B-EQP-147, DH.1600B-EQP-156 | 45d |
|  | 10 | **K160** |  | 2027-01-20 | 2027-03-01 |  |  |
| DH.1600B-EQP-163 |  | Gallery 1603 - K160/Line-Ups // Set CRAH-DH1600-41 | 1d | 2027-01-20 | 2027-01-20 | DH.1600B-EQP-148 | 2d |
| DH.1600B-EQP-166 |  | Gallery 1603 - K160/Line-Ups // Set CRAH-DH1600-42 | 1d | 2027-01-20 | 2027-01-20 | DH.1600B-EQP-163 FF, DH.1600B-EQP-163 SS | 2d |
| DH.1600B-EQP-167 |  | Gallery 1603 - K160/Line-Ups // Set MOD K140-01 (Does No apply) | 1d | 2027-01-20 | 2027-01-20 | DH.1600B-EQP-166 FF | 51d |
| DH.1600B-EQP-168 |  | Gallery 1603 - K160/Line-Ups // Set MOD K140-02 (Does No apply) | 1d | 2027-01-20 | 2027-01-20 | DH.1600B-EQP-167 SS | 51d |
| DH.1600B-EQP-169 |  | Gallery 1603 - K160/Line-Ups // Pull Feeder from SWD to MOD | 1d | 2027-01-21 | 2027-01-21 | DH.1600B-EQP-168 | 67d |
| DH.1600B-EQP-170 |  | Gallery 1603 - K160/Line-Ups // Pull Cable Tray Feed from MOD to CRAHU's | 5d | 2027-01-21 | 2027-01-27 | DH.1600B-EQP-168 | 57d |
| DH.1600B-EQP-172 |  | Gallery 1603 - K160/Line-Ups // Mount Electrial Gear for Chiller Controls | 10d | 2027-01-21 | 2027-02-03 | DH.1600B-EQP-168 | 51d |
| DH.1600B-EQP-164 |  | Gallery 1603 - K160/Line-Ups // Connect CRAH units | 10d | 2027-01-27 | 2027-02-09 | DH.1600B-EQP-166, DH.1600B-EQP-163 SS+5d | 44d |
| DH.1600B-EQP-171 |  | Gallery 1603 - K160/Line-Ups // Mechanical Connections to CRAHU Units | 10d | 2027-01-27 | 2027-02-09 | DH.1600B-EQP-166 SS+5d | 49d |
| DH.1600B-EQP-177 |  | Gallery 1603 - K160/Line-Ups // Pull Feeder and Branch circuits to MIsc equipment and Chiller controls | 10d | 2027-01-27 | 2027-02-09 | DH.1600B-EQP-172 SS+4d | 51d |
| DH.1600B-EQP-173 |  | Gallery 1603 - K160/Line-Ups // Pull Cable Tray Feed from MOD to CRAHU's | 5d | 2027-01-28 | 2027-02-03 | DH.1600B-EQP-170 | 57d |
| DH.1600B-EQP-176 |  | Gallery 1603 - K160/Line-Ups // Terminate CRAHU Electrical Connections | 5d | 2027-02-01 | 2027-02-05 | DH.1600B-EQP-170, DH.1600B-EQP-173 SS+2d | 57d |
| DH.1600B-EQP-179 |  | Gallery 1603 - K160/Line-Ups // Teminate all Misc Equipment and Chiller Controls | 10d | 2027-02-02 | 2027-02-16 | DH.1600B-EQP-177 SS+4d | 51d |
| DH.1600B-EQP-165 |  | Gallery 1603 - K160/Line-Ups // Condensate connections to Floor Drains | 10d | 2027-02-03 | 2027-02-17 | DH.1600B-EQP-164 SS+5d | 44d |
| DH.1600B-EQP-175 |  | Gallery 1603 - K160/Line-Ups // Terminat Mod Panels | 1d | 2027-02-04 | 2027-02-04 | DH.1600B-EQP-169, DH.1600B-EQP-170, DH.1600B-EQP-173 | 58d |
| DH.1600B-EQP-174 |  | Gallery 1603 - K160/Line-Ups // Condensate connections to Floor Drains | 10d | 2027-02-10 | 2027-02-24 | DH.1600B-EQP-165 SS+5d, DH.1600B-EQP-171 SS+5d | 44d |
| DH.1600B-EQP-180 |  | Gallery 1603 - K160/Line-Ups // Electrical Gear FOD Inspection Pre-Start Up | 2d | 2027-02-17 | 2027-02-18 | DH.1600B-EQP-175, DH.1600B-EQP-179, DH.1600B-EQP-176 | 51d |
| DH.1600B-EQP-178 |  | Gallery 1603 - K160/Line-Ups // Mechanical Gear FOD Inspection Pre-Start Up | 3d | 2027-02-25 | 2027-03-01 | DH.1600B-EQP-164, DH.1600B-EQP-171, DH.1600B-EQP-165, DH.1600B-EQP-174 | 44d |
|  | 11 | **R160** |  | 2027-01-20 | 2027-03-01 |  |  |
| DH.1600B-EQP-181 |  | Gallery 1603 - R160/Line-Ups // Set CRAH-DH1600-43 | 1d | 2027-01-20 | 2027-01-20 | DH.1600B-EQP-166 SS | 2d |
| DH.1600B-EQP-184 |  | Gallery 1603 - R160/Line-Ups // Set CRAH-DH1600-44 | 1d | 2027-01-20 | 2027-01-20 | DH.1600B-EQP-181 FF, DH.1600B-EQP-181 SS | 6d |
| DH.1600B-EQP-185 |  | Gallery 1603 - R160/Line-Ups // Set MOD R140-01 (No Apply) | 1d | 2027-01-20 | 2027-01-20 | DH.1600B-EQP-184 FF | 11d |
| DH.1600B-EQP-186 |  | Gallery 1603 - R160/Line-Ups // Set MOD R140-02 (Does No apply) | 1d | 2027-01-20 | 2027-01-20 | DH.1600B-EQP-185 SS | 11d |
| DH.1600B-EQP-187 |  | Gallery 1603 - R160/Line-Ups // Pull Feeder from SWD to MOD | 1d | 2027-01-21 | 2027-01-21 | DH.1600B-EQP-186 | 24d |
| DH.1600B-EQP-188 |  | Gallery 1603 - R160/Line-Ups // Pull Cable Tray Feed from MOD to CRAHU's | 5d | 2027-01-21 | 2027-01-27 | DH.1600B-EQP-186 | 11d |
| DH.1600B-EQP-190 |  | Gallery 1603 - R160/Line-Ups // Mount Electrial Gear for Chiller Controls | 10d | 2027-01-21 | 2027-02-03 | DH.1600B-EQP-186 | 13d |
| DH.1600B-EQP-195 |  | Gallery 1603 - R160/Line-Ups // Pull Feeder and Branch circuits to Misc equipment and Chiller controls | 10d | 2027-01-21 | 2027-02-03 | DH.1600B-EQP-190 SS | 13d |
| DH.1600B-EQP-197 |  | Gallery 1603 - R160/Line-Ups // Teminate all Misc Equipment and Chiller Controls | 10d | 2027-01-21 | 2027-02-03 | DH.1600B-EQP-195 SS | 17d |
| DH.1600B-EQP-182 |  | Gallery 1603 - R160/Line-Ups // Connect CRAH units | 10d | 2027-01-27 | 2027-02-09 | DH.1600B-EQP-184, DH.1600B-EQP-181 SS+5d | 2d |
| DH.1600B-EQP-189 |  | Gallery 1603 - R160/Line-Ups // Mechanical Connections to CRAHU Units | 10d | 2027-01-27 | 2027-02-09 | DH.1600B-EQP-184 SS+5d | 7d |
| DH.1600B-EQP-191 |  | Gallery 1603 - R160/Line-Ups // Pull Cable Tray Feed from MOD to CRAHU's | 5d | 2027-01-28 | 2027-02-03 | DH.1600B-EQP-188 | 11d |
| DH.1600B-EQP-194 |  | Gallery 1603 - R160/Line-Ups // Terminate CRAHU Electrical Connections | 5d | 2027-02-01 | 2027-02-05 | DH.1600B-EQP-188, DH.1600B-EQP-191 SS+2d | 15d |
| DH.1600B-EQP-183 |  | Gallery 1603 - R160/Line-Ups // Condensate connections to Floor Drains | 10d | 2027-02-03 | 2027-02-17 | DH.1600B-EQP-182 SS+5d | 2d |
| DH.1600B-EQP-193 |  | Gallery 1603 - R160/Line-Ups // Terminat Mod Panels | 1d | 2027-02-04 | 2027-02-04 | DH.1600B-EQP-187, DH.1600B-EQP-188, DH.1600B-EQP-191 | 16d |
| DH.1600B-EQP-198 |  | Gallery 1603 - R160/Line-Ups // Electrical Gear FOD Inspection Pre-Start Up | 2d | 2027-02-08 | 2027-02-09 | DH.1600B-EQP-193, DH.1600B-EQP-197, DH.1600B-EQP-194 | 15d |
| DH.1600B-EQP-192 |  | Gallery 1603 - R160/Line-Ups // Condensate connections to Floor Drains | 10d | 2027-02-10 | 2027-02-24 | DH.1600B-EQP-183 SS+5d, DH.1600B-EQP-189 SS+5d | 2d |
| DH.1600B-EQP-196 |  | Gallery 1603 - R160/Line-Ups // Mechanical Gear FOD Inspection Pre-Start Up | 3d | 2027-02-25 | 2027-03-01 | DH.1600B-EQP-182, DH.1600B-EQP-189, DH.1600B-EQP-183, DH.1600B-EQP-192 | 2d |
|  | 12 | **Equipment Connections** |  | 2027-01-22 | 2027-02-16 |  |  |
|  | 1 | **CRAH** |  | 2027-02-04 | 2027-02-16 |  |  |
| DH1600-004 |  | Gallery 1603 // DH 1600 / Elec Room // CRAH Duct Work Termination | 2d | 2027-02-04 | 2027-02-05 | DH.1600B-EQP-191 | 11d |
| DH1600-003 |  | Gallery 1603 // DH 1600 / Elec Room // CRAH Chilled Water | 2d | 2027-02-08 | 2027-02-09 | DH1600-004 | 11d |
| DH1600-001 |  | Gallery 1603 // DH 1600 / Elec Room // CRAH Power Connections | 2d | 2027-02-10 | 2027-02-11 | DH1600-003 | 11d |
| DH1600-002 |  | Gallery 1603 // DH 1600 / Elec Room // CRAH LV Connections | 2d | 2027-02-12 | 2027-02-16 | DH1600-001 | 11d |
|  | 2 | **CDU** |  | 2027-02-04 | 2027-02-11 |  |  |
| DH1600-007 |  | Gallery 1603 // DH 1600 / Elec Room // CDU Chilled Water Connections | 2d | 2027-02-04 | 2027-02-05 | DH.1600B-EQP-195 | 13d |
| DH1600-005 |  | Gallery 1603 // DH 1600 /Elec Room // CDU Power Connections | 2d | 2027-02-08 | 2027-02-09 | DH1600-007 | 13d |
| DH1600-006 |  | Gallery 1603 // DH 1600 / Elec Room // CDU Controls Connections | 2d | 2027-02-10 | 2027-02-11 | DH1600-005 | 13d |
|  | 3 | **MOD** |  | 2027-01-22 | 2027-01-27 |  |  |
| DH1600-008 |  | Gallery 1603 // DH 1600 / Elec Room // MOD Power Connections | 2d | 2027-01-22 | 2027-01-25 | DH.1600B-EQP-187 | 24d |
| DH1600-009 |  | Gallery 1603 // DH 1600 / Elec Room // MOD LV Connections | 2d | 2027-01-26 | 2027-01-27 | DH1600-008 | 24d |
|  | 6 | **Corridors** |  | 2026-10-06 | 2027-01-12 |  |  |
|  | 1 | **Corridor 1000A (DO NOT APPLY)** |  |  |  |  |  |
|  | 3 | **Corridor 1000** |  | 2026-10-06 | 2027-01-12 |  |  |
| DH.160012078 |  | DH 1600/Corridor 1000 // Seal concrete | 1d | 2026-10-06 | 2026-10-06 | DH.16001000 | 47d |
| DH.160012068 |  | DH 1600/Corridor 1000 // MEPF Overhead Hangers | 5d | 2026-10-07 | 2026-10-14 | DH.160012078 | 47d |
| B120001.3203 |  | DH 1600/Corridor 1000 // Install Overhead Cable Ladder / 36" Cable Tray - TFO | 5d | 2026-10-15 | 2026-10-21 | DH.160012068 | 49d |
| B120001.3204 |  | DH 1600/Corridor 1000 // Install Overhead HAC - TFO | 5d | 2026-10-22 | 2026-10-28 | B120001.3203 | 49d |
| DH.160012071 |  | DH 1600/Corridor 1000 // MEPF high overhead install | 3d | 2026-10-29 | 2026-11-02 | DH.160012068, B120001.3204 | 49d |
| DH.160012069 |  | DH 1600/Corridor 1000 // Frame walls | 3d | 2026-11-20 | 2026-11-24 | DH.16001040 | 34d |
| DH.160012072 |  | DH 1600/Corridor 1000 // MEP rough in walls | 3d | 2026-11-25 | 2026-11-30 | DH.160012071, DH.160012069 | 34d |
| DH.160012073 |  | DH 1600/Corridor 1000 // In wall inspection | 1d | 2026-12-01 | 2026-12-01 | DH.160012072 | 34d |
| DH.160012070 |  | DH 1600/Corridor 1000 // Install Top Down Sheetrock | 3d | 2026-12-02 | 2026-12-04 | DH.160012073 | 34d |
| DH.160012074 |  | DH 1600/Corridor 1000 // Install Balance of Sheetrock on Walls | 5d | 2026-12-07 | 2026-12-11 | DH.160012071, DH.160012070 | 34d |
| DH.160012075 |  | DH 1600/Corridor 1000 // Tape and finish walls | 8d | 2026-12-14 | 2026-12-23 | DH.160012074 | 34d |
| DH.160012076 |  | DH 1600/Corridor 1000 // Install wall door frames | 3d | 2026-12-24 | 2026-12-29 | DH.160012075, DH.160012069 SS+1d | 34d |
| DH.160012077 |  | DH 1600/Corridor 1000 // Prime and Paint first coat walls | 3d | 2026-12-24 | 2026-12-29 | DH.160012075 | 34d |
| DH.160012079 |  | DH 1600/Corridor 1000 // Install lights and exit signs | 3d | 2026-12-30 | 2027-01-04 | DH.160012076, DH.160012077 | 34d |

| ID | WBS | Task | Duration | Start | Finish | Predecessors | Total float |
| --- | --- | --- | --- | --- | --- | --- | --- |
| DH.160012080 |  | DH 1600/Corridor 1000 // Final Coat Paint & Touchup Walls | 4d | 2027-01-05 | 2027-01-08 | DH.160012079 | 34d |
| DH.160012081 |  | DH 1600/Corridor 1000 // Install MEP Devices and Trim | 2d | 2027-01-11 | 2027-01-12 | DH.160012080 | 34d |
| DH.160012166 |  | DH 1600/Corridor 1000 // Ready to Receive Equipment | 0d | 2027-01-12 | 2027-01-12 | DH.160012081 FF | 34d |
|  | 2 | **Corridor 1000G** |  | 2026-10-07 | 2026-12-17 |  |  |
| DH.160012092 |  | DH 1600/Corridor 1000G // Seal concrete | 1d | 2026-10-07 | 2026-10-07 | DH.160012078 | 50d |
| B120001.3205 |  | DH 1600/Corridor 1000G // Install Overhead Cable Ladder / 36" Cable Tray - TFO | 5d | 2026-10-08 | 2026-10-15 | DH.160012092 | 50d |
| DH.160012082 |  | DH 1600/Corridor 1000G // MEPF Overhead Hangers | 5d | 2026-10-15 | 2026-10-21 | DH.160012068 | 47d |
| B120001.3206 |  | DH 1600/Corridor 1000G // Install Overhead HAC - TFO | 5d | 2026-10-16 | 2026-10-22 | B120001.3205 | 50d |
| DH.160012085 |  | DH 1600/Corridor 1000G // MEPF high overhead install | 3d | 2026-10-23 | 2026-10-27 | DH.160012092, B120001.3206 | 50d |
| DH.160012083 |  | DH 1600/Corridor 1000G // Frame walls | 3d | 2026-10-28 | 2026-10-30 | DH.160012085, DH.160012082 | 50d |
| DH.160012086 |  | DH 1600/Corridor 1000G // MEP rough in walls | 3d | 2026-11-02 | 2026-11-04 | DH.160012083 | 50d |
| DH.160012087 |  | DH 1600/Corridor 1000G // In wall inspection | 1d | 2026-11-05 | 2026-11-05 | DH.160012086 | 50d |
| DH.160012084 |  | DH 1600/Corridor 1000G// Install Top Down Sheetrock | 3d | 2026-11-06 | 2026-11-10 | DH.160012087 | 50d |
| DH.160012088 |  | DH 1600/Corridor 1000G// Install Balance of Sheetrock on Walls | 5d | 2026-11-12 | 2026-11-18 | DH.160012084 | 50d |
| DH.160012089 |  | DH 1600/Corridor 1000G // Tape and finish walls | 8d | 2026-11-19 | 2026-12-01 | DH.160012088 | 50d |
| DH.160012090 |  | DH 1600/Corridor 1000G) // Install wall door frames | 3d | 2026-12-02 | 2026-12-04 | DH.160012089, DH.160012083 SS+1d | 50d |
| DH.160012091 |  | DH 1600/Corridor 1000G // Prime and Paint first coat walls | 3d | 2026-12-02 | 2026-12-04 | DH.160012089 | 50d |
| DH.160012093 |  | DH 1600/Corridor 1000G // Install lights and exit signs | 3d | 2026-12-07 | 2026-12-09 | DH.160012090, DH.160012091 | 50d |
| DH.160012094 |  | DH 1600/Corridor 1000G // Final Coat Paint & Touchup Walls | 4d | 2026-12-10 | 2026-12-15 | DH.160012093 | 50d |
| DH.160012095 |  | DH 1600/Corridor 1000G // Install MEP Devices and Trim | 2d | 2026-12-16 | 2026-12-17 | DH.160012094 | 50d |
| DH.160012167 |  | DH 1600/Corridor 1000G // Ready to Receive Equipment | 0d | 2026-12-17 | 2026-12-17 | DH.160012095 FF | 50d |
|  | 10 | **Flex 1000G1** |  | 2026-10-08 | 2026-12-30 |  |  |
| DH.1600..1000 |  | DH 1600/Flex 1000G1 // Seal Concrete | 2d | 2026-10-08 | 2026-10-09 | DH.160012092 | 54d |
| DH.1600..1010 |  | DH 1600/Flex 1000G1 // MEPF Layout of Overhead Supports | 2d | 2026-10-22 | 2026-10-23 | DH.160012082, DH.1600..1000 | 47d |
| DH.1600..1020 |  | DH 1600/Flex 1000G1 // MEPF Install High Overhead Systems | 6d | 2026-10-26 | 2026-11-02 | DH.1600..1010 | 47d |
| DH.1600..1040 |  | DH 1600/Flex 1000G1 // Frame Walls including Backing | 4d | 2026-11-03 | 2026-11-06 | DH.1600..1010, DH.1600..1020 | 47d |
| DH.1600..1060 |  | DH 1600/Flex 1000G1 // MEPF Install Rough Wall | 2d | 2026-11-09 | 2026-11-10 | DH.1600..1040, DH.1600..1020 | 47d |
| DH.1600..1080 |  | DH 1600/Flex 1000G1 // Rough Wall Inspection (Approval to Close up) | 1d | 2026-11-12 | 2026-11-12 | DH.1600..1060 | 47d |
| DH.1600..1070 |  | DH 1600/Flex 1000G1 // Install Top Down Sheet Rock | 5d | 2026-11-13 | 2026-11-19 | DH.1600..1040, DH.1600..1080 | 47d |
| DH.1600..1090 |  | DH 1600/Flex 1000G1 // Install Balance of Sheetrock | 3d | 2026-11-20 | 2026-11-24 | DH.1600..1070 | 47d |
| DH.1600..1100 |  | DH 1600/Flex 1000G1 // Tape and Finish Walls | 6d | 2026-11-25 | 2026-12-03 | DH.1600..1090 | 47d |
| DH.1600..1110 |  | DH 1600/Flex 1000G1 // Prime and First Coat of Paint | 2d | 2026-12-04 | 2026-12-07 | DH.1600..1100 | 47d |
| DH.1600..1120 |  | DH 1600/Flex 1000G1 // Install MEPF Overhead Ceiling Rough | 3d | 2026-12-08 | 2026-12-10 | DH.1600..1110 | 47d |
| DH.1600..1130 |  | DH 1600/Flex 1000G1 // Install Lighting, Fire Alarm & Fire Protection | 2d | 2026-12-11 | 2026-12-14 | DH.1600..1120 | 47d |
| DH.1600..1140 |  | DH 1600/Flex 1000G1 // Wall Touch up Final Coat of Paint | 3d | 2026-12-15 | 2026-12-17 | DH.1600..1130 | 47d |
| DH.1600..1050 |  | DH 1600/Flex 1000G1 // Install Door Frames | 1d | 2026-12-18 | 2026-12-18 | DH.1600..1040 FF, DH.1600..1140 | 86d |
| DH.1600..1150 |  | DH 1600/Flex 1000G1 // Install Wall Base, Trim, and Devices | 3d | 2026-12-18 | 2026-12-22 | DH.1600..1140 | 47d |
| DH.1600..1161 |  | DH 1600/Flex 1000G1 // Ready to Receive Equipment | 0d | 2026-12-22 | 2026-12-22 | DH.1600..1150 FF | 47d |
| DH.1600..1160 |  | DH 1600/Flex 1000G1 // Suffolk Pre Punch | 5d | 2026-12-23 | 2026-12-30 | DH.1600..1050, DH.1600..1161 | 84d |
|  | 11 | **IDF 1000G2 (Missing Activitities)** |  |  |  |  |  |
|  | 12 | **Preaction 1000G3 (Missing Activities)** |  |  |  |  |  |
|  | 13 | **Restroom-Dock & Janitor** |  | 2026-09-30 | 2026-12-10 |  |  |
| DH.1600010 |  | DH 1600/Restroom-Dock & Janitor // MEPF overhead layout | 5d | 2026-09-30 | 2026-10-06 | DH.16000.1010 | 55d |
| DH.1600020 |  | DH 1600/Restroom-Dock & Janitor // Layout walls | 5d | 2026-10-07 | 2026-10-14 | DH.1600010 | 55d |
| DH.1600030 |  | DH 1600/Restroom-Dock & Janitor // Frame walls | 5d | 2026-10-15 | 2026-10-21 | DH.1600020 | 55d |
| DH.1600050 |  | DH 1600/Restroom-Dock & Janitor // Install Top Down Sheetrock | 5d | 2026-10-20 | 2026-10-26 | DH.1600030 SS+3d | 55d |
| DH.1600060 |  | DH 1600/Restroom-Dock & Janitor // MEP rough in walls | 3d | 2026-10-27 | 2026-10-29 | DH.1600050 | 55d |
| DH.1600080 |  | DH 1600/Restroom-Dock & Janitor // MEPF high overhead install | 3d | 2026-10-27 | 2026-10-29 | DH.1600050 | 56d |
| DH.1600070 |  | DH 1600/Restroom-Dock & Janitor // In wall inspection | 1d | 2026-10-30 | 2026-10-30 | DH.1600060 | 55d |
| DH.1600090 |  | DH 1600/Restroom-Dock & Janitor // Install Balance of Sheetrock on Walls | 5d | 2026-11-02 | 2026-11-06 | DH.1600070, DH.1600050 SS, DH.1600080 | 55d |
| DH.1600100 |  | DH 1600/Restroom-Dock & Janitor // Tape and finish walls | 8d | 2026-11-09 | 2026-11-19 | DH.1600090 | 55d |
| DH.1600000 |  | DH 1600/Restroom-Dock & Janitor // Seal concrete | 5d | 2026-11-20 | 2026-11-27 | DH.1600100 | 55d |
| DH.1600110 |  | DH 1600/Restroom-Dock & Janitor // Prime and Paint first coat walls | 3d | 2026-11-20 | 2026-11-24 | DH.1600100 | 57d |
| DH.1600040 |  | DH 1600/Restroom-Dock & Janitor // Install wall door frames | 3d | 2026-11-25 | 2026-11-30 | DH.1600030 SS+1d, DH.1600110 | 57d |
| DH.1600120 |  | DH 1600/Restroom-Dock & Janitor // Install lights and exit signs | 3d | 2026-11-30 | 2026-12-02 | DH.1600110, DH.1600000 | 55d |
| DH.1600130 |  | DH 1600/Restroom-Dock & Janitor // Final Coat Paint & Touchup Walls | 4d | 2026-12-03 | 2026-12-08 | DH.1600120, DH.1600040 | 55d |
| DH.1600140 |  | DH 1600/Restroom-Dock & Janitor // Install MEP Devices and Trim | 2d | 2026-12-09 | 2026-12-10 | DH.1600130 | 55d |
|  | 1 | **1600 Energization, Start-up & Commissioning** |  | 2027-03-17 | 2027-06-22 |  |  |
|  | 1 | **Energization & L3 Prefunctional Testing** |  | 2027-03-17 | 2027-05-14 |  |  |
| DH1600.L3CX.19 |  | DH1600 L3 Start | 0d | 2027-03-17 | 2027-03-17 | DH.1600B-EQP-198, DH.1600B-EQP-196, DH1600-002, DH1600-006, DH1600-009, DH.160012081, DH.160012166, DH.160012095, DH.160012167, DH.1600..1161, DH.1600140, DH.1600A-EQP-215, DH.1600A-EQP-218, DH.1600A-EQP-220, DH1600.MG.A110.8685, DH1600.MG.A110.8689, DH1600.MG.A110.8692, DH.160012164, DH.1600.3058, DH.1400.3041, DH.1600.3059, DH.1600.1240, DH.1600.1300, DH.1600.1330, DH.1600.1310, DH.1600.3037, DH.1400.3068, DH.1600.3060, DH.1600.3054, DH.1600.3055, DH.1600.3057, DH.1600.3056, DH.160012162, DH.16000.1110, DH.16000.1712, DH.160012163 | -9d |
| DH1600.L3CX.BMS.1 |  | DH1600 L3 PTPs & SOOs – BMS | 40d | 2027-03-17 | 2027-05-11 | DH1600.L3CX.ELEC.43 SS | -9d |
| DH1600.L3CX.ELEC.43 |  | DH1600 L3 FTEs | 5d | 2027-03-17 | 2027-03-23 | DH1600.L3CX.19 SS | -9d |
| DH1600.L3CX.MECH.3 |  | DH1600 L3 Startup / Pre-Functional – MECHANICAL | 20d | 2027-03-22 | 2027-04-16 | DH1600.L3CX.ELEC.43 SS+3d | -2d |
| DH1600.L3CX.ELEC.33 |  | DH1600 L3 Startup / Pre-Functional – ELECTRICAL | 15d | 2027-03-24 | 2027-04-13 | DH1600.L3CX.ELEC.43 | 3d |
| DH1600.L3CX.MECH.13 |  | DH1600 L3 TAB (Air, Water and Reports) – MECHANICAL | 10d | 2027-04-28 | 2027-05-11 | DH1600.L3CX.BMS.1 FF, DH1600.L3CX.MECH.3 | -9d |
| DH1600.L3CX.MECH.23 |  | DH1600 L3 FLS – MECHANICAL | 10d | 2027-04-30 | 2027-05-13 | DH1600.L3CX.ELEC.33, DH1600.L3CX.MECH.3, DH1600.L3CX.MECH.13 FF+2d | -9d |
| DH1600.L3CX.9 |  | DH1600 L3 Cx Complete | 0d | 2027-05-14 | 2027-05-14 | DH1600.L3CX.MECH.23 FF, DH1600.L3CX.MECH.13 FF | -9d |
|  | 2 | **L4 Function Testing** |  | 2027-04-19 | 2027-05-21 |  |  |
| DH1600.L4CX.COMM.130 |  | DH1600 L4 Cx | 25d | 2027-04-19 | 2027-05-21 | DH1600.L3CX.9 FF+6d | -1d |
|  | 3 | **L5 Integrated System Testing (IST)** |  | 2027-05-04 | 2027-06-22 |  |  |

| ID | WBS | Task | Duration | Start | Finish | Predecessors | Complete | Total float |
| --- | --- | --- | --- | --- | --- | --- | --- | --- |
| DH1600.L5CX.COMM.200 |  | DH1600 L5 Integrated Systems Testing - IST | 20d | 2027-05-04 | 2027-06-01 | DH1600.L4CX.COMM.130 FF+6d |  | -1d |
| DH1600.A2110.CO |  | DH1600– Phase Closeout Period O&M / TRAINING/ CLOSEOUT DOCS | 15d | 2027-06-02 | 2027-06-22 | DH1600.L5CX.COMM.210 |  | 0d |
| DH1600.L5CX.COMM.210 |  | DH1600 – IST / L5 Cx Complete | 0d | 2027-06-02 | 2027-06-02 | DH1600.L5CX.COMM.200 |  | -1d |
|  | 2 | **Commissioning & Start Up** |  |  |  |  |  |  |
|  | 6 | **Archived (Deleted) Activities** |  | 2026-06-03 | 2026-10-23 |  |  |  |
| ARC-DEL-ACT-01 |  | Start Deleted | 1d | 2026-08-18 A | 2026-09-30 | M1010 SS |  | 169d |
| ARC-DEL-ACT-1 |  | Finish Deleted | 1d | 2026-10-23 | 2026-10-23 | PR16-2910, PR16-2900, PR16-2890, PR16-2860, PR16-2850, PR16-2800, PR16-2780, PR16-2750, PR16-2930, PR16-2920, PR16-2880, PR16-2870, PR16-2840, PR16-2830, PR16-2820, PR16-2810, PR16-2790, PR16-2770, PR16-2760, PR16-2740, PR16-2730, PR16-2720, PR16-2710, PR15-2680, PR15-2670, PR15-2660, PR15-2630, PR15-2620, PR15-2570, PR15-2550, PR15-2520, PR15-2700, PR15-2690, PR15-2650, PR15-2640, PR15-2610, PR15-2600, PR15-2590, PR15-2580, PR15-2560, PR15-2540, PR15-2530, PR15-2510, PR15-2500, PR15-2490, PR15-2480, PR14-2450, PR14-2440, PR14-2430, PR14-2400, PR14-2390, PR14-2340, PR14-2320, PR14-2290, PR14-2470, PR14-2460, PR14-2420, PR14-2410, PR14-2380, PR14-2370, PR14-2360, PR14-2350, PR14-2330, PR14-2310, PR14-2300, PR14-2280, PR14-2270, PR14-2260, PR14-2250, PR13-2220, PR13-2210, PR13-2200, PR13-2170, PR13-2160, PR13-2110, PR13-2090, PR13-2060, PR13-2240, PR13-2230, PR13-2190, PR13-2180, PR13-2150, PR13-2140, PR13-2130, PR13-2120, PR13-2100, PR13-2080, PR13-2070, PR13-2050, PR13-2040, PR13-2030, PR13-2020, PR11-1760, PR11-1750, PR11-1740, PR11-1710, PR11-1700, PR11-1110, PR11-1040, PR11-1030, PR11-1780, PR11-1770, PR11-1730, PR11-1720, PR11-1690, PR11-1680, PR11-1670, PR11-1100, PR11-1090, PR11-1080, PR11-1070, PR11-1060, PR11-1050, PR11-1020, PR11-1010, PR12-1990, PR12-1980, PR12-1970, PR12-1940, PR12-1930, PR12-1880, PR12-1860, PR12-1830, PR12-2010, PR12-2000, PR12-1960, PR12-1950, PR12-1920, PR12-1910, PR12-1900, PR12-1890, PR12-1870, PR12-1850, PR12-1840, PR12-1820, PR12-1810, PR12-1800, PR12-1790, DH16000-03, B12000-B-EQP-185, B12000-B-EQP-186, DH.1300B-EQP-192, DH.1300.1190, DHXXXX.IST.4100, DHXXXX.IST.5100, DH-1200-01, DH1200.IST.4100, DH13000-01, DH1300, DH13000-02, DH1300.IST.4100, DH1300.IST.5100, DH1200.IST.5100, DH14000-01, DH15000-01, DH1500.IST.4100, DH1400.IST.4100, DH1400.IST.5100, DH16000-01, DH1600.IST.4100, A5860, DH1100.L5CX.COMM.160, DHXXXX.IST.8000, DHXXXX.IST.6100, DHXXXX.IST.6200, DHXXXX.IST.6300, DH1200, DH-1200-02, DH1200.L3CX.ELEC.13, DH1200.IST.8000, DH1200.IST.6100, DH1200.IST.6200, DH1200.IST.6300, DH1300.L3CX.ELEC.13, DH1300.IST.8000, DH1300.IST.6100, DH1300.IST.6200, DH1300.IST.6300, DH1400, DH14000-02, DH1400.L3CX.ELEC.13, DH1400.IST.8000, DH1400.IST.6100, DH1400.IST.6200, DH1400.IST.6300, DH1500, DH15000-02, DH1500.L3CX.ELEC.13, DH1500.IST.8000, DH1500.IST.6100, DH1500.IST.6200, DH1500.IST.6300, DH1500.IST.5100, DH1600, DH16000-02, DH1600.L3CX.ELEC.13, DH1600.IST.8000, DH1600.IST.6100, DH1600.IST.6200, DH1600.IST.6300, DH1600.IST.5100, DH1100.L3CX.ELEC.003, DH-1200-03, DH13000-03, DH14000-03, DH15000-03, A5859, DH1400.L4CX.COMM.110, DH1100.L4CX.COMM.110, DH1100.L3CX.ELEC.13, DH1200.L3CX.ELEC.001, DH1200.L4CX.COMM.110, DH1200.L5CX.COMM.160, DH1200.L3CX.ELEC.3, DH1300.L3CX.ELEC.001, DH1300.L4CX.COMM.110, DH1300.L5CX.COMM.160, DH1300.L3CX.ELEC.3, DH1400.L3CX.ELEC.001, DH1400.L3CX.ELEC.3, DH1500.L3CX.ELEC.001, DH1500.L4CX.COMM.110, DH1500.L3CX.ELEC.3, DH1600.L3CX.ELEC.001, DH1600.L4CX.COMM.110, DH1600.L3CX.ELEC.3, DH1500.L5CX.COMM.160, DH1400.L5CX.COMM.160, DH1100.L3CX.ELEC.001, A5857, DH1100.L3CX.ELEC.3, DH1200.L3CX.ELEC.003, DH1300.L3CX.ELEC.003, DH1400.L3CX.ELEC.003, DH1500.L3CX.ELEC.003, DH1600.L3CX.ELEC.003, DH1600.L5CX.COMM.160, A5858 |  | 164d |
|  | 7 | **Owner Furnished Contractor Installed (OFCI)** |  | 2026-06-03 | 2026-07-22 |  |  |  |
|  | 1 | **DH1200 OFCI Procurement** |  | 2026-06-03 | 2026-07-15 |  |  |  |
|  | 1 | **Skidded** |  | 2026-06-03 | 2026-07-15 |  |  |  |
| PR12-1790 |  | DH 1200 Procurement / Skidded // OFCI - 1.25 MW House Generator Bottom Fed 48 Hr Delivery to site | 1d | 2026-06-03 A | 2026-06-03 A | ARC-DEL-ACT-01 | 100% |  |
| PR12-1800 |  | DH 1200 Procurement / Skidded // OFCI - Air Insulated Intermediate Medium Voltage Gear Delivery to Site | 1d | 2026-06-03 A | 2026-06-03 A | ARC-DEL-ACT-01 | 100% |  |
| PR12-1810 |  | DH 1200 Procurement / Skidded // OFCI - 34.5KV 2500KVA Pad Mount Transformer Delivery to Site | 1d | 2026-06-03 A | 2026-06-03 A | ARC-DEL-ACT-01 | 100% |  |
| PR12-1820 |  | DH 1200 Procurement / Skidded // OFCI Thermal Energy Storage Delivery to Site | 30d | 2026-06-03 A | 2026-07-15 A | ARC-DEL-ACT-01 | 100% |  |
| PR12-1840 |  | DH 1200 Procurement / Skidded // OFCI - 500 KVA 415V to Multi Tap PDU with (8) 400A Out Delivery to Site | 30d | 2026-06-03 A | 2026-07-15 A | ARC-DEL-ACT-01 | 100% |  |
| PR12-1850 |  | DH 1200 Procurement / Skidded // OFCI - Standard HSE STS Delivery to Site | 30d | 2026-06-03 A | 2026-07-15 A | ARC-DEL-ACT-01 | 100% |  |
| PR12-1870 |  | DH 1200 Procurement / Skidded // OFCI 2000A Reserve Tie Board Delivery to Site | 30d | 2026-06-03 A | 2026-07-15 A | ARC-DEL-ACT-01 | 100% |  |
| PR12-1890 |  | DH 1200 Procurement / Skidded // OFCI - 505 Pad Mount Vista Gear 38KV Metered Delivery to Site | 30d | 2026-06-03 A | 2026-07-15 A | ARC-DEL-ACT-01 | 100% |  |
| PR12-1900 |  | DH 1200 Procurement / Skidded // OFCI - Main SWBD Top or Bottom Fed 3P/3W Delivery to Site | 30d | 2026-06-03 A | 2026-07-15 A | ARC-DEL-ACT-01 | 100% |  |
| PR12-1910 |  | DH 1200 Procurement / Skidded // OFCI - 150kw UPS System Delivery to Site | 30d | 2026-06-03 A | 2026-07-15 A | ARC-DEL-ACT-01 | 100% |  |
| PR12-1920 |  | DH 1200 Procurement / Skidded // OFCI - 2000A COD Board Standard 3P/3W Top Fed Delivery to Site | 30d | 2026-06-03 A | 2026-07-15 A | ARC-DEL-ACT-01 | 100% |  |
| PR12-1950 |  | DH 1200 Procurement / Skidded // OFCI - 800A ATS Delivery to site | 30d | 2026-06-03 A | 2026-07-15 A | ARC-DEL-ACT-01 | 100% |  |
| PR12-1960 |  | DH 1200 Procurement / Skidded // OFCI - Electrical Equipment Skid Delivery to site | 30d | 2026-06-03 A | 2026-07-15 A | ARC-DEL-ACT-01 | 100% |  |
| PR12-2000 |  | DH 1200 Procurement / Skidded // OFCI - House RTU DH (DOAS) Delivery to site | 30d | 2026-06-03 A | 2026-07-15 A | ARC-DEL-ACT-01 | 100% |  |
| PR12-2010 |  | DH 1200 Procurement / Skidded // OFCI - House RTU DH Delivery to site | 30d | 2026-06-03 A | 2026-07-15 A | ARC-DEL-ACT-01 | 100% |  |
|  | 2 | **Non-Skidded** |  | 2026-06-03 | 2026-07-15 |  |  |  |
| PR12-1830 |  | DH 1200 Procurement / Non-Skidded // OFCI - 500KW Chilled Water CDU Delivery to Site | 30d | 2026-06-03 A | 2026-07-15 A | ARC-DEL-ACT-01 | 100% |  |
| PR12-1860 |  | DH 1200 Procurement / Non-Skidded // OFCI - 600A CRAH MOD Board 3P/3W Delivery to Site | 30d | 2026-06-03 A | 2026-07-15 A | ARC-DEL-ACT-01 | 100% |  |
| PR12-1880 |  | DH 1200 Procurement / Non-Skidded // OFCI - 500 Ton ACC with Free Cooling Delivery to Site | 30d | 2026-06-03 A | 2026-07-15 A | ARC-DEL-ACT-01 | 100% |  |
| PR12-1930 |  | DH 1200 Procurement / Non-Skidded // OFCI - 600A CRAH MOD Board 3P/3W Delivery to Site | 30d | 2026-06-03 A | 2026-07-15 A | ARC-DEL-ACT-01 | 100% |  |
| PR12-1940 |  | DH 1200 Procurement / Non-Skidded // OFCI - 225A CDU MOD Board Delivery to site | 30d | 2026-06-03 A | 2026-07-15 A | ARC-DEL-ACT-01 | 100% |  |
| PR12-1970 |  | DH 1200 Procurement / Non-Skidded // OFCI - Dual Fed 400KW Slab CRAH Delivery to site | 30d | 2026-06-03 A | 2026-07-15 A | ARC-DEL-ACT-01 | 100% |  |
| PR12-1980 |  | DH 1200 Procurement / Non-Skidded // OFCI - Single Fed 125KW Slab CRAH Delivery to site | 30d | 2026-06-03 A | 2026-07-15 A | ARC-DEL-ACT-01 | 100% |  |
| PR12-1990 |  | DH 1200 Procurement / Non-Skidded // OFCI - Single Fed 80KW RAF CRAH Delivery to site | 30d | 2026-06-03 A | 2026-07-15 A | ARC-DEL-ACT-01 | 100% |  |
|  | 2 | **DH1100 OFCI Procurement** |  | 2026-06-03 | 2026-07-15 |  |  |  |
|  | 1 | **Skidded** |  | 2026-06-03 | 2026-07-15 |  |  |  |
| PR11-1010 |  | DH 1100 Procurement / Skidded // OFCI - Air Insulated Intermediate Medium Voltage Gear Delivery to Site | 1d | 2026-06-03 A | 2026-06-03 A | ARC-DEL-ACT-01 | 100% |  |
| PR11-1020 |  | DH 1100 Procurement / Skidded // OFCI - 34.5KV 2500KVA Pad Mount Transformer Delivery to Site | 1d | 2026-06-03 A | 2026-06-03 A | ARC-DEL-ACT-01 | 100% |  |
| PR11-1050 |  | DH 1100 Procurement / Skidded // OFCI - 505 Pad Mount Vista Gear 38KV Metered Delivery to Site | 30d | 2026-06-03 A | 2026-07-15 A | ARC-DEL-ACT-01 | 100% |  |
| PR11-1060 |  | DH 1100 Procurement / Skidded // OFCI 2000A Reserve Tie Board Delivery to Site | 30d | 2026-06-03 A | 2026-07-15 A | ARC-DEL-ACT-01 | 100% |  |
| PR11-1070 |  | DH 1100 Procurement / Skidded // OFCI - Standard HSE STS Delivery to Site | 30d | 2026-06-03 A | 2026-07-15 A | ARC-DEL-ACT-01 | 100% |  |
| PR11-1080 |  | DH 1100 Procurement / Skidded // OFCI - 500 KVA 415V to Multi Tap PDU with (8) 400A Out Delivery to Site | 30d | 2026-06-03 A | 2026-07-15 A | ARC-DEL-ACT-01 | 100% |  |
| PR11-1090 |  | DH 1100 Procurement / Skidded // OFCI - 1.25 MW House Generator Bottom Fed 48 Hr Delivery to site | 1d | 2026-06-03 A | 2026-06-03 A | ARC-DEL-ACT-01 | 100% |  |
| PR11-1100 |  | DH 1100 Procurement / Skidded // OFCI Thermal Energy Storage Delivery to Site | 30d | 2026-06-03 A | 2026-07-15 A | ARC-DEL-ACT-01 | 100% |  |
| PR11-1670 |  | DH 1100 Procurement / Skidded // OFCI - Main SWBD Top or Bottom Fed 3P/3W Delivery to Site | 30d | 2026-06-03 A | 2026-07-15 A | ARC-DEL-ACT-01 | 100% |  |
| PR11-1680 |  | DH 1100 Procurement / Skidded // OFCI - 150kw UPS System Delivery to Site | 30d | 2026-06-03 A | 2026-07-15 A | ARC-DEL-ACT-01 | 100% |  |
| PR11-1690 |  | DH 1100 Procurement / Skidded // OFCI - 2000A COD Board Standard 3P/3W Top Fed Delivery to Site | 30d | 2026-06-03 A | 2026-07-15 A | ARC-DEL-ACT-01 | 100% |  |
| PR11-1720 |  | DH 1100 Procurement / Skidded // OFCI - 800A ATS Delivery to site | 30d | 2026-06-03 A | 2026-07-15 A | ARC-DEL-ACT-01 | 100% |  |
| PR11-1730 |  | DH 1100 Procurement / Skidded // OFCI - Electrical Equipment Skid Delivery to site | 30d | 2026-06-03 A | 2026-07-15 A | ARC-DEL-ACT-01 | 100% |  |
| PR11-1770 |  | DH 1100 Procurement / Skidded // OFCI - House RTU DH (DOAS) Delivery to site | 30d | 2026-06-03 A | 2026-07-15 A | ARC-DEL-ACT-01 | 100% |  |
| PR11-1780 |  | DH 1100 Procurement / Skidded // OFCI - House RTU DH Delivery to site | 30d | 2026-06-03 A | 2026-07-15 A | ARC-DEL-ACT-01 | 100% |  |
|  | 2 | **Non-Skidded** |  | 2026-06-03 | 2026-07-15 |  |  |  |
| PR11-1030 |  | DH 1100 Procurement / Non-Skidded // OFCI - 600A CRAH MOD Board 3P/3W Delivery to Site | 30d | 2026-06-03 A | 2026-07-15 A | ARC-DEL-ACT-01 | 100% |  |
| PR11-1040 |  | DH 1100 Procurement / Non-Skidded // OFCI - 500 Ton ACC with Free Cooling Delivery to Site | 30d | 2026-06-03 A | 2026-07-15 A | ARC-DEL-ACT-01 | 100% |  |
| PR11-1110 |  | DH 1100 Procurement / Non-Skidded // OFCI - 500KW Chilled Water CDU Delivery to Site | 30d | 2026-06-03 A | 2026-07-15 A | ARC-DEL-ACT-01 | 100% |  |
| PR11-1700 |  | DH 1100 Procurement / Non-Skidded // OFCI - 600A CRAH MOD Board 3P/3W Delivery to Site | 30d | 2026-06-03 A | 2026-07-15 A | ARC-DEL-ACT-01 | 100% |  |
| PR11-1710 |  | DH 1100 Procurement / Non-Skidded // OFCI - 225A CDU MOD Board Delivery to site | 30d | 2026-06-03 A | 2026-07-15 A | ARC-DEL-ACT-01 | 100% |  |
| PR11-1740 |  | DH 1100 Procurement / Non-Skidded // OFCI - Dual Fed 400KW Slab CRAH Delivery to site | 30d | 2026-06-03 A | 2026-07-15 A | ARC-DEL-ACT-01 | 100% |  |
| PR11-1750 |  | DH 1100 Procurement / Non-Skidded // OFCI - Single Fed 125KW Slab CRAH Delivery to site | 30d | 2026-06-03 A | 2026-07-15 A | ARC-DEL-ACT-01 | 100% |  |
| PR11-1760 |  | DH 1100 Procurement / Non-Skidded // OFCI - Single Fed 80KW RAF CRAH Delivery to site | 30d | 2026-06-03 A | 2026-07-15 A | ARC-DEL-ACT-01 | 100% |  |
|  | 3 | **DH1300 OFCI Procurement** |  | 2026-06-03 | 2026-07-15 |  |  |  |
|  | 1 | **Skidded** |  | 2026-06-03 | 2026-07-15 |  |  |  |
| PR13-2020 |  | DH 1300 Procurement / Skidded // OFCI - 1.25 MW House Generator Bottom Fed 48 Hr Delivery to site | 1d | 2026-06-03 A | 2026-06-03 A | ARC-DEL-ACT-01 | 100% |  |
| PR13-2030 |  | DH 1300 Procurement / Skidded // OFCI - Air Insulated Intermediate Medium Voltage Gear Delivery to Site | 1d | 2026-06-03 A | 2026-06-03 A | ARC-DEL-ACT-01 | 100% |  |
| PR13-2040 |  | DH 1300 Procurement / Skidded // OFCI - 34.5KV 2500KVA Pad Mount Transformer Delivery to Site | 1d | 2026-06-03 A | 2026-06-03 A | ARC-DEL-ACT-01 | 100% |  |
| PR13-2050 |  | DH 1300 Procurement / Skidded // OFCI Thermal Energy Storage Delivery to Site | 30d | 2026-06-03 A | 2026-07-15 A | ARC-DEL-ACT-01 | 100% |  |
| PR13-2070 |  | DH 1300 Procurement / Skidded // OFCI - 500 KVA 415V to Multi Tap PDU with (8) 400A Out Delivery to Site | 30d | 2026-06-03 A | 2026-07-15 A | ARC-DEL-ACT-01 | 100% |  |
| PR13-2080 |  | DH 1300 Procurement / Skidded // OFCI - Standard HSE STS Delivery to Site | 30d | 2026-06-03 A | 2026-07-15 A | ARC-DEL-ACT-01 | 100% |  |
| PR13-2100 |  | DH 1300 Procurement / Skidded // OFCI 2000A Reserve Tie Board Delivery to Site | 30d | 2026-06-03 A | 2026-07-15 A | ARC-DEL-ACT-01 | 100% |  |
| PR13-2120 |  | DH 1300 Procurement / Skidded // OFCI - 505 Pad Mount Vista Gear 38KV Metered Delivery to Site | 30d | 2026-06-03 A | 2026-07-15 A | ARC-DEL-ACT-01 | 100% |  |

| ID | WBS | Task | Duration | Start | Finish | Predecessors | Complete |
| --- | --- | --- | --- | --- | --- | --- | --- |
| PR13-2130 |  | DH 1300 Procurement / Skidded // OFCI - Main SWBD Top or Bottom Fed 3P/3W Delivery to Site | 30d | 2026-06-03 A | 2026-07-15 A | ARC-DEL-ACT-01 | 100% |
| PR13-2140 |  | DH 1300 Procurement / Skidded // OFCI - 150kw UPS System Delivery to Site | 30d | 2026-06-03 A | 2026-07-15 A | ARC-DEL-ACT-01 | 100% |
| PR13-2150 |  | DH 1300 Procurement / Skidded // OFCI - 2000A COD Board Standard 3P/3W Top Fed Delivery to Site | 30d | 2026-06-03 A | 2026-07-15 A | ARC-DEL-ACT-01 | 100% |
| PR13-2180 |  | DH 1300 Procurement / Skidded // OFCI - 800A ATS Delivery to site | 30d | 2026-06-03 A | 2026-07-15 A | ARC-DEL-ACT-01 | 100% |
| PR13-2190 |  | DH 1300 Procurement / Skidded // OFCI - Electrical Equipment Skid Delivery to site | 30d | 2026-06-03 A | 2026-07-15 A | ARC-DEL-ACT-01 | 100% |
| PR13-2230 |  | DH 1300 Procurement / Skidded // OFCI - House RTU DH (DOAS) Delivery to site | 30d | 2026-06-03 A | 2026-07-15 A | ARC-DEL-ACT-01 | 100% |
| PR13-2240 |  | DH 1300 Procurement / Skidded // OFCI - House RTU DH Delivery to site | 30d | 2026-06-03 A | 2026-07-15 A | ARC-DEL-ACT-01 | 100% |
|  | 2 | **Non-Skidded** |  | 2026-06-03 | 2026-07-15 |  |  |
| PR13-2060 |  | DH 1300 Procurement / Non-Skidded // OFCI - 500KW Chilled Water CDU Delivery to Site | 30d | 2026-06-03 A | 2026-07-15 A | ARC-DEL-ACT-01 | 100% |
| PR13-2090 |  | DH 1300 Procurement / Non-Skidded // OFCI - 600A CRAH MOD Board 3P/3W Delivery to Site | 30d | 2026-06-03 A | 2026-07-15 A | ARC-DEL-ACT-01 | 100% |
| PR13-2110 |  | DH 1300 Procurement / Non-Skidded // OFCI - 500 Ton ACC with Free Cooling Delivery to Site | 30d | 2026-06-03 A | 2026-07-15 A | ARC-DEL-ACT-01 | 100% |
| PR13-2160 |  | DH 1300 Procurement / Non-Skidded // OFCI - 600A CRAH MOD Board 3P/3W Delivery to Site | 30d | 2026-06-03 A | 2026-07-15 A | ARC-DEL-ACT-01 | 100% |
| PR13-2170 |  | DH 1300 Procurement / Non-Skidded // OFCI - 225A CDU MOD Board Delivery to site | 30d | 2026-06-03 A | 2026-07-15 A | ARC-DEL-ACT-01 | 100% |
| PR13-2200 |  | DH 1300 Procurement / Non-Skidded // OFCI - Dual Fed 400KW Slab CRAH Delivery to site | 30d | 2026-06-03 A | 2026-07-15 A | ARC-DEL-ACT-01 | 100% |
| PR13-2210 |  | DH 1300 Procurement / Non-Skidded // OFCI - Single Fed 125KW Slab CRAH Delivery to site | 30d | 2026-06-03 A | 2026-07-15 A | ARC-DEL-ACT-01 | 100% |
| PR13-2220 |  | DH 1300 Procurement / Non-Skidded // OFCI - Single Fed 80KW RAF CRAH Delivery to site | 30d | 2026-06-03 A | 2026-07-15 A | ARC-DEL-ACT-01 | 100% |
|  | 6 | **DH1400 OFCI Procurement** |  | 2026-06-03 | 2026-07-22 |  |  |
|  | 1 | **Skidded** |  | 2026-06-03 | 2026-07-15 |  |  |
| PR14-2250 |  | DH 1400 Procurement / Skidded // OFCI - 1.25 MW House Generator Bottom Fed 48 Hr Delivery to site | 1d | 2026-06-03 A | 2026-06-03 A | ARC-DEL-ACT-01 | 100% |
| PR14-2260 |  | DH 1400 Procurement / Skidded // OFCI - Air Insulated Intermediate Medium Voltage Gear Delivery to Site | 1d | 2026-06-03 A | 2026-06-03 A | ARC-DEL-ACT-01 | 100% |
| PR14-2270 |  | DH 1400 Procurement / Skidded // OFCI - 34.5KV 2500KVA Pad Mount Transformer Delivery to Site | 1d | 2026-06-03 A | 2026-06-03 A | ARC-DEL-ACT-01 | 100% |
| PR14-2280 |  | DH 1400 Procurement / Skidded // OFCI Thermal Energy Storage Delivery to Site | 30d | 2026-06-03 A | 2026-07-15 A | ARC-DEL-ACT-01 | 100% |
| PR14-2300 |  | DH 1400 Procurement / Skidded // OFCI - 500 KVA 415V to Multi Tap PDU with (8) 400A Out Delivery to Site | 30d | 2026-06-03 A | 2026-07-15 A | ARC-DEL-ACT-01 | 100% |
| PR14-2310 |  | DH 1400 Procurement / Skidded // OFCI - Standard HSE STS Delivery to Site | 30d | 2026-06-03 A | 2026-07-15 A | ARC-DEL-ACT-01 | 100% |
| PR14-2330 |  | DH 1400 Procurement / Skidded // OFCI 2000A Reserve Tie Board Delivery to Site | 30d | 2026-06-03 A | 2026-07-15 A | ARC-DEL-ACT-01 | 100% |
| PR14-2350 |  | DH 1400 Procurement / Skidded // OFCI - 505 Pad Mount Vista Gear 38KV Metered Delivery to Site | 30d | 2026-06-03 A | 2026-07-15 A | ARC-DEL-ACT-01 | 100% |
| PR14-2360 |  | DH 1400 Procurement / Skidded // OFCI - Main SWBD Top or Bottom Fed 3P/3W Delivery to Site | 30d | 2026-06-03 A | 2026-07-15 A | ARC-DEL-ACT-01 | 100% |
| PR14-2370 |  | DH 1400 Procurement / Skidded // OFCI - 150kw UPS System Delivery to Site | 30d | 2026-06-03 A | 2026-07-15 A | ARC-DEL-ACT-01 | 100% |
| PR14-2380 |  | DH 1400 Procurement / Skidded // OFCI - 2000A COD Board Standard 3P/3W Top Fed Delivery to Site | 30d | 2026-06-03 A | 2026-07-15 A | ARC-DEL-ACT-01 | 100% |
| PR14-2410 |  | DH 1400 Procurement / Skidded // OFCI - 800A ATS Delivery to site | 30d | 2026-06-03 A | 2026-07-15 A | ARC-DEL-ACT-01 | 100% |
| PR14-2420 |  | DH 1400 Procurement / Skidded // OFCI - Electrical Equipment Skid Delivery to site | 30d | 2026-06-03 A | 2026-07-15 A | ARC-DEL-ACT-01 | 100% |
| PR14-2460 |  | DH 1400 Procurement / Skidded // OFCI - House RTU DH (DOAS) Delivery to site | 30d | 2026-06-03 A | 2026-07-15 A | ARC-DEL-ACT-01 | 100% |
| PR14-2470 |  | DH 1400 Procurement / Skidded // OFCI - House RTU DH Delivery to site | 30d | 2026-06-03 A | 2026-07-15 A | ARC-DEL-ACT-01 | 100% |
|  | 2 | **Non-Skidded** |  | 2026-06-03 | 2026-07-22 |  |  |
| PR14-2290 |  | DH 1400 Procurement / Non-Skidded // OFCI - 500KW Chilled Water CDU Delivery to Site | 35d | 2026-06-03 A | 2026-07-22 A | ARC-DEL-ACT-01 | 100% |
| PR14-2320 |  | DH 1400 Procurement / Non-Skidded // OFCI - 600A CRAH MOD Board 3P/3W Delivery to Site | 35d | 2026-06-03 A | 2026-07-22 A | ARC-DEL-ACT-01 | 100% |
| PR14-2340 |  | DH 1400 Procurement / Non-Skidded // OFCI - 500 Ton ACC with Free Cooling Delivery to Site | 35d | 2026-06-03 A | 2026-07-22 A | ARC-DEL-ACT-01 | 100% |
| PR14-2390 |  | DH 1400 Procurement / Non-Skidded // OFCI - 600A CRAH MOD Board 3P/3W Delivery to Site | 35d | 2026-06-03 A | 2026-07-22 A | ARC-DEL-ACT-01 | 100% |
| PR14-2400 |  | DH 1400 Procurement / Non-Skidded // OFCI - 225A CDU MOD Board Delivery to site | 35d | 2026-06-03 A | 2026-07-22 A | ARC-DEL-ACT-01 | 100% |
| PR14-2430 |  | DH 1400 Procurement / Non-Skidded // OFCI - Dual Fed 400KW Slab CRAH Delivery to site | 35d | 2026-06-03 A | 2026-07-22 A | ARC-DEL-ACT-01 | 100% |
| PR14-2440 |  | DH 1400 Procurement / Non-Skidded // OFCI - Single Fed 125KW Slab CRAH Delivery to site | 35d | 2026-06-03 A | 2026-07-22 A | ARC-DEL-ACT-01 | 100% |
| PR14-2450 |  | DH 1400 Procurement / Non-Skidded // OFCI - Single Fed 80KW RAF CRAH Delivery to site | 35d | 2026-06-03 A | 2026-07-22 A | ARC-DEL-ACT-01 | 100% |
|  | 5 | **DH1500 OFCI Procurement** |  | 2026-06-03 | 2026-06-03 |  |  |
|  | 1 | **Skidded** |  | 2026-06-03 | 2026-06-03 |  |  |
| PR15-2480 |  | DH 1500 Procurement / Skidded // OFCI - 1.25 MW House Generator Bottom Fed 48 Hr Delivery to site | 1d | 2026-06-03 A | 2026-06-03 A | ARC-DEL-ACT-01 | 100% |
| PR15-2490 |  | DH 1500 Procurement / Skidded // OFCI - Air Insulated Intermediate Medium Voltage Gear Delivery to Site | 1d | 2026-06-03 A | 2026-06-03 A | ARC-DEL-ACT-01 | 100% |
| PR15-2500 |  | DH 1500 Procurement / Skidded // OFCI - 34.5KV 2500KVA Pad Mount Transformer Delivery to Site | 1d | 2026-06-03 A | 2026-06-03 A | ARC-DEL-ACT-01 | 100% |
| PR15-2510 |  | DH 1500 Procurement / Skidded // OFCI Thermal Energy Storage Delivery to Site | 1d | 2026-06-03 A | 2026-06-03 A | ARC-DEL-ACT-01 | 100% |
| PR15-2530 |  | DH 1500 Procurement / Skidded // OFCI - 500 KVA 415V to Multi Tap PDU with (8) 400A Out Delivery to Site | 1d | 2026-06-03 A | 2026-06-03 A | ARC-DEL-ACT-01 | 100% |
| PR15-2540 |  | DH 1500 Procurement / Skidded // OFCI - Standard HSE STS Delivery to Site | 1d | 2026-06-03 A | 2026-06-03 A | ARC-DEL-ACT-01 | 100% |
| PR15-2560 |  | DH 1500 Procurement / Skidded // OFCI 2000A Reserve Tie Board Delivery to Site | 1d | 2026-06-03 A | 2026-06-03 A | ARC-DEL-ACT-01 | 100% |
| PR15-2580 |  | DH 1500 Procurement / Skidded // OFCI - 505 Pad Mount Vista Gear 38KV Metered Delivery to Site | 1d | 2026-06-03 A | 2026-06-03 A | ARC-DEL-ACT-01 | 100% |
| PR15-2590 |  | DH 1500 Procurement / Skidded // OFCI - Main SWBD Top or Bottom Fed 3P/3W Delivery to Site | 1d | 2026-06-03 A | 2026-06-03 A | ARC-DEL-ACT-01 | 100% |
| PR15-2600 |  | DH 1500 Procurement / Skidded // OFCI - 150kw UPS System Delivery to Site | 1d | 2026-06-03 A | 2026-06-03 A | ARC-DEL-ACT-01 | 100% |
| PR15-2610 |  | DH 1500 Procurement / Skidded // OFCI - 2000A COD Board Standard 3P/3W Top Fed Delivery to Site | 1d | 2026-06-03 A | 2026-06-03 A | ARC-DEL-ACT-01 | 100% |
| PR15-2640 |  | DH 1500 Procurement / Skidded // OFCI - 800A ATS Delivery to site | 1d | 2026-06-03 A | 2026-06-03 A | ARC-DEL-ACT-01 | 100% |
| PR15-2650 |  | DH 1500 Procurement / Skidded // OFCI - Electrical Equipment Skid Delivery to site | 1d | 2026-06-03 A | 2026-06-03 A | ARC-DEL-ACT-01 | 100% |
| PR15-2690 |  | DH 1500 Procurement / Skidded // OFCI - House RTU DH (DOAS) Delivery to site | 1d | 2026-06-03 A | 2026-06-03 A | ARC-DEL-ACT-01 | 100% |
| PR15-2700 |  | DH 1500 Procurement / Skidded // OFCI - House RTU DH Delivery to site | 1d | 2026-06-03 A | 2026-06-03 A | ARC-DEL-ACT-01 | 100% |
|  | 2 | **Non-Skidded** |  | 2026-06-03 | 2026-06-03 |  |  |
| PR15-2520 |  | DH 1500 Procurement / Non-Skidded // OFCI - 500KW Chilled Water CDU Delivery to Site | 1d | 2026-06-03 A | 2026-06-03 A | ARC-DEL-ACT-01 | 100% |
| PR15-2550 |  | DH 1500 Procurement / Non-Skidded // OFCI - 600A CRAH MOD Board 3P/3W Delivery to Site | 1d | 2026-06-03 A | 2026-06-03 A | ARC-DEL-ACT-01 | 100% |
| PR15-2570 |  | DH 1500 Procurement / Non-Skidded // OFCI - 500 Ton ACC with Free Cooling Delivery to Site | 1d | 2026-06-03 A | 2026-06-03 A | ARC-DEL-ACT-01 | 100% |
| PR15-2620 |  | DH 1500 Procurement / Non-Skidded // OFCI - 600A CRAH MOD Board 3P/3W Delivery to Site | 1d | 2026-06-03 A | 2026-06-03 A | ARC-DEL-ACT-01 | 100% |
| PR15-2630 |  | DH 1500 Procurement / Non-Skidded // OFCI - 225A CDU MOD Board Delivery to site | 1d | 2026-06-03 A | 2026-06-03 A | ARC-DEL-ACT-01 | 100% |
| PR15-2660 |  | DH 1500 Procurement / Non-Skidded // OFCI - Dual Fed 400KW Slab CRAH Delivery to site | 1d | 2026-06-03 A | 2026-06-03 A | ARC-DEL-ACT-01 | 100% |
| PR15-2670 |  | DH 1500 Procurement / Non-Skidded // OFCI - Single Fed 125KW Slab CRAH Delivery to site | 1d | 2026-06-03 A | 2026-06-03 A | ARC-DEL-ACT-01 | 100% |
| PR15-2680 |  | DH 1500 Procurement / Non-Skidded // OFCI - Single Fed 80KW RAF CRAH Delivery to site | 1d | 2026-06-03 A | 2026-06-03 A | ARC-DEL-ACT-01 | 100% |
|  | 4 | **DH1600 OFCI Procurement** |  | 2026-06-03 | 2026-06-03 |  |  |
|  | 1 | **Skidded** |  | 2026-06-03 | 2026-06-03 |  |  |

| ID | WBS | Task | Duration | Start | Finish | Predecessors | Complete | Total float |
| --- | --- | --- | --- | --- | --- | --- | --- | --- |
| PR16-2710 |  | DH 1600 Procurement / Skidded // OFCI - 1.25 MW House Generator Bottom Fed 48 Hr Delivery to site | 1d | 2026-06-03 A | 2026-06-03 A | ARC-DEL-ACT-01 | 100% |  |
| PR16-2720 |  | DH 1600 Procurement / Skidded // OFCI - Air Insulated Intermediate Medium Voltage Gear Delivery to Site | 1d | 2026-06-03 A | 2026-06-03 A | ARC-DEL-ACT-01 | 100% |  |
| PR16-2730 |  | DH 1600 Procurement / Skidded // OFCI - 34.5KV 2500KVA Pad Mount Transformer Delivery to Site | 1d | 2026-06-03 A | 2026-06-03 A | ARC-DEL-ACT-01 | 100% |  |
| PR16-2740 |  | DH 1600 Procurement / Skidded // OFCI Thermal Energy Storage Delivery to Site | 1d | 2026-06-03 A | 2026-06-03 A | ARC-DEL-ACT-01 | 100% |  |
| PR16-2760 |  | DH 1600 Procurement / Skidded // OFCI - 500 KVA 415V to Multi Tap PDU with (8) 400A Out Delivery to Site | 1d | 2026-06-03 A | 2026-06-03 A | ARC-DEL-ACT-01 | 100% |  |
| PR16-2770 |  | DH 1600 Procurement / Skidded // OFCI - Standard HSE STS Delivery to Site | 1d | 2026-06-03 A | 2026-06-03 A | ARC-DEL-ACT-01 | 100% |  |
| PR16-2790 |  | DH 1600 Procurement / Skidded // OFCI 2000A Reserve Tie Board Delivery to Site | 1d | 2026-06-03 A | 2026-06-03 A | ARC-DEL-ACT-01 | 100% |  |
| PR16-2810 |  | DH 1600 Procurement / Skidded // OFCI - 505 Pad Mount Vista Gear 38KV Metered Delivery to Site | 1d | 2026-06-03 A | 2026-06-03 A | ARC-DEL-ACT-01 | 100% |  |
| PR16-2820 |  | DH 1600 Procurement / Skidded // OFCI - Main SWBD Top or Bottom Fed 3P/3W Delivery to Site | 1d | 2026-06-03 A | 2026-06-03 A | ARC-DEL-ACT-01 | 100% |  |
| PR16-2830 |  | DH 1600 Procurement / Skidded // OFCI - 150kw UPS System Delivery to Site | 1d | 2026-06-03 A | 2026-06-03 A | ARC-DEL-ACT-01 | 100% |  |
| PR16-2840 |  | DH 1600 Procurement / Skidded // OFCI - 2000A COD Board Standard 3P/3W Top Fed Delivery to Site | 1d | 2026-06-03 A | 2026-06-03 A | ARC-DEL-ACT-01 | 100% |  |
| PR16-2870 |  | DH 1600 Procurement / Skidded // OFCI - 800A ATS Delivery to site | 1d | 2026-06-03 A | 2026-06-03 A | ARC-DEL-ACT-01 | 100% |  |
| PR16-2880 |  | DH 1600 Procurement / Skidded // OFCI - Electrical Equipment Skid Delivery to site | 1d | 2026-06-03 A | 2026-06-03 A | ARC-DEL-ACT-01 | 100% |  |
| PR16-2920 |  | DH 1600 Procurement / Skidded // OFCI - House RTU DH (DOAS) Delivery to site | 1d | 2026-06-03 A | 2026-06-03 A | ARC-DEL-ACT-01 | 100% |  |
| PR16-2930 |  | DH 1600 Procurement / Skidded // OFCI - House RTU DH Delivery to site | 1d | 2026-06-03 A | 2026-06-03 A | ARC-DEL-ACT-01 | 100% |  |
|  | 2 | **Non-Skidded** |  | 2026-06-03 | 2026-06-03 |  |  |  |
| PR16-2750 |  | DH 1600 Procurement / Non-Skidded // OFCI - 500KW Chilled Water CDU Delivery to Site | 1d | 2026-06-03 A | 2026-06-03 A | ARC-DEL-ACT-01 | 100% |  |
| PR16-2780 |  | DH 1600 Procurement / Non-Skidded // OFCI - 600A CRAH MOD Board 3P/3W Delivery to Site | 1d | 2026-06-03 A | 2026-06-03 A | ARC-DEL-ACT-01 | 100% |  |
| PR16-2800 |  | DH 1600 Procurement / Non-Skidded // OFCI - 500 Ton ACC with Free Cooling Delivery to Site | 1d | 2026-06-03 A | 2026-06-03 A | ARC-DEL-ACT-01 | 100% |  |
| PR16-2850 |  | DH 1600 Procurement / Non-Skidded // OFCI - 600A CRAH MOD Board 3P/3W Delivery to Site | 1d | 2026-06-03 A | 2026-06-03 A | ARC-DEL-ACT-01 | 100% |  |
| PR16-2860 |  | DH 1600 Procurement / Non-Skidded // OFCI - 225A CDU MOD Board Delivery to site | 1d | 2026-06-03 A | 2026-06-03 A | ARC-DEL-ACT-01 | 100% |  |
| PR16-2890 |  | DH 1600 Procurement / Non-Skidded // OFCI - Dual Fed 400KW Slab CRAH Delivery to site | 1d | 2026-06-03 A | 2026-06-03 A | ARC-DEL-ACT-01 | 100% |  |
| PR16-2900 |  | DH 1600 Procurement / Non-Skidded // OFCI - Single Fed 125KW Slab CRAH Delivery to site | 1d | 2026-06-03 A | 2026-06-03 A | ARC-DEL-ACT-01 | 100% |  |
| PR16-2910 |  | DH 1600 Procurement / Non-Skidded // OFCI - Single Fed 80KW RAF CRAH Delivery to site | 1d | 2026-06-03 A | 2026-06-03 A | ARC-DEL-ACT-01 | 100% |  |
|  | 8 | **Commissioning & Start Up** |  | 2026-08-26 | 2026-10-22 |  |  |  |
| A5857 |  | DH 1100 Electrical System L3 Commissioning | 20d | 2026-08-26 A | 2026-09-23 A | ARC-DEL-ACT-01 | 100% |  |
| A5859 |  | DH 1100 Controls System L3 Commissioning | 5d | 2026-08-26 A | 2026-09-01 A | ARC-DEL-ACT-01 | 100% |  |
| A5858 |  | DH 1100 Mechanical System L3 Commissioning | 5d | 2026-10-16 | 2026-10-22 | A3380 |  | 164d |
|  | 5 | **Data Hall IST Readiness** |  | 2026-08-26 | 2026-09-23 |  |  |  |
|  | 5 | **Level 6 — Enclosure Gate** |  | 2026-08-26 | 2026-08-26 |  |  |  |
| DHXXXX.IST.4100 |  | DH 1100/Level 6 — Enclosure Gate // Data Hall Dry-In / Weather-Tight Achieved | 0d | 2026-08-26 A | 2026-08-26 A | ARC-DEL-ACT-01 | 100% |  |
|  | 2 | **Level 5 — Construction Complete (White Space)** |  | 2026-08-26 | 2026-08-26 |  |  |  |
| DHXXXX.IST.5100 |  | DH 1100 // Data Hall Interior Construction Complete | 0d | 2026-08-26 A | 2026-08-26 A | ARC-DEL-ACT-01 | 100% |  |
|  | 3 | **Level 4 — Equipment Installed & Available** |  | 2026-08-26 | 2026-08-26 |  |  |  |
| DHXXXX.IST.6100 |  | DH 1100/Level 4 — Equipment Installed & Available // Electrical Equipment Installed & Terminated | 0d | 2026-08-26 A | 2026-08-26 A | ARC-DEL-ACT-01 | 100% |  |
| DHXXXX.IST.6200 |  | DH 1100/Level 4 — Equipment Installed & Available // Mechanical Equipment Installed & Connected | 0d | 2026-08-26 A | 2026-08-26 A | ARC-DEL-ACT-01 | 100% |  |
| DHXXXX.IST.6300 |  | DH 1100/Level 4 — Equipment Installed & Available // Controls Devices Installed & Powered | 0d | 2026-08-26 A | 2026-08-26 A | ARC-DEL-ACT-01 | 100% |  |
|  | 6 | **Level 3 — Startup / Pre-Functional Testing** |  | 2026-08-26 | 2026-09-23 |  |  |  |
| DH1100.L3CX.ELEC.001 |  | DH 1100/Level 3 — Startup / Pre-Functional Testing // DH 1100 Startup / Pre-Functional – ELECTRICAL | 20d | 2026-08-26 A | 2026-09-23 A | ARC-DEL-ACT-01 | 100% |  |
| DH1100.L3CX.ELEC.13 |  | DH 1100/Level 3 — Startup / Pre-Functional Testing // DH 1100 Controls verification | 10d | 2026-08-26 A | 2026-09-09 A | ARC-DEL-ACT-01 | 100% |  |
| DH1100.L3CX.ELEC.3 |  | DH 1100/Level 3 — Startup / Pre-Functional Testing // DH 1100 Startup / Pre-Functional – MEHANICAL | 20d | 2026-08-26 A | 2026-09-23 A | ARC-DEL-ACT-01 | 100% |  |
|  | 1 | **Level 2 — Readiness Gate** |  | 2026-08-26 | 2026-08-26 |  |  |  |
| DHXXXX.IST.8000 |  | DH 1100/Level 2 — Readiness Gate // DATA HALL READY FOR IST | 0d | 2026-08-26 A | 2026-08-26 A | ARC-DEL-ACT-01 | 100% |  |
|  | 4 | **Level 1 — IST Target** |  |  |  |  |  |  |
|  | 1 | **Energization & L3 Prefunctional Testing** |  | 2026-08-26 | 2026-08-26 |  |  |  |
| DH1100.L3CX.ELEC.003 |  | Energization & L3 Prefunctional Testing // DH 1100 L3 Commissioning Complete | 0d | 2026-08-26 A | 2026-08-26 A | ARC-DEL-ACT-01 | 100% |  |
|  | 2 | **L4 Function Testing** |  | 2026-08-26 | 2026-09-09 |  |  |  |
| DH1100.L4CX.COMM.110 |  | L4 Function Testing // DH1100 L4 Commissioning | 10d | 2026-08-26 A | 2026-09-09 A | ARC-DEL-ACT-01 | 100% |  |
|  | 3 | **L5 Integrated System Testing (IST)** |  | 2026-08-26 | 2026-09-08 |  |  |  |
| A5860 |  | L5 Integrated System Testing (IST) // DH1100 – IST / L5 Commissioning Complete | 0d | 2026-08-26 A | 2026-08-26 A | ARC-DEL-ACT-01 | 100% |  |
| DH1100.L5CX.COMM.160 |  | L5 Integrated System Testing (IST) // DH1100 L5 Integrated Systems Testing | 9d | 2026-08-26 A | 2026-09-08 A | ARC-DEL-ACT-01 | 100% |  |
|  | ` | **Commissioning & Start Up-1** |  | 2026-08-26 | 2026-09-23 |  |  |  |
| DH-1200-01 |  | DH 1200 Mechanical System Ready for Commissioning | 0d | 2026-08-26 A | 2026-08-26 A | ARC-DEL-ACT-01 | 100% |  |
| DH-1200-02 |  | DH 1200 Controls System Ready for Commissioning | 0d | 2026-08-26 A | 2026-08-26 A | ARC-DEL-ACT-01 | 100% |  |
| DH1200 |  | DH 1200 Electrical System Ready for Commissioning | 0d | 2026-08-26 A | 2026-08-26 A | ARC-DEL-ACT-01 | 100% |  |
|  | 5 | **Data Hall IST Readiness** |  | 2026-08-26 | 2026-09-09 |  |  |  |
|  | 5 | **Level 6 — Enclosure Gate** |  | 2026-08-26 | 2026-08-26 |  |  |  |
| DH1200.IST.4100 |  | DH 1200/Level 6 — Enclosure Gate // Data Hall Dry-In / Weather-Tight Achieved | 0d | 2026-08-26 A | 2026-08-26 A | ARC-DEL-ACT-01 | 100% |  |
|  | 2 | **Level 5 — Construction Complete (White Space)** |  | 2026-08-26 | 2026-08-26 |  |  |  |
| DH1200.IST.5100 |  | DH 1200/Level 5 — Construction Complete (White Space) // Data Hall Interior Construction Complete | 0d | 2026-08-26 A | 2026-08-26 A | ARC-DEL-ACT-01 | 100% |  |
|  | 3 | **Level 4 — Equipment Installed & Available** |  | 2026-08-26 | 2026-08-26 |  |  |  |
| DH1200.IST.6100 |  | DH 1200/Level 4 — Equipment Installed & Available // Electrical Equipment Installed & Terminated | 0d | 2026-08-26 A | 2026-08-26 A | ARC-DEL-ACT-01 | 100% |  |
| DH1200.IST.6200 |  | DH 1200/Level 4 — Equipment Installed & Available // Mechanical Equipment Installed & Connected | 0d | 2026-08-26 A | 2026-08-26 A | ARC-DEL-ACT-01 | 100% |  |
| DH1200.IST.6300 |  | DH 1200/Level 4 — Equipment Installed & Available // Controls Devices Installed & Powered | 0d | 2026-08-26 A | 2026-08-26 A | ARC-DEL-ACT-01 | 100% |  |
|  | 6 | **Level 3 — Startup / Pre-Functional Testing** |  | 2026-08-26 | 2026-09-09 |  |  |  |
| DH1200.L3CX.ELEC.001 |  | DH 1200/Level 3 — Startup / Pre-Functional Testing // DH 1200 Startup / Pre-Functional – ELECTRICAL | 10d | 2026-08-26 A | 2026-09-09 A | ARC-DEL-ACT-01 | 100% |  |
| DH1200.L3CX.ELEC.13 |  | DH 1200/Level 3 — Startup / Pre-Functional Testing // DH 1200 Controls verification | 0d | 2026-08-26 A | 2026-08-26 A | ARC-DEL-ACT-01 | 100% |  |
| DH1200.L3CX.ELEC.3 |  | DH 1200/Level 3 — Startup / Pre-Functional Testing // DH 1200 Startup / Pre-Functional – MEHANICAL | 10d | 2026-08-26 A | 2026-09-09 A | ARC-DEL-ACT-01 | 100% |  |
|  | 1 | **Level 2 — Readiness Gate** |  | 2026-08-26 | 2026-08-26 |  |  |  |
| DH1200.IST.8000 |  | DH 1200/Level 2 — Readiness Gate // DATA HALL READY FOR IST | 0d | 2026-08-26 A | 2026-08-26 A | ARC-DEL-ACT-01 | 100% |  |

| ID | WBS | Task | Duration | Start | Finish | Predecessors | Complete |
| --- | --- | --- | --- | --- | --- | --- | --- |
|  | 4 | **Level 1 — IST Target** |  |  |  |  |  |
|  | 1 | **Energization & L3 Prefunctional Testing** |  | 2026-08-26 | 2026-09-23 |  |  |
| DH1200.L3CX.ELEC.003 |  | DH 1200/Energization & L3 Prefunctional Testing // DH 1200 L3 Commissioning | 20d | 2026-08-26 A | 2026-09-23 A | ARC-DEL-ACT-01 | 100% |
|  | 2 | **L4 Function Testing** |  | 2026-08-26 | 2026-09-09 |  |  |
| DH1200.L4CX.COMM.110 |  | DH 1200/L4 Function Testing // DH1200 L4 Commissioning | 10d | 2026-08-26 A | 2026-09-09 A | ARC-DEL-ACT-01 | 100% |
|  | 3 | **L5 Integrated System Testing (IST)** |  | 2026-08-26 | 2026-09-09 |  |  |
| DH-1200-03 |  | DH 1200/L5 Integrated System Testing (IST) // DH1200 – IST / L5 Commissioning Complete | 0d | 2026-08-26 A | 2026-08-26 A | ARC-DEL-ACT-01 | 100% |
| DH1200.L5CX.COMM.160 |  | DH 1200/L5 Integrated System Testing (IST) // DH1200 L5 Integrated Systems Testing | 10d | 2026-08-26 A | 2026-09-09 A | ARC-DEL-ACT-01 | 100% |
|  | 1 | **Commissioning & Start Up-2** |  | 2026-08-26 | 2026-09-23 |  |  |
| DH1300 |  | DH 1300 Electrical System Ready for Commissioning | 0d | 2026-08-26 A | 2026-08-26 A | ARC-DEL-ACT-01 | 100% |
| DH13000-01 |  | DH 1300 Mechanical System Ready for Commissioning | 0d | 2026-08-26 A | 2026-08-26 A | ARC-DEL-ACT-01 | 100% |
| DH13000-02 |  | DH 1300 Controls System Ready for Commissioning | 0d | 2026-08-26 A | 2026-08-26 A | ARC-DEL-ACT-01 | 100% |
|  | 5 | **Data Hall IST Readiness** |  | 2026-08-26 | 2026-09-09 |  |  |
|  | 5 | **Level 6 — Enclosure Gate** |  | 2026-08-26 | 2026-08-26 |  |  |
| DH1300.IST.4100 |  | DH 1300/Level 6 — Enclosure Gate // Data Hall Dry-In / Weather-Tight Achieved | 0d | 2026-08-26 A | 2026-08-26 A | ARC-DEL-ACT-01 | 100% |
|  | 2 | **Level 5 — Construction Complete (White Space)** |  | 2026-08-26 | 2026-08-26 |  |  |
| DH1300.IST.5100 |  | DH 1300/Level 5 — Construction Complete (White Space) // Data Hall Interior Construction Complete | 0d | 2026-08-26 A | 2026-08-26 A | ARC-DEL-ACT-01 | 100% |
|  | 3 | **Level 4 — Equipment Installed & Available** |  | 2026-08-26 | 2026-08-26 |  |  |
| DH1300.IST.6100 |  | DH 1300/Level 4 — Equipment Installed & Available // Electrical Equipment Installed & Terminated | 0d | 2026-08-26 A | 2026-08-26 A | ARC-DEL-ACT-01 | 100% |
| DH1300.IST.6200 |  | DH 1300/Level 4 — Equipment Installed & Available // Mechanical Equipment Installed & Connected | 0d | 2026-08-26 A | 2026-08-26 A | ARC-DEL-ACT-01 | 100% |
| DH1300.IST.6300 |  | DH 1300/Level 4 — Equipment Installed & Available // Controls Devices Installed & Powered | 0d | 2026-08-26 A | 2026-08-26 A | ARC-DEL-ACT-01 | 100% |
|  | 6 | **Level 3 — Startup / Pre-Functional Testing** |  | 2026-08-26 | 2026-09-09 |  |  |
| DH1300.L3CX.ELEC.001 |  | DH 1300/Level 3 — Startup / Pre-Functional Testing // DH 1300 Startup / Pre-Functional – ELECTRICAL | 10d | 2026-08-26 A | 2026-09-09 A | ARC-DEL-ACT-01 | 100% |
| DH1300.L3CX.ELEC.13 |  | DH 1300/Level 3 — Startup / Pre-Functional Testing // DH 1300 Controls verification | 0d | 2026-08-26 A | 2026-08-26 A | ARC-DEL-ACT-01 | 100% |
| DH1300.L3CX.ELEC.3 |  | DH 1300/Level 3 — Startup / Pre-Functional Testing // DH 1300 Startup / Pre-Functional – MEHANICAL | 10d | 2026-08-26 A | 2026-09-09 A | ARC-DEL-ACT-01 | 100% |
|  | 1 | **Level 2 — Readiness Gate** |  | 2026-08-26 | 2026-08-26 |  |  |
| DH1300.IST.8000 |  | DH 1300/Level 2 — Readiness Gate // DATA HALL READY FOR IST | 0d | 2026-08-26 A | 2026-08-26 A | ARC-DEL-ACT-01 | 100% |
|  | 4 | **Level 1 — IST Target** |  |  |  |  |  |
|  | 1 | **Energization & L3 Prefunctional Testing** |  | 2026-08-26 | 2026-09-23 |  |  |
| DH1300.L3CX.ELEC.003 |  | DH 1300/Energization & L3 Prefunctional Testing // DH 1300 L3 Commissioning | 20d | 2026-08-26 A | 2026-09-23 A | ARC-DEL-ACT-01 | 100% |
|  | 2 | **L4 Function Testing** |  | 2026-08-26 | 2026-09-09 |  |  |
| DH1300.L4CX.COMM.110 |  | DH 1300/L4 Function Testing // DH1300 L4 Commissioning | 10d | 2026-08-26 A | 2026-09-09 A | ARC-DEL-ACT-01 | 100% |
|  | 3 | **L5 Integrated System Testing (IST)** |  | 2026-08-26 | 2026-09-09 |  |  |
| DH1300.L5CX.COMM.160 |  | DH 1300/L5 Integrated System Testing (IST) // DH1300 L5 Integrated Systems Testing | 10d | 2026-08-26 A | 2026-09-09 A | ARC-DEL-ACT-01 | 100% |
| DH13000-03 |  | DH 1300/L5 Integrated System Testing (IST) // DH1300 – IST / L5 Commissioning Complete | 0d | 2026-08-26 A | 2026-08-26 A | ARC-DEL-ACT-01 | 100% |
|  | 2 | **Commissioning & Start Up-3** |  | 2026-08-26 | 2026-09-23 |  |  |
| DH1400 |  | DH 1400 Electrical System Ready for Commissioning | 0d | 2026-08-26 A | 2026-08-26 A | ARC-DEL-ACT-01 | 100% |
| DH14000-01 |  | DH 1400 Mechanical System Ready for Commissioning | 0d | 2026-08-26 A | 2026-08-26 A | ARC-DEL-ACT-01 | 100% |
| DH14000-02 |  | DH 1400 Controls System Ready for Commissioning | 0d | 2026-08-26 A | 2026-08-26 A | ARC-DEL-ACT-01 | 100% |
|  | 5 | **Data Hall IST Readiness** |  | 2026-08-26 | 2026-09-09 |  |  |
|  | 5 | **Level 6 — Enclosure Gate** |  | 2026-08-26 | 2026-08-26 |  |  |
| DH1400.IST.4100 |  | DH 1400/Level 6 — Enclosure Gate // Data Hall Dry-In / Weather-Tight Achieved | 0d | 2026-08-26 A | 2026-08-26 A | ARC-DEL-ACT-01 | 100% |
|  | 2 | **Level 5 — Construction Complete (White Space)** |  | 2026-08-26 | 2026-08-26 |  |  |
| DH1400.IST.5100 |  | DH 1400/Level 5 — Construction Complete (White Space) // Data Hall Interior Construction Complete | 0d | 2026-08-26 A | 2026-08-26 A | ARC-DEL-ACT-01 | 100% |
|  | 3 | **Level 4 — Equipment Installed & Available** |  | 2026-08-26 | 2026-08-26 |  |  |
| DH1400.IST.6100 |  | DH 1400/Level 4 — Equipment Installed & Available // Electrical Equipment Installed & Terminated | 0d | 2026-08-26 A | 2026-08-26 A | ARC-DEL-ACT-01 | 100% |
| DH1400.IST.6200 |  | DH 1400/Level 4 — Equipment Installed & Available // Mechanical Equipment Installed & Connected | 0d | 2026-08-26 A | 2026-08-26 A | ARC-DEL-ACT-01 | 100% |
| DH1400.IST.6300 |  | DH 1400/Level 4 — Equipment Installed & Available // Controls Devices Installed & Powered | 0d | 2026-08-26 A | 2026-08-26 A | ARC-DEL-ACT-01 | 100% |
|  | 6 | **Level 3 — Startup / Pre-Functional Testing** |  | 2026-08-26 | 2026-09-09 |  |  |
| DH1400.L3CX.ELEC.001 |  | DH 1400/Level 3 — Startup / Pre-Functional Testing // DH 1400 Startup / Pre-Functional – ELECTRICAL | 10d | 2026-08-26 A | 2026-09-09 A | ARC-DEL-ACT-01 | 100% |
| DH1400.L3CX.ELEC.13 |  | DH 1400/Level 3 — Startup / Pre-Functional Testing // DH 1400 Controls verification | 0d | 2026-08-26 A | 2026-08-26 A | ARC-DEL-ACT-01 | 100% |
| DH1400.L3CX.ELEC.3 |  | DH 1400/Level 3 — Startup / Pre-Functional Testing // DH 1400 Startup / Pre-Functional – MEHANICAL | 10d | 2026-08-26 A | 2026-09-09 A | ARC-DEL-ACT-01 | 100% |
|  | 1 | **Level 2 — Readiness Gate** |  | 2026-08-26 | 2026-08-26 |  |  |
| DH1400.IST.8000 |  | DH 1400/Level 2 — Readiness Gate // DATA HALL READY FOR IST | 0d | 2026-08-26 A | 2026-08-26 A | ARC-DEL-ACT-01 | 100% |
|  | 4 | **Level 1 — IST Target** |  |  |  |  |  |
|  | 1 | **Energization & L3 Prefunctional Testing** |  | 2026-08-26 | 2026-09-23 |  |  |
| DH1400.L3CX.ELEC.003 |  | DH 1400/Energization & L3 Prefunctional Testing // DH 1400 L3 Commissioning | 20d | 2026-08-26 A | 2026-09-23 A | ARC-DEL-ACT-01 | 100% |
|  | 2 | **L4 Function Testing** |  | 2026-08-26 | 2026-09-04 |  |  |
| DH1400.L4CX.COMM.110 |  | DH 1400/L4 Function Testing // DH1400 L4 Commissioning | 8d | 2026-08-26 A | 2026-09-04 A | ARC-DEL-ACT-01 | 100% |
|  | 3 | **L5 Integrated System Testing (IST)** |  | 2026-08-26 | 2026-09-16 |  |  |
| DH1400.L5CX.COMM.160 |  | DH1400 L5 Integrated Systems Testing | 15d | 2026-08-26 A | 2026-09-16 A | ARC-DEL-ACT-01 | 100% |
| DH14000-03 |  | DH1400 – IST / L5 Commissioning Complete | 0d | 2026-08-26 A | 2026-08-26 A | ARC-DEL-ACT-01 | 100% |
|  | 3 | **Commissioning & Start Up-4** |  | 2026-08-26 | 2026-09-23 |  |  |
| DH1500 |  | DH 1500 Electrical System Ready for Commissioning | 0d | 2026-08-26 A | 2026-08-26 A | ARC-DEL-ACT-01 | 100% |
| DH15000-01 |  | DH 1500 Mechanical System Ready for Commissioning | 0d | 2026-08-26 A | 2026-08-26 A | ARC-DEL-ACT-01 | 100% |
| DH15000-02 |  | DH 1500 Controls System Ready for Commissioning | 0d | 2026-08-26 A | 2026-08-26 A | ARC-DEL-ACT-01 | 100% |
|  | 5 | **Data Hall IST Readiness** |  | 2026-08-26 | 2026-09-09 |  |  |
|  | 5 | **Level 6 — Enclosure Gate** |  | 2026-08-26 | 2026-08-26 |  |  |
| DH1500.IST.4100 |  | DH 1500/Level 6 — Enclosure Gate // Data Hall Dry-In / Weather-Tight Achieved | 0d | 2026-08-26 A | 2026-08-26 A | ARC-DEL-ACT-01 | 100% |
|  | 2 | **Level 5 — Construction Complete (White Space)** |  | 2026-08-26 | 2026-08-26 |  |  |

| ID | WBS | Task | Duration | Start | Finish | Predecessors | Complete |
| --- | --- | --- | --- | --- | --- | --- | --- |
| DH1500.IST.5100 |  | DH 1500/Level 5 — Construction Complete (White Space) // Data Hall Interior Construction Complete | 0d | 2026-08-26 A | 2026-08-26 A | ARC-DEL-ACT-01 | 100% |
|  | 3 | **Level 4 — Equipment Installed & Available** |  | 2026-08-26 | 2026-08-26 |  |  |
| DH1500.IST.6100 |  | DH 1500/Level 4 — Equipment Installed & Available // Electrical Equipment Installed & Terminated | 0d | 2026-08-26 A | 2026-08-26 A | ARC-DEL-ACT-01 | 100% |
| DH1500.IST.6200 |  | DH 1500/Level 4 — Equipment Installed & Available // Mechanical Equipment Installed & Connected | 0d | 2026-08-26 A | 2026-08-26 A | ARC-DEL-ACT-01 | 100% |
| DH1500.IST.6300 |  | DH 1500/Level 4 — Equipment Installed & Available // Controls Devices Installed & Powered | 0d | 2026-08-26 A | 2026-08-26 A | ARC-DEL-ACT-01 | 100% |
|  | 6 | **Level 3 — Startup / Pre-Functional Testing** |  | 2026-08-26 | 2026-09-09 |  |  |
| DH1500.L3CX.ELEC.001 |  | DH 1500/Level 3 — Startup / Pre-Functional Testing // DH 1500 Startup / Pre-Functional – ELECTRICAL | 10d | 2026-08-26 A | 2026-09-09 A | ARC-DEL-ACT-01 | 100% |
| DH1500.L3CX.ELEC.13 |  | DH 1500/Level 3 — Startup / Pre-Functional Testing // DH 1500 Controls verification | 0d | 2026-08-26 A | 2026-08-26 A | ARC-DEL-ACT-01 | 100% |
| DH1500.L3CX.ELEC.3 |  | DH 1500/Level 3 — Startup / Pre-Functional Testing // DH 1500 Startup / Pre-Functional – MEHANICAL | 10d | 2026-08-26 A | 2026-09-09 A | ARC-DEL-ACT-01 | 100% |
|  | 1 | **Level 2 — Readiness Gate** |  | 2026-08-26 | 2026-08-26 |  |  |
| DH1500.IST.8000 |  | DH 1500/Level 2 — Readiness Gate // DATA HALL READY FOR IST | 0d | 2026-08-26 A | 2026-08-26 A | ARC-DEL-ACT-01 | 100% |
|  | 4 | **Level 1 — IST Target** |  |  |  |  |  |
|  | 1 | **Energization & L3 Prefunctional Testing** |  | 2026-08-26 | 2026-09-23 |  |  |
| DH1500.L3CX.ELEC.003 |  | DH 1500/Energization & L3 Prefunctional Testing // DH 1500 L3 Commissioning | 20d | 2026-08-26 A | 2026-09-23 A | ARC-DEL-ACT-01 | 100% |
|  | 2 | **L4 Function Testing** |  | 2026-08-26 | 2026-09-09 |  |  |
| DH1500.L4CX.COMM.110 |  | DH 1500/L4 Function Testing // DH1500 L4 Commissioning | 10d | 2026-08-26 A | 2026-09-09 A | ARC-DEL-ACT-01 | 100% |
|  | 3 | **L5 Integrated System Testing (IST)** |  | 2026-08-26 | 2026-09-10 |  |  |
| DH1500.L5CX.COMM.160 |  | DH1500 L5 Integrated Systems Testing | 11d | 2026-08-26 A | 2026-09-10 A | ARC-DEL-ACT-01 | 100% |
| DH15000-03 |  | DH1500 – IST / L5 Commissioning Complete | 0d | 2026-08-26 A | 2026-08-26 A | ARC-DEL-ACT-01 | 100% |
|  | 4 | **Commissioning & Start Up-5** |  | 2026-08-26 | 2026-09-23 |  |  |
| DH1600 |  | DH 1600 Electrical System Ready for Commissioning | 0d | 2026-08-26 A | 2026-08-26 A | ARC-DEL-ACT-01 | 100% |
| DH16000-01 |  | DH 1600 Mechanical System Ready for Commissioning | 0d | 2026-08-26 A | 2026-08-26 A | ARC-DEL-ACT-01 | 100% |
| DH16000-02 |  | DH 1600 Controls System Ready for Commissioning | 0d | 2026-08-26 A | 2026-08-26 A | ARC-DEL-ACT-01 | 100% |
|  | 5 | **Data Hall IST Readiness** |  | 2026-08-26 | 2026-09-09 |  |  |
|  | 5 | **Level 6 — Enclosure Gate** |  | 2026-08-26 | 2026-08-26 |  |  |
| DH1600.IST.4100 |  | DH 1600/Level 6 — Enclosure Gate // Data Hall Dry-In / Weather-Tight Achieved | 0d | 2026-08-26 A | 2026-08-26 A | ARC-DEL-ACT-01 | 100% |
|  | 2 | **Level 5 — Construction Complete (White Space)** |  | 2026-08-26 | 2026-08-26 |  |  |
| DH1600.IST.5100 |  | DH 1600/Level 5 — Construction Complete (White Space) // Data Hall Interior Construction Complete | 0d | 2026-08-26 A | 2026-08-26 A | ARC-DEL-ACT-01 | 100% |
|  | 3 | **Level 4 — Equipment Installed & Available** |  | 2026-08-26 | 2026-08-26 |  |  |
| DH1600.IST.6100 |  | DH 1600/Level 4 — Equipment Installed & Available // Electrical Equipment Installed & Terminated | 0d | 2026-08-26 A | 2026-08-26 A | ARC-DEL-ACT-01 | 100% |
| DH1600.IST.6200 |  | DH 1600/Level 4 — Equipment Installed & Available // Mechanical Equipment Installed & Connected | 0d | 2026-08-26 A | 2026-08-26 A | ARC-DEL-ACT-01 | 100% |
| DH1600.IST.6300 |  | DH 1600/Level 4 — Equipment Installed & Available // Controls Devices Installed & Powered | 0d | 2026-08-26 A | 2026-08-26 A | ARC-DEL-ACT-01 | 100% |
|  | 6 | **Level 3 — Startup / Pre-Functional Testing** |  | 2026-08-26 | 2026-09-09 |  |  |
| DH1600.L3CX.ELEC.001 |  | DH 1600/Level 3 — Startup / Pre-Functional Testing // DH 1600 Startup / Pre-Functional – ELECTRICAL | 10d | 2026-08-26 A | 2026-09-09 A | ARC-DEL-ACT-01 | 100% |
| DH1600.L3CX.ELEC.13 |  | DH 1600/Level 3 — Startup / Pre-Functional Testing // DH 1600 Controls verification | 0d | 2026-08-26 A | 2026-08-26 A | ARC-DEL-ACT-01 | 100% |
| DH1600.L3CX.ELEC.3 |  | DH 1600/Level 3 — Startup / Pre-Functional Testing // DH 1600 Startup / Pre-Functional – MEHANICAL | 10d | 2026-08-26 A | 2026-09-09 A | ARC-DEL-ACT-01 | 100% |
|  | 1 | **Level 2 — Readiness Gate** |  | 2026-08-26 | 2026-08-26 |  |  |
| DH1600.IST.8000 |  | DH 1600/Level 2 — Readiness Gate // DATA HALL READY FOR IST | 0d | 2026-08-26 A | 2026-08-26 A | ARC-DEL-ACT-01 | 100% |
|  | 4 | **Level 1 — IST Target** |  |  |  |  |  |
|  | 1 | **Energization & L3 Prefunctional Testing** |  | 2026-08-26 | 2026-09-23 |  |  |
| DH1600.L3CX.ELEC.003 |  | DH 1600/Energization & L3 Prefunctional Testing // DH 1600 L3 Commissioning | 20d | 2026-08-26 A | 2026-09-23 A | ARC-DEL-ACT-01 | 100% |
|  | 2 | **L4 Function Testing** |  | 2026-08-26 | 2026-09-09 |  |  |
| DH1600.L4CX.COMM.110 |  | DH 1600/L4 Function Testing // DH1600 L4 Commissioning | 10d | 2026-08-26 A | 2026-09-09 A | ARC-DEL-ACT-01 | 100% |
|  | 3 | **L5 Integrated System Testing (IST)** |  | 2026-08-26 | 2026-09-23 |  |  |
| DH1600.L5CX.COMM.160 |  | DH1600 L5 Integrated Systems Testing | 20d | 2026-08-26 A | 2026-09-23 A | ARC-DEL-ACT-01 | 100% |
| DH16000-03 |  | DH1600 – IST / L5 Commissioning Complete | 0d | 2026-08-26 A | 2026-08-26 A | ARC-DEL-ACT-01 | 100% |

## Version 2 (data date 2026-10-14, saved 2026-10-28, file 226021.025.MO-UP-09.xer)

Last finish 2027-06-22 → 2027-07-16 (+24d). Complete tasks 1766 → 1851.

Added:

| ID | Task | Duration | Start | Finish | Predecessors | Constraint |
| --- | --- | --- | --- | --- | --- | --- |
| ADMIN.6249 | BOH/House Elec 1000G15 // Final paint (12' and Below) | 2d | 2026-11-02 | 2026-11-03 | ADMIN.5513, ADMIN.5515, ADMIN.6089, ADMIN.5512 |  |
| A5890 | DH1300/Mechanical Yard - OFCI Chiller Delivery Date (12/07/26 through 12/08/26) | 0d | 2026-12-07 | 2026-12-07 | A5748 FF | finish on or after 2026-12-07 |
| DH.1300.3102 | DH1300/Electrical Room #5301 // DH1300 - OFCI CRAH-125 Delivery Date (10/21/2026) First Shipment | 0d | 2026-10-21 | 2026-10-21 | B120001.3108 | finish on or after 2026-10-21 |
| DH.1300.3082 | DH1300/Electrical Room #5301 // DH1300 - OFCI Skid Delivery Date (02/18/2027) 2nd Shipment | 0d | 2026-11-05 | 2026-11-05 | B120001.3108 FF | finish on or after 2026-11-05 |
| DH1300.LD.1981 | DH 1300 / Loading Dock #1030 // Overhead Fire Protection | 5d | 2026-10-19 | 2026-10-23 | DH.130012071 |  |
| DH1300.LD.1982 | DH 1300 / Loading Dock #1030 // Overhead Mechanical Piping | 5d | 2026-10-26 | 2026-10-30 | DH1300.LD.1981 |  |
| DH1300.LD.1983 | DH 1300 / Loading Dock #1030 // OH Electrical Rough | 5d | 2026-11-02 | 2026-11-06 | DH1300.LD.1982 |  |
| DH1300.LD.1984 | DH 1300 / Loading Dock #1030 // Overhead Mechanical Duct | 5d | 2026-11-02 | 2026-11-06 | DH1300.LD.1982 |  |
| DH1300.LD.1985 | DH 1300 / Loading Dock #1030 // In-Wall Electrical Rough | 2d | 2026-11-09 | 2026-11-10 | DH1300.LD.1983 |  |
| DH1300.LD.1986 | DH 1300 / Loading Dock #1030 // Top of Wall Fire Stop | 2d | 2026-11-09 | 2026-11-10 | DH1300.LD.1983 |  |
| DH1300.LD.1998 | DH 1300 / Loading Dock #1030 // Install Dock Levelers | 2d | 2026-11-09 | 2026-11-10 | DH1300.LD.1984 |  |
| DH1300.LD.1987 | DH 1300 / Loading Dock #1030 // In-Wall Inspection | 1d | 2026-11-12 | 2026-11-12 | DH1300.LD.1985 |  |
| DH1300.LD.1989 | DH 1300 / Loading Dock #1030 // Hang, Tape, & Finish Drywall | 10d | 2026-11-13 | 2026-11-27 | DH1300.LD.1987 |  |
| DH1300.LD.1990 | DH 1300 / Loading Dock #1030 // Paint Walls | 3d | 2026-11-30 | 2026-12-02 | DH1300.LD.1989 |  |
| DH1300.LD.1992 | DH 1300 / Loading Dock #1030 // Install Fire Alarm | 5d | 2026-12-03 | 2026-12-09 | DH1300.LD.1986, DH1300.LD.1984, DH1300.LD.1990 |  |
| DH1300.LD.1994 | DH 1300 / Loading Dock #1030 // Install Fire Sprinkler Heads | 5d | 2026-12-03 | 2026-12-09 | DH1300.LD.1992 FF |  |
| DH1300.LD.1995 | DH 1300 / Loading Dock #1030 // Pull, Test, & Terminate | 6d | 2026-12-03 | 2026-12-10 | DH1300.LD.1990 |  |
| DH1300.LD.2010 | DH 1300 / Loading Dock #1030 // Install Overhead Door - 1030.2 | 1d | 2026-12-10 | 2026-12-10 | DH1300.LD.1992, DH1300.LD.1998 |  |
| DH1300.LD.1996 | DH 1300 / Loading Dock #1030 // Install Overhead Lighting Fixtures | 5d | 2026-12-11 | 2026-12-17 | DH1300.LD.1995 |  |
| DH1300.LD.1999 | DH 1300 / Loading Dock #1030 // Install Overhead Door - 1030.3 | 1d | 2026-12-11 | 2026-12-11 | DH1300.LD.2010 |  |
| DH1300.LD.2011 | DH 1300 / Loading Dock #1030 // Loading Dock Operational | 0d | 2026-12-14 | 2026-12-14 | DH1300.LD.1999 |  |
| DH1300.LD.1997 | DH 1300 / Loading Dock #1030// Electrical Trim | 5d | 2026-12-18 | 2026-12-24 | DH1300.LD.2011 FF, DH1300.LD.1999, DH1300.LD.1994, DH1300.LD.1996, DH1300.LD.1990 |  |
| A5910 | DH1500/Mechanical Yard - OFCI Chiller Delivery Date (12/16/26 through 12/17/26) | 0d | 2026-12-16 | 2026-12-16 | A5796 | finish on or after 2026-12-16 |
| ER.5101.3132 | DH1500/Electrical Room #5501 // DH1500 - OFCI CRAH-125 Delivery Date (11/23/2027) First Shipment | 0d | 2026-11-23 | 2026-11-23 | ER.5101.3108 FF | finish on or after 2026-11-23 |
| ER.5101.3122 | DH1500/Electrical Room #5501 // DH1500 - OFCI Skid Delivery Date (02/11/2027) 2nd Shipment | 0d | 2027-02-11 | 2027-02-11 | ER.5101.3108 FF | finish on or after 2027-02-11 |
| 1 | **Loading Dock 1050** |  | 2026-10-19 | 2026-12-16 |  |  |
| DH1500.LD.1981 | DH 1500 / Loading Dock #1050// Overhead Fire Protection | 5d | 2026-10-19 | 2026-10-23 | DH.150012071 |  |
| DH1500.LD.1982 | DH 1500 / Loading Dock #1050// Overhead Mechanical Piping | 5d | 2026-10-26 | 2026-10-30 | DH1500.LD.1981 |  |
| DH1500.LD.1985 | DH 1500 / Loading Dock #1050// In-Wall Electrical Rough | 2d | 2026-10-26 | 2026-10-27 | DH1500.LD.1981 |  |
| DH1500.LD.1994 | DH 1500 / Loading Dock #1050// Install Fire Sprinkler Heads | 5d | 2026-10-26 | 2026-10-30 | DH1500.LD.1981 |  |
| DH1500.LD.1986 | DH 1500 / Loading Dock #1050// Top of Wall Fire Stop | 2d | 2026-10-28 | 2026-10-29 | DH1500.LD.1985 |  |
| DH1500.LD.1987 | DH 1500 / Loading Dock #1050// In-Wall Inspection | 1d | 2026-10-28 | 2026-10-28 | DH1500.LD.1985 |  |
| DH1500.LD.1989 | DH 1500 / Loading Dock #1050// Hang, Tape, & Finish Drywall | 14d | 2026-10-29 | 2026-11-18 | DH1500.LD.1987 |  |
| DH1500.LD.1983 | DH 1500 / Loading Dock #1050// OH Electrical Rough | 5d | 2026-11-02 | 2026-11-06 | DH1500.LD.1982 |  |
| DH1500.LD.1984 | DH 1500 / Loading Dock #1050// Overhead Mechanical Duct | 5d | 2026-11-02 | 2026-11-06 | DH1500.LD.1982 |  |
| DH1500.LD.1998 | DH 1500 / Loading Dock #1050// Install Dock Levelers | 2d | 2026-11-09 | 2026-11-10 | DH1500.LD.1984 |  |
| DH1500.LD.1990 | DH 1500 / Loading Dock #1050// Paint Walls | 3d | 2026-11-19 | 2026-11-23 | DH1500.LD.1989 |  |
| DH1500.LD.1992 | DH 1500 / Loading Dock #1050// Install Fire Alarm | 5d | 2026-11-24 | 2026-12-01 | DH1500.LD.1986, DH1500.LD.1984, DH1500.LD.1990 |  |
| DH1500.LD.1995 | DH 1500 / Loading Dock #1050// Pull, Test, & Terminate | 6d | 2026-11-24 | 2026-12-02 | DH1500.LD.1990 |  |
| DH1500.LD.1999 | DH 1500 / Loading Dock #1050// Install Overhead Door - 1050.2 | 1d | 2026-12-02 | 2026-12-02 | DH1500.LD.1992, DH1500.LD.1998 |  |
| DH1500.LD.1996 | DH 1500 / Loading Dock #1050// Install Overhead Lighting Fixtures | 5d | 2026-12-03 | 2026-12-09 | DH1500.LD.1995 |  |
| DH1500.LD.2010 | DH 1500 / Loading Dock #1050// Install Overhead Door - 1050.3 | 1d | 2026-12-03 | 2026-12-03 | DH1500.LD.1999 |  |
| DH1500.LD.2011 | DH 1500 / Loading Dock #1050// Loading Dock Operational | 0d | 2026-12-04 | 2026-12-04 | DH1500.LD.2010 |  |
| DH1500.LD.1997 | DH 1500 / Loading Dock #1050// Electrical Trim | 5d | 2026-12-10 | 2026-12-16 | DH1500.LD.2011, DH1500.LD.1983, DH1500.LD.2010, DH1500.LD.1994, DH1500.LD.1996, DH1500.LD.1990 |  |
| A5880 | DH1200/Mechanical Yard - OFCI Chiller Delivery Date (10/19/26 through 10/20/26) | 0d | 2026-10-19 | 2026-10-19 | A5700 | finish on or after 2026-10-19 |
| B120001.3230 | DH1200/Electrical Room #5201 // DH1200 - OFCI Skid Delivery Date (010/13/2026) 2nd Shipment | 0d | 2026-09-30 A | 2026-10-13 A | B120001.3110 FF | finish on or after 2026-10-13 |
| 10 | **Loading Dock 1030** |  |  |  |  |  |
| A5900 | DH1400/Mechanical Yard - OFCI Chiller Delivery Date (12/09/26 through 12/10/26) | 0d | 2026-12-09 | 2026-12-09 | A5772 | finish on or after 2026-12-09 |
| DH.1300.3112 | DH1400/Electrical Room #5401 // DH1400 - OFCI CRAH-125 Delivery Date (11/4/2026) First Shipment | 0d | 2026-11-04 | 2026-11-04 | DH.1300.3068 | finish on or after 2026-11-04 |
| DH.1300.3092 | DH1400/Electrical Room #5401 // DH1400 - OFCI Skid Delivery Date (11/12/2026) 2nd Shipment | 0d | 2026-11-12 | 2026-11-12 | DH.1300.3068 FF | finish on or after 2026-11-12 |
| A5920 | DH1600/Mechanical Yard - OFCI Chiller Delivery Date (01/06/27 through 01/07/27) | 0d | 2027-01-06 | 2027-01-06 | A5838 | finish on or after 2027-01-06 |
| DH.1600.3082 | DH1600/Electrical Room #5601 // DH1600 - OFCI CRAH-125 Delivery Date (12/02/2026) First Shipment | 0d | 2026-12-02 | 2026-12-02 | DH.1600.3059 | finish on or after 2026-12-02 |
| DH.1600.3072 | DH1600/Electrical Room #5601 // DH1600 - OFCI Skid Delivery Date (02/18/2027) 2nd Shipment | 0d | 2027-02-18 | 2027-02-18 | DH.1600.3059 FF | finish on or after 2027-02-18 |

Removed: DH1100-B-EQP-8 Gallery 1103 - A110/Line-Ups // Pull Cable Tray Feed from MOD to CRAHU's; DH1100-B-EQP-7 Gallery 1103 - A110/Line-Ups // Pull Feeder from SWD to MOD; DH1100-B-EQP-13 Gallery 1103 - A110/Line-Ups // Terminate MOD Panels; DH1100-B-EQP-23 Gallery 1103 - B110/Line-Ups // Set MOD B140-01 (Does No apply); DH1100-B-EQP-24 Gallery 1103 - B110/Line-Ups // Set MOD B140-02 (Does No apply); DH1100-B-EQP-26 Gallery 1103 - B110/Line-Ups // Pull Cable Tray Feed from MOD to CRAHU's; DH1100-B-EQP-25 Gallery 1103 - B110/Line-Ups // Pull Feeder from SWD to MOD; DH1100-B-EQP-29 Gallery 1103 - B110/Line-Ups // Pull Cable Tray Feed from MOD to CRAHU's; DH1100-B-EQP-31 Gallery 1103 - B110/Line-Ups // Terminat Mod Panels; DH1100-B-EQP-41 Gallery 1103 - C110/Line-Ups // Set MOD C140-01 (Does No apply); DH1100-B-EQP-42 Gallery 1103 - C110/Line-Ups // Set MOD C140-02 (Does No apply); DH1100-B-EQP-44 Gallery 1103 - C110/Line-Ups // Pull Cable Tray Feed from MOD to CRAHU's; DH1100-B-EQP-43 Gallery 1103 - C110/Line-Ups // Pull Feeder from SWD to MOD; DH1100-B-EQP-47 Gallery 1103 - C110/Line-Ups // Pull Cable Tray Feed from MOD to CRAHU's; DH1100-B-EQP-49 Gallery 1103 - C110/Line-Ups // Terminat Mod Panels; DH1100-B-EQP-59 Gallery 1103 - D110/Line-Ups // Set MOD D140-01 (Does No apply); DH1100-B-EQP-60 Gallery 1103 - D110/Line-Ups // Set MOD D140-02 (Does No apply); DH1100-B-EQP-62 Gallery 1103 - D110/Line-Ups // Pull Cable Tray Feed from MOD to CRAHU's; DH1100-B-EQP-61 Gallery 1103 - D110/Line-Ups // Pull Feeder from SWD to MOD; DH1100-B-EQP-65 Gallery 1103 - D110/Line-Ups // Pull Cable Tray Feed from MOD to CRAHU's; DH1100-B-EQP-67 Gallery 1103 - D110/Line-Ups // Terminat Mod Panels; DH1100-B-EQP-77 Gallery 1103 - E110/Line-Ups // Set MOD E140-01 (Does No apply); DH1100-B-EQP-78 Gallery 1103 - E110/Line-Ups // Set MOD E140-02 (Does No apply); DH1100-B-EQP-80 Gallery 1103 - E110/Line-Ups // Pull Cable Tray Feed from MOD to CRAHU's; DH1100-B-EQP-79 Gallery 1103 - E110/Line-Ups // Pull Feeder from SWD to MOD; DH1100-B-EQP-83 Gallery 1103 - E110/Line-Ups // Pull Cable Tray Feed from MOD to CRAHU's; DH1100-B-EQP-85 Gallery 1103 - E110/Line-Ups // Terminat Mod Panels; DH1100-B-EQP-95 Gallery 1103 - F110/Line-Ups // Set MOD F140-01 (Does No apply); DH1100-B-EQP-96 Gallery 1103 - F110/Line-Ups // Set MOD F140-02 (Does No apply); DH1100-B-EQP-98 Gallery 1103 - F110/Line-Ups // Pull Cable Tray Feed from MOD to CRAHU's; DH1100-B-EQP-97 Gallery 1103 - F110/Line-Ups // Pull Feeder from SWD to MOD; DH1100-B-EQP-101 Gallery 1103 - F110/Line-Ups // Pull Cable Tray Feed from MOD to CRAHU's; DH1100-B-EQP-103 Gallery 1103 - F110/Line-Ups // Terminat Mod Panels; DH1100-B-EQP-113 Gallery 1103 - G110/Line-Ups // Set MOD G140-01 (Does No apply); DH1100-B-EQP-114 Gallery 1103 - G110/Line-Ups // Set MOD G140-02 (Does No apply); DH1100-B-EQP-116 Gallery 1103 - G110/Line-Ups // Pull Cable Tray Feed from MOD to CRAHU's; DH1100-B-EQP-115 Gallery 1103 - G110/Line-Ups // Pull Feeder from SWD to MOD; DH1100-B-EQP-119 Gallery 1103 - G110/Line-Ups // Pull Cable Tray Feed from MOD to CRAHU's; DH1100-B-EQP-121 Gallery 1103 - G110/Line-Ups // Terminat Mod Panels; DH1100-B-EQP-131 Gallery 1103 - H110/Line-Ups // Set MOD H140-01 (Does No apply); DH1100-B-EQP-132 Gallery 1103 - H110/Line-Ups // Set MOD H140-02 (Does No apply); DH1100-B-EQP-134 Gallery 1103 - H110/Line-Ups // Pull Cable Tray Feed from MOD to CRAHU's; DH1100-B-EQP-133 Gallery 1103 - H110/Line-Ups // Pull Feeder from SWD to MOD; DH1100-B-EQP-137 Gallery 1103 - H110/Line-Ups // Pull Cable Tray Feed from MOD to CRAHU's; DH1100-B-EQP-139 Gallery 1103 - H110/Line-Ups // Terminat Mod Panels; DH1100-B-EQP-149 Gallery 1103 - J110/Line-Ups // Set MOD J140-01 (Does No apply); DH1100-B-EQP-150 Gallery 1103 - J110/Line-Ups // Set MOD J140-02 (Does No apply); DH1100-B-EQP-152 Gallery 1103 - J110/Line-Ups // Pull Cable Tray Feed from MOD to CRAHU's; DH1100-B-EQP-151 Gallery 1103 - J110/Line-Ups // Pull Feeder from SWD to MOD; DH1100-B-EQP-155 Gallery 1103 - J110/Line-Ups // Pull Cable Tray Feed from MOD to CRAHU's; DH1100-B-EQP-157 Gallery 1103 - J110/Line-Ups // Terminat Mod Panels; DH1100-B-EQP-167 Gallery 1103 - K110/Line-Ups // Set MOD K140-01 (Does No apply); DH1100-B-EQP-168 Gallery 1103 - K110/Line-Ups // Set MOD K140-02 (Does No apply); DH1100-B-EQP-170 Gallery 1103 - K110/Line-Ups // Pull Cable Tray Feed from MOD to CRAHU's; DH1100-B-EQP-169 Gallery 1103 - K110/Line-Ups // Pull Feeder from SWD to MOD; DH1100-B-EQP-173 Gallery 1103 - K110/Line-Ups // Pull Cable Tray Feed from MOD to CRAHU's; DH1100-B-EQP-175 Gallery 1103 - K110/Line-Ups // Terminat Mod Panels; DH1100-B-EQP-187 Gallery 1103 - R110/Line-Ups // Pull Feeder from SWD to MOD; DH1100-B-EQP-188 Gallery 1103 - R110/Line-Ups // Pull Cable Tray Feed from MOD to CRAHU's; DH1100-B-EQP-193 Gallery 1103 - R110/Line-Ups // Terminat Mod Panels; DH.1300.1190 DH1300/Electrical Room #5301 // Install Elect Equipment Skids; DH.1300B-EQP-5 Gallery 1303 - A130/Line-Ups // Set MOD A140-01 (Does No apply); DH.1300B-EQP-6 Gallery 1303 - A130/Line-Ups // Set MOD A140-02 (Does No apply); DH.1300B-EQP-8 Gallery 1303 - A130/Line-Ups // Pull Cable Tray Feed from MOD to CRAHU's; DH.1300B-EQP-7 Gallery 1303 - A130/Line-Ups // Pull Feeder from SWD to MOD; DH.1300B-EQP-13 Gallery 1303 - A130/Line-Ups // Terminate MOD Panels; DH.1300B-EQP-23 Gallery 1303 - B130/Line-Ups // Set MOD B140-01 (Does No apply); DH.1300B-EQP-24 Gallery 1303 - B130/Line-Ups // Set MOD B140-02 (Does No apply); DH.1300B-EQP-26 Gallery 1303 - B130/Line-Ups // Pull Cable Tray Feed from MOD to CRAHU's; DH.1300B-EQP-25 Gallery 1303 - B130/Line-Ups // Pull Feeder from SWD to MOD; DH.1300B-EQP-29 Gallery 1303 - B130/Line-Ups // Pull Cable Tray Feed from MOD to CRAHU's; DH.1300B-EQP-31 Gallery 1303 - B130/Line-Ups // Terminat Mod Panels; DH.1300B-EQP-41 Gallery 1303 - C130/Line-Ups // Set MOD C140-01 (Does No apply); DH.1300B-EQP-42 Gallery 1303 - C130/Line-Ups // Set MOD C140-02 (Does No apply); DH.1300B-EQP-44 Gallery 1303 - C130/Line-Ups // Pull Cable Tray Feed from MOD to CRAHU's; DH.1300B-EQP-43 Gallery 1303 - C130/Line-Ups // Pull Feeder from SWD to MOD; DH.1300B-EQP-47 Gallery 1303 - C130/Line-Ups // Pull Cable Tray Feed from MOD to CRAHU's; DH.1300B-EQP-49 Gallery 1303 - C130/Line-Ups // Terminat Mod Panels; DH.1300B-EQP-59 Gallery 1303 - D130/Line-Ups // Set MOD D140-01 (Does No apply); DH.1300B-EQP-60 Gallery 1303 - D130/Line-Ups // Set MOD D140-02 (Does No apply); DH.1300B-EQP-62 Gallery 1303 - D130/Line-Ups // Pull Cable Tray Feed from MOD to CRAHU's; DH.1300B-EQP-61 Gallery 1303 - D130/Line-Ups // Pull Feeder from SWD to MOD; DH.1300B-EQP-65 Gallery 1303 - D130/Line-Ups // Pull Cable Tray Feed from MOD to CRAHU's; DH.1300B-EQP-67 Gallery 1303 - D130/Line-Ups // Terminat Mod Panels; DH.1300B-EQP-77 Gallery 1303 - E130/Line-Ups // Set MOD E140-01 (Does No apply); DH.1300B-EQP-78 Gallery 1303 - E130/Line-Ups // Set MOD E140-02 (Does No apply); DH.1300B-EQP-80 Gallery 1303 - E130/Line-Ups // Pull Cable Tray Feed from MOD to CRAHU's; DH.1300B-EQP-79 Gallery 1303 - E130/Line-Ups // Pull Feeder from SWD to MOD; DH.1300B-EQP-83 Gallery 1303 - E130/Line-Ups // Pull Cable Tray Feed from MOD to CRAHU's; DH.1300B-EQP-85 Gallery 1303 - E130/Line-Ups // Terminat Mod Panels; DH.1300B-EQP-95 Gallery 1303 - F130/Line-Ups // Set MOD F140-01 (Does No apply); DH.1300B-EQP-96 Gallery 1303 - F130/Line-Ups // Set MOD F140-02 (Does No apply); DH.1300B-EQP-98 Gallery 1303 - F130/Line-Ups // Pull Cable Tray Feed from MOD to CRAHU's; DH.1300B-EQP-97 Gallery 1303 - F130/Line-Ups // Pull Feeder from SWD to MOD; DH.1300B-EQP-101 Gallery 1303 - F130/Line-Ups // Pull Cable Tray Feed from MOD to CRAHU's; DH.1300B-EQP-103 Gallery 1303 - F130/Line-Ups // Terminat Mod Panels; DH.1300B-EQP-113 Gallery 1303 - G130/Line-Ups // Set MOD G140-01 (Does No apply); DH.1300B-EQP-114 Gallery 1303 - G130/Line-Ups // Set MOD G140-02 (Does No apply); DH.1300B-EQP-115 Gallery 1303 - G130/Line-Ups // Pull Feeder from SWD to MOD; DH.1300B-EQP-116 Gallery 1303 - G130/Line-Ups // Pull Cable Tray Feed from MOD to CRAHU's; DH.1300B-EQP-119 Gallery 1303 - G130/Line-Ups // Pull Cable Tray Feed from MOD to CRAHU's; DH.1300B-EQP-121 Gallery 1303 - G130/Line-Ups // Terminat Mod Panels; DH.1300B-EQP-131 Gallery 1303 - H130/Line-Ups // Set MOD H140-01; DH.1300B-EQP-132 Gallery 1303 - H130/Line-Ups // Set MOD H140-02; DH.1300B-EQP-134 Gallery 1303 - H130/Line-Ups // Pull Cable Tray Feed from MOD to CRAHU's; DH.1300B-EQP-133 Gallery 1303 - H130/Line-Ups // Pull Feeder from SWD to MOD; DH.1300B-EQP-137 Gallery 1303 - H130/Line-Ups // Pull Cable Tray Feed from MOD to CRAHU's; DH.1300B-EQP-139 Gallery 1303 - H130/Line-Ups // Terminat Mod Panels; DH.1300B-EQP-149 Gallery 1303 - J130/Line-Ups // Set MOD J140-01; DH.1300B-EQP-150 Gallery 1303 - J130/Line-Ups // Set MOD J140-02; DH.1300B-EQP-152 Gallery 1303 - J130/Line-Ups // Pull Cable Tray Feed from MOD to CRAHU's; DH.1300B-EQP-151 Gallery 1303 - J130/Line-Ups // Pull Feeder from SWD to MOD; DH.1300B-EQP-155 Gallery 1303 - J130/Line-Ups // Pull Cable Tray Feed from MOD to CRAHU's; DH.1300B-EQP-157 Gallery 1303 - J130/Line-Ups // Terminat Mod Panels; DH.1300B-EQP-167 Gallery 1303 - K130/Line-Ups // Set MOD K140-01 (Does No apply); DH.1300B-EQP-168 Gallery 1303 - K130/Line-Ups // Set MOD K140-02 (Does No apply); DH.1300B-EQP-169 Gallery 1303 - K130/Line-Ups // Pull Feeder from SWD to MOD; DH.1300B-EQP-170 Gallery 1303 - K130/Line-Ups // Pull Cable Tray Feed from MOD to CRAHU's; DH.1300B-EQP-173 Gallery 1303 - K130/Line-Ups // Pull Cable Tray Feed from MOD to CRAHU's; DH.1300B-EQP-175 Gallery 1303 - K130/Line-Ups // Terminat Mod Panels; DH.1300B-EQP-185 Gallery 1303 - R130/Line-Ups // Set MOD R140-01 (No Apply); DH.1300B-EQP-186 Gallery 1303 - R130/Line-Ups // Set MOD R140-02 (Does No apply); DH.1300B-EQP-187 Gallery 1303 - R130/Line-Ups // Pull Feeder from SWD to MOD; DH.1300B-EQP-188 Gallery 1303 - R130/Line-Ups // Pull Cable Tray Feed from MOD to CRAHU's; DH.1300B-EQP-191 Gallery 1303 - R130/Line-Ups // Pull Cable Tray Feed from MOD to CRAHU's; DH.1300B-EQP-193 Gallery 1303 - R130/Line-Ups // Terminat Mod Panels; DH.13006430 DH 1300/Corridor 1000A (No Apply) // Seal concrete; DH.13006440 DH 1300/Corridor 1000A (No Apply)// MEPF Overhead Hangers; DH.13006470 DH 1300/Corridor 1000A (No Apply)// Frame walls; DH.13006550 DH 1300/Corridor 1000A (No Apply)// Install Top Down Sheetrock; B120001.3153 DH 1300/Corridor 1000A (No Apply)// Install Overhead Cable Ladder / 36" Cable Tray - TFO; B120001.3154 DH 1300/Corridor 1000A (No Apply)// Install Overhead HAC - TFO; DH.13006460 DH 1300/Corridor 1000A (No Apply)// MEPF high overhead install; DH.13006490 DH 1300/Corridor 1000A (No Apply) // MEP rough in walls; DH.13006500 DH 1300/Corridor 1000A (No Apply) // In wall inspection; DH.13006510 DH 1300/Corridor 1000A (No Apply) // Install Balance of Sheetrock on Walls; DH.13006520 DH 1300/Corridor 1000A (No Apply) // Tape and finish walls; DH.13006480 DH 1300/Corridor 1000A (No Apply) // Install wall door frames; DH.13006530 DH 1300/Corridor 1000A (No Apply) // Prime and Paint first coat walls; DH.13006590 DH 1300/Corridor 1000A (No Apply) // Install lights and exit signs; DH.13008080 DH 1300/Corridor 1000A (No Apply) // Final Coat Paint & Touchup Walls; DH.13006540 DH 1300/Corridor 1000A (No Apply) // Install MEP Devices and Trim; DH.160012147 DH 1300/Corridor 1000A (No Apply) // Ready to Receve Equipment; DH.1500B-EQP-5 Gallery 1503 - A150/Line-Ups // Set MOD A140-01 (Does No apply); DH.1500B-EQP-6 Gallery 1503 - A150/Line-Ups // Set MOD A140-02 (Does No apply); DH.1500B-EQP-8 Gallery 1503 - A150/Line-Ups // Pull Cable Tray Feed from MOD to CRAHU's; DH.1500B-EQP-7 Gallery 1503 - A150/Line-Ups // Pull Feeder from SWD to MOD; DH.1500B-EQP-13 Gallery 1503 - A150/Line-Ups // Terminate MOD Panels; DH.1500B-EQP-23 Gallery 1503 - B150/Line-Ups // Set MOD B140-01 (Does No apply); DH.1500B-EQP-24 Gallery 1503 - B150/Line-Ups // Set MOD B140-02 (Does No apply); DH.1500B-EQP-26 Gallery 1503 - B150/Line-Ups // Pull Cable Tray Feed from MOD to CRAHU's; DH.1500B-EQP-25 Gallery 1503 - B150/Line-Ups // Pull Feeder from SWD to MOD; DH.1500B-EQP-29 Gallery 1503 - B150/Line-Ups // Pull Cable Tray Feed from MOD to CRAHU's; DH.1500B-EQP-31 Gallery 1503 - B150/Line-Ups // Terminat Mod Panels; DH.1500B-EQP-41 Gallery 1503 - C150/Line-Ups // Set MOD C140-01 (Does No apply); DH.1500B-EQP-42 Gallery 1503 - C150/Line-Ups // Set MOD C140-02 (Does No apply); DH.1500B-EQP-44 Gallery 1503 - C150/Line-Ups // Pull Cable Tray Feed from MOD to CRAHU's; DH.1500B-EQP-43 Gallery 1503 - C150/Line-Ups // Pull Feeder from SWD to MOD; DH.1500B-EQP-47 Gallery 1503 - C150/Line-Ups // Pull Cable Tray Feed from MOD to CRAHU's; DH.1500B-EQP-49 Gallery 1503 - C150/Line-Ups // Terminat Mod Panels; DH.1500B-EQP-59 Gallery 1503 - D150/Line-Ups // Set MOD D140-01 (Does No apply); DH.1500B-EQP-60 Gallery 1503 - D150/Line-Ups // Set MOD D140-02 (Does No apply); DH.1500B-EQP-62 Gallery 1503 - D150/Line-Ups // Pull Cable Tray Feed from MOD to CRAHU's; DH.1500B-EQP-61 Gallery 1503 - D150/Line-Ups // Pull Feeder from SWD to MOD; DH.1500B-EQP-65 Gallery 1503 - D150/Line-Ups // Pull Cable Tray Feed from MOD to CRAHU's; DH.1500B-EQP-67 Gallery 1503 - D150/Line-Ups // Terminat Mod Panels; DH.1500B-EQP-77 Gallery 1503 - E150/Line-Ups // Set MOD E140-01 (Does No apply); DH.1500B-EQP-78 Gallery 1503 - E150/Line-Ups // Set MOD E140-02 (Does No apply); DH.1500B-EQP-80 Gallery 1503 - E150/Line-Ups // Pull Cable Tray Feed from MOD to CRAHU's; DH.1500B-EQP-79 Gallery 1503 - E150/Line-Ups // Pull Feeder from SWD to MOD; DH.1500B-EQP-83 Gallery 1503 - E150/Line-Ups // Pull Cable Tray Feed from MOD to CRAHU's; DH.1500B-EQP-85 Gallery 1503 - E150/Line-Ups // Terminat Mod Panels; DH.1500B-EQP-95 Gallery 1503 - F150/Line-Ups // Set MOD F140-01 (Does No apply); DH.1500B-EQP-96 Gallery 1503 - F150/Line-Ups // Set MOD F140-02 (Does No apply); DH.1500B-EQP-98 Gallery 1503 - F150/Line-Ups // Pull Cable Tray Feed from MOD to CRAHU's; DH.1500B-EQP-97 Gallery 1503 - F150/Line-Ups // Pull Feeder from SWD to MOD; DH.1500B-EQP-101 Gallery 1503 - F150/Line-Ups // Pull Cable Tray Feed from MOD to CRAHU's; DH.1500B-EQP-103 Gallery 1503 - F150/Line-Ups // Terminat Mod Panels; DH.1500B-EQP-113 Gallery 1503 - G150/Line-Ups // Set MOD G140-01 (Does No apply); DH.1500B-EQP-114 Gallery 1503 - G150/Line-Ups // Set MOD G140-02 (Does No apply); DH.1500B-EQP-116 Gallery 1503 - G150/Line-Ups // Pull Cable Tray Feed from MOD to CRAHU's; DH.1500B-EQP-115 Gallery 1503 - G150/Line-Ups // Pull Feeder from SWD to MOD; DH.1500B-EQP-119 Gallery 1503 - G150/Line-Ups // Pull Cable Tray Feed from MOD to CRAHU's; DH.1500B-EQP-121 Gallery 1503 - G150/Line-Ups // Terminat Mod Panels; DH.1500B-EQP-131 Gallery 1503 - H150/Line-Ups // Set MOD H140-01; DH.1500B-EQP-132 Gallery 1503 - H150/Line-Ups // Set MOD H140-02; DH.1500B-EQP-134 Gallery 1503 - H150/Line-Ups // Pull Cable Tray Feed from MOD to CRAHU's; DH.1500B-EQP-133 Gallery 1503 - H150/Line-Ups // Pull Feeder from SWD to MOD; DH.1500B-EQP-137 Gallery 1503 - H150/Line-Ups // Pull Cable Tray Feed from MOD to CRAHU's; DH.1500B-EQP-139 Gallery 1503 - H150/Line-Ups // Terminat Mod Panels; DH.1500B-EQP-149 Gallery 1503 - J150/Line-Ups // Set MOD J140-01; DH.1500B-EQP-150 Gallery 1503 - J150/Line-Ups // Set MOD J140-02; DH.1500B-EQP-152 Gallery 1503 - J150/Line-Ups // Pull Cable Tray Feed from MOD to CRAHU's; DH.1500B-EQP-151 Gallery 1503 - J150/Line-Ups // Pull Feeder from SWD to MOD; DH.1500B-EQP-155 Gallery 1503 - J150/Line-Ups // Pull Cable Tray Feed from MOD to CRAHU's; DH.1500B-EQP-157 Gallery 1503 - J150/Line-Ups // Terminat Mod Panels; DH.1500B-EQP-167 Gallery 1503 - K150/Line-Ups // Set MOD K140-01 (Does No apply); DH.1500B-EQP-168 Gallery 1503 - K150/Line-Ups // Set MOD K140-02 (Does No apply); DH.1500B-EQP-169 Gallery 1503 - K150/Line-Ups // Pull Feeder from SWD to MOD; DH.1500B-EQP-170 Gallery 1503 - K150/Line-Ups // Pull Cable Tray Feed from MOD to CRAHU's; DH.1500B-EQP-173 Gallery 1503 - K150/Line-Ups // Pull Cable Tray Feed from MOD to CRAHU's; DH.1500B-EQP-175 Gallery 1503 - K150/Line-Ups // Terminat Mod Panels; DH.1500B-EQP-185 Gallery 1503 - R150/Line-Ups // Set MOD R140-01 (No Apply); DH.1500B-EQP-186 Gallery 1503 - R150/Line-Ups // Set MOD R140-02 (Does No apply); DH.1500B-EQP-187 Gallery 1503 - R150/Line-Ups // Pull Feeder from SWD to MOD; DH.1500B-EQP-188 Gallery 1503 - R150/Line-Ups // Pull Cable Tray Feed from MOD to CRAHU's; DH.1500B-EQP-191 Gallery 1503 - R150/Line-Ups // Pull Cable Tray Feed from MOD to CRAHU's; DH.1500B-EQP-193 Gallery 1503 - R150/Line-Ups // Terminat Mod Panels; Loading Dock 1050 (No apply); B12000-B-EQP-5 Gallery 1203 - A120/Line-Ups // Set MOD A140-01 (Does No apply); B12000-B-EQP-6 Gallery 1203 - A120/Line-Ups // Set MOD A140-02 (Does No apply); B12000-B-EQP-8 Gallery 1203 - A120/Line-Ups // Pull Cable Tray Feed from MOD to CRAHU's; B12000-B-EQP-7 Gallery 1203 - A120/Line-Ups // Pull Feeder from SWD to MOD; B12000-B-EQP-13 Gallery 1203 - A120/Line-Ups // Terminate MOD Panels; B12000-B-EQP-23 Gallery 1203 - B120/Line-Ups // Set MOD B140-01 (Does No apply); B12000-B-EQP-24 Gallery 1203 - B120/Line-Ups // Set MOD B140-02 (Does No apply); B12000-B-EQP-26 Gallery 1203 - B120/Line-Ups // Pull Cable Tray Feed from MOD to CRAHU's; B12000-B-EQP-25 Gallery 1203 - B120/Line-Ups // Pull Feeder from SWD to MOD; B12000-B-EQP-29 Gallery 1203 - B120/Line-Ups // Pull Cable Tray Feed from MOD to CRAHU's; B12000-B-EQP-31 Gallery 1203 - B120/Line-Ups // Terminat Mod Panels; B12000-B-EQP-41 Gallery 1203 - C120/Line-Ups // Set MOD C140-01 (Does No apply); B12000-B-EQP-42 Gallery 1203 - C120/Line-Ups // Set MOD C140-02 (Does No apply); B12000-B-EQP-44 Gallery 1203 - C120/Line-Ups // Pull Cable Tray Feed from MOD to CRAHU's; B12000-B-EQP-43 Gallery 1203 - C120/Line-Ups // Pull Feeder from SWD to MOD; B12000-B-EQP-47 Gallery 1203 - C120/Line-Ups // Pull Cable Tray Feed from MOD to CRAHU's; B12000-B-EQP-49 Gallery 1203 - C120/Line-Ups // Terminat Mod Panels; B12000-B-EQP-59 Gallery 1203 - D120/Line-Ups // Set MOD D140-01 (Does No apply); B12000-B-EQP-60 Gallery 1203 - D120/Line-Ups // Set MOD D140-02 (Does No apply); B12000-B-EQP-62 Gallery 1203 - D120/Line-Ups // Pull Cable Tray Feed from MOD to CRAHU's; B12000-B-EQP-61 Gallery 1203 - D120/Line-Ups // Pull Feeder from SWD to MOD; B12000-B-EQP-65 Gallery 1203 - D120/Line-Ups // Pull Cable Tray Feed from MOD to CRAHU's; B12000-B-EQP-67 Gallery 1203 - D120/Line-Ups // Terminat Mod Panels; B12000-B-EQP-77 Gallery 1203 - E120/Line-Ups // Set MOD E140-01 (Does No apply); B12000-B-EQP-78 Gallery 1203 - E120/Line-Ups // Set MOD E140-02 (Does No apply); B12000-B-EQP-80 Gallery 1203 - E120/Line-Ups // Pull Cable Tray Feed from MOD to CRAHU's; B12000-B-EQP-79 Gallery 1203 - E120/Line-Ups // Pull Feeder from SWD to MOD; B12000-B-EQP-83 Gallery 1203 - E120/Line-Ups // Pull Cable Tray Feed from MOD to CRAHU's; B12000-B-EQP-85 Gallery 1203 - E120/Line-Ups // Terminat Mod Panels; B12000-B-EQP-95 Gallery 1203 - F120/Line-Ups // Set MOD F140-01 (Does No apply); B12000-B-EQP-96 Gallery 1203 - F120/Line-Ups // Set MOD F140-02 (Does No apply); B12000-B-EQP-98 Gallery 1203 - F120/Line-Ups // Pull Cable Tray Feed from MOD to CRAHU's; B12000-B-EQP-97 Gallery 1203 - F120/Line-Ups // Pull Feeder from SWD to MOD; B12000-B-EQP-101 Gallery 1203 - F120/Line-Ups // Pull Cable Tray Feed from MOD to CRAHU's; B12000-B-EQP-103 Gallery 1203 - F120/Line-Ups // Terminat Mod Panels; B12000-B-EQP-113 Gallery 1203 - G120/Line-Ups // Set MOD G140-01 (Does No apply); B12000-B-EQP-114 Gallery 1203 - G120/Line-Ups // Set MOD G140-02 (Does No apply); B12000-B-EQP-116 Gallery 1203 - G120/Line-Ups // Pull Cable Tray Feed from MOD to CRAHU's; B12000-B-EQP-115 Gallery 1203 - G120/Line-Ups // Pull Feeder from SWD to MOD; B12000-B-EQP-119 Gallery 1203 - G120/Line-Ups // Pull Cable Tray Feed from MOD to CRAHU's; B12000-B-EQP-121 Gallery 1203 - G120/Line-Ups // Terminat Mod Panels; B12000-B-EQP-131 Gallery 1203 - H120/Line-Ups // Set MOD H140-01; B12000-B-EQP-132 Gallery 1203 - H120/Line-Ups // Set MOD H140-02; B12000-B-EQP-134 Gallery 1203 - H120/Line-Ups // Pull Cable Tray Feed from MOD to CRAHU's; B12000-B-EQP-133 Gallery 1203 - H120/Line-Ups // Pull Feeder from SWD to MOD; B12000-B-EQP-137 Gallery 1203 - H120/Line-Ups // Pull Cable Tray Feed from MOD to CRAHU's; B12000-B-EQP-139 Gallery 1203 - H120/Line-Ups // Terminat Mod Panels; B12000-B-EQP-149 Gallery 1203 - J120/Line-Ups // Set MOD J140-01; B12000-B-EQP-150 Gallery 1203 - J120/Line-Ups // Set MOD J140-02; B12000-B-EQP-152 Gallery 1203 - J120/Line-Ups // Pull Cable Tray Feed from MOD to CRAHU's; B12000-B-EQP-151 Gallery 1203 - J120/Line-Ups // Pull Feeder from SWD to MOD; B12000-B-EQP-155 Gallery 1203 - J120/Line-Ups // Pull Cable Tray Feed from MOD to CRAHU's; B12000-B-EQP-157 Gallery 1203 - J120/Line-Ups // Terminat Mod Panels; B12000-B-EQP-167 Gallery 1203 - K120/Line-Ups // Set MOD K140-01 (Does No apply); B12000-B-EQP-168 Gallery 1203 - K120/Line-Ups // Set MOD K140-02 (Does No apply); B12000-B-EQP-169 Gallery 1203 - K120/Line-Ups // Pull Feeder from SWD to MOD; B12000-B-EQP-170 Gallery 1203 - K120/Line-Ups // Pull Cable Tray Feed from MOD to CRAHU's; B12000-B-EQP-173 Gallery 1203 - K120/Line-Ups // Pull Cable Tray Feed from MOD to CRAHU's; B12000-B-EQP-175 Gallery 1203 - K120/Line-Ups // Terminat Mod Panels; B12000-B-EQP-187 Gallery 1203 - R120/Line-Ups // Pull Feeder from SWD to MOD; B12000-B-EQP-188 Gallery 1203 - R120/Line-Ups // Pull Cable Tray Feed from MOD to CRAHU's; B12000-B-EQP-191 Gallery 1203 - R120/Line-Ups // Pull Cable Tray Feed from MOD to CRAHU's; B12000-B-EQP-185 Gallery 1203 - R120/Line-Ups // Set MOD R140-01 (No Apply); B12000-B-EQP-186 Gallery 1203 - R120/Line-Ups // Set MOD R140-02 (Does No apply); B12000-B-EQP-193 Gallery 1203 - R120/Line-Ups // Terminat Mod Panels; B12000B..1040 DH 1200/Loading Dock // Frame Walls including Backing; B12000B..1060 DH 1200/Loading Dock // MEPF Install Rough Wall; B12000B..1010 DH 1200/Loading Dock // MEPF Layout of Overhead Supports; B12000B..1020 DH 1200/Loading Dock // MEPF Install High Overhead Systems; B12000B..1000 DH 1200/Loading Dock // Seal Concrete; B12000B..1080 DH 1200/Loading Dock // Rough Wall Inspspection (Approval to Close up); B12000B..1090 DH 1200/Loading Dock // Install Balance of Sheetrock; B12000B..1100 DH 1200/Loading Dock // Tape and Finish Walls; B12000B..1110 DH 1200/Loading Dock // Prime and First Coat of Paint; B12000B..1120 DH 1200/Loading Dock // Install MEPF Overhead Ceiling Rough; B12000B..1050 DH 1200/Loading Dock // Install Door Frames; B12000B..1130 DH 1200/Loading Dock // Install Lighting, Fire Alarm & Fire Protection; B12000B..1140 DH 1200/Loading Dock // Wall Touch up Final Coat of Paint; B12000B..1150 DH 1200/Loading Dock // Install Wall Base, Trim, and Devices; B12000B..1161 DH 1200/Loading Dock // Ready to receive Equipment; B12000B..1160 DH 1200/Loading Dock // Suffolk Pre Punch; DH.1400B-EQP-5 Gallery 1403 - A140/Line-Ups // Set MOD A140-01 (Does No apply); DH.1400B-EQP-6 Gallery 1403 - A140/Line-Ups // Set MOD A140-02 (Does No apply); DH.1400B-EQP-8 Gallery 1403 - A140/Line-Ups // Pull Cable Tray Feed from MOD to CRAHU's; DH.1400B-EQP-7 Gallery 1403 - A140/Line-Ups // Pull Feeder from SWD to MOD; DH.1400B-EQP-13 Gallery 1403 - A140/Line-Ups // Terminate MOD Panels; DH.1400B-EQP-23 Gallery 1403 - B140/Line-Ups // Set MOD B140-01 (Does No apply); DH.1400B-EQP-24 Gallery 1403 - B140/Line-Ups // Set MOD B140-02 (Does No apply); DH.1400B-EQP-26 Gallery 1403 - B140/Line-Ups // Pull Cable Tray Feed from MOD to CRAHU's; DH.1400B-EQP-25 Gallery 1403 - B140/Line-Ups // Pull Feeder from SWD to MOD; DH.1400B-EQP-29 Gallery 1403 - B140/Line-Ups // Pull Cable Tray Feed from MOD to CRAHU's; DH.1400B-EQP-31 Gallery 1403 - B140/Line-Ups // Terminat Mod Panels; DH.1400B-EQP-41 Gallery 1403 - C140/Line-Ups // Set MOD C140-01 (Does No apply); DH.1400B-EQP-42 Gallery 1403 - C140/Line-Ups // Set MOD C140-02 (Does No apply); DH.1400B-EQP-44 Gallery 1403 - C140/Line-Ups // Pull Cable Tray Feed from MOD to CRAHU's; DH.1400B-EQP-43 Gallery 1403 - C140/Line-Ups // Pull Feeder from SWD to MOD; DH.1400B-EQP-47 Gallery 1403 - C140/Line-Ups // Pull Cable Tray Feed from MOD to CRAHU's; DH.1400B-EQP-49 Gallery 1403 - C140/Line-Ups // Terminat Mod Panels; DH.1400B-EQP-59 Gallery 1403 - D140/Line-Ups // Set MOD D140-01 (Does No apply); DH.1400B-EQP-60 Gallery 1403 - D140/Line-Ups // Set MOD D140-02 (Does No apply); DH.1400B-EQP-62 Gallery 1403 - D140/Line-Ups // Pull Cable Tray Feed from MOD to CRAHU's; DH.1400B-EQP-61 Gallery 1403 - D140/Line-Ups // Pull Feeder from SWD to MOD; DH.1400B-EQP-65 Gallery 1403 - D140/Line-Ups // Pull Cable Tray Feed from MOD to CRAHU's; DH.1400B-EQP-67 Gallery 1403 - D140/Line-Ups // Terminat Mod Panels; DH.1400B-EQP-77 Gallery 1403 - E140/Line-Ups // Set MOD E140-01 (Does No apply); DH.1400B-EQP-78 Gallery 1403 - E140/Line-Ups // Set MOD E140-02 (Does No apply); DH.1400B-EQP-80 Gallery 1403 - E140/Line-Ups // Pull Cable Tray Feed from MOD to CRAHU's; DH.1400B-EQP-79 Gallery 1403 - E140/Line-Ups // Pull Feeder from SWD to MOD; DH.1400B-EQP-83 Gallery 1403 - E140/Line-Ups // Pull Cable Tray Feed from MOD to CRAHU's; DH.1400B-EQP-85 Gallery 1403 - E140/Line-Ups // Terminat Mod Panels; DH.1400B-EQP-95 Gallery 1403 - F140/Line-Ups // Set MOD F140-01 (Does No apply); DH.1400B-EQP-96 Gallery 1403 - F140/Line-Ups // Set MOD F140-02 (Does No apply); DH.1400B-EQP-98 Gallery 1403 - F140/Line-Ups // Pull Cable Tray Feed from MOD to CRAHU's; DH.1400B-EQP-97 Gallery 1403 - F140/Line-Ups // Pull Feeder from SWD to MOD; DH.1400B-EQP-101 Gallery 1403 - F140/Line-Ups // Pull Cable Tray Feed from MOD to CRAHU's; DH.1400B-EQP-103 Gallery 1403 - F140/Line-Ups // Terminat Mod Panels; DH.1400B-EQP-113 Gallery 1403 - G140/Line-Ups // Set MOD G140-01 (Does No apply); DH.1400B-EQP-114 Gallery 1403 - G140/Line-Ups // Set MOD G140-02 (Does No apply); DH.1400B-EQP-116 Gallery 1403 - G140/Line-Ups // Pull Cable Tray Feed from MOD to CRAHU's; DH.1400B-EQP-115 Gallery 1403 - G140/Line-Ups // Pull Feeder from SWD to MOD; DH.1400B-EQP-119 Gallery 1403 - G140/Line-Ups // Pull Cable Tray Feed from MOD to CRAHU's; DH.1400B-EQP-121 Gallery 1403 - G140/Line-Ups // Terminat Mod Panels; DH.1400B-EQP-131 Gallery 1403 - H140/Line-Ups // Set MOD H140-01; DH.1400B-EQP-132 Gallery 1403 - H140/Line-Ups // Set MOD H140-02; DH.1400B-EQP-134 Gallery 1403 - H140/Line-Ups // Pull Cable Tray Feed from MOD to CRAHU's; DH.1400B-EQP-133 Gallery 1403 - H140/Line-Ups // Pull Feeder from SWD to MOD; DH.1400B-EQP-137 Gallery 1403 - H140/Line-Ups // Pull Cable Tray Feed from MOD to CRAHU's; DH.1400B-EQP-139 Gallery 1403 - H140/Line-Ups // Terminat Mod Panels; DH.1400B-EQP-149 Gallery 1403 - J140/Line-Ups // Set MOD J140-01; DH.1400B-EQP-150 Gallery 1403 - J140/Line-Ups // Set MOD J140-02; DH.1400B-EQP-152 Gallery 1403 - J140/Line-Ups // Pull Cable Tray Feed from MOD to CRAHU's; DH.1400B-EQP-151 Gallery 1403 - J140/Line-Ups // Pull Feeder from SWD to MOD; DH.1400B-EQP-155 Gallery 1403 - J140/Line-Ups // Pull Cable Tray Feed from MOD to CRAHU's; DH.1400B-EQP-157 Gallery 1403 - J140/Line-Ups // Terminat Mod Panels; DH.1400B-EQP-167 Gallery 1403 - K140/Line-Ups // Set MOD K140-01 (Does No apply); DH.1400B-EQP-168 Gallery 1403 - K140/Line-Ups // Set MOD K140-02 (Does No apply); DH.1400B-EQP-169 Gallery 1403 - K140/Line-Ups // Pull Feeder from SWD to MOD; DH.1400B-EQP-170 Gallery 1403 - K140/Line-Ups // Pull Cable Tray Feed from MOD to CRAHU's; DH.1400B-EQP-173 Gallery 1403 - K140/Line-Ups // Pull Cable Tray Feed from MOD to CRAHU's; DH.1400B-EQP-175 Gallery 1403 - K140/Line-Ups // Terminat Mod Panels; DH.1400B-EQP-185 Gallery 1403 - R140/Line-Ups // Set MOD R140-01 (No Apply); DH.1400B-EQP-186 Gallery 1403 - R140/Line-Ups // Set MOD R140-02 (Does No apply); DH.1400B-EQP-187 Gallery 1403 - R140/Line-Ups // Pull Feeder from SWD to MOD; DH.1400B-EQP-188 Gallery 1403 - R140/Line-Ups // Pull Cable Tray Feed from MOD to CRAHU's; DH.1400B-EQP-191 Gallery 1403 - R140/Line-Ups // Pull Cable Tray Feed from MOD to CRAHU's; DH.1400B-EQP-193 Gallery 1403 - R140/Line-Ups // Terminat Mod Panels; DH.1600B-EQP-5 Gallery 1603 - A160/Line-Ups // Set MOD A140-01 (Does No apply); DH.1600B-EQP-6 Gallery 1603 - A160/Line-Ups // Set MOD A140-02 (Does No apply); DH.1600B-EQP-8 Gallery 1603 - A160/Line-Ups // Pull Cable Tray Feed from MOD to CRAHU's; DH.1600B-EQP-7 Gallery 1603 - A160/Line-Ups // Pull Feeder from SWD to MOD; DH.1600B-EQP-13 Gallery 1603 - A160/Line-Ups // Terminate MOD Panels; DH.1600B-EQP-23 Gallery 1603 - B160/Line-Ups // Set MOD B140-01 (Does No apply); DH.1600B-EQP-24 Gallery 1603 - B160/Line-Ups // Set MOD B140-02 (Does No apply); DH.1600B-EQP-26 Gallery 1603 - B160/Line-Ups // Pull Cable Tray Feed from MOD to CRAHU's; DH.1600B-EQP-25 Gallery 1603 - B160/Line-Ups // Pull Feeder from SWD to MOD; DH.1600B-EQP-29 Gallery 1603 - B160/Line-Ups // Pull Cable Tray Feed from MOD to CRAHU's; DH.1600B-EQP-31 Gallery 1603 - B160/Line-Ups // Terminat Mod Panels; DH.1600B-EQP-41 Gallery 1603 - C160/Line-Ups // Set MOD C140-01 (Does No apply); DH.1600B-EQP-42 Gallery 1603 - C160/Line-Ups // Set MOD C140-02 (Does No apply); DH.1600B-EQP-44 Gallery 1603 - C160/Line-Ups // Pull Cable Tray Feed from MOD to CRAHU's; DH.1600B-EQP-43 Gallery 1603 - C160/Line-Ups // Pull Feeder from SWD to MOD; DH.1600B-EQP-47 Gallery 1603 - C160/Line-Ups // Pull Cable Tray Feed from MOD to CRAHU's; DH.1600B-EQP-49 Gallery 1603 - C160/Line-Ups // Terminat Mod Panels; DH.1600B-EQP-59 Gallery 1603 - D160/Line-Ups // Set MOD D140-01 (Does No apply); DH.1600B-EQP-60 Gallery 1603 - D160/Line-Ups // Set MOD D140-02 (Does No apply); DH.1600B-EQP-62 Gallery 1603 - D160/Line-Ups // Pull Cable Tray Feed from MOD to CRAHU's; DH.1600B-EQP-61 Gallery 1603 - D160/Line-Ups // Pull Feeder from SWD to MOD; DH.1600B-EQP-65 Gallery 1603 - D160/Line-Ups // Pull Cable Tray Feed from MOD to CRAHU's; DH.1600B-EQP-67 Gallery 1603 - D160/Line-Ups // Terminat Mod Panels; DH.1600B-EQP-77 Gallery 1603 - E160/Line-Ups // Set MOD E140-01 (Does No apply); DH.1600B-EQP-78 Gallery 1603 - E160/Line-Ups // Set MOD E140-02 (Does No apply); DH.1600B-EQP-80 Gallery 1603 - E160/Line-Ups // Pull Cable Tray Feed from MOD to CRAHU's; DH.1600B-EQP-79 Gallery 1603 - E160/Line-Ups // Pull Feeder from SWD to MOD; DH.1600B-EQP-83 Gallery 1603 - E160/Line-Ups // Pull Cable Tray Feed from MOD to CRAHU's; DH.1600B-EQP-85 Gallery 1603 - E160/Line-Ups // Terminat Mod Panels; DH.1600B-EQP-95 Gallery 1603 - F160/Line-Ups // Set MOD F140-01 (Does No apply); DH.1600B-EQP-96 Gallery 1603 - F160/Line-Ups // Set MOD F140-02 (Does No apply); DH.1600B-EQP-98 Gallery 1603 - F160/Line-Ups // Pull Cable Tray Feed from MOD to CRAHU's; DH.1600B-EQP-97 Gallery 1603 - F160/Line-Ups // Pull Feeder from SWD to MOD; DH.1600B-EQP-101 Gallery 1603 - F160/Line-Ups // Pull Cable Tray Feed from MOD to CRAHU's; DH.1600B-EQP-103 Gallery 1603 - F160/Line-Ups // Terminat Mod Panels; DH.1600B-EQP-113 Gallery 1603 - G160/Line-Ups // Set MOD G140-01 (Does No apply); DH.1600B-EQP-114 Gallery 1603 - G160/Line-Ups // Set MOD G140-02 (Does No apply); DH.1600B-EQP-116 Gallery 1603 - G160/Line-Ups // Pull Cable Tray Feed from MOD to CRAHU's; DH.1600B-EQP-115 Gallery 1603 - G160/Line-Ups // Pull Feeder from SWD to MOD; DH.1600B-EQP-119 Gallery 1603 - G160/Line-Ups // Pull Cable Tray Feed from MOD to CRAHU's; DH.1600B-EQP-121 Gallery 1603 - G160/Line-Ups // Terminat Mod Panels; DH.1600B-EQP-131 Gallery 1603 - H160/Line-Ups // Set MOD H140-01; DH.1600B-EQP-132 Gallery 1603 - H160/Line-Ups // Set MOD H140-02; DH.1600B-EQP-134 Gallery 1603 - H160/Line-Ups // Pull Cable Tray Feed from MOD to CRAHU's; DH.1600B-EQP-133 Gallery 1603 - H160/Line-Ups // Pull Feeder from SWD to MOD; DH.1600B-EQP-137 Gallery 1603 - H160/Line-Ups // Pull Cable Tray Feed from MOD to CRAHU's; DH.1600B-EQP-139 Gallery 1603 - H160/Line-Ups // Terminat Mod Panels; DH.1600B-EQP-149 Gallery 1603 - J160/Line-Ups // Set MOD J140-01; DH.1600B-EQP-150 Gallery 1603 - J160/Line-Ups // Set MOD J140-02; DH.1600B-EQP-152 Gallery 1603 - J160/Line-Ups // Pull Cable Tray Feed from MOD to CRAHU's; DH.1600B-EQP-151 Gallery 1603 - J160/Line-Ups // Pull Feeder from SWD to MOD; DH.1600B-EQP-155 Gallery 1603 - J160/Line-Ups // Pull Cable Tray Feed from MOD to CRAHU's; DH.1600B-EQP-157 Gallery 1603 - J160/Line-Ups // Terminat Mod Panels; DH.1600B-EQP-167 Gallery 1603 - K160/Line-Ups // Set MOD K140-01 (Does No apply); DH.1600B-EQP-168 Gallery 1603 - K160/Line-Ups // Set MOD K140-02 (Does No apply); DH.1600B-EQP-169 Gallery 1603 - K160/Line-Ups // Pull Feeder from SWD to MOD; DH.1600B-EQP-170 Gallery 1603 - K160/Line-Ups // Pull Cable Tray Feed from MOD to CRAHU's; DH.1600B-EQP-173 Gallery 1603 - K160/Line-Ups // Pull Cable Tray Feed from MOD to CRAHU's; DH.1600B-EQP-175 Gallery 1603 - K160/Line-Ups // Terminat Mod Panels; DH.1600B-EQP-185 Gallery 1603 - R160/Line-Ups // Set MOD R140-01 (No Apply); DH.1600B-EQP-186 Gallery 1603 - R160/Line-Ups // Set MOD R140-02 (Does No apply); DH.1600B-EQP-187 Gallery 1603 - R160/Line-Ups // Pull Feeder from SWD to MOD; DH.1600B-EQP-188 Gallery 1603 - R160/Line-Ups // Pull Cable Tray Feed from MOD to CRAHU's; DH.1600B-EQP-191 Gallery 1603 - R160/Line-Ups // Pull Cable Tray Feed from MOD to CRAHU's; DH.1600B-EQP-193 Gallery 1603 - R160/Line-Ups // Terminat Mod Panels; ARC-DEL-ACT-01 Start Deleted; ARC-DEL-ACT-1 Finish Deleted; PR12-1790 DH 1200 Procurement / Skidded // OFCI - 1.25 MW House Generator Bottom Fed 48 Hr Delivery to site; PR12-1800 DH 1200 Procurement / Skidded // OFCI - Air Insulated Intermediate Medium Voltage Gear Delivery to Site; PR12-1810 DH 1200 Procurement / Skidded // OFCI - 34.5KV 2500KVA Pad Mount Transformer Delivery to Site; PR12-1820 DH 1200 Procurement / Skidded // OFCI Thermal Energy Storage Delivery to Site; PR12-1840 DH 1200 Procurement / Skidded // OFCI - 500 KVA 415V to Multi Tap PDU with (8) 400A Out Delivery to Site; PR12-1850 DH 1200 Procurement / Skidded // OFCI - Standard HSE STS Delivery to Site; PR12-1870 DH 1200 Procurement / Skidded // OFCI 2000A Reserve Tie Board Delivery to Site; PR12-1890 DH 1200 Procurement / Skidded // OFCI - 505 Pad Mount Vista Gear 38KV Metered Delivery to Site; PR12-1900 DH 1200 Procurement / Skidded // OFCI - Main SWBD Top or Bottom Fed 3P/3W Delivery to Site; PR12-1910 DH 1200 Procurement / Skidded // OFCI - 150kw UPS System Delivery to Site; PR12-1920 DH 1200 Procurement / Skidded // OFCI - 2000A COD Board Standard 3P/3W Top Fed Delivery to Site; PR12-1950 DH 1200 Procurement / Skidded // OFCI - 800A ATS Delivery to site; PR12-1960 DH 1200 Procurement / Skidded // OFCI - Electrical Equipment Skid Delivery to site; PR12-2000 DH 1200 Procurement / Skidded // OFCI - House RTU DH (DOAS) Delivery to site; PR12-2010 DH 1200 Procurement / Skidded // OFCI - House RTU DH Delivery to site; PR12-1830 DH 1200 Procurement / Non-Skidded // OFCI - 500KW Chilled Water CDU Delivery to Site; PR12-1860 DH 1200 Procurement / Non-Skidded // OFCI - 600A CRAH MOD Board 3P/3W Delivery to Site; PR12-1880 DH 1200 Procurement / Non-Skidded // OFCI - 500 Ton ACC with Free Cooling Delivery to Site; PR12-1930 DH 1200 Procurement / Non-Skidded // OFCI - 600A CRAH MOD Board 3P/3W Delivery to Site; PR12-1940 DH 1200 Procurement / Non-Skidded // OFCI - 225A CDU MOD Board Delivery to site; PR12-1970 DH 1200 Procurement / Non-Skidded // OFCI - Dual Fed 400KW Slab CRAH Delivery to site; PR12-1980 DH 1200 Procurement / Non-Skidded // OFCI - Single Fed 125KW Slab CRAH Delivery to site; PR12-1990 DH 1200 Procurement / Non-Skidded // OFCI - Single Fed 80KW RAF CRAH Delivery to site; PR11-1010 DH 1100 Procurement / Skidded // OFCI - Air Insulated Intermediate Medium Voltage Gear Delivery to Site; PR11-1020 DH 1100 Procurement / Skidded // OFCI - 34.5KV 2500KVA Pad Mount Transformer Delivery to Site; PR11-1050 DH 1100 Procurement / Skidded // OFCI - 505 Pad Mount Vista Gear 38KV Metered Delivery to Site; PR11-1060 DH 1100 Procurement / Skidded // OFCI 2000A Reserve Tie Board Delivery to Site; PR11-1070 DH 1100 Procurement / Skidded // OFCI - Standard HSE STS Delivery to Site; PR11-1080 DH 1100 Procurement / Skidded // OFCI - 500 KVA 415V to Multi Tap PDU with (8) 400A Out Delivery to Site; PR11-1090 DH 1100 Procurement / Skidded // OFCI - 1.25 MW House Generator Bottom Fed 48 Hr Delivery to site; PR11-1100 DH 1100 Procurement / Skidded // OFCI Thermal Energy Storage Delivery to Site; PR11-1670 DH 1100 Procurement / Skidded // OFCI - Main SWBD Top or Bottom Fed 3P/3W Delivery to Site; PR11-1680 DH 1100 Procurement / Skidded // OFCI - 150kw UPS System Delivery to Site; PR11-1690 DH 1100 Procurement / Skidded // OFCI - 2000A COD Board Standard 3P/3W Top Fed Delivery to Site; PR11-1720 DH 1100 Procurement / Skidded // OFCI - 800A ATS Delivery to site; PR11-1730 DH 1100 Procurement / Skidded // OFCI - Electrical Equipment Skid Delivery to site; PR11-1770 DH 1100 Procurement / Skidded // OFCI - House RTU DH (DOAS) Delivery to site; PR11-1780 DH 1100 Procurement / Skidded // OFCI - House RTU DH Delivery to site; PR11-1030 DH 1100 Procurement / Non-Skidded // OFCI - 600A CRAH MOD Board 3P/3W Delivery to Site; PR11-1040 DH 1100 Procurement / Non-Skidded // OFCI - 500 Ton ACC with Free Cooling Delivery to Site; PR11-1110 DH 1100 Procurement / Non-Skidded // OFCI - 500KW Chilled Water CDU Delivery to Site; PR11-1700 DH 1100 Procurement / Non-Skidded // OFCI - 600A CRAH MOD Board 3P/3W Delivery to Site; PR11-1710 DH 1100 Procurement / Non-Skidded // OFCI - 225A CDU MOD Board Delivery to site; PR11-1740 DH 1100 Procurement / Non-Skidded // OFCI - Dual Fed 400KW Slab CRAH Delivery to site; PR11-1750 DH 1100 Procurement / Non-Skidded // OFCI - Single Fed 125KW Slab CRAH Delivery to site; PR11-1760 DH 1100 Procurement / Non-Skidded // OFCI - Single Fed 80KW RAF CRAH Delivery to site; PR13-2020 DH 1300 Procurement / Skidded // OFCI - 1.25 MW House Generator Bottom Fed 48 Hr Delivery to site; PR13-2030 DH 1300 Procurement / Skidded // OFCI - Air Insulated Intermediate Medium Voltage Gear Delivery to Site; PR13-2040 DH 1300 Procurement / Skidded // OFCI - 34.5KV 2500KVA Pad Mount Transformer Delivery to Site; PR13-2050 DH 1300 Procurement / Skidded // OFCI Thermal Energy Storage Delivery to Site; PR13-2070 DH 1300 Procurement / Skidded // OFCI - 500 KVA 415V to Multi Tap PDU with (8) 400A Out Delivery to Site; PR13-2080 DH 1300 Procurement / Skidded // OFCI - Standard HSE STS Delivery to Site; PR13-2100 DH 1300 Procurement / Skidded // OFCI 2000A Reserve Tie Board Delivery to Site; PR13-2120 DH 1300 Procurement / Skidded // OFCI - 505 Pad Mount Vista Gear 38KV Metered Delivery to Site; PR13-2130 DH 1300 Procurement / Skidded // OFCI - Main SWBD Top or Bottom Fed 3P/3W Delivery to Site; PR13-2140 DH 1300 Procurement / Skidded // OFCI - 150kw UPS System Delivery to Site; PR13-2150 DH 1300 Procurement / Skidded // OFCI - 2000A COD Board Standard 3P/3W Top Fed Delivery to Site; PR13-2180 DH 1300 Procurement / Skidded // OFCI - 800A ATS Delivery to site; PR13-2190 DH 1300 Procurement / Skidded // OFCI - Electrical Equipment Skid Delivery to site; PR13-2230 DH 1300 Procurement / Skidded // OFCI - House RTU DH (DOAS) Delivery to site; PR13-2240 DH 1300 Procurement / Skidded // OFCI - House RTU DH Delivery to site; PR13-2060 DH 1300 Procurement / Non-Skidded // OFCI - 500KW Chilled Water CDU Delivery to Site; PR13-2090 DH 1300 Procurement / Non-Skidded // OFCI - 600A CRAH MOD Board 3P/3W Delivery to Site; PR13-2110 DH 1300 Procurement / Non-Skidded // OFCI - 500 Ton ACC with Free Cooling Delivery to Site; PR13-2160 DH 1300 Procurement / Non-Skidded // OFCI - 600A CRAH MOD Board 3P/3W Delivery to Site; PR13-2170 DH 1300 Procurement / Non-Skidded // OFCI - 225A CDU MOD Board Delivery to site; PR13-2200 DH 1300 Procurement / Non-Skidded // OFCI - Dual Fed 400KW Slab CRAH Delivery to site; PR13-2210 DH 1300 Procurement / Non-Skidded // OFCI - Single Fed 125KW Slab CRAH Delivery to site; PR13-2220 DH 1300 Procurement / Non-Skidded // OFCI - Single Fed 80KW RAF CRAH Delivery to site; PR14-2250 DH 1400 Procurement / Skidded // OFCI - 1.25 MW House Generator Bottom Fed 48 Hr Delivery to site; PR14-2260 DH 1400 Procurement / Skidded // OFCI - Air Insulated Intermediate Medium Voltage Gear Delivery to Site; PR14-2270 DH 1400 Procurement / Skidded // OFCI - 34.5KV 2500KVA Pad Mount Transformer Delivery to Site; PR14-2280 DH 1400 Procurement / Skidded // OFCI Thermal Energy Storage Delivery to Site; PR14-2300 DH 1400 Procurement / Skidded // OFCI - 500 KVA 415V to Multi Tap PDU with (8) 400A Out Delivery to Site; PR14-2310 DH 1400 Procurement / Skidded // OFCI - Standard HSE STS Delivery to Site; PR14-2330 DH 1400 Procurement / Skidded // OFCI 2000A Reserve Tie Board Delivery to Site; PR14-2350 DH 1400 Procurement / Skidded // OFCI - 505 Pad Mount Vista Gear 38KV Metered Delivery to Site; PR14-2360 DH 1400 Procurement / Skidded // OFCI - Main SWBD Top or Bottom Fed 3P/3W Delivery to Site; PR14-2370 DH 1400 Procurement / Skidded // OFCI - 150kw UPS System Delivery to Site; PR14-2380 DH 1400 Procurement / Skidded // OFCI - 2000A COD Board Standard 3P/3W Top Fed Delivery to Site; PR14-2410 DH 1400 Procurement / Skidded // OFCI - 800A ATS Delivery to site; PR14-2420 DH 1400 Procurement / Skidded // OFCI - Electrical Equipment Skid Delivery to site; PR14-2460 DH 1400 Procurement / Skidded // OFCI - House RTU DH (DOAS) Delivery to site; PR14-2470 DH 1400 Procurement / Skidded // OFCI - House RTU DH Delivery to site; PR14-2290 DH 1400 Procurement / Non-Skidded // OFCI - 500KW Chilled Water CDU Delivery to Site; PR14-2320 DH 1400 Procurement / Non-Skidded // OFCI - 600A CRAH MOD Board 3P/3W Delivery to Site; PR14-2340 DH 1400 Procurement / Non-Skidded // OFCI - 500 Ton ACC with Free Cooling Delivery to Site; PR14-2390 DH 1400 Procurement / Non-Skidded // OFCI - 600A CRAH MOD Board 3P/3W Delivery to Site; PR14-2400 DH 1400 Procurement / Non-Skidded // OFCI - 225A CDU MOD Board Delivery to site; PR14-2430 DH 1400 Procurement / Non-Skidded // OFCI - Dual Fed 400KW Slab CRAH Delivery to site; PR14-2440 DH 1400 Procurement / Non-Skidded // OFCI - Single Fed 125KW Slab CRAH Delivery to site; PR14-2450 DH 1400 Procurement / Non-Skidded // OFCI - Single Fed 80KW RAF CRAH Delivery to site; PR15-2480 DH 1500 Procurement / Skidded // OFCI - 1.25 MW House Generator Bottom Fed 48 Hr Delivery to site; PR15-2490 DH 1500 Procurement / Skidded // OFCI - Air Insulated Intermediate Medium Voltage Gear Delivery to Site; PR15-2500 DH 1500 Procurement / Skidded // OFCI - 34.5KV 2500KVA Pad Mount Transformer Delivery to Site; PR15-2510 DH 1500 Procurement / Skidded // OFCI Thermal Energy Storage Delivery to Site; PR15-2530 DH 1500 Procurement / Skidded // OFCI - 500 KVA 415V to Multi Tap PDU with (8) 400A Out Delivery to Site; PR15-2540 DH 1500 Procurement / Skidded // OFCI - Standard HSE STS Delivery to Site; PR15-2560 DH 1500 Procurement / Skidded // OFCI 2000A Reserve Tie Board Delivery to Site; PR15-2580 DH 1500 Procurement / Skidded // OFCI - 505 Pad Mount Vista Gear 38KV Metered Delivery to Site; PR15-2590 DH 1500 Procurement / Skidded // OFCI - Main SWBD Top or Bottom Fed 3P/3W Delivery to Site; PR15-2600 DH 1500 Procurement / Skidded // OFCI - 150kw UPS System Delivery to Site; PR15-2610 DH 1500 Procurement / Skidded // OFCI - 2000A COD Board Standard 3P/3W Top Fed Delivery to Site; PR15-2640 DH 1500 Procurement / Skidded // OFCI - 800A ATS Delivery to site; PR15-2650 DH 1500 Procurement / Skidded // OFCI - Electrical Equipment Skid Delivery to site; PR15-2690 DH 1500 Procurement / Skidded // OFCI - House RTU DH (DOAS) Delivery to site; PR15-2700 DH 1500 Procurement / Skidded // OFCI - House RTU DH Delivery to site; PR15-2520 DH 1500 Procurement / Non-Skidded // OFCI - 500KW Chilled Water CDU Delivery to Site; PR15-2550 DH 1500 Procurement / Non-Skidded // OFCI - 600A CRAH MOD Board 3P/3W Delivery to Site; PR15-2570 DH 1500 Procurement / Non-Skidded // OFCI - 500 Ton ACC with Free Cooling Delivery to Site; PR15-2620 DH 1500 Procurement / Non-Skidded // OFCI - 600A CRAH MOD Board 3P/3W Delivery to Site; PR15-2630 DH 1500 Procurement / Non-Skidded // OFCI - 225A CDU MOD Board Delivery to site; PR15-2660 DH 1500 Procurement / Non-Skidded // OFCI - Dual Fed 400KW Slab CRAH Delivery to site; PR15-2670 DH 1500 Procurement / Non-Skidded // OFCI - Single Fed 125KW Slab CRAH Delivery to site; PR15-2680 DH 1500 Procurement / Non-Skidded // OFCI - Single Fed 80KW RAF CRAH Delivery to site; PR16-2710 DH 1600 Procurement / Skidded // OFCI - 1.25 MW House Generator Bottom Fed 48 Hr Delivery to site; PR16-2720 DH 1600 Procurement / Skidded // OFCI - Air Insulated Intermediate Medium Voltage Gear Delivery to Site; PR16-2730 DH 1600 Procurement / Skidded // OFCI - 34.5KV 2500KVA Pad Mount Transformer Delivery to Site; PR16-2740 DH 1600 Procurement / Skidded // OFCI Thermal Energy Storage Delivery to Site; PR16-2760 DH 1600 Procurement / Skidded // OFCI - 500 KVA 415V to Multi Tap PDU with (8) 400A Out Delivery to Site; PR16-2770 DH 1600 Procurement / Skidded // OFCI - Standard HSE STS Delivery to Site; PR16-2790 DH 1600 Procurement / Skidded // OFCI 2000A Reserve Tie Board Delivery to Site; PR16-2810 DH 1600 Procurement / Skidded // OFCI - 505 Pad Mount Vista Gear 38KV Metered Delivery to Site; PR16-2820 DH 1600 Procurement / Skidded // OFCI - Main SWBD Top or Bottom Fed 3P/3W Delivery to Site; PR16-2830 DH 1600 Procurement / Skidded // OFCI - 150kw UPS System Delivery to Site; PR16-2840 DH 1600 Procurement / Skidded // OFCI - 2000A COD Board Standard 3P/3W Top Fed Delivery to Site; PR16-2870 DH 1600 Procurement / Skidded // OFCI - 800A ATS Delivery to site; PR16-2880 DH 1600 Procurement / Skidded // OFCI - Electrical Equipment Skid Delivery to site; PR16-2920 DH 1600 Procurement / Skidded // OFCI - House RTU DH (DOAS) Delivery to site; PR16-2930 DH 1600 Procurement / Skidded // OFCI - House RTU DH Delivery to site; PR16-2750 DH 1600 Procurement / Non-Skidded // OFCI - 500KW Chilled Water CDU Delivery to Site; PR16-2780 DH 1600 Procurement / Non-Skidded // OFCI - 600A CRAH MOD Board 3P/3W Delivery to Site; PR16-2800 DH 1600 Procurement / Non-Skidded // OFCI - 500 Ton ACC with Free Cooling Delivery to Site; PR16-2850 DH 1600 Procurement / Non-Skidded // OFCI - 600A CRAH MOD Board 3P/3W Delivery to Site; PR16-2860 DH 1600 Procurement / Non-Skidded // OFCI - 225A CDU MOD Board Delivery to site; PR16-2890 DH 1600 Procurement / Non-Skidded // OFCI - Dual Fed 400KW Slab CRAH Delivery to site; PR16-2900 DH 1600 Procurement / Non-Skidded // OFCI - Single Fed 125KW Slab CRAH Delivery to site; PR16-2910 DH 1600 Procurement / Non-Skidded // OFCI - Single Fed 80KW RAF CRAH Delivery to site; A5857 DH 1100 Electrical System L3 Commissioning; A5859 DH 1100 Controls System L3 Commissioning; A5858 DH 1100 Mechanical System L3 Commissioning; DHXXXX.IST.4100 DH 1100/Level 6 — Enclosure Gate // Data Hall Dry-In / Weather-Tight Achieved; DHXXXX.IST.5100 DH 1100 // Data Hall Interior Construction Complete; DHXXXX.IST.6100 DH 1100/Level 4 — Equipment Installed & Available // Electrical Equipment Installed & Terminated; DHXXXX.IST.6200 DH 1100/Level 4 — Equipment Installed & Available // Mechanical Equipment Installed & Connected; DHXXXX.IST.6300 DH 1100/Level 4 — Equipment Installed & Available // Controls Devices Installed & Powered; DH1100.L3CX.ELEC.001 DH 1100/Level 3 — Startup / Pre-Functional Testing // DH 1100 Startup / Pre-Functional – ELECTRICAL; DH1100.L3CX.ELEC.13 DH 1100/Level 3 — Startup / Pre-Functional Testing // DH 1100 Controls verification; DH1100.L3CX.ELEC.3 DH 1100/Level 3 — Startup / Pre-Functional Testing // DH 1100 Startup / Pre-Functional – MEHANICAL; DHXXXX.IST.8000 DH 1100/Level 2 — Readiness Gate // DATA HALL READY FOR IST; DH1100.L3CX.ELEC.003 Energization & L3 Prefunctional Testing // DH 1100 L3 Commissioning Complete; DH1100.L4CX.COMM.110 L4 Function Testing // DH1100 L4 Commissioning; A5860 L5 Integrated System Testing (IST) // DH1100 – IST / L5 Commissioning Complete; DH1100.L5CX.COMM.160 L5 Integrated System Testing (IST) // DH1100 L5 Integrated Systems Testing; DH-1200-01 DH 1200 Mechanical System Ready for Commissioning; DH-1200-02 DH 1200 Controls System Ready for Commissioning; DH1200 DH 1200 Electrical System Ready for Commissioning; DH1200.IST.4100 DH 1200/Level 6 — Enclosure Gate // Data Hall Dry-In / Weather-Tight Achieved; DH1200.IST.5100 DH 1200/Level 5 — Construction Complete (White Space) // Data Hall Interior Construction Complete; DH1200.IST.6100 DH 1200/Level 4 — Equipment Installed & Available // Electrical Equipment Installed & Terminated; DH1200.IST.6200 DH 1200/Level 4 — Equipment Installed & Available // Mechanical Equipment Installed & Connected; DH1200.IST.6300 DH 1200/Level 4 — Equipment Installed & Available // Controls Devices Installed & Powered; DH1200.L3CX.ELEC.001 DH 1200/Level 3 — Startup / Pre-Functional Testing // DH 1200 Startup / Pre-Functional – ELECTRICAL; DH1200.L3CX.ELEC.13 DH 1200/Level 3 — Startup / Pre-Functional Testing // DH 1200 Controls verification; DH1200.L3CX.ELEC.3 DH 1200/Level 3 — Startup / Pre-Functional Testing // DH 1200 Startup / Pre-Functional – MEHANICAL; DH1200.IST.8000 DH 1200/Level 2 — Readiness Gate // DATA HALL READY FOR IST; DH1200.L3CX.ELEC.003 DH 1200/Energization & L3 Prefunctional Testing // DH 1200 L3 Commissioning; DH1200.L4CX.COMM.110 DH 1200/L4 Function Testing // DH1200 L4 Commissioning; DH-1200-03 DH 1200/L5 Integrated System Testing (IST) // DH1200 – IST / L5 Commissioning Complete; DH1200.L5CX.COMM.160 DH 1200/L5 Integrated System Testing (IST) // DH1200 L5 Integrated Systems Testing; DH1300 DH 1300 Electrical System Ready for Commissioning; DH13000-01 DH 1300 Mechanical System Ready for Commissioning; DH13000-02 DH 1300 Controls System Ready for Commissioning; DH1300.IST.4100 DH 1300/Level 6 — Enclosure Gate // Data Hall Dry-In / Weather-Tight Achieved; DH1300.IST.5100 DH 1300/Level 5 — Construction Complete (White Space) // Data Hall Interior Construction Complete; DH1300.IST.6100 DH 1300/Level 4 — Equipment Installed & Available // Electrical Equipment Installed & Terminated; DH1300.IST.6200 DH 1300/Level 4 — Equipment Installed & Available // Mechanical Equipment Installed & Connected; DH1300.IST.6300 DH 1300/Level 4 — Equipment Installed & Available // Controls Devices Installed & Powered; DH1300.L3CX.ELEC.001 DH 1300/Level 3 — Startup / Pre-Functional Testing // DH 1300 Startup / Pre-Functional – ELECTRICAL; DH1300.L3CX.ELEC.13 DH 1300/Level 3 — Startup / Pre-Functional Testing // DH 1300 Controls verification; DH1300.L3CX.ELEC.3 DH 1300/Level 3 — Startup / Pre-Functional Testing // DH 1300 Startup / Pre-Functional – MEHANICAL; DH1300.IST.8000 DH 1300/Level 2 — Readiness Gate // DATA HALL READY FOR IST; DH1300.L3CX.ELEC.003 DH 1300/Energization & L3 Prefunctional Testing // DH 1300 L3 Commissioning; DH1300.L4CX.COMM.110 DH 1300/L4 Function Testing // DH1300 L4 Commissioning; DH1300.L5CX.COMM.160 DH 1300/L5 Integrated System Testing (IST) // DH1300 L5 Integrated Systems Testing; DH13000-03 DH 1300/L5 Integrated System Testing (IST) // DH1300 – IST / L5 Commissioning Complete; DH1400 DH 1400 Electrical System Ready for Commissioning; DH14000-01 DH 1400 Mechanical System Ready for Commissioning; DH14000-02 DH 1400 Controls System Ready for Commissioning; DH1400.IST.4100 DH 1400/Level 6 — Enclosure Gate // Data Hall Dry-In / Weather-Tight Achieved; DH1400.IST.5100 DH 1400/Level 5 — Construction Complete (White Space) // Data Hall Interior Construction Complete; DH1400.IST.6100 DH 1400/Level 4 — Equipment Installed & Available // Electrical Equipment Installed & Terminated; DH1400.IST.6200 DH 1400/Level 4 — Equipment Installed & Available // Mechanical Equipment Installed & Connected; DH1400.IST.6300 DH 1400/Level 4 — Equipment Installed & Available // Controls Devices Installed & Powered; DH1400.L3CX.ELEC.001 DH 1400/Level 3 — Startup / Pre-Functional Testing // DH 1400 Startup / Pre-Functional – ELECTRICAL; DH1400.L3CX.ELEC.13 DH 1400/Level 3 — Startup / Pre-Functional Testing // DH 1400 Controls verification; DH1400.L3CX.ELEC.3 DH 1400/Level 3 — Startup / Pre-Functional Testing // DH 1400 Startup / Pre-Functional – MEHANICAL; DH1400.IST.8000 DH 1400/Level 2 — Readiness Gate // DATA HALL READY FOR IST; DH1400.L3CX.ELEC.003 DH 1400/Energization & L3 Prefunctional Testing // DH 1400 L3 Commissioning; DH1400.L4CX.COMM.110 DH 1400/L4 Function Testing // DH1400 L4 Commissioning; DH1400.L5CX.COMM.160 DH1400 L5 Integrated Systems Testing; DH14000-03 DH1400 – IST / L5 Commissioning Complete; DH1500 DH 1500 Electrical System Ready for Commissioning; DH15000-01 DH 1500 Mechanical System Ready for Commissioning; DH15000-02 DH 1500 Controls System Ready for Commissioning; DH1500.IST.4100 DH 1500/Level 6 — Enclosure Gate // Data Hall Dry-In / Weather-Tight Achieved; DH1500.IST.5100 DH 1500/Level 5 — Construction Complete (White Space) // Data Hall Interior Construction Complete; DH1500.IST.6100 DH 1500/Level 4 — Equipment Installed & Available // Electrical Equipment Installed & Terminated; DH1500.IST.6200 DH 1500/Level 4 — Equipment Installed & Available // Mechanical Equipment Installed & Connected; DH1500.IST.6300 DH 1500/Level 4 — Equipment Installed & Available // Controls Devices Installed & Powered; DH1500.L3CX.ELEC.001 DH 1500/Level 3 — Startup / Pre-Functional Testing // DH 1500 Startup / Pre-Functional – ELECTRICAL; DH1500.L3CX.ELEC.13 DH 1500/Level 3 — Startup / Pre-Functional Testing // DH 1500 Controls verification; DH1500.L3CX.ELEC.3 DH 1500/Level 3 — Startup / Pre-Functional Testing // DH 1500 Startup / Pre-Functional – MEHANICAL; DH1500.IST.8000 DH 1500/Level 2 — Readiness Gate // DATA HALL READY FOR IST; DH1500.L3CX.ELEC.003 DH 1500/Energization & L3 Prefunctional Testing // DH 1500 L3 Commissioning; DH1500.L4CX.COMM.110 DH 1500/L4 Function Testing // DH1500 L4 Commissioning; DH1500.L5CX.COMM.160 DH1500 L5 Integrated Systems Testing; DH15000-03 DH1500 – IST / L5 Commissioning Complete; DH1600 DH 1600 Electrical System Ready for Commissioning; DH16000-01 DH 1600 Mechanical System Ready for Commissioning; DH16000-02 DH 1600 Controls System Ready for Commissioning; DH1600.IST.4100 DH 1600/Level 6 — Enclosure Gate // Data Hall Dry-In / Weather-Tight Achieved; DH1600.IST.5100 DH 1600/Level 5 — Construction Complete (White Space) // Data Hall Interior Construction Complete; DH1600.IST.6100 DH 1600/Level 4 — Equipment Installed & Available // Electrical Equipment Installed & Terminated; DH1600.IST.6200 DH 1600/Level 4 — Equipment Installed & Available // Mechanical Equipment Installed & Connected; DH1600.IST.6300 DH 1600/Level 4 — Equipment Installed & Available // Controls Devices Installed & Powered; DH1600.L3CX.ELEC.001 DH 1600/Level 3 — Startup / Pre-Functional Testing // DH 1600 Startup / Pre-Functional – ELECTRICAL; DH1600.L3CX.ELEC.13 DH 1600/Level 3 — Startup / Pre-Functional Testing // DH 1600 Controls verification; DH1600.L3CX.ELEC.3 DH 1600/Level 3 — Startup / Pre-Functional Testing // DH 1600 Startup / Pre-Functional – MEHANICAL; DH1600.IST.8000 DH 1600/Level 2 — Readiness Gate // DATA HALL READY FOR IST; DH1600.L3CX.ELEC.003 DH 1600/Energization & L3 Prefunctional Testing // DH 1600 L3 Commissioning; DH1600.L4CX.COMM.110 DH 1600/L4 Function Testing // DH1600 L4 Commissioning; DH1600.L5CX.COMM.160 DH1600 L5 Integrated Systems Testing; DH16000-03 DH1600 – IST / L5 Commissioning Complete

Changed:

| ID | Task | Start | Finish | Duration | Complete | Total float | Predecessors | Other |
| --- | --- | --- | --- | --- | --- | --- | --- | --- |
| 1 | **Suffolk Milestones** |  | 2027-06-22 → 2027-07-16 (+24d) |  |  |  |  |  |
| 7 | **Site & Shell** |  | 2027-06-22 → 2027-07-16 (+24d) |  |  |  |  |  |
| M1080 | Shell Building Dry-In date | 2026-10-30 → 2026-11-04 (+5d) | 2026-10-30 → 2026-11-04 (+5d) |  |  | 160d → 174d |  |  |
| M1100 | Sitework Complete | 2026-10-30 → 2026-11-04 (+5d) | 2026-10-30 → 2026-11-04 (+5d) |  |  | 160d → 174d |  |  |
| M1231 | Procurement Completed | 2026-11-19 → 2026-12-03 (+14d) | 2026-11-19 → 2026-12-03 (+14d) |  |  | 28d → 38d |  |  |
| M1230 | Final Completion (All Closeout & Punch List Complete) | 2027-03-04 → 2027-03-16 (+12d) | 2027-03-04 → 2027-03-16 (+12d) |  |  | 77d → 86d | Finish Deleted, BOH-MS-5, FOH.MS-5, DH1100.4010, DH1100.7820, DH1100-B-EQP-18, DH1100-B-EQP-36, DH1100-B-EQP-54, DH1100-B-EQP-72, DH1100-B-EQP-90, DH1100-B-EQP-108, DH1100-B-EQP-126, DH1100-B-EQP-144, DH1100-B-EQP-162, DH1100-B-EQP-180, DH1100-B-EQP-198, ER.5104.1330, ER.5101.1160, PRE.C3.1110, IDF.C2.1110, F.1000B..1140, DH1100.8080, DH1100-B-EQP-16, ER.5104.1250, ER.5101.1330, DH1200.7790, F.1000A.1160, PDU.1100.1110, G1102.4820, G.1103.1140, IDF.C2.1140, PRE.C3.1140, DH1100-B-EQP-34, DH1100-B-EQP-52, DH1100-B-EQP-70, DH1100-B-EQP-88, DH1100-B-EQP-106, DH1100-B-EQP-124, DH1100-B-EQP-142, DH1100-B-EQP-160, DH1100-B-EQP-178, DH1100-B-EQP-196, DH1100.12056, PDU.1100.1712, DH1100.12113, DH1100.12114, DH1100.12115, A5731, STRUCTURE.4850 SS, DH1100.12043, DH1100.12046, DH1100.12049, DH1100.12052, DH1100.12055, ER.5104.1140, A3210 → A3210, ER.5104.1140, DH1100.12055, DH1100.12052, DH1100.12049, DH1100.12046, DH1100.12043, STRUCTURE.4850 SS, A5731, DH1100.12115, DH1100.12114, DH1100.12113, PDU.1100.1712, DH1100.12056, DH1100-B-EQP-196, DH1100-B-EQP-178, DH1100-B-EQP-160, DH1100-B-EQP-142, DH1100-B-EQP-124, DH1100-B-EQP-106, DH1100-B-EQP-88, DH1100-B-EQP-70, DH1100-B-EQP-52, DH1100-B-EQP-34, PRE.C3.1140, IDF.C2.1140, G.1103.1140, G1102.4820, PDU.1100.1110, F.1000A.1160, DH1200.7790, ER.5101.1330, ER.5104.1250, DH1100-B-EQP-16, DH1100.8080, F.1000B..1140, IDF.C2.1110, PRE.C3.1110, ER.5101.1160, ER.5104.1330, DH1100-B-EQP-198, DH1100-B-EQP-180, DH1100-B-EQP-162, DH1100-B-EQP-144, DH1100-B-EQP-126, DH1100-B-EQP-108, DH1100-B-EQP-90, DH1100-B-EQP-72, DH1100-B-EQP-54, DH1100-B-EQP-36, DH1100-B-EQP-18, DH1100.7820, DH1100.4010, FOH.MS-5, BOH-MS-5 |  |
| M1130 | Project Closeout Complete - Certificate of Occupancy | 2027-06-22 → 2027-07-16 (+24d) | 2027-06-22 → 2027-07-16 (+24d) |  |  |  |  |  |
| 8 | **Interior Build-Out** | 2026-06-26 → 2026-06-10 (-16d) | 2027-06-22 → 2027-07-16 (+24d) |  |  |  |  |  |
| 7 | **FOH** | 2026-09-30 → 2026-06-10 (-112d) | 2027-03-03 → 2027-03-08 (+5d) |  |  |  |  |  |
| FOH.MS-1 | Start Work - FOH | 2026-09-30 → 2026-06-10 A (-112d) | 2026-09-30 → 2026-06-10 A (-112d) |  | 0% → 100% | 182d → none |  |  |
| FOH.MS-3 | FOH Build-Out Duration | 2026-09-30 → 2026-06-10 A (-112d) | 2026-10-06 → 2026-10-20 (+14d) |  |  | 23d → -2d |  |  |
| FOH.MS-2 | Early Access - FOH - [12/03/2026] | 2026-12-11 → 2026-12-24 (+13d) | 2026-12-11 → 2026-12-24 (+13d) |  |  | -7d → -16d |  |  |
| FOH.MS-4 | Substantial Completion - TCO for FOH [01/01/27] | 2027-01-20 → 2027-01-25 (+5d) | 2027-01-20 → 2027-01-25 (+5d) |  |  | -11d → -14d |  |  |
| FOH.MS-5 | Final Completion - Phase Close-Out (all punch completed) - FOH | 2027-01-20 → 2027-01-25 (+5d) | 2027-03-03 → 2027-03-08 (+5d) |  |  | 77d → 91d |  |  |
| 8 | **BOH** | 2026-07-24 → 2026-08-03 (+10d) | 2027-03-02 → 2027-03-15 (+13d) |  |  |  |  |  |
| BOH-MS-3 | BOH Build-Out Duration | 2026-07-24 A → 2026-08-03 A (+10d) | 2026-12-09 → 2026-12-22 (+13d) | 48d → 74d | 0% → 35% | -5d → -14d |  |  |
| BOH-MS-2 | Early Access - BOH - [12/03/2026] | 2026-12-09 → 2026-12-22 (+13d) | 2026-12-09 → 2026-12-22 (+13d) |  |  | -5d → -14d |  |  |
| BOH-MS-4 | Substantial Completion - TCO for BOH [01/01/27] | 2027-01-15 → 2027-01-29 (+14d) | 2027-01-15 → 2027-01-29 (+14d) |  |  | 9d → 0d |  |  |
| BOH-MS-5 | Final Completion - Phase Close-Out (all punch completed) - DH1100 | 2027-01-19 → 2027-02-01 (+13d) | 2027-03-02 → 2027-03-15 (+13d) |  |  | 78d → 86d |  |  |
| 2 | **DH1100** |  | 2027-03-24 → 2027-03-29 (+5d) |  |  |  |  |  |
| DH1100.4010 | DH1100 Build-Out Duration |  | 2027-03-24 → 2027-03-29 (+5d) |  | 30% → 34% | 63d → 77d |  |  |
| M1150 | Milestone 1 -Early Access - 1st Data Hall DH1100 - [12/03/2026] | 2027-01-04 → 2026-10-01 A (-95d) | 2027-01-04 → 2026-10-01 A (-95d) |  | 0% → 100% | -19d → none | DH1100-B-EQP-198 FF, A5850 FF, DH1100-B-EQP-18 FF, DH1100-B-EQP-36 FF, DH1100-B-EQP-54 FF, DH1100-B-EQP-72 FF, DH1100-B-EQP-90 FF, DH1100-B-EQP-108 FF, DH1100-B-EQP-126 FF, DH1100-B-EQP-144 FF, DH1100-B-EQP-162 FF, DH1100-B-EQP-180 FF, ER.5104.1330 FF, ER.5101.1160 FF, PRE.C3.1110 FF, IDF.C2.1110 FF, F.1000B..1140 FF, DH1100.8080 FF, DH1100-B-EQP-16 FF, ER.5104.1250 FF, ER.5101.1330 FF, DH1200.7790 FF, F.1000A.1160 FF, DH1100.7820 FF, PDU.1100.1110 FF, G1102.4820 FF, G.1103.1140 FF, IDF.C2.1140 FF, PRE.C3.1140 FF, DH1100-B-EQP-34 FF, DH1100-B-EQP-52 FF, DH1100-B-EQP-70 FF, DH1100-B-EQP-88 FF, DH1100-B-EQP-106 FF, DH1100-B-EQP-124 FF, DH1100-B-EQP-142 FF, DH1100-B-EQP-160 FF, DH1100-B-EQP-178 FF, DH1100-B-EQP-196 FF, DH1100.12056 FF, PDU.1100.1712 FF, DH1100.12113 FF, DH1100.12114 FF, DH1100.12115 FF, A5731 FF, STRUCTURE.4850 FF, DH1100.12043 FF, DH1100.12046 FF, DH1100.12049 FF, DH1100.12052 FF, DH1100.12055 FF, ER.5104.1140 FF, A3210 FF, DH1100.L3CX.009 → A3210 FF, ER.5104.1140 FF, DH1100.12055 FF, DH1100.12052 FF, DH1100.12049 FF, DH1100.12046 FF, DH1100.12043 FF, STRUCTURE.4850 FF, PDU.1100.1712 FF, PDU.1100.1110 FF |  |
| DH1100.4020 | Milestone 7 - Substantial Completion - TCO for DH1100 [01/01/27] | 2027-01-20 → 2027-01-25 (+5d) | 2027-01-20 → 2027-01-25 (+5d) |  |  | -11d → -14d | DH1100.4010 FF, DH1100.7820 FF, DH1100-B-EQP-18 FF, DH1100-B-EQP-36 FF, DH1100-B-EQP-54 FF, DH1100-B-EQP-72 FF, DH1100-B-EQP-90 FF, DH1100-B-EQP-108 FF, DH1100-B-EQP-126 FF, DH1100-B-EQP-144 FF, DH1100-B-EQP-162 FF, DH1100-B-EQP-180 FF, DH1100-B-EQP-198 FF, ER.5104.1330 FF, ER.5101.1160 FF, PRE.C3.1110 FF, IDF.C2.1110 FF, F.1000B..1140 FF, DH1100.8080 FF, DH1100-B-EQP-16 FF, ER.5104.1250 FF, ER.5101.1330 FF, DH1200.7790 FF, F.1000A.1160 FF, PDU.1100.1110 FF, G1102.4820 FF, G.1103.1140 FF, IDF.C2.1140 FF, PRE.C3.1140 FF, DH1100-B-EQP-34 FF, DH1100-B-EQP-52 FF, DH1100-B-EQP-70 FF, DH1100-B-EQP-88 FF, DH1100-B-EQP-106 FF, DH1100-B-EQP-124 FF, DH1100-B-EQP-142 FF, DH1100-B-EQP-160 FF, DH1100-B-EQP-178 FF, DH1100-B-EQP-196 FF, DH1100.12056 FF, PDU.1100.1712 FF, DH1100.12113 FF, DH1100.12114 FF, DH1100.12115 FF, A5731 FF, STRUCTURE.4850 FF, DH1100.12043 FF, DH1100.12046 FF, DH1100.12049 FF, DH1100.12052 FF, DH1100.12055 FF, ER.5104.1140 FF, A3210 FF, DH1100.L5CX.COMM.190, M1150 → A5698, M1150, DH1100.L5CX.COMM.190, A3210 FF, ER.5104.1140 FF, DH1100.12055 FF, DH1100.12052 FF, DH1100.12049 FF, DH1100.12046 FF, DH1100.12043 FF, STRUCTURE.4850 FF, A5731 FF, DH1100.12115 FF, DH1100.12114 FF, DH1100.12113 FF, PDU.1100.1712 FF, DH1100.12056 FF, DH1100-B-EQP-196 FF, DH1100-B-EQP-178 FF, DH1100-B-EQP-160 FF, DH1100-B-EQP-142 FF, DH1100-B-EQP-124 FF, DH1100-B-EQP-106 FF, DH1100-B-EQP-88 FF, DH1100-B-EQP-70 FF, DH1100-B-EQP-52 FF, DH1100-B-EQP-34 FF, PRE.C3.1140 FF, IDF.C2.1140 FF, G.1103.1140 FF, G1102.4820 FF, PDU.1100.1110 FF, F.1000A.1160 FF, DH1200.7790 FF, ER.5101.1330 FF, ER.5104.1250 FF, DH1100-B-EQP-16 FF, DH1100.8080 FF, F.1000B..1140 FF, IDF.C2.1110 FF, PRE.C3.1110 FF, ER.5101.1160 FF, ER.5104.1330 FF, DH1100-B-EQP-198 FF, DH1100-B-EQP-180 FF, DH1100-B-EQP-162 FF, DH1100-B-EQP-144 FF, DH1100-B-EQP-126 FF, DH1100-B-EQP-108 FF, DH1100-B-EQP-90 FF, DH1100-B-EQP-72 FF, DH1100-B-EQP-54 FF, DH1100-B-EQP-36 FF, DH1100-B-EQP-18 FF, DH1100.7820 FF, DH1100.4010 FF, A5850 FF |  |
| DH1100.4030 | Final Completion - Phase Close-Out (all punch completed) - DH1100 | 2027-02-10 → 2027-02-16 (+6d) | 2027-03-24 → 2027-03-29 (+5d) |  |  | 63d → 77d |  |  |
| 1 | **DH1200** | 2026-07-28 → 2026-08-03 (+6d) | 2027-04-07 → 2027-04-06 (-1d) |  |  |  |  |  |
| DH1200.7350 | DH1200 Build-Out Duration | 2026-07-28 A → 2026-08-03 A (+6d) | 2027-02-02 → 2027-02-01 (-1d) | 124d → 117d | 32% → 37% | -2d → -1d |  |  |
| DH1200.4010 | Milestone 2 - Early Access 2nd Data Hall DH1200 - [01/01/2027] | 2027-01-15 → 2027-01-14 (-1d) | 2027-01-15 → 2027-01-14 (-1d) |  |  | -9d → -8d | A5851 FF, B12000-B-EQP-18 FF, B12000-B-EQP-36 FF, B12000-B-EQP-54 FF, B12000-B-EQP-72 FF, B12000-B-EQP-90 FF, B12000-B-EQP-108 FF, B12000-B-EQP-126 FF, B12000-B-EQP-144 FF, B12000-B-EQP-162 FF, B12000-B-EQP-180 FF, B12000-B-EQP-198 FF, B12000-A-EQP-40 FF, B12000-A-EQP-60 FF, B12000-A-EQP-80 FF, B12000-A-EQP-100 FF, B12000-A-EQP-120 FF, B12000-A-EQP-140 FF, B12000-A-EQP-160 FF, B12000-A-EQP-180 FF, B12000-A-EQP-200 FF, B12000-A-EQP-220 FF, B120004.1330 FF, B120001.1160 FF, B12002.1110 FF, DH 1200/Loading Dock // Wall Touch up Final Coat of Paint FF, B12000-B-EQP-16 FF, B12000-A-EQP-18 FF, B12000-A-EQP-20 FF, B120004.1250 FF, B120004.1310 FF, B120001.1330 FF, B120001.1310 FF, B12000.7841 FF, B5701 FF, B12000.12056 FF, B12000A.1160 FF, B1200.4820 FF, B12000-A-EQP-38 FF, B12000-A-EQP-58 FF, B12000-A-EQP-78 FF, B12000-A-EQP-98 FF, B12000-A-EQP-118 FF, B12000-A-EQP-138 FF, B12000-A-EQP-158 FF, B12000-A-EQP-178 FF, B12000-A-EQP-198 FF, B12000-A-EQP-218 FF, B12003.1140 FF, B12000-B-EQP-34 FF, B12000-B-EQP-52 FF, B12000-B-EQP-70 FF, B12000-B-EQP-88 FF, B12000-B-EQP-106 FF, B12000-B-EQP-124 FF, B12000-B-EQP-142 FF, B12000-B-EQP-160 FF, B12000-B-EQP-178 FF, B12000-B-EQP-196 FF, DH 1200/Loading Dock // Suffolk Pre Punch FF, B1200.1140 FF, B1200100.1712 FF, B12000.12098 FF, B12000.12099 FF, B12002.1141 FF, PRE.C3.1156 FF, A5734 FF, A5702 FF, A5700 FF, A5708 FF, A5713 FF, A5705 FF, A5719 FF, DH1200.L3CX.29 → DH1200.L3CX.29, A5719 FF, A5705 FF, A5713 FF, A5708 FF, A5700 FF, A5702 FF, A5734 FF, PRE.C3.1156 FF, B12002.1141 FF, B12000.12099 FF, B12000.12098 FF, B1200100.1712 FF, B1200.1140 FF, B12000-B-EQP-196 FF, B12000-B-EQP-178 FF, B12000-B-EQP-160 FF, B12000-B-EQP-142 FF, B12000-B-EQP-124 FF, B12000-B-EQP-106 FF, B12000-B-EQP-88 FF, B12000-B-EQP-70 FF, B12000-B-EQP-52 FF, B12000-B-EQP-34 FF, B12003.1140 FF, B12000-A-EQP-218 FF, B12000-A-EQP-198 FF, B12000-A-EQP-178 FF, B12000-A-EQP-158 FF, B12000-A-EQP-138 FF, B12000-A-EQP-118 FF, B12000-A-EQP-98 FF, B12000-A-EQP-78 FF, B12000-A-EQP-58 FF, B12000-A-EQP-38 FF, B1200.4820 FF, B12000A.1160 FF, B12000.12056 FF, B5701 FF, B12000.7841 FF, B120001.1310 FF, B120001.1330 FF, B120004.1310 FF, B120004.1250 FF, B12000-A-EQP-20 FF, B12000-A-EQP-18 FF, B12000-B-EQP-16 FF, B12002.1110 FF, B120001.1160 FF, B120004.1330 FF, B12000-A-EQP-220 FF, B12000-A-EQP-200 FF, B12000-A-EQP-180 FF, B12000-A-EQP-160 FF, B12000-A-EQP-140 FF, B12000-A-EQP-120 FF, B12000-A-EQP-100 FF, B12000-A-EQP-80 FF, B12000-A-EQP-60 FF, B12000-A-EQP-40 FF, B12000-B-EQP-198 FF, B12000-B-EQP-180 FF, B12000-B-EQP-162 FF, B12000-B-EQP-144 FF, B12000-B-EQP-126 FF, B12000-B-EQP-108 FF, B12000-B-EQP-90 FF, B12000-B-EQP-72 FF, B12000-B-EQP-54 FF, B12000-B-EQP-36 FF, B12000-B-EQP-18 FF |  |
| DH1200.4020 | Milestone 8 - Substantial Completion TCO for DH1200 [02/01/27] | 2027-02-03 → 2027-02-02 (-1d) | 2027-02-03 → 2027-02-02 (-1d) |  |  | -2d → -1d | DH1200.7350 FF, DH1200.4010 FF, B12000.7820 FF, DH1200.L5CX.COMM.230 → DH1200.L5CX.COMM.230, B12000.7820 FF, DH1200.4010 FF, DH1200.7350 FF, A5851 FF |  |
| DH1200.4030 | Final Completion - Phase Close-Out (all punch completed) - DH1200 | 2027-02-25 → 2027-02-24 (-1d) | 2027-04-07 → 2027-04-06 (-1d) |  |  | 53d → 71d |  |  |
| 3 | **DH1300** | 2026-08-03 → 2026-08-05 (+2d) | 2027-04-29 → 2027-04-30 (+1d) |  |  |  |  |  |
| DH1300.7360 | DH1300 Build-Out Duration | 2026-08-03 A → 2026-08-05 A (+2d) | 2027-02-25 → 2027-02-26 (+1d) | 141d → 138d | 29% → 33% | 1d → 0d |  |  |
| DH1300.4010 | Milestone 3 - Early Access 3rd Data Hall DH1300 -[02/01/2027] | 2027-02-12 → 2027-02-16 (+4d) | 2027-02-12 → 2027-02-16 (+4d) |  |  | -8d → -9d | A5852 FF, DH.1300B-EQP-18 FF, DH.1300B-EQP-36 FF, DH.1300B-EQP-54 FF, DH.1300B-EQP-72 FF, DH.1300B-EQP-90 FF, DH.1300B-EQP-108 FF, DH.1300B-EQP-126 FF, DH.1300B-EQP-144 FF, DH.1300B-EQP-162 FF, DH.1300B-EQP-180 FF, DH.1300B-EQP-198 FF, DH.1300A-EQP-40 FF, DH.1300A-EQP-60 FF, DH.1300A-EQP-80 FF, DH.1300A-EQP-100 FF, DH.1300A-EQP-120 FF, DH.1300A-EQP-140 FF, DH.1300A-EQP-160 FF, DH.1300A-EQP-180 FF, DH.1300A-EQP-200 FF, DH.1300A-EQP-220 FF, DH.1300..1140 FF, DH 1300/Corridor 1000A (No Apply) // Final Coat Paint & Touchup Walls FF, DH.1300B-EQP-16 FF, DH.1300A-EQP-18 FF, DH.1300A-EQP-20 FF, DH.1300.1330 FF, DH.1300.1310 FF, DH.130012031 FF, DH.130012055 FF, DH.130012056 FF, DH.1300A-EQP-38 FF, DH.1300A-EQP-58 FF, DH.1300A-EQP-78 FF, DH.1300A-EQP-98 FF, DH.1300A-EQP-118 FF, DH.1300A-EQP-138 FF, DH.1300A-EQP-158 FF, DH.1300A-EQP-178 FF, DH.1300A-EQP-198 FF, DH.1300A-EQP-218 FF, DH.1300820 FF, DH.13001140 FF, DH.1300B-EQP-34 FF, DH.1300B-EQP-52 FF, DH.1300B-EQP-70 FF, DH.1300B-EQP-88 FF, DH.1300B-EQP-106 FF, DH.1300B-EQP-124 FF, DH.1300B-EQP-142 FF, DH.1300B-EQP-160 FF, DH.1300B-EQP-178 FF, DH.1300B-EQP-196 FF, DH.1300.1160 FF, DH.1300..1160 FF, DH.1300140 FF, DH.1300.3062 FF, DH.1300.3059 FF, DH.160012107 FF, DH.13000.1712 FF, DH 1300/Corridor 1000A (No Apply) // Ready to Receve Equipment FF, DH.160012148 FF, DH.160012149 FF, A5737 FF, A5756 FF, A5761 FF, A5769 FF, DH1300.L3CX.49 → DH1300.L3CX.49, A5769 FF, A5761 FF, A5756 FF, A5737 FF, DH.160012149 FF, DH.160012148 FF, DH.13000.1712 FF, DH.160012107 FF, DH.1300.3059 FF, DH.1300.3062 FF, DH.1300140 FF, DH.1300..1160 FF, DH.1300.1160 FF, DH.1300B-EQP-196 FF, DH.1300B-EQP-178 FF, DH.1300B-EQP-160 FF, DH.1300B-EQP-142 FF, DH.1300B-EQP-124 FF, DH.1300B-EQP-106 FF, DH.1300B-EQP-88 FF, DH.1300B-EQP-70 FF, DH.1300B-EQP-52 FF, DH.1300B-EQP-34 FF, DH.13001140 FF, DH.1300820 FF, DH.1300A-EQP-218 FF, DH.1300A-EQP-198 FF, DH.1300A-EQP-178 FF, DH.1300A-EQP-158 FF, DH.1300A-EQP-138 FF, DH.1300A-EQP-118 FF, DH.1300A-EQP-98 FF, DH.1300A-EQP-78 FF, DH.1300A-EQP-58 FF, DH.1300A-EQP-38 FF, DH.130012056 FF, DH.130012055 FF, DH.130012031 FF, DH.1300.1310 FF, DH.1300.1330 FF, DH.1300A-EQP-20 FF, DH.1300A-EQP-18 FF, DH.1300B-EQP-16 FF, DH.1300..1140 FF, DH.1300A-EQP-220 FF, DH.1300A-EQP-200 FF, DH.1300A-EQP-180 FF, DH.1300A-EQP-160 FF, DH.1300A-EQP-140 FF, DH.1300A-EQP-120 FF, DH.1300A-EQP-100 FF, DH.1300A-EQP-80 FF, DH.1300A-EQP-60 FF, DH.1300A-EQP-40 FF, DH.1300B-EQP-198 FF, DH.1300B-EQP-180 FF, DH.1300B-EQP-162 FF, DH.1300B-EQP-144 FF, DH.1300B-EQP-126 FF, DH.1300B-EQP-108 FF, DH.1300B-EQP-90 FF, DH.1300B-EQP-72 FF, DH.1300B-EQP-54 FF, DH.1300B-EQP-36 FF, DH.1300B-EQP-18 FF |  |
| DH1300.4020 | Milestone 9 - Substantial Completion TCO for DH1300 [03/01/27] | 2027-02-26 → 2027-03-01 (+3d) | 2027-02-26 → 2027-03-01 (+3d) |  |  | 1d → 0d | DH1300.7360 FF, DH1300.4010, DH.13007820 FF, DH.1300B-EQP-18 FF, DH.1300B-EQP-36 FF, DH.1300B-EQP-54 FF, DH.1300B-EQP-72 FF, DH.1300B-EQP-90 FF, DH.1300B-EQP-108 FF, DH.1300B-EQP-126 FF, DH.1300B-EQP-144 FF, DH.1300B-EQP-162 FF, DH.1300B-EQP-180 FF, DH.1300B-EQP-198 FF, DH.1300A-EQP-40 FF, DH.1300A-EQP-60 FF, DH.1300A-EQP-80 FF, DH.1300A-EQP-100 FF, DH.1300A-EQP-120 FF, DH.1300A-EQP-140 FF, DH.1300A-EQP-160 FF, DH.1300A-EQP-180 FF, DH.1300A-EQP-200 FF, DH.1300A-EQP-220 FF, DH.1300..1140 FF, DH 1300/Corridor 1000A (No Apply) // Final Coat Paint & Touchup Walls FF, DH.1300B-EQP-16 FF, DH.1300A-EQP-18 FF, DH.1300A-EQP-20 FF, DH.1300.1330 FF, DH.1300.1310 FF, DH.130012031 FF, DH.130012055 FF, DH.130012056 FF, DH.1300A-EQP-38 FF, DH.1300A-EQP-58 FF, DH.1300A-EQP-78 FF, DH.1300A-EQP-98 FF, DH.1300A-EQP-118 FF, DH.1300A-EQP-138 FF, DH.1300A-EQP-158 FF, DH.1300A-EQP-178 FF, DH.1300A-EQP-198 FF, DH.1300A-EQP-218 FF, DH.1300820 FF, DH.13001140 FF, DH.1300B-EQP-34 FF, DH.1300B-EQP-52 FF, DH.1300B-EQP-70 FF, DH.1300B-EQP-88 FF, DH.1300B-EQP-106 FF, DH.1300B-EQP-124 FF, DH.1300B-EQP-142 FF, DH.1300B-EQP-160 FF, DH.1300B-EQP-178 FF, DH.1300B-EQP-196 FF, DH.1300.1160 FF, DH.1300..1160 FF, DH.1300140 FF, DH.1300.3062 FF, DH.1300.3059 FF, DH.160012107 FF, DH.13000.1712 FF, DH 1300/Corridor 1000A (No Apply) // Ready to Receve Equipment FF, DH.160012148 FF, DH.160012149 FF, A5737 FF, A5756 FF, A5761 FF, A5769 FF, DH1300.L5CX.COMM.250 → DH1300.L5CX.COMM.250, A5769 FF, A5761 FF, A5756 FF, A5737 FF, DH.160012149 FF, DH.160012148 FF, DH.13000.1712 FF, DH.160012107 FF, DH.1300.3059 FF, DH.1300.3062 FF, DH.1300140 FF, DH.1300..1160 FF, DH.1300.1160 FF, DH.1300B-EQP-196 FF, DH.1300B-EQP-178 FF, DH.1300B-EQP-160 FF, DH.1300B-EQP-142 FF, DH.1300B-EQP-124 FF, DH.1300B-EQP-106 FF, DH.1300B-EQP-88 FF, DH.1300B-EQP-70 FF, DH.1300B-EQP-52 FF, DH.1300B-EQP-34 FF, DH.13001140 FF, DH.1300820 FF, DH.1300A-EQP-218 FF, DH.1300A-EQP-198 FF, DH.1300A-EQP-178 FF, DH.1300A-EQP-158 FF, DH.1300A-EQP-138 FF, DH.1300A-EQP-118 FF, DH.1300A-EQP-98 FF, DH.1300A-EQP-78 FF, DH.1300A-EQP-58 FF, DH.1300A-EQP-38 FF, DH.130012056 FF, DH.130012055 FF, DH.130012031 FF, DH.1300.1310 FF, DH.1300.1330 FF, DH.1300A-EQP-20 FF, DH.1300A-EQP-18 FF, DH.1300B-EQP-16 FF, DH.1300..1140 FF, DH.1300A-EQP-220 FF, DH.1300A-EQP-200 FF, DH.1300A-EQP-180 FF, DH.1300A-EQP-160 FF, DH.1300A-EQP-140 FF, DH.1300A-EQP-120 FF, DH.1300A-EQP-100 FF, DH.1300A-EQP-80 FF, DH.1300A-EQP-60 FF, DH.1300A-EQP-40 FF, DH.1300B-EQP-198 FF, DH.1300B-EQP-180 FF, DH.1300B-EQP-162 FF, DH.1300B-EQP-144 FF, DH.1300B-EQP-126 FF, DH.1300B-EQP-108 FF, DH.1300B-EQP-90 FF, DH.1300B-EQP-72 FF, DH.1300B-EQP-54 FF, DH.1300B-EQP-36 FF, DH.1300B-EQP-18 FF, DH.13007820 FF, DH1300.4010, DH1300.7360 FF, A5852 FF |  |
| DH1300.4030 | Final Completion - Phase Close-Out (all punch completed) - DH1300 | 2027-03-19 → 2027-03-22 (+3d) | 2027-04-29 → 2027-04-30 (+1d) |  |  | 37d → 53d | DH1300.4020, DH.13007820, DH.1300B-EQP-18, DH.1300B-EQP-36, DH.1300B-EQP-54, DH.1300B-EQP-72, DH.1300B-EQP-90, DH.1300B-EQP-108, DH.1300B-EQP-126, DH.1300B-EQP-144, DH.1300B-EQP-162, DH.1300B-EQP-180, DH.1300B-EQP-198, DH.1300A-EQP-40, DH.1300A-EQP-60, DH.1300A-EQP-80, DH.1300A-EQP-100, DH.1300A-EQP-120, DH.1300A-EQP-140, DH.1300A-EQP-160, DH.1300A-EQP-180, DH.1300A-EQP-200, DH.1300A-EQP-220, DH.1300..1140, DH 1300/Corridor 1000A (No Apply) // Final Coat Paint & Touchup Walls, DH.1300B-EQP-16, DH.1300A-EQP-18, DH.1300A-EQP-20, DH.1300.1330, DH.1300.1310, DH.130012031, DH.130012055, DH.130012056, DH.1300A-EQP-38, DH.1300A-EQP-58, DH.1300A-EQP-78, DH.1300A-EQP-98, DH.1300A-EQP-118, DH.1300A-EQP-138, DH.1300A-EQP-158, DH.1300A-EQP-178, DH.1300A-EQP-198, DH.1300A-EQP-218, DH.1300820, DH.13001140, DH.1300B-EQP-34, DH.1300B-EQP-52, DH.1300B-EQP-70, DH.1300B-EQP-88, DH.1300B-EQP-106, DH.1300B-EQP-124, DH.1300B-EQP-142, DH.1300B-EQP-160, DH.1300B-EQP-178, DH.1300B-EQP-196, DH.1300.1160, DH.1300..1160, DH.1300140, DH.1300.3062, DH.1300.3059, DH.160012107, DH.13000.1712, DH 1300/Corridor 1000A (No Apply) // Ready to Receve Equipment, DH.160012148, DH.160012149, DH1300.A2110.CO, DH1300.A2110.CO FF, A5737, A5756 SS, A5761, A5769 → A5769, A5761, A5756 SS, A5737, DH1300.A2110.CO FF, DH1300.A2110.CO, DH.160012149, DH.160012148, DH.13000.1712, DH.160012107, DH.1300.3059, DH.1300.3062, DH.1300140, DH.1300..1160, DH.1300.1160, DH.1300B-EQP-196, DH.1300B-EQP-178, DH.1300B-EQP-160, DH.1300B-EQP-142, DH.1300B-EQP-124, DH.1300B-EQP-106, DH.1300B-EQP-88, DH.1300B-EQP-70, DH.1300B-EQP-52, DH.1300B-EQP-34, DH.13001140, DH.1300820, DH.1300A-EQP-218, DH.1300A-EQP-198, DH.1300A-EQP-178, DH.1300A-EQP-158, DH.1300A-EQP-138, DH.1300A-EQP-118, DH.1300A-EQP-98, DH.1300A-EQP-78, DH.1300A-EQP-58, DH.1300A-EQP-38, DH.130012056, DH.130012055, DH.130012031, DH.1300.1310, DH.1300.1330, DH.1300A-EQP-20, DH.1300A-EQP-18, DH.1300B-EQP-16, DH.1300..1140, DH.1300A-EQP-220, DH.1300A-EQP-200, DH.1300A-EQP-180, DH.1300A-EQP-160, DH.1300A-EQP-140, DH.1300A-EQP-120, DH.1300A-EQP-100, DH.1300A-EQP-80, DH.1300A-EQP-60, DH.1300A-EQP-40, DH.1300B-EQP-198, DH.1300B-EQP-180, DH.1300B-EQP-162, DH.1300B-EQP-144, DH.1300B-EQP-126, DH.1300B-EQP-108, DH.1300B-EQP-90, DH.1300B-EQP-72, DH.1300B-EQP-54, DH.1300B-EQP-36, DH.1300B-EQP-18, DH.13007820, DH1300.4020 |  |
| 6 | **DH1400** |  | 2027-06-03 → 2027-06-04 (+1d) |  |  |  |  |  |
| DH1400.7265 | DH1400 Build-Out Duration |  | 2027-03-31 → 2027-04-01 (+1d) | 158d → 152d | 22% → 24% | 0d → -1d |  |  |
| DH2100.4010 | Milestone 4 - Early Access - 4th Data Hall DH1400 - [03/01/2027] | 2027-03-16 → 2027-03-17 (+1d) | 2027-03-16 → 2027-03-17 (+1d) |  |  | -10d → -11d | A5853 FF, DH.1400B-EQP-18 FF, DH.1400B-EQP-36 FF, DH.1400B-EQP-54 FF, DH.1400B-EQP-72 FF, DH.1400B-EQP-90 FF, DH.1400B-EQP-108 FF, DH.1400B-EQP-126 FF, DH.1400B-EQP-144 FF, DH.1400B-EQP-162 FF, DH.1400B-EQP-180 FF, DH.1400B-EQP-198 FF, DH.1400A-EQP-40 FF, DH.1400A-EQP-60 FF, DH.1400A-EQP-80 FF, DH.1400A-EQP-100 FF, DH.1400A-EQP-120 FF, DH.1400A-EQP-140 FF, DH.1400A-EQP-160 FF, DH.1400A-EQP-180 FF, DH.1400A-EQP-200 FF, DH.1400A-EQP-220 FF, DH.1400B-EQP-16 FF, DH.1400A-EQP-18 FF, DH.1400A-EQP-20 FF, DH.1400.1330 FF, DH.1400.1310 FF, DH.1400A-EQP-218 FF, DH.1400A-EQP-198 FF, DH.1400A-EQP-178 FF, DH.1400A-EQP-158 FF, DH.1400A-EQP-138 FF, DH.1400A-EQP-118 FF, DH.1400A-EQP-98 FF, DH.1400A-EQP-78 FF, DH.1400A-EQP-58 FF, DH.1400A-EQP-38 FF, DH.1400820 FF, DH.14001140 FF, DH.1400B-EQP-178 FF, DH.1400B-EQP-196 FF, DH.1400B-EQP-160 FF, DH.1400B-EQP-142 FF, DH.1400B-EQP-124 FF, DH.1400B-EQP-106 FF, DH.1400B-EQP-88 FF, DH.1400B-EQP-70 FF, DH.1400B-EQP-52 FF, DH.1400B-EQP-34 FF, DH.140012056 FF, DH.1400.1160 FF, DH.1400140 FF, DH.14007820 FF, DH.1400.3063 FF, DH.14000.1712 FF, DH.160012154 FF, DH.160012155 FF, DH.1400.3061 FF, A5740 FF, A5780 FF, A5785 FF, A5793 FF, DH1400.L3CX.69 → DH1400.L3CX.69, A5793 FF, A5785 FF, A5780 FF, A5740 FF, DH.1400.3061 FF, DH.160012155 FF, DH.160012154 FF, DH.14000.1712 FF, DH.1400.3063 FF, DH.14007820 FF, DH.1400140 FF, DH.1400.1160 FF, DH.140012056 FF, DH.1400B-EQP-34 FF, DH.1400B-EQP-52 FF, DH.1400B-EQP-70 FF, DH.1400B-EQP-88 FF, DH.1400B-EQP-106 FF, DH.1400B-EQP-124 FF, DH.1400B-EQP-142 FF, DH.1400B-EQP-160 FF, DH.1400B-EQP-196 FF, DH.1400B-EQP-178 FF, DH.14001140 FF, DH.1400820 FF, DH.1400A-EQP-38 FF, DH.1400A-EQP-58 FF, DH.1400A-EQP-78 FF, DH.1400A-EQP-98 FF, DH.1400A-EQP-118 FF, DH.1400A-EQP-138 FF, DH.1400A-EQP-158 FF, DH.1400A-EQP-178 FF, DH.1400A-EQP-198 FF, DH.1400A-EQP-218 FF, DH.1400.1310 FF, DH.1400.1330 FF, DH.1400A-EQP-20 FF, DH.1400A-EQP-18 FF, DH.1400B-EQP-16 FF, DH.1400A-EQP-220 FF, DH.1400A-EQP-200 FF, DH.1400A-EQP-180 FF, DH.1400A-EQP-160 FF, DH.1400A-EQP-140 FF, DH.1400A-EQP-120 FF, DH.1400A-EQP-100 FF, DH.1400A-EQP-80 FF, DH.1400A-EQP-60 FF, DH.1400A-EQP-40 FF, DH.1400B-EQP-198 FF, DH.1400B-EQP-180 FF, DH.1400B-EQP-162 FF, DH.1400B-EQP-144 FF, DH.1400B-EQP-126 FF, DH.1400B-EQP-108 FF, DH.1400B-EQP-90 FF, DH.1400B-EQP-72 FF, DH.1400B-EQP-54 FF, DH.1400B-EQP-36 FF, DH.1400B-EQP-18 FF |  |
| DH2100.4020 | Milestone 10 - Substantial Completion - TCO for DH1400 [04/01/27] | 2027-04-01 → 2027-04-02 (+1d) | 2027-04-01 → 2027-04-02 (+1d) |  |  | 0d → -1d | DH1400.7265 FF, DH2100.4010 FF, DH.1400B-EQP-18 FF, DH.1400B-EQP-36 FF, DH.1400B-EQP-54 FF, DH.1400B-EQP-72 FF, DH.1400B-EQP-90 FF, DH.1400B-EQP-108 FF, DH.1400B-EQP-126 FF, DH.1400B-EQP-144 FF, DH.1400B-EQP-162 FF, DH.1400B-EQP-180 FF, DH.1400B-EQP-198 FF, DH.1400A-EQP-40 FF, DH.1400A-EQP-60 FF, DH.1400A-EQP-80 FF, DH.1400A-EQP-100 FF, DH.1400A-EQP-120 FF, DH.1400A-EQP-140 FF, DH.1400A-EQP-160 FF, DH.1400A-EQP-180 FF, DH.1400A-EQP-200 FF, DH.1400A-EQP-220 FF, DH.1400B-EQP-16 FF, DH.1400A-EQP-18 FF, DH.1400A-EQP-20 FF, DH.1400.1330 FF, DH.1400.1310 FF, DH.1400A-EQP-218 FF, DH.1400A-EQP-198 FF, DH.1400A-EQP-178 FF, DH.1400A-EQP-158 FF, DH.1400A-EQP-138 FF, DH.1400A-EQP-118 FF, DH.1400A-EQP-98 FF, DH.1400A-EQP-78 FF, DH.1400A-EQP-58 FF, DH.1400A-EQP-38 FF, DH.1400820 FF, DH.14001140 FF, DH.1400B-EQP-178 FF, DH.1400B-EQP-196 FF, DH.1400B-EQP-160 FF, DH.1400B-EQP-142 FF, DH.1400B-EQP-124 FF, DH.1400B-EQP-106 FF, DH.1400B-EQP-88 FF, DH.1400B-EQP-70 FF, DH.1400B-EQP-52 FF, DH.1400B-EQP-34 FF, DH.140012056 FF, DH.1400.1160 FF, DH.1400140 FF, DH.14007820 FF, DH.1400.3063 FF, DH.14000.1712 FF, DH.160012154 FF, DH.160012155 FF, DH.1400.3061 FF, A5740 FF, A5780 FF, A5785 FF, A5793 FF, DH1400.L5CX.COMM.270 → DH1400.L5CX.COMM.270, A5793 FF, A5785 FF, A5780 FF, A5740 FF, DH.1400.3061 FF, DH.160012155 FF, DH.160012154 FF, DH.14000.1712 FF, DH.1400.3063 FF, DH.14007820 FF, DH.1400140 FF, DH.1400.1160 FF, DH.140012056 FF, DH.1400B-EQP-34 FF, DH.1400B-EQP-52 FF, DH.1400B-EQP-70 FF, DH.1400B-EQP-88 FF, DH.1400B-EQP-106 FF, DH.1400B-EQP-124 FF, DH.1400B-EQP-142 FF, DH.1400B-EQP-160 FF, DH.1400B-EQP-196 FF, DH.1400B-EQP-178 FF, DH.14001140 FF, DH.1400820 FF, DH.1400A-EQP-38 FF, DH.1400A-EQP-58 FF, DH.1400A-EQP-78 FF, DH.1400A-EQP-98 FF, DH.1400A-EQP-118 FF, DH.1400A-EQP-138 FF, DH.1400A-EQP-158 FF, DH.1400A-EQP-178 FF, DH.1400A-EQP-198 FF, DH.1400A-EQP-218 FF, DH.1400.1310 FF, DH.1400.1330 FF, DH.1400A-EQP-20 FF, DH.1400A-EQP-18 FF, DH.1400B-EQP-16 FF, DH.1400A-EQP-220 FF, DH.1400A-EQP-200 FF, DH.1400A-EQP-180 FF, DH.1400A-EQP-160 FF, DH.1400A-EQP-140 FF, DH.1400A-EQP-120 FF, DH.1400A-EQP-100 FF, DH.1400A-EQP-80 FF, DH.1400A-EQP-60 FF, DH.1400A-EQP-40 FF, DH.1400B-EQP-198 FF, DH.1400B-EQP-180 FF, DH.1400B-EQP-162 FF, DH.1400B-EQP-144 FF, DH.1400B-EQP-126 FF, DH.1400B-EQP-108 FF, DH.1400B-EQP-90 FF, DH.1400B-EQP-72 FF, DH.1400B-EQP-54 FF, DH.1400B-EQP-36 FF, DH.1400B-EQP-18 FF, DH2100.4010 FF, DH1400.7265 FF, A5853 FF |  |
| DH2100.4030 | Final Completion - Phase Close-Out (all punch completed) - DH1400 | 2027-04-22 → 2027-04-23 (+1d) | 2027-06-03 → 2027-06-04 (+1d) |  |  | 13d → 29d |  |  |
| 5 | **DH1500** | 2026-10-02 → 2026-10-01 (-1d) | 2027-06-14 → 2027-07-16 (+32d) |  |  |  |  |  |
| DH1500.7350 | DH1400 Build-Out Duration | 2026-10-02 → 2026-10-01 A (-1d) | 2027-04-30 → 2027-06-03 (+34d) | 144d → 165d | 0% → 3% | 0d → -23d | DH.1500.1010 SS → B120001.3057 SS |  |
| DH2200.4010 | Milestone 5 - Early Access 5th Data Hall DH1500 - [04/01/2027] | 2027-04-15 → 2027-05-18 (+33d) | 2027-04-15 → 2027-05-18 (+33d) |  |  | -9.12d → -32.12d | A5854 FF, DH.1500B-EQP-18 FF, DH.1500B-EQP-36 FF, DH.1500B-EQP-54 FF, DH.1500B-EQP-72 FF, DH.1500B-EQP-90 FF, DH.1500B-EQP-108 FF, DH.1500B-EQP-126 FF, DH.1500B-EQP-144 FF, DH.1500B-EQP-162 FF, DH.1500B-EQP-180 FF, DH.1500B-EQP-198 FF, DH.1500A-EQP-40 FF, DH.1500A-EQP-60 FF, DH.1500A-EQP-80 FF, DH.1500A-EQP-100 FF, DH.1500A-EQP-120 FF, DH.1500A-EQP-140 FF, DH.1500A-EQP-160 FF, DH.1500A-EQP-180 FF, DH.1500A-EQP-200 FF, DH.1500A-EQP-220 FF, DH.1500..1140 FF, DH.1500B-EQP-16 FF, DH.1500A-EQP-18 FF, DH.1500A-EQP-20 FF, DH.1500.1330 FF, DH.1500.1310 FF, DH.1500140 FF, DH.1500..1160 FF, DH.15001140 FF, DH.150012056 FF, DH.1500A-EQP-38 FF, DH.1500A-EQP-58 FF, DH.1500A-EQP-98 FF, DH.1500A-EQP-118 FF, DH.1500A-EQP-138 FF, DH.1500A-EQP-158 FF, DH.1500A-EQP-178 FF, DH.1500A-EQP-198 FF, DH.1500A-EQP-218 FF, DH.1500A-EQP-78 FF, DH.1500820 FF, DH.1500B-EQP-34 FF, DH.1500B-EQP-52 FF, DH.1500B-EQP-70 FF, DH.1500B-EQP-88 FF, DH.1500B-EQP-106 FF, DH.1500B-EQP-124 FF, DH.1500B-EQP-142 FF, DH.1500B-EQP-160 FF, DH.1500B-EQP-178 FF, DH.1500B-EQP-196 FF, DH.1500.1160 FF, DH.1500.3056 FF, DH.15000.1712 FF, DH.160012160 FF, DH.160012161 FF, DH.1500.3055 FF, DH.1400B-EQP-18 FF, DH.1400B-EQP-36 FF, DH.1400B-EQP-54 FF, DH.1400B-EQP-72 FF, DH.1400B-EQP-90 FF, DH.1400B-EQP-108 FF, DH.1400B-EQP-126 FF, DH.1400B-EQP-144 FF, DH.1400B-EQP-162 FF, DH.1400B-EQP-180 FF, DH.1400A-EQP-40 FF, DH.1400A-EQP-60 FF, DH.1400A-EQP-80 FF, DH.1400A-EQP-100 FF, DH.1400A-EQP-120 FF, DH.1400A-EQP-140 FF, DH.1400A-EQP-160 FF, DH.1400A-EQP-180 FF, DH.1400A-EQP-200 FF, DH.1400B-EQP-16 FF, DH.1400A-EQP-18 FF, DH.1400A-EQP-20 FF, DH.1400A-EQP-198 FF, DH.1400A-EQP-178 FF, DH.1400A-EQP-158 FF, DH.1400A-EQP-138 FF, DH.1400A-EQP-118 FF, DH.1400A-EQP-98 FF, DH.1400A-EQP-78 FF, DH.1400A-EQP-58 FF, DH.1400A-EQP-38 FF, DH.1400820 FF, DH.14001140 FF, DH.1400B-EQP-178 FF, DH.1400B-EQP-160 FF, DH.1400B-EQP-142 FF, DH.1400B-EQP-124 FF, DH.1400B-EQP-106 FF, DH.1400B-EQP-88 FF, DH.1400B-EQP-70 FF, DH.1400B-EQP-52 FF, DH.1400B-EQP-34 FF, DH.140012056 FF, DH.1400.1160 FF, DH.14007820 FF, A5740 FF, A5780 FF, A5785 FF, A5743 FF, A5804 FF, A5809 FF, A5793 FF, A5817 FF, DH1500.L3CX.89 → DH1500.L3CX.89, A5817 FF, A5793 FF, A5809 FF, A5804 FF, A5743 FF, A5785 FF, A5780 FF, A5740 FF, DH.14007820 FF, DH.1400.1160 FF, DH.140012056 FF, DH.1400B-EQP-34 FF, DH.1400B-EQP-52 FF, DH.1400B-EQP-70 FF, DH.1400B-EQP-88 FF, DH.1400B-EQP-106 FF, DH.1400B-EQP-124 FF, DH.1400B-EQP-142 FF, DH.1400B-EQP-160 FF, DH.1400B-EQP-178 FF, DH.14001140 FF, DH.1400820 FF, DH.1400A-EQP-38 FF, DH.1400A-EQP-58 FF, DH.1400A-EQP-78 FF, DH.1400A-EQP-98 FF, DH.1400A-EQP-118 FF, DH.1400A-EQP-138 FF, DH.1400A-EQP-158 FF, DH.1400A-EQP-178 FF, DH.1400A-EQP-198 FF, DH.1400A-EQP-20 FF, DH.1400A-EQP-18 FF, DH.1400B-EQP-16 FF, DH.1400A-EQP-200 FF, DH.1400A-EQP-180 FF, DH.1400A-EQP-160 FF, DH.1400A-EQP-140 FF, DH.1400A-EQP-120 FF, DH.1400A-EQP-100 FF, DH.1400A-EQP-80 FF, DH.1400A-EQP-60 FF, DH.1400A-EQP-40 FF, DH.1400B-EQP-180 FF, DH.1400B-EQP-162 FF, DH.1400B-EQP-144 FF, DH.1400B-EQP-126 FF, DH.1400B-EQP-108 FF, DH.1400B-EQP-90 FF, DH.1400B-EQP-72 FF, DH.1400B-EQP-54 FF, DH.1400B-EQP-36 FF, DH.1400B-EQP-18 FF, DH.1500.3055 FF, DH.160012161 FF, DH.160012160 FF, DH.15000.1712 FF, DH.1500.3056 FF, DH.1500.1160 FF, DH.1500B-EQP-196 FF, DH.1500B-EQP-178 FF, DH.1500B-EQP-160 FF, DH.1500B-EQP-142 FF, DH.1500B-EQP-124 FF, DH.1500B-EQP-106 FF, DH.1500B-EQP-88 FF, DH.1500B-EQP-70 FF, DH.1500B-EQP-52 FF, DH.1500B-EQP-34 FF, DH.1500820 FF, DH.1500A-EQP-78 FF, DH.1500A-EQP-218 FF, DH.1500A-EQP-198 FF, DH.1500A-EQP-178 FF, DH.1500A-EQP-158 FF, DH.1500A-EQP-138 FF, DH.1500A-EQP-118 FF, DH.1500A-EQP-98 FF, DH.1500A-EQP-58 FF, DH.1500A-EQP-38 FF, DH.150012056 FF, DH.15001140 FF, DH.1500..1160 FF, DH.1500140 FF, DH.1500.1310 FF, DH.1500.1330 FF, DH.1500A-EQP-20 FF, DH.1500A-EQP-18 FF, DH.1500B-EQP-16 FF, DH.1500..1140 FF, DH.1500A-EQP-220 FF, DH.1500A-EQP-200 FF, DH.1500A-EQP-180 FF, DH.1500A-EQP-160 FF, DH.1500A-EQP-140 FF, DH.1500A-EQP-120 FF, DH.1500A-EQP-100 FF, DH.1500A-EQP-80 FF, DH.1500A-EQP-60 FF, DH.1500A-EQP-40 FF, DH.1500B-EQP-198 FF, DH.1500B-EQP-180 FF, DH.1500B-EQP-162 FF, DH.1500B-EQP-144 FF, DH.1500B-EQP-126 FF, DH.1500B-EQP-108 FF, DH.1500B-EQP-90 FF, DH.1500B-EQP-72 FF, DH.1500B-EQP-54 FF, DH.1500B-EQP-36 FF, DH.1500B-EQP-18 FF |  |
| DH2200.4020 | Milestone 11 - Substantial Completion TCO for DH1500 [05/01/27] | 2027-05-03 → 2027-06-04 (+32d) | 2027-05-03 → 2027-06-04 (+32d) |  |  | 0d → -23d | DH1500.7350 FF, DH2200.4010 FF, DH.15007820 FF, DH.1500B-EQP-18 FF, DH.1500B-EQP-36 FF, DH.1500B-EQP-54 FF, DH.1500B-EQP-72 FF, DH.1500B-EQP-90 FF, DH.1500B-EQP-108 FF, DH.1500B-EQP-126 FF, DH.1500B-EQP-144 FF, DH.1500B-EQP-162 FF, DH.1500B-EQP-180 FF, DH.1500B-EQP-198 FF, DH.1500A-EQP-40 FF, DH.1500A-EQP-60 FF, DH.1500A-EQP-80 FF, DH.1500A-EQP-100 FF, DH.1500A-EQP-120 FF, DH.1500A-EQP-140 FF, DH.1500A-EQP-160 FF, DH.1500A-EQP-180 FF, DH.1500A-EQP-200 FF, DH.1500A-EQP-220 FF, DH.1500..1140 FF, DH.1500B-EQP-16 FF, DH.1500A-EQP-18 FF, DH.1500A-EQP-20 FF, DH.1500.1330 FF, DH.1500.1310 FF, DH.1500140 FF, DH.1500..1160 FF, DH.15001140 FF, DH.150012056 FF, DH.1500A-EQP-38 FF, DH.1500A-EQP-58 FF, DH.1500A-EQP-98 FF, DH.1500A-EQP-118 FF, DH.1500A-EQP-138 FF, DH.1500A-EQP-158 FF, DH.1500A-EQP-178 FF, DH.1500A-EQP-198 FF, DH.1500A-EQP-218 FF, DH.1500A-EQP-78 FF, DH.1500820 FF, DH.1500B-EQP-34 FF, DH.1500B-EQP-52 FF, DH.1500B-EQP-70 FF, DH.1500B-EQP-88 FF, DH.1500B-EQP-106 FF, DH.1500B-EQP-124 FF, DH.1500B-EQP-142 FF, DH.1500B-EQP-160 FF, DH.1500B-EQP-178 FF, DH.1500B-EQP-196 FF, DH.1500.1160 FF, DH.1500.3056 FF, DH.15000.1712 FF, DH.160012160 FF, DH.160012161 FF, DH.1500.3055 FF, DH.1400B-EQP-18 FF, DH.1400B-EQP-36 FF, DH.1400B-EQP-54 FF, DH.1400B-EQP-72 FF, DH.1400B-EQP-90 FF, DH.1400B-EQP-108 FF, DH.1400B-EQP-126 FF, DH.1400B-EQP-144 FF, DH.1400B-EQP-162 FF, DH.1400B-EQP-180 FF, DH.1400A-EQP-40 FF, DH.1400A-EQP-60 FF, DH.1400A-EQP-80 FF, DH.1400A-EQP-100 FF, DH.1400A-EQP-120 FF, DH.1400A-EQP-140 FF, DH.1400A-EQP-160 FF, DH.1400A-EQP-180 FF, DH.1400A-EQP-200 FF, DH.1400B-EQP-16 FF, DH.1400A-EQP-18 FF, DH.1400A-EQP-20 FF, DH.1400A-EQP-198 FF, DH.1400A-EQP-178 FF, DH.1400A-EQP-158 FF, DH.1400A-EQP-138 FF, DH.1400A-EQP-118 FF, DH.1400A-EQP-98 FF, DH.1400A-EQP-78 FF, DH.1400A-EQP-58 FF, DH.1400A-EQP-38 FF, DH.1400820 FF, DH.14001140 FF, DH.1400B-EQP-178 FF, DH.1400B-EQP-160 FF, DH.1400B-EQP-142 FF, DH.1400B-EQP-124 FF, DH.1400B-EQP-106 FF, DH.1400B-EQP-88 FF, DH.1400B-EQP-70 FF, DH.1400B-EQP-52 FF, DH.1400B-EQP-34 FF, DH.140012056 FF, DH.1400.1160 FF, DH.14007820 FF, A5740 FF, A5780 FF, A5785 FF, A5743 FF, A5804 FF, A5809 FF, A5793 FF, A5817 FF, DH1500.L5CX.COMM.290 → DH1500.L5CX.COMM.290, A5817 FF, A5793 FF, A5809 FF, A5804 FF, A5743 FF, A5785 FF, A5780 FF, A5740 FF, DH.14007820 FF, DH.1400.1160 FF, DH.140012056 FF, DH.1400B-EQP-34 FF, DH.1400B-EQP-52 FF, DH.1400B-EQP-70 FF, DH.1400B-EQP-88 FF, DH.1400B-EQP-106 FF, DH.1400B-EQP-124 FF, DH.1400B-EQP-142 FF, DH.1400B-EQP-160 FF, DH.1400B-EQP-178 FF, DH.14001140 FF, DH.1400820 FF, DH.1400A-EQP-38 FF, DH.1400A-EQP-58 FF, DH.1400A-EQP-78 FF, DH.1400A-EQP-98 FF, DH.1400A-EQP-118 FF, DH.1400A-EQP-138 FF, DH.1400A-EQP-158 FF, DH.1400A-EQP-178 FF, DH.1400A-EQP-198 FF, DH.1400A-EQP-20 FF, DH.1400A-EQP-18 FF, DH.1400B-EQP-16 FF, DH.1400A-EQP-200 FF, DH.1400A-EQP-180 FF, DH.1400A-EQP-160 FF, DH.1400A-EQP-140 FF, DH.1400A-EQP-120 FF, DH.1400A-EQP-100 FF, DH.1400A-EQP-80 FF, DH.1400A-EQP-60 FF, DH.1400A-EQP-40 FF, DH.1400B-EQP-180 FF, DH.1400B-EQP-162 FF, DH.1400B-EQP-144 FF, DH.1400B-EQP-126 FF, DH.1400B-EQP-108 FF, DH.1400B-EQP-90 FF, DH.1400B-EQP-72 FF, DH.1400B-EQP-54 FF, DH.1400B-EQP-36 FF, DH.1400B-EQP-18 FF, DH.1500.3055 FF, DH.160012161 FF, DH.160012160 FF, DH.15000.1712 FF, DH.1500.3056 FF, DH.1500.1160 FF, DH.1500B-EQP-196 FF, DH.1500B-EQP-178 FF, DH.1500B-EQP-160 FF, DH.1500B-EQP-142 FF, DH.1500B-EQP-124 FF, DH.1500B-EQP-106 FF, DH.1500B-EQP-88 FF, DH.1500B-EQP-70 FF, DH.1500B-EQP-52 FF, DH.1500B-EQP-34 FF, DH.1500820 FF, DH.1500A-EQP-78 FF, DH.1500A-EQP-218 FF, DH.1500A-EQP-198 FF, DH.1500A-EQP-178 FF, DH.1500A-EQP-158 FF, DH.1500A-EQP-138 FF, DH.1500A-EQP-118 FF, DH.1500A-EQP-98 FF, DH.1500A-EQP-58 FF, DH.1500A-EQP-38 FF, DH.150012056 FF, DH.15001140 FF, DH.1500..1160 FF, DH.1500140 FF, DH.1500.1310 FF, DH.1500.1330 FF, DH.1500A-EQP-20 FF, DH.1500A-EQP-18 FF, DH.1500B-EQP-16 FF, DH.1500..1140 FF, DH.1500A-EQP-220 FF, DH.1500A-EQP-200 FF, DH.1500A-EQP-180 FF, DH.1500A-EQP-160 FF, DH.1500A-EQP-140 FF, DH.1500A-EQP-120 FF, DH.1500A-EQP-100 FF, DH.1500A-EQP-80 FF, DH.1500A-EQP-60 FF, DH.1500A-EQP-40 FF, DH.1500B-EQP-198 FF, DH.1500B-EQP-180 FF, DH.1500B-EQP-162 FF, DH.1500B-EQP-144 FF, DH.1500B-EQP-126 FF, DH.1500B-EQP-108 FF, DH.1500B-EQP-90 FF, DH.1500B-EQP-72 FF, DH.1500B-EQP-54 FF, DH.1500B-EQP-36 FF, DH.1500B-EQP-18 FF, DH.15007820 FF, DH2200.4010 FF, DH1500.7350 FF, A5854 FF |  |
| DH2200.4030 | Final Completion - Phase Close-Out (all punch completed) - DH1500 | 2027-05-24 → 2027-06-25 (+32d) | 2027-06-14 → 2027-07-16 (+32d) |  |  | 6d → 0d |  |  |
| 4 | **DH1600** | 2026-08-31 → 2026-09-21 (+21d) | 2027-06-22 → 2027-06-17 (-5d) |  |  |  |  |  |
| DH2300.7250 | DH1600 Build-Out Duration | 2026-08-31 A → 2026-09-21 A (+21d) | 2027-06-01 → 2027-05-26 (-6d) | 188d → 171d | 11% → 9% | -1d → 2d |  |  |
| DH2300.4010 | Milestone 6 - Early Access 6th Data Hall DH1600 - [05/01/2027] | 2027-05-14 → 2027-05-11 (-3d) | 2027-05-14 → 2027-05-11 (-3d) |  |  | -9d → -6d | A5855 FF, DH.1600B-EQP-18 FF, DH.1600B-EQP-36 FF, DH.1600B-EQP-54 FF, DH.1600B-EQP-72 FF, DH.1600B-EQP-90 FF, DH.1600B-EQP-108 FF, DH.1600B-EQP-126 FF, DH.1600B-EQP-144 FF, DH.1600B-EQP-162 FF, DH.1600B-EQP-180 FF, DH.1600B-EQP-198 FF, DH.1600A-EQP-40 FF, DH.1600A-EQP-60 FF, DH.1600A-EQP-80 FF, DH.1600A-EQP-100 FF, DH.1600A-EQP-120 FF, DH.1600A-EQP-140 FF, DH.1600A-EQP-160 FF, DH.1600A-EQP-180 FF, DH.1600A-EQP-200 FF, DH.1600A-EQP-220 FF, DH.1600..1140 FF, DH.1600B-EQP-16 FF, DH.1600A-EQP-18 FF, DH.1600A-EQP-20 FF, DH.1600.1330 FF, DH.1600.1310 FF, DH.160012056 FF, DH.1600A-EQP-38 FF, DH.1600A-EQP-58 FF, DH.1600A-EQP-78 FF, DH.1600A-EQP-98 FF, DH.1600A-EQP-118 FF, DH.1600A-EQP-138 FF, DH.1600A-EQP-158 FF, DH.1600A-EQP-178 FF, DH.1600A-EQP-198 FF, DH.1600A-EQP-218 FF, DH.1600B-EQP-34 FF, DH.1600B-EQP-52 FF, DH.1600B-EQP-70 FF, DH.1600B-EQP-88 FF, DH.1600B-EQP-106 FF, DH.1600B-EQP-124 FF, DH.1600B-EQP-142 FF, DH.1600B-EQP-160 FF, DH.1600B-EQP-178 FF, DH.1600B-EQP-196 FF, DH.1600..1160 FF, DH.1600140 FF, DH.1600.3057 FF, DH.1600.3056 FF, DH.16000.1712 FF, DH.160012166 FF, DH.160012167 FF, DH.1500B-EQP-18 FF, DH.1500B-EQP-36 FF, DH.1500B-EQP-54 FF, DH.1500B-EQP-72 FF, DH.1500B-EQP-90 FF, DH.1500B-EQP-108 FF, DH.1500B-EQP-126 FF, DH.1500B-EQP-144 FF, DH.1500B-EQP-162 FF, DH.1500B-EQP-180 FF, DH.1500A-EQP-40 FF, DH.1500A-EQP-60 FF, DH.1500A-EQP-80 FF, DH.1500A-EQP-100 FF, DH.1500A-EQP-120 FF, DH.1500A-EQP-140 FF, DH.1500A-EQP-160 FF, DH.1500A-EQP-180 FF, DH.1500A-EQP-200 FF, DH.1500..1140 FF, DH.1500B-EQP-16 FF, DH.1500A-EQP-18 FF, DH.1500A-EQP-20 FF, DH.1500..1160 FF, DH.15001140 FF, DH.150012056 FF, DH.1500A-EQP-38 FF, DH.1500A-EQP-58 FF, DH.1500A-EQP-98 FF, DH.1500A-EQP-118 FF, DH.1500A-EQP-138 FF, DH.1500A-EQP-158 FF, DH.1500A-EQP-178 FF, DH.1500A-EQP-198 FF, DH.1500A-EQP-78 FF, DH.1500820 FF, DH.1500B-EQP-34 FF, DH.1500B-EQP-52 FF, DH.1500B-EQP-70 FF, DH.1500B-EQP-88 FF, DH.1500B-EQP-106 FF, DH.1500B-EQP-124 FF, DH.1500B-EQP-142 FF, DH.1500B-EQP-160 FF, DH.1500B-EQP-178 FF, DH.1500.1160 FF, DH.1400B-EQP-18 FF, DH.1400B-EQP-36 FF, DH.1400B-EQP-54 FF, DH.1400B-EQP-72 FF, DH.1400B-EQP-90 FF, DH.1400B-EQP-108 FF, DH.1400B-EQP-126 FF, DH.1400B-EQP-144 FF, DH.1400B-EQP-162 FF, DH.1400B-EQP-180 FF, DH.1400A-EQP-40 FF, DH.1400A-EQP-60 FF, DH.1400A-EQP-80 FF, DH.1400A-EQP-100 FF, DH.1400A-EQP-120 FF, DH.1400A-EQP-140 FF, DH.1400A-EQP-160 FF, DH.1400A-EQP-180 FF, DH.1400A-EQP-200 FF, DH.1400B-EQP-16 FF, DH.1400A-EQP-18 FF, DH.1400A-EQP-20 FF, DH.1400A-EQP-198 FF, DH.1400A-EQP-178 FF, DH.1400A-EQP-158 FF, DH.1400A-EQP-138 FF, DH.1400A-EQP-118 FF, DH.1400A-EQP-98 FF, DH.1400A-EQP-78 FF, DH.1400A-EQP-58 FF, DH.1400A-EQP-38 FF, DH.1400820 FF, DH.14001140 FF, DH.1400B-EQP-178 FF, DH.1400B-EQP-160 FF, DH.1400B-EQP-142 FF, DH.1400B-EQP-124 FF, DH.1400B-EQP-106 FF, DH.1400B-EQP-88 FF, DH.1400B-EQP-70 FF, DH.1400B-EQP-52 FF, DH.1400B-EQP-34 FF, DH.140012056 FF, DH.1400.1160 FF, DH.14007820 FF, A5740 FF, A5780 FF, A5785 FF, A5743 FF, A5804 FF, A5809 FF, A5746 FF, A5827 FF, A5793 FF, A5817 FF, A5830 FF, A5834 FF, A5835 FF, DH1600.L3CX.9 → DH1600.L3CX.9, A5835 FF, A5834 FF, A5830 FF, A5817 FF, A5793 FF, A5827 FF, A5746 FF, A5809 FF, A5804 FF, A5743 FF, A5785 FF, A5780 FF, A5740 FF, DH.14007820 FF, DH.1400.1160 FF, DH.140012056 FF, DH.1400B-EQP-34 FF, DH.1400B-EQP-52 FF, DH.1400B-EQP-70 FF, DH.1400B-EQP-88 FF, DH.1400B-EQP-106 FF, DH.1400B-EQP-124 FF, DH.1400B-EQP-142 FF, DH.1400B-EQP-160 FF, DH.1400B-EQP-178 FF, DH.14001140 FF, DH.1400820 FF, DH.1400A-EQP-38 FF, DH.1400A-EQP-58 FF, DH.1400A-EQP-78 FF, DH.1400A-EQP-98 FF, DH.1400A-EQP-118 FF, DH.1400A-EQP-138 FF, DH.1400A-EQP-158 FF, DH.1400A-EQP-178 FF, DH.1400A-EQP-198 FF, DH.1400A-EQP-20 FF, DH.1400A-EQP-18 FF, DH.1400B-EQP-16 FF, DH.1400A-EQP-200 FF, DH.1400A-EQP-180 FF, DH.1400A-EQP-160 FF, DH.1400A-EQP-140 FF, DH.1400A-EQP-120 FF, DH.1400A-EQP-100 FF, DH.1400A-EQP-80 FF, DH.1400A-EQP-60 FF, DH.1400A-EQP-40 FF, DH.1400B-EQP-180 FF, DH.1400B-EQP-162 FF, DH.1400B-EQP-144 FF, DH.1400B-EQP-126 FF, DH.1400B-EQP-108 FF, DH.1400B-EQP-90 FF, DH.1400B-EQP-72 FF, DH.1400B-EQP-54 FF, DH.1400B-EQP-36 FF, DH.1400B-EQP-18 FF, DH.1500.1160 FF, DH.1500B-EQP-178 FF, DH.1500B-EQP-160 FF, DH.1500B-EQP-142 FF, DH.1500B-EQP-124 FF, DH.1500B-EQP-106 FF, DH.1500B-EQP-88 FF, DH.1500B-EQP-70 FF, DH.1500B-EQP-52 FF, DH.1500B-EQP-34 FF, DH.1500820 FF, DH.1500A-EQP-78 FF, DH.1500A-EQP-198 FF, DH.1500A-EQP-178 FF, DH.1500A-EQP-158 FF, DH.1500A-EQP-138 FF, DH.1500A-EQP-118 FF, DH.1500A-EQP-98 FF, DH.1500A-EQP-58 FF, DH.1500A-EQP-38 FF, DH.150012056 FF, DH.15001140 FF, DH.1500..1160 FF, DH.1500A-EQP-20 FF, DH.1500A-EQP-18 FF, DH.1500B-EQP-16 FF, DH.1500..1140 FF, DH.1500A-EQP-200 FF, DH.1500A-EQP-180 FF, DH.1500A-EQP-160 FF, DH.1500A-EQP-140 FF, DH.1500A-EQP-120 FF, DH.1500A-EQP-100 FF, DH.1500A-EQP-80 FF, DH.1500A-EQP-60 FF, DH.1500A-EQP-40 FF, DH.1500B-EQP-180 FF, DH.1500B-EQP-162 FF, DH.1500B-EQP-144 FF, DH.1500B-EQP-126 FF, DH.1500B-EQP-108 FF, DH.1500B-EQP-90 FF, DH.1500B-EQP-72 FF, DH.1500B-EQP-54 FF, DH.1500B-EQP-36 FF, DH.1500B-EQP-18 FF, DH.160012167 FF, DH.160012166 FF, DH.16000.1712 FF, DH.1600.3056 FF, DH.1600.3057 FF, DH.1600140 FF, DH.1600..1160 FF, DH.1600B-EQP-196 FF, DH.1600B-EQP-178 FF, DH.1600B-EQP-160 FF, DH.1600B-EQP-142 FF, DH.1600B-EQP-124 FF, DH.1600B-EQP-106 FF, DH.1600B-EQP-88 FF, DH.1600B-EQP-70 FF, DH.1600B-EQP-52 FF, DH.1600B-EQP-34 FF, DH.1600A-EQP-218 FF, DH.1600A-EQP-198 FF, DH.1600A-EQP-178 FF, DH.1600A-EQP-158 FF, DH.1600A-EQP-138 FF, DH.1600A-EQP-118 FF, DH.1600A-EQP-98 FF, DH.1600A-EQP-78 FF, DH.1600A-EQP-58 FF, DH.1600A-EQP-38 FF, DH.160012056 FF, DH.1600.1310 FF, DH.1600.1330 FF, DH.1600A-EQP-20 FF, DH.1600A-EQP-18 FF, DH.1600B-EQP-16 FF, DH.1600..1140 FF, DH.1600A-EQP-220 FF, DH.1600A-EQP-200 FF, DH.1600A-EQP-180 FF, DH.1600A-EQP-160 FF, DH.1600A-EQP-140 FF, DH.1600A-EQP-120 FF, DH.1600A-EQP-100 FF, DH.1600A-EQP-80 FF, DH.1600A-EQP-60 FF, DH.1600A-EQP-40 FF, DH.1600B-EQP-198 FF, DH.1600B-EQP-180 FF, DH.1600B-EQP-162 FF, DH.1600B-EQP-144 FF, DH.1600B-EQP-126 FF, DH.1600B-EQP-108 FF, DH.1600B-EQP-90 FF, DH.1600B-EQP-72 FF, DH.1600B-EQP-54 FF, DH.1600B-EQP-36 FF, DH.1600B-EQP-18 FF |  |
| DH2300.4020 | Milestone 12 - Substantial Completion TCO for DH1600 [06/01/27] | 2027-06-02 → 2027-05-27 (-6d) | 2027-06-02 → 2027-05-27 (-6d) |  |  | -1d → 2d | DH2300.7250 FF, DH2300.4010 FF, DH.1600.1160 FF, DH.1600820 FF, DH.16001140 FF, DH.16007820 FF, DH.1600B-EQP-18 FF, DH.1600B-EQP-36 FF, DH.1600B-EQP-54 FF, DH.1600B-EQP-72 FF, DH.1600B-EQP-90 FF, DH.1600B-EQP-108 FF, DH.1600B-EQP-126 FF, DH.1600B-EQP-144 FF, DH.1600B-EQP-162 FF, DH.1600B-EQP-180 FF, DH.1600B-EQP-198 FF, DH.1600A-EQP-40 FF, DH.1600A-EQP-60 FF, DH.1600A-EQP-80 FF, DH.1600A-EQP-100 FF, DH.1600A-EQP-120 FF, DH.1600A-EQP-140 FF, DH.1600A-EQP-160 FF, DH.1600A-EQP-180 FF, DH.1600A-EQP-200 FF, DH.1600A-EQP-220 FF, DH.1600..1140 FF, DH.1600B-EQP-16 FF, DH.1600A-EQP-18 FF, DH.1600A-EQP-20 FF, DH.1600.1330 FF, DH.1600.1310 FF, DH.160012056 FF, DH.1600A-EQP-38 FF, DH.1600A-EQP-58 FF, DH.1600A-EQP-78 FF, DH.1600A-EQP-98 FF, DH.1600A-EQP-118 FF, DH.1600A-EQP-138 FF, DH.1600A-EQP-158 FF, DH.1600A-EQP-178 FF, DH.1600A-EQP-198 FF, DH.1600A-EQP-218 FF, DH.1600B-EQP-34 FF, DH.1600B-EQP-52 FF, DH.1600B-EQP-70 FF, DH.1600B-EQP-88 FF, DH.1600B-EQP-106 FF, DH.1600B-EQP-124 FF, DH.1600B-EQP-142 FF, DH.1600B-EQP-160 FF, DH.1600B-EQP-178 FF, DH.1600B-EQP-196 FF, DH.1600..1160 FF, DH.1600140 FF, DH.1600.3057 FF, DH.1600.3056 FF, DH.16000.1712 FF, DH.160012166 FF, DH.160012167 FF, DH.1500B-EQP-18 FF, DH.1500B-EQP-36 FF, DH.1500B-EQP-54 FF, DH.1500B-EQP-72 FF, DH.1500B-EQP-90 FF, DH.1500B-EQP-108 FF, DH.1500B-EQP-126 FF, DH.1500B-EQP-144 FF, DH.1500B-EQP-162 FF, DH.1500B-EQP-180 FF, DH.1500A-EQP-40 FF, DH.1500A-EQP-60 FF, DH.1500A-EQP-80 FF, DH.1500A-EQP-100 FF, DH.1500A-EQP-120 FF, DH.1500A-EQP-140 FF, DH.1500A-EQP-160 FF, DH.1500A-EQP-180 FF, DH.1500A-EQP-200 FF, DH.1500..1140 FF, DH.1500B-EQP-16 FF, DH.1500A-EQP-18 FF, DH.1500A-EQP-20 FF, DH.1500..1160 FF, DH.15001140 FF, DH.150012056 FF, DH.1500A-EQP-38 FF, DH.1500A-EQP-58 FF, DH.1500A-EQP-98 FF, DH.1500A-EQP-118 FF, DH.1500A-EQP-138 FF, DH.1500A-EQP-158 FF, DH.1500A-EQP-178 FF, DH.1500A-EQP-198 FF, DH.1500A-EQP-78 FF, DH.1500820 FF, DH.1500B-EQP-34 FF, DH.1500B-EQP-52 FF, DH.1500B-EQP-70 FF, DH.1500B-EQP-88 FF, DH.1500B-EQP-106 FF, DH.1500B-EQP-124 FF, DH.1500B-EQP-142 FF, DH.1500B-EQP-160 FF, DH.1500B-EQP-178 FF, DH.1500.1160 FF, DH.1400B-EQP-18 FF, DH.1400B-EQP-36 FF, DH.1400B-EQP-54 FF, DH.1400B-EQP-72 FF, DH.1400B-EQP-90 FF, DH.1400B-EQP-108 FF, DH.1400B-EQP-126 FF, DH.1400B-EQP-144 FF, DH.1400B-EQP-162 FF, DH.1400B-EQP-180 FF, DH.1400A-EQP-40 FF, DH.1400A-EQP-60 FF, DH.1400A-EQP-80 FF, DH.1400A-EQP-100 FF, DH.1400A-EQP-120 FF, DH.1400A-EQP-140 FF, DH.1400A-EQP-160 FF, DH.1400A-EQP-180 FF, DH.1400A-EQP-200 FF, DH.1400B-EQP-16 FF, DH.1400A-EQP-18 FF, DH.1400A-EQP-20 FF, DH.1400A-EQP-198 FF, DH.1400A-EQP-178 FF, DH.1400A-EQP-158 FF, DH.1400A-EQP-138 FF, DH.1400A-EQP-118 FF, DH.1400A-EQP-98 FF, DH.1400A-EQP-78 FF, DH.1400A-EQP-58 FF, DH.1400A-EQP-38 FF, DH.1400820 FF, DH.14001140 FF, DH.1400B-EQP-178 FF, DH.1400B-EQP-160 FF, DH.1400B-EQP-142 FF, DH.1400B-EQP-124 FF, DH.1400B-EQP-106 FF, DH.1400B-EQP-88 FF, DH.1400B-EQP-70 FF, DH.1400B-EQP-52 FF, DH.1400B-EQP-34 FF, DH.140012056 FF, DH.1400.1160 FF, DH.14007820 FF, A5740 FF, A5780 FF, A5785 FF, A5743 FF, A5804 FF, A5809 FF, A5746 FF, A5827 FF, A5793 FF, A5817 FF, A5830 FF, A5834 FF, A5835 FF, DH1600.L5CX.COMM.210 → DH1600.L5CX.COMM.210, A5835 FF, A5834 FF, A5830 FF, A5817 FF, A5793 FF, A5827 FF, A5746 FF, A5809 FF, A5804 FF, A5743 FF, A5785 FF, A5780 FF, A5740 FF, DH.14007820 FF, DH.1400.1160 FF, DH.140012056 FF, DH.1400B-EQP-34 FF, DH.1400B-EQP-52 FF, DH.1400B-EQP-70 FF, DH.1400B-EQP-88 FF, DH.1400B-EQP-106 FF, DH.1400B-EQP-124 FF, DH.1400B-EQP-142 FF, DH.1400B-EQP-160 FF, DH.1400B-EQP-178 FF, DH.14001140 FF, DH.1400820 FF, DH.1400A-EQP-38 FF, DH.1400A-EQP-58 FF, DH.1400A-EQP-78 FF, DH.1400A-EQP-98 FF, DH.1400A-EQP-118 FF, DH.1400A-EQP-138 FF, DH.1400A-EQP-158 FF, DH.1400A-EQP-178 FF, DH.1400A-EQP-198 FF, DH.1400A-EQP-20 FF, DH.1400A-EQP-18 FF, DH.1400B-EQP-16 FF, DH.1400A-EQP-200 FF, DH.1400A-EQP-180 FF, DH.1400A-EQP-160 FF, DH.1400A-EQP-140 FF, DH.1400A-EQP-120 FF, DH.1400A-EQP-100 FF, DH.1400A-EQP-80 FF, DH.1400A-EQP-60 FF, DH.1400A-EQP-40 FF, DH.1400B-EQP-180 FF, DH.1400B-EQP-162 FF, DH.1400B-EQP-144 FF, DH.1400B-EQP-126 FF, DH.1400B-EQP-108 FF, DH.1400B-EQP-90 FF, DH.1400B-EQP-72 FF, DH.1400B-EQP-54 FF, DH.1400B-EQP-36 FF, DH.1400B-EQP-18 FF, DH.1500.1160 FF, DH.1500B-EQP-178 FF, DH.1500B-EQP-160 FF, DH.1500B-EQP-142 FF, DH.1500B-EQP-124 FF, DH.1500B-EQP-106 FF, DH.1500B-EQP-88 FF, DH.1500B-EQP-70 FF, DH.1500B-EQP-52 FF, DH.1500B-EQP-34 FF, DH.1500820 FF, DH.1500A-EQP-78 FF, DH.1500A-EQP-198 FF, DH.1500A-EQP-178 FF, DH.1500A-EQP-158 FF, DH.1500A-EQP-138 FF, DH.1500A-EQP-118 FF, DH.1500A-EQP-98 FF, DH.1500A-EQP-58 FF, DH.1500A-EQP-38 FF, DH.150012056 FF, DH.15001140 FF, DH.1500..1160 FF, DH.1500A-EQP-20 FF, DH.1500A-EQP-18 FF, DH.1500B-EQP-16 FF, DH.1500..1140 FF, DH.1500A-EQP-200 FF, DH.1500A-EQP-180 FF, DH.1500A-EQP-160 FF, DH.1500A-EQP-140 FF, DH.1500A-EQP-120 FF, DH.1500A-EQP-100 FF, DH.1500A-EQP-80 FF, DH.1500A-EQP-60 FF, DH.1500A-EQP-40 FF, DH.1500B-EQP-180 FF, DH.1500B-EQP-162 FF, DH.1500B-EQP-144 FF, DH.1500B-EQP-126 FF, DH.1500B-EQP-108 FF, DH.1500B-EQP-90 FF, DH.1500B-EQP-72 FF, DH.1500B-EQP-54 FF, DH.1500B-EQP-36 FF, DH.1500B-EQP-18 FF, DH.160012167 FF, DH.160012166 FF, DH.16000.1712 FF, DH.1600.3056 FF, DH.1600.3057 FF, DH.1600140 FF, DH.1600..1160 FF, DH.1600B-EQP-196 FF, DH.1600B-EQP-178 FF, DH.1600B-EQP-160 FF, DH.1600B-EQP-142 FF, DH.1600B-EQP-124 FF, DH.1600B-EQP-106 FF, DH.1600B-EQP-88 FF, DH.1600B-EQP-70 FF, DH.1600B-EQP-52 FF, DH.1600B-EQP-34 FF, DH.1600A-EQP-218 FF, DH.1600A-EQP-198 FF, DH.1600A-EQP-178 FF, DH.1600A-EQP-158 FF, DH.1600A-EQP-138 FF, DH.1600A-EQP-118 FF, DH.1600A-EQP-98 FF, DH.1600A-EQP-78 FF, DH.1600A-EQP-58 FF, DH.1600A-EQP-38 FF, DH.160012056 FF, DH.1600.1310 FF, DH.1600.1330 FF, DH.1600A-EQP-20 FF, DH.1600A-EQP-18 FF, DH.1600B-EQP-16 FF, DH.1600..1140 FF, DH.1600A-EQP-220 FF, DH.1600A-EQP-200 FF, DH.1600A-EQP-180 FF, DH.1600A-EQP-160 FF, DH.1600A-EQP-140 FF, DH.1600A-EQP-120 FF, DH.1600A-EQP-100 FF, DH.1600A-EQP-80 FF, DH.1600A-EQP-60 FF, DH.1600A-EQP-40 FF, DH.1600B-EQP-198 FF, DH.1600B-EQP-180 FF, DH.1600B-EQP-162 FF, DH.1600B-EQP-144 FF, DH.1600B-EQP-126 FF, DH.1600B-EQP-108 FF, DH.1600B-EQP-90 FF, DH.1600B-EQP-72 FF, DH.1600B-EQP-54 FF, DH.1600B-EQP-36 FF, DH.1600B-EQP-18 FF, DH.16007820 FF, DH.16001140 FF, DH.1600820 FF, DH.1600.1160 FF, DH2300.4010 FF, DH2300.7250 FF, A5855 FF | was named v for DH1600 [06/01/27] |
| DH2300.4030 | Final Completion - Phase Close-Out (all punch completed) - DH1600 | 2027-06-22 → 2027-06-17 (-5d) | 2027-06-22 → 2027-06-17 (-5d) |  |  | 0d → 9d |  |  |
| 9 | **Security & Fire Alarm Testing** | 2026-10-29 → 2026-11-17 (+19d) | 2027-03-12 → 2027-03-18 (+6d) |  |  |  |  |  |
| A5850 | DH1100 - Security Cx & Testing | 2026-10-29 → 2026-11-17 (+19d) | 2026-10-29 → 2026-11-17 (+19d) |  |  | 23d → 30d |  |  |
| A5851 | DH1200 - Security Cx & Testing | 2026-11-19 → 2026-12-03 (+14d) | 2026-11-19 → 2026-12-03 (+14d) |  |  | 28d → 38d |  |  |
| A5852 | DH1300 - Security Cx & Testing | 2027-01-12 → 2027-01-04 (-8d) | 2027-01-12 → 2027-01-04 (-8d) |  |  | 13d → 37d |  |  |
| A5855 | DH1600 - Security Cx & Testing | 2027-03-12 → 2027-01-15 (-56d) | 2027-03-12 → 2027-01-15 (-56d) |  |  | 35d → 93d |  |  |
| A5854 | DH1500 - Security Cx & Testing | 2027-02-16 → 2027-03-18 (+30d) | 2027-02-16 → 2027-03-18 (+30d) |  |  | 31.88d → 31d |  |  |
| 3 | **Procurement** |  | 2026-11-19 → 2026-12-03 (+14d) |  |  |  |  |  |
| 1 | **Trade Partners** |  | 2026-11-19 → 2026-12-03 (+14d) |  |  |  |  |  |
| 12 | **Fences and Gates** |  | 2026-09-30 → 2026-10-14 (+14d) |  |  |  |  |  |
| A2360 | Long Lead / Fences & Gates // Release Material and Fabricate - Deliver |  | 2026-09-30 → 2026-10-14 (+14d) |  |  | 63d → 73d |  |  |
| 13 | **Landscaping** | 2026-09-30 → 2026-10-14 (+14d) | 2026-11-19 → 2026-12-03 (+14d) |  |  |  |  |  |
| A2370 | Long Lead / Landscaping // Prepare and Issues Submittal Packages | 2026-09-30 → 2026-10-14 (+14d) | 2026-10-14 → 2026-10-27 (+13d) |  |  | 28d → 38d |  |  |
| A2380 | Long Lead / Landscaping // Design Team review and Approval | 2026-10-15 → 2026-10-28 (+13d) | 2026-10-28 → 2026-11-10 (+13d) |  |  | 28d → 38d |  |  |
| A2390 | Long Lead / Landscaping // Release Material and Deliver | 2026-10-29 → 2026-11-12 (+14d) | 2026-11-19 → 2026-12-03 (+14d) |  |  | 28d → 38d |  |  |
| 14 | **Security Systems** | 2026-09-30 → 2026-10-14 (+14d) | 2026-11-19 → 2026-12-03 (+14d) |  |  |  |  |  |
| A2400 | Long Lead / Security Systems // Prepare and Issues Submittal Packages | 2026-09-30 → 2026-10-14 (+14d) | 2026-10-14 → 2026-10-27 (+13d) |  |  | 28d → 38d |  |  |
| A2410 | Long Lead / Security Systems // Design Team review and Approval | 2026-10-15 → 2026-10-28 (+13d) | 2026-10-28 → 2026-11-10 (+13d) |  |  | 28d → 38d |  |  |
| A2420 | Long Lead / Security Systems // Release Material and Deliver | 2026-10-29 → 2026-11-12 (+14d) | 2026-11-19 → 2026-12-03 (+14d) |  |  | 28d → 38d |  |  |
| 15 | **Data & Telecommunications** |  | 2026-11-19 → 2026-12-03 (+14d) |  |  |  |  |  |
| A2440 | Long Lead / Data & Telecom // Design Team review and Approval | 2026-09-30 → 2026-10-14 (+14d) | 2026-10-14 → 2026-10-27 (+13d) |  |  | 38d → 48d |  |  |
| A2450 | Long Lead / Data & Telecom // Release Material and Deliver | 2026-10-29 → 2026-11-12 (+14d) | 2026-11-19 → 2026-12-03 (+14d) |  |  | 28d → 38d |  |  |

| ID | Task | Start | Finish | Complete | Total float |
| --- | --- | --- | --- | --- | --- |
| 16 | **BMS & EPMS** | 2026-09-30 → 2026-10-14 (+14d) | 2026-11-19 → 2026-12-03 (+14d) |  |  |
| A2460 | Long Lead / BMS & EPMS // Prepare and Issues Submittal Packages | 2026-09-30 → 2026-10-14 (+14d) | 2026-10-14 → 2026-10-27 (+13d) |  | 28d → 38d |
| A2470 | Long Lead / BMS & EPMS // Design Team review and Approval | 2026-10-15 → 2026-10-28 (+13d) | 2026-10-28 → 2026-11-10 (+13d) |  | 28d → 38d |
| A2480 | Long Lead / BMS & EPMS // Release Material and Deliver | 2026-10-29 → 2026-11-12 (+14d) | 2026-11-19 → 2026-12-03 (+14d) |  | 28d → 38d |
| 17 | **Tile, Carpet & Resilient Flooring** | 2026-09-30 → 2026-10-14 (+14d) | 2026-11-19 → 2026-12-03 (+14d) |  |  |
| A2490 | Long Lead / Tile, Carpet & Flooring // Prepare and Issues Submittal Packages | 2026-09-30 → 2026-10-14 (+14d) | 2026-10-14 → 2026-10-27 (+13d) |  | 28d → 38d |
| A2500 | Long Lead / Tile, Carpet & Flooring // Design Team review and Approval | 2026-10-15 → 2026-10-28 (+13d) | 2026-10-28 → 2026-11-10 (+13d) |  | 28d → 38d |
| A2510 | Long Lead / Tile, Carpet & Flooring // Release Material and Fabricate | 2026-10-29 → 2026-11-12 (+14d) | 2026-11-19 → 2026-12-03 (+14d) |  | 28d → 38d |
| 18 | **Misc Remaining Packages** | 2026-09-30 → 2026-10-14 (+14d) | 2026-11-19 → 2026-12-03 (+14d) |  |  |
| A2520 | Long Lead / Mics. Packages // Prepare and Issues Submittal Packages | 2026-09-30 → 2026-10-14 (+14d) | 2026-10-14 → 2026-10-27 (+13d) |  | 28d → 38d |
| A2530 | Long Lead / Mics. Packages // Design Team review and Approval | 2026-10-15 → 2026-10-28 (+13d) | 2026-10-28 → 2026-11-10 (+13d) |  | 28d → 38d |
| A2540 | Long Lead / Mics. Packages // Release Material and Fabricate | 2026-10-29 → 2026-11-12 (+14d) | 2026-11-19 → 2026-12-03 (+14d) |  | 28d → 38d |
| 5 | **BIM** |  | 2026-10-14 → 2026-10-27 (+13d) |  |  |
| 2 | **Building** |  | 2026-10-14 → 2026-10-27 (+13d) |  |  |
| 8 | **BOH** |  | 2026-10-14 → 2026-10-27 (+13d) |  |  |
| A5697 | BOH / BIM // Produce and submit Shop Drawings | 2026-09-30 → 2026-10-14 (+14d) | 2026-10-14 → 2026-10-27 (+13d) |  | 1d → 22d |
| 4 | **Construction** |  | 2027-06-22 → 2027-06-24 (+2d) |  |  |
| 2 | **Shell** |  | 2026-10-30 → 2026-11-04 (+5d) |  |  |
| SOG.1453 | DH 1300 // SOG - Pour #9 (ER Side) | 2026-07-30 A → 2026-08-03 A (+4d) |  |  |  |
| SOG.1454 | DH 1300 // SOG - Concrete Cure | 2026-07-31 A → 2026-08-04 A (+4d) |  |  |  |
| SOG.1570 | DH 1400 // SOG - Rebar Set & Tie | 2026-07-30 A → 2026-08-03 A (+4d) |  |  |  |
| SOG.1571 | DH 1400 // SOG - Truck route Prep/ QAQC Pre-Pour | 2026-07-30 A → 2026-08-03 A (+4d) |  |  |  |
| SOG.1458 | DH 1400 // SOG - Pour #10 (CL 4.4) DH Side | 2026-08-04 A → 2026-08-06 A (+2d) |  |  |  |
| SOG.1459 | DH 1400 // SOG - Pour #11 (CL 4.4) ER Side | 2026-08-06 A → 2026-08-10 A (+4d) |  |  |  |
| SOG.1460 | DH 1400 // SOG - Concrete Cure | 2026-08-07 A → 2026-08-11 A (+4d) |  |  |  |
| SOG.1587 | DH 1500 // SOG - Truck route Prep/ QAQC Pre-Pour | 2026-08-07 A → 2026-08-19 A (+12d) |  |  |  |
| SOG.1464 | DH 1500 // SOG - Pour #12 (DH Side) | 2026-08-11 A → 2026-08-20 A (+9d) |  |  |  |
| SOG.1577 | DH 1500 // SOG - Dock Leveller Base | 2026-07-24 A → 2026-08-24 A (+31d) |  |  |  |
| SOG.1465 | DH 1500 // SOG - Pour #13 (ER Side) | 2026-08-13 A → 2026-08-25 A (+12d) |  |  |  |
| SOG.1466 | DH 1500 // SOG - Concrete Cure | 2026-08-14 A → 2026-08-26 A (+12d) |  |  |  |
| 10 | **Roofing** |  | 2026-10-14 → 2026-10-15 (+1d) |  |  |
| STRUCTURE.6780 | Roofing / DH 1300 // Install roofing (Column 3.1-3.9) | 2026-07-24 A → 2026-07-28 A (+4d) |  |  |  |
| 5 | **DH1400** |  | 2026-10-14 → 2026-10-10 (-4d) |  |  |
| STRUCTURE.6790 | Roofing / DH 1400 // Install roofing (Column 4.1-4.9) |  | 2026-10-14 → 2026-10-10 A (-4d) | 0% → 100% | 160d → none |
| 6 | **DH1500** |  | 2026-10-08 → 2026-10-15 (+7d) |  |  |
| STRUCTURE.7340 | Roofing / DH 1500 // Install roofing (Column 5.1-5.9) |  | 2026-10-08 → 2026-10-15 (+7d) | 30% → 80% | 167d → 180d |
| 9 | **IMPs** |  | 2026-10-30 → 2026-11-04 (+5d) |  |  |
| 4 | **South (FOH)** |  | 2026-10-06 → 2026-10-20 (+14d) |  |  |
| STRUCTURE.5370 | IMPs / South (FOH) // Install exterior windows and doors South Elevation (FOH) A-E line | 2026-07-24 A → 2026-09-01 A (+39d) |  |  |  |
| STRUCTURE.4890 | IMPs / South (FOH) // Install Gutter and Down Spouts | 2026-09-30 → 2026-10-14 (+14d) | 2026-10-06 → 2026-10-20 (+14d) |  | 177d → 185d |
| 3 | **West** |  | 2026-10-30 → 2026-11-04 (+5d) |  |  |
| 3 | **Column Line 3.1 Through 3.9 (DH1300)** |  | 2026-10-05 → 2026-10-19 (+14d) |  |  |
| STRUCTURE.7160 | West / CL 3.1 Through 3.9 (DH1300) // Install Gutter and Down Spouts West Elevation | 2026-09-30 → 2026-10-14 (+14d) | 2026-10-05 → 2026-10-19 (+14d) |  | 166d → 174d |
| 4 | **Column Line 4.1 Through 4.9 (DH1400)** |  | 2026-10-20 → 2026-10-23 (+3d) |  |  |
| STRUCTURE.7200 | West / CL 4.1 Through 4.9 (DH1400) // Install Gutter and Down Spouts West Elevation | 2026-10-15 → 2026-10-20 (+5d) | 2026-10-20 → 2026-10-23 (+3d) |  | 160d → 174d |
| 5 | **Column Line 5.2 Through 5.9 (DH1500)** |  | 2026-10-26 → 2026-10-29 (+3d) |  |  |
| STRUCTURE.7240 | West / CL 5.2 Through 5.9 (DH1500) // Install Gutter and Down Spouts West Elevation | 2026-10-21 → 2026-10-26 (+5d) | 2026-10-26 → 2026-10-29 (+3d) |  | 160d → 174d |
| 6 | **Column Line 6.1 Through 7.2 (DH1600)** |  | 2026-10-30 → 2026-11-04 (+5d) |  |  |
| STRUCTURE.7280 | West / CL 6.1 Through 7.2 (DH1600) // Install Gutter and Down Spouts West Elevation | 2026-10-27 → 2026-10-30 (+3d) | 2026-10-30 → 2026-11-04 (+5d) |  | 160d → 174d |
| 2 | **North (BOH)** |  | 2026-10-15 → 2026-10-26 (+11d) |  |  |
| STRUCTURE.7300 | North (BOH) / // Set IMP wall South Elevation (BOH) A-E Line |  | 2026-10-01 A | 60% → 100% | 171d → none |
| STRUCTURE.7320 | North (BOH) / // Install exterior windows and doors South Elevation (BOH) A-E line | 2026-10-02 → 2026-10-14 (+12d) | 2026-10-08 → 2026-10-20 (+12d) |  | 171d → 181d |
| STRUCTURE.7330 | North (BOH) / // Install Gutter and Down Spouts | 2026-10-09 → 2026-10-21 (+12d) | 2026-10-15 → 2026-10-26 (+11d) |  | 171d → 181d |
| 9 | **Interior Build-Outs** |  | 2027-06-22 → 2027-06-24 (+2d) |  |  |
| 7 | **House Systems** |  | 2026-12-18 → 2027-01-04 (+17d) |  |  |
| 2 | **Front of House (FOH)** |  | 2026-12-11 → 2026-12-24 (+13d) |  |  |
| 16 | **Priority Walls** |  | 2026-10-02 → 2026-11-02 (+31d) |  |  |
| 1 | **Priority Rooms** |  | 2026-10-02 → 2026-11-02 (+31d) |  |  |
| 10 | **UPS. 0144** |  | 2026-10-01 → 2026-09-09 (-22d) |  |  |
| ADMIN.5115 | FOH/UPS. 0144 // Install Fire Alarm and Security | 2026-08-07 A → 2026-08-20 A (+13d) |  |  |  |
| ADMIN.5116 | FOH/UPS. 0144 // 1-Side & Finish Priority Walls | 2026-08-11 A → 2026-08-20 A (+9d) |  |  |  |
| ADMIN.5829 | FOH/UPS. 0144 // BMS & EPMS Rough In | 2026-09-30 → 2026-08-20 A (-41d) | 2026-10-01 → 2026-08-21 A (-41d) | 0% → 100% | 41d → none |
| ADMIN.5121 | FOH/UPS. 0144 // Install Doors and Hardware | 2026-07-24 A → 2026-08-25 A (+32d) |  |  |  |
| 13 | **DCIM 1000A1** |  | 2026-10-01 → 2026-09-09 (-22d) |  |  |
| ADMIN.5810 | FOH/DCIM 1000A1 // Install Fire Alarm and Security | 2026-08-07 A → 2026-08-20 A (+13d) |  |  |  |
| ADMIN.5812 | FOH/DCIM 1000A1 // Mini Split Condensate Piping | 2026-07-31 A → 2026-08-20 A (+20d) |  |  |  |
| ADMIN.5813 | FOH/DCIM 1000A1 // Tape and Finish Walls | 2026-08-11 A → 2026-08-20 A (+9d) |  |  |  |
| ADMIN.5839 | FOH/DCIM 1000A1 // BMS & EPMS Rough In | 2026-09-30 → 2026-08-20 A (-41d) | 2026-10-01 → 2026-08-21 A (-41d) | 0% → 100% | 41d → none |
| ADMIN.5815 | FOH/DCIM 1000A1 // Final paint | 2026-08-14 A → 2026-08-25 A (+11d) |  |  |  |
| ADMIN.5801 | FOH/DCIM 1000A1 // Install Doors and Hardware | 2026-08-11 A → 2026-08-26 A (+15d) |  |  |  |

| ID | Task | Start | Finish | Complete | Total float | Predecessors |
| --- | --- | --- | --- | --- | --- | --- |
| ADMIN.5816 | FOH/DCIM 1000A1 // Install Trim-Out | 2026-08-17 A → 2026-08-26 A (+9d) |  |  |  |  |
| ADMIN.5814 | FOH/DCIM 1000A1 // Install Flooring and Base | 2026-08-14 A → 2026-08-27 A (+13d) |  |  |  |  |
| ADMIN.5819 | FOH/DCIM 1000A1 // Install Ladder Rack | 2026-08-18 A → 2026-08-27 A (+9d) |  |  |  |  |
| 12 | **MMR1A1 . 1000A2** |  | 2026-10-02 → 2026-10-30 (+28d) |  |  |  |
| ADMIN.5849 | FOH/MMR1A1 . 1000A2 // BMS & EPMS Rough In | 2026-09-30 → 2026-08-19 A (-42d) | 2026-10-02 → 2026-08-21 A (-42d) | 0% → 100% | 40d → none |  |
| ADMIN.5149 | FOH/MMR1A1 . 1000A2 // Install Doors and Hardware | 2026-10-02 → 2026-10-30 (+28d) | 2026-10-02 → 2026-10-30 (+28d) |  | 40d → 21d | ADMIN.5148, ADMIN.5762 SS, ADMIN.5849 FF → ADMIN.5191 SS, ADMIN.5849 FF, ADMIN.5762 SS, ADMIN.5148 |
| 23 | **SDF 0154** |  | 2026-10-01 → 2026-10-30 (+29d) |  |  |  |
| ADMIN.5859 | FOH/SDF 0154 // BMS & EPMS Rough In | 2026-09-30 → 2026-08-20 A (-41d) | 2026-10-01 → 2026-08-21 A (-41d) | 0% → 100% | 41d → none |  |
| ADMIN.5387 | FOH/SDF 0154 // Install Doors and Hardware | 2026-10-01 → 2026-10-30 (+29d) | 2026-10-01 → 2026-10-30 (+29d) |  | 41d → 21d | ADMIN.5386, ADMIN.5859 FF → ADMIN.5191 SS, ADMIN.5859 FF, ADMIN.5386 |
| 15 | **House Elec .0142** |  | 2026-10-02 → 2026-11-02 (+31d) |  |  |  |
| ADMIN.5869 | FOH/House Elec .0142 // BMS & EPMS Rough In | 2026-09-30 → 2026-06-15 A (-107d) | 2026-10-02 → 2026-06-17 A (-107d) | 0% → 100% | 40d → none |  |
| ADMIN.5107 | FOH/House Elec .0142 // Tape and Finish Walls | 2026-07-29 A → 2026-08-20 A (+22d) |  |  |  |  |
| ADMIN.5087 | FOH/House Elec .0142 // Final paint | 2026-08-03 A → 2026-08-25 A (+22d) |  |  |  |  |
| ADMIN.5088 | FOH/House Elec .0142 // Install Flooring and Base | 2026-08-20 A → 2026-08-27 A (+7d) |  |  |  |  |
| ADMIN.5090 | FOH/House Elec .0142 // Install Trim-Out | 2026-08-25 A → 2026-09-02 A (+8d) |  |  |  |  |
| DH1100.12116 | FOH/House Elec .0142 // Set House SWD Switch - SWD-HSE-1A-MAIN | 2026-08-25 A → 2026-09-24 A (+30d) |  |  |  |  |
| ADMIN.5095 | FOH/House Elec .0142 // Install Doors and Hardware | 2026-09-30 → 2026-10-30 (+30d) | 2026-09-30 → 2026-10-30 (+30d) |  | 41d → 20d | ADMIN.1040 → ADMIN.5191 SS, ADMIN.1040 |
| ADMIN.5091 | FOH/House Elec .0142 // Finish & Clean | 2026-10-02 → 2026-11-02 (+31d) | 2026-10-02 → 2026-11-02 (+31d) |  | 40d → 20d |  |
| 21 | **Other Rooms** |  | 2026-11-30 → 2026-12-04 (+4d) |  |  |  |
| 1 | **ELI . 0142** |  | 2026-10-01 → 2026-11-02 (+32d) |  |  |  |
| ADMIN.5157 | FOH/ELI 0142 // Install Fire Alarm and Security | 2026-08-07 A → 2026-08-14 A (+7d) |  |  |  |  |
| ADMIN.5879 | FOH/ELI 0142 // BMS & EPMS Rough In | 2026-09-30 → 2026-08-14 A (-47d) | 2026-10-01 → 2026-08-17 A (-45d) | 0% → 100% | 41d → none |  |
| ADMIN.5163 | FOH/ELI 0142 // Install Doors and Hardware | 2026-09-30 → 2026-10-30 (+30d) | 2026-09-30 → 2026-10-30 (+30d) |  | 41d → 20d | ADMIN.5162, ADMIN.5763 SS → ADMIN.5190, ADMIN.5763 SS, ADMIN.5162 |
| ADMIN.5164 | FOH/ELI 0142 // Finish & Clean | 2026-10-01 → 2026-11-02 (+32d) | 2026-10-01 → 2026-11-02 (+32d) |  | 41d → 20d |  |
| 11 | **EF1R . 1000A3** |  | 2026-10-01 → 2026-10-30 (+29d) |  |  |  |
| ADMIN.5889 | FOH/EF1R . 1000A3 // BMS & EPMS Rough In | 2026-09-30 → 2026-07-17 A (-75d) | 2026-10-01 → 2026-07-20 A (-73d) | 0% → 100% | 41d → none |  |
| ADMIN.5178 | FOH/EF1R . 1000A3 // Finish & Clean | 2026-10-01 A | 2026-10-01 → 2026-10-02 A (+1d) | 0% → 100% | 41d → none |  |
| ADMIN.5177 | FOH/EF1R . 1000A3 // Install Doors and Hardware | 2026-09-30 → 2026-10-30 (+30d) | 2026-09-30 → 2026-10-30 (+30d) |  | 42d → 21d | ADMIN.5176, ADMIN.5764 SS → ADMIN.5190, ADMIN.5764 SS, ADMIN.5176 |
| 9 | **Fire . 0140** |  | 2026-10-15 → 2026-11-02 (+18d) |  |  |  |
| ADMIN.5185 | FOH/Fire . 0140 // Install Fire Alarm and Security | 2026-08-07 A → 2026-08-18 A (+11d) |  |  |  |  |
| ADMIN.5899 | FOH/Fire . 0140 // BMS & EPMS Rough In | 2026-09-30 → 2026-08-18 A (-43d) | 2026-10-01 → 2026-08-19 A (-43d) | 0% → 100% | 41d → none |  |
| ADMIN.5188 | FOH/Fire . 0140 // Final paint | 2026-08-18 A → 2026-08-21 A (+3d) |  |  |  |  |
| ADMIN.5189 | FOH/Fire . 0140 // Install Flooring and Base | 2026-09-30 → 2026-10-14 (+14d) | 2026-10-02 → 2026-10-16 (+14d) |  | 37d → 20d |  |
| ADMIN.5497 | FOH/Fire . 0140 // Install Ceiling grid | 2026-09-30 → 2026-10-19 (+19d) | 2026-10-05 → 2026-10-22 (+17d) |  | 32d → 20d | ADMIN.5183, ADMIN.5186 → ADMIN.5189, ADMIN.5186, ADMIN.5183 |
| ADMIN.5498 | FOH/Fire . 0140 // Hang hard-lid ceiling | 2026-10-06 → 2026-10-23 (+17d) | 2026-10-07 → 2026-10-26 (+19d) |  | 32d → 20d |  |
| ADMIN.5499 | FOH/Fire . 0140 // Hang / drop Ceiling trims | 2026-10-08 → 2026-10-27 (+19d) | 2026-10-09 → 2026-10-28 (+19d) |  | 32d → 20d |  |
| ADMIN.5190 | FOH/Fire . 0140 // Install Trim-Out | 2026-10-13 → 2026-10-29 (+16d) | 2026-10-13 → 2026-10-29 (+16d) |  | 32d → 20d |  |
| ADMIN.5191 | FOH/Fire . 0140 // Install Doors and Hardware | 2026-10-14 → 2026-10-30 (+16d) | 2026-10-14 → 2026-10-30 (+16d) |  | 32d → 20d |  |
| ADMIN.5192 | FOH/Fire . 0140 // Finish & Clean | 2026-10-15 → 2026-11-02 (+18d) | 2026-10-15 → 2026-11-02 (+18d) |  | 32d → 20d |  |
| 14 | **Tenant Office 0115** |  | 2026-10-07 → 2026-11-02 (+26d) |  |  |  |
| ADMIN.5909 | FOH/Tenant Office 0115 // BMS & EPMS Rough In | 2026-09-30 → 2026-08-18 A (-43d) | 2026-10-01 → 2026-08-19 A (-43d) | 0% → 100% | 41d → none |  |
| ADMIN.5766 | FOH/Tenant Office 0115 // FOH- Room Ready to Receive Equipment | 2026-09-30 → 2026-08-26 A (-35d) | 2026-09-30 → 2026-08-26 A (-35d) | 0% → 100% | 41d → none |  |
| ADMIN.5203 | FOH/Tenant Office 0115 // Install Flooring and Base | 2026-09-30 → 2026-10-14 (+14d) | 2026-10-02 → 2026-10-16 (+14d) |  | 37d → 28d | ADMIN.5202 → ADMIN.5766, ADMIN.5202 |
| ADMIN.5204 | FOH/Tenant Office 0115 // Install Trim-Out | 2026-10-05 → 2026-10-19 (+14d) | 2026-10-05 → 2026-10-19 (+14d) |  | 37d → 28d |  |
| ADMIN.5205 | FOH/Tenant Office 0115 // Install Doors and Hardware | 2026-10-06 → 2026-10-30 (+24d) | 2026-10-06 → 2026-10-30 (+24d) |  | 37d → 20d | ADMIN.5204, ADMIN.5766 SS → ADMIN.5190, ADMIN.5766 SS, ADMIN.5204 |
| ADMIN.5206 | FOH/Tenant Office 0115 // Finish & Clean | 2026-10-07 → 2026-11-02 (+26d) | 2026-10-07 → 2026-11-02 (+26d) |  | 37d → 20d |  |
| 2 | **Roof .0125** |  | 2026-10-07 → 2026-11-02 (+26d) |  |  |  |
| ADMIN.5209 | FOH/Roof .0125 // Top Down Install of Sheetrock - Priority Walls | 2026-07-24 A → 2026-08-06 A (+13d) |  |  |  |  |
| ADMIN.5211 | FOH/Roof .0125 // MEPF Overhead Install | 2026-07-24 A → 2026-08-10 A (+17d) |  |  |  |  |
| ADMIN.5212 | FOH/Roof .0125 // MEPF In-wall rough-in | 2026-08-07 A → 2026-08-13 A (+6d) |  |  |  |  |
| ADMIN.5214 | FOH/Roof .0125 // 1-Side & Finish Priority Walls | 2026-08-11 A → 2026-09-14 A (+34d) |  |  |  |  |
| ADMIN.5215 | FOH/Roof .0125 // Tape and Finish Walls | 2026-08-13 A → 2026-09-16 A (+34d) |  |  |  |  |
| ADMIN.5213 | FOH/Roof .0125 // Install Fire Alarm and Security | 2026-08-07 A → 2026-09-17 A (+41d) |  |  |  |  |
| ADMIN.5919 | FOH/Roof .0125 // BMS & EPMS Rough In | 2026-09-30 → 2026-09-17 A (-13d) | 2026-10-01 → 2026-09-18 A (-13d) | 0% → 100% | 41d → none |  |
| ADMIN.5216 | FOH/Roof .0125 // Final paint | 2026-08-18 A → 2026-09-21 A (+34d) |  |  |  |  |
| ADMIN.5767 | FOH/Roof .0125 // FOH- Room Ready to Receive Equipment | 2026-09-30 → 2026-09-23 A (-7d) | 2026-09-30 → 2026-09-23 A (-7d) | 0% → 100% | 41d → none |  |
| ADMIN.5217 | FOH/Roof .0125 // Install Flooring and Base | 2026-09-30 → 2026-10-14 (+14d) | 2026-10-02 → 2026-10-16 (+14d) |  | 37d → 28d | ADMIN.5216 → ADMIN.5767, ADMIN.5216 |
| ADMIN.5218 | FOH/Roof .0125 // Install Trim-Out | 2026-10-05 → 2026-10-19 (+14d) | 2026-10-05 → 2026-10-19 (+14d) |  | 37d → 28d |  |
| ADMIN.5219 | FOH/Roof .0125 // Install Doors and Hardware | 2026-10-06 → 2026-10-30 (+24d) | 2026-10-06 → 2026-10-30 (+24d) |  | 37d → 20d | ADMIN.5218, ADMIN.5767 SS → ADMIN.5190, ADMIN.5767 SS, ADMIN.5218 |
| ADMIN.5220 | FOH/Roof .0125 // Finish & Clean | 2026-10-07 → 2026-11-02 (+26d) | 2026-10-07 → 2026-11-02 (+26d) |  | 37d → 20d |  |
| 4 | **QTS Flex .0114** |  | 2026-10-07 → 2026-10-28 (+21d) |  |  |  |
| ADMIN.5461 | FOH/QTS Flex .0114 // Top Down Install of Sheetrock - Priority Walls | 2026-07-24 A → 2026-08-03 A (+10d) |  |  |  |  |
| ADMIN.5464 | FOH/QTS Flex .0114 // MEPF In-wall rough-in | 2026-08-07 A → 2026-08-12 A (+5d) |  |  |  |  |
| ADMIN.5929 | FOH/QTS Flex .0114 // BMS & EPMS Rough In | 2026-09-30 → 2026-08-17 A (-44d) | 2026-10-01 → 2026-08-18 A (-44d) | 0% → 100% | 41d → none |  |
| ADMIN.5466 | FOH/QTS Flex .0114 // 1-Side & Finish Priority Walls | 2026-08-11 A → 2026-09-14 A (+34d) |  |  |  |  |
| ADMIN.5467 | FOH/QTS Flex .0114 // Tape and Finish Walls | 2026-08-13 A → 2026-09-16 A (+34d) |  |  |  |  |
| ADMIN.5465 | FOH/QTS Flex .0114 // Install Fire Alarm and Security | 2026-08-07 A → 2026-09-17 A (+41d) |  |  |  |  |
| ADMIN.5468 | FOH/QTS Flex .0114 // Final paint | 2026-08-18 A → 2026-09-21 A (+34d) |  |  |  |  |
| ADMIN.5768 | FOH/QTS Flex .0114 // FOH- Room Ready to Receive Equipment | 2026-09-30 → 2026-09-23 A (-7d) | 2026-09-30 → 2026-09-23 A (-7d) | 0% → 100% | 41d → none |  |
| ADMIN.5469 | FOH/QTS Flex .0114 // Install Flooring and Base | 2026-09-30 → 2026-10-14 (+14d) | 2026-10-02 → 2026-10-16 (+14d) |  | 37d → 28d | ADMIN.5468 → ADMIN.5768, ADMIN.5468 |

| ID | Task | Start | Finish | Complete | Total float | Predecessors |
| --- | --- | --- | --- | --- | --- | --- |
| ADMIN.5470 | FOH/QTS Flex .0114 // Install Trim-Out | 2026-10-05 → 2026-10-19 (+14d) | 2026-10-05 → 2026-10-19 (+14d) |  | 37d → 28d |  |
| ADMIN.5471 | FOH/QTS Flex .0114 // Install Doors and Hardware | 2026-10-06 → 2026-10-27 (+21d) | 2026-10-06 → 2026-10-27 (+21d) |  | 37d → 23d | ADMIN.5470, ADMIN.5768 SS → ADMIN.5246, ADMIN.5768 SS, ADMIN.5470 |
| ADMIN.5472 | FOH/QTS Flex .0114 // Finish & Clean | 2026-10-07 → 2026-10-28 (+21d) | 2026-10-07 → 2026-10-28 (+21d) |  | 37d → 23d |  |
| 3 | **Restroom .M0111 / W 0110** |  | 2026-10-26 → 2026-11-06 (+11d) |  |  |  |
| ADMIN.4814 | FOH/Restroom .M0111 / W 0110 // Install MEP Overhead | 2026-07-24 A → 2026-09-07 A (+45d) |  |  |  |  |
| ADMIN.5100 | FOH/Restroom .M0111 / W 0110 // Backing & Blocking | 2026-07-29 A → 2026-09-08 A (+41d) |  |  |  |  |
| ADMIN.4813 | FOH/Restroom .M0111 / W 0110 // Install Sprinkler Riser System | 2026-07-29 A → 2026-09-10 A (+43d) |  |  |  |  |
| ADMIN.4810 | FOH/Restroom .M0111 / W 0110 // Tape and Finish Walls | 2026-07-30 A → 2026-09-24 A (+56d) |  |  |  |  |
| ADMIN.4815 | FOH/Restroom .M0111 / W 0110 // Install Fire Alarm | 2026-08-12 A → 2026-09-24 A (+43d) |  |  |  |  |
| ADMIN.4811 | FOH/Restroom .M0111 / W 0110 // Prime and Paint | 2026-09-30 → 2026-10-14 (+14d) | 2026-10-02 → 2026-10-16 (+14d) |  | 34d → 25d |  |
| ADMIN.5101 | FOH/Restroom .M0111 / W 0110 // Install Wall & Floor tiles | 2026-09-30 → 2026-10-14 (+14d) | 2026-10-06 → 2026-10-20 (+14d) |  | 25d → 16d |  |
| ADMIN.4812 | FOH/Restroom .M0111 / W 0110 // Install FRP | 2026-10-05 → 2026-10-19 (+14d) | 2026-10-06 → 2026-10-20 (+14d) |  | 34d → 25d |  |
| ADMIN.4816 | FOH/Restroom .M0111 / W 0110 // Install Lighting | 2026-09-30 → 2026-10-21 (+21d) | 2026-10-01 → 2026-10-22 (+21d) |  | 37d → 23d | ADMIN.4815 → ADMIN.5101, ADMIN.4811, ADMIN.4815 |
| ADMIN.5102 | FOH/Restroom .M0111 / W 0110 // Millwork On-Field Measurement | 2026-10-07 → 2026-10-21 (+14d) | 2026-10-07 → 2026-10-21 (+14d) |  | 25d → 16d |  |
| ADMIN.5104 | FOH/Restroom .M0111 / W 0110 // Install Toilet Accesories | 2026-10-08 → 2026-10-22 (+14d) | 2026-10-13 → 2026-10-26 (+13d) |  | 25d → 16d |  |
| ADMIN.5103 | FOH/Restroom .M0111 / W 0110 // Install Toilet Partition & Millwork | 2026-10-14 → 2026-10-27 (+13d) | 2026-10-20 → 2026-11-02 (+13d) |  | 25d → 16d |  |
| ADMIN.4817 | FOH/Restroom .M0111 / W 0110 // Finish Trim and Devices | 2026-10-21 → 2026-11-03 (+13d) | 2026-10-23 → 2026-11-05 (+13d) |  | 25d → 16d |  |
| ADMIN.4818 | FOH/Restroom .M0111 / W 0110 // Finish & Clean | 2026-10-26 → 2026-11-06 (+11d) | 2026-10-26 → 2026-11-06 (+11d) |  | 25d → 16d |  |
| 5 | **Janitor 0109** |  | 2026-10-07 → 2026-10-28 (+21d) |  |  |  |
| ADMIN.5223 | FOH/Janitor 0109 // Top Down Install of Sheetrock - Priority Walls | 2026-07-29 A → 2026-08-03 A (+5d) |  |  |  |  |
| ADMIN.5227 | FOH/Janitor 0109 // Install Fire Alarm and Security | 2026-08-19 A → 2026-09-08 A (+20d) |  |  |  |  |
| ADMIN.5939 | FOH/Janitor 0109 // BMS & EPMS Rough In | 2026-09-30 → 2026-09-08 A (-22d) | 2026-10-01 → 2026-09-09 A (-22d) | 0% → 100% | 41d → none |  |
| ADMIN.5228 | FOH/Janitor 0109 // 1-Side & Finish Priority Walls | 2026-08-21 A → 2026-09-14 A (+24d) |  |  |  |  |
| ADMIN.5229 | FOH/Janitor 0109 // Tape and Finish Walls | 2026-08-25 A → 2026-09-16 A (+22d) |  |  |  |  |
| ADMIN.5230 | FOH/Janitor 0109 // Final paint | 2026-08-28 A → 2026-09-21 A (+24d) |  |  |  |  |
| ADMIN.5231 | FOH/Janitor 0109 // Install Flooring and Base | 2026-09-30 → 2026-10-14 (+14d) | 2026-10-02 → 2026-10-16 (+14d) |  | 37d → 28d |  |
| ADMIN.5232 | FOH/Janitor 0109 // Install Trim-Out | 2026-10-05 → 2026-10-19 (+14d) | 2026-10-05 → 2026-10-19 (+14d) |  | 37d → 28d |  |
| ADMIN.5233 | FOH/Janitor 0109 // Install Doors and Hardware | 2026-10-06 → 2026-10-27 (+21d) | 2026-10-06 → 2026-10-27 (+21d) |  | 37d → 23d | ADMIN.5232 → ADMIN.5246, ADMIN.5232 |
| ADMIN.5234 | FOH/Janitor 0109 // Finish & Clean | 2026-10-07 → 2026-10-28 (+21d) | 2026-10-07 → 2026-10-28 (+21d) |  | 37d → 23d |  |
| 6 | **Water 1000A4** |  | 2026-10-19 → 2026-10-28 (+9d) |  |  |  |
| ADMIN.5238 | FOH/Water 1000A4 // Install MEPF Overhead Supports | 2026-07-31 A → 2026-08-24 A (+24d) |  |  |  |  |
| ADMIN.5239 | FOH/Water 1000A4 // MEPF Overhead Install | 2026-08-07 A → 2026-08-26 A (+19d) |  |  |  |  |
| ADMIN.5243 | FOH/Water 1000A4 // Tape and Finish Walls | 2026-10-02 → 2026-09-14 A (-18d) | 2026-10-06 → 2026-09-16 A (-20d) | 0% → 100% | 30d → none |  |
| ADMIN.5242 | FOH/Water 1000A4 // 1-Side & Finish Priority Walls | 2026-09-30 → 2026-09-17 A (-13d) | 2026-10-01 → 2026-09-18 A (-13d) | 0% → 100% | 30d → none |  |
| ADMIN.5241 | FOH/Water 1000A4 // Install Fire Alarm and Security | 2026-09-30 → 2026-10-14 (+14d) | 2026-10-02 → 2026-10-16 (+14d) |  | 32d → 23d |  |
| ADMIN.5949 | FOH/Water 1000A4 // BMS & EPMS Rough In | 2026-10-01 → 2026-10-15 (+14d) | 2026-10-02 → 2026-10-16 (+14d) |  | 34d → 25d |  |
| ADMIN.5244 | FOH/Water 1000A4 // Final paint | 2026-10-07 → 2026-10-19 (+12d) | 2026-10-08 → 2026-10-20 (+12d) |  | 30d → 23d |  |
| ADMIN.5245 | FOH/Water 1000A4 // Install Flooring and Base | 2026-10-09 → 2026-10-21 (+12d) | 2026-10-14 → 2026-10-23 (+9d) |  | 30d → 23d |  |
| ADMIN.5246 | FOH/Water 1000A4 // Install Trim-Out | 2026-10-15 → 2026-10-26 (+11d) | 2026-10-15 → 2026-10-26 (+11d) |  | 30d → 23d |  |
| ADMIN.5247 | FOH/Water 1000A4 // Install Doors and Hardware | 2026-10-16 → 2026-10-27 (+11d) | 2026-10-16 → 2026-10-27 (+11d) |  | 30d → 23d |  |
| ADMIN.5248 | FOH/Water 1000A4 // Finish & Clean | 2026-10-19 → 2026-10-28 (+9d) | 2026-10-19 → 2026-10-28 (+9d) |  | 30d → 23d |  |
| 7 | **Welness 0108** |  | 2026-10-14 → 2026-11-03 (+20d) |  |  |  |
| ADMIN.5252 | FOH/Welness 0108 // Install MEPF Overhead Supports | 2026-07-31 A → 2026-08-26 A (+26d) |  |  |  |  |
| ADMIN.5253 | FOH/Welness 0108 // MEPF Overhead Install | 2026-08-07 A → 2026-08-31 A (+24d) |  |  |  |  |
| ADMIN.5255 | FOH/Welness 0108 // Install Fire Alarm and Security | 2026-08-21 A → 2026-09-24 A (+34d) |  |  |  |  |
| ADMIN.5256 | FOH/Welness 0108 // 1-Side & Finish Priority Walls | 2026-08-25 A → 2026-09-24 A (+30d) |  |  |  |  |
| ADMIN.5959 | FOH/Welness 0108 // BMS & EPMS Rough In | 2026-09-30 → 2026-09-24 A (-6d) | 2026-10-01 → 2026-09-25 A (-6d) | 0% → 100% | 35d → none |  |
| ADMIN.5257 | FOH/Welness 0108 // Tape and Finish Walls | 2026-08-27 A → 2026-09-28 A (+32d) |  |  |  |  |
| ADMIN.5258 | FOH/Welness 0108 // Final paint | 2026-09-30 → 2026-10-14 (+14d) | 2026-10-01 → 2026-10-15 (+14d) |  | 35d → 19d |  |
| ADMIN.5259 | FOH/Welness 0108 // Install Flooring and Base | 2026-10-02 → 2026-10-16 (+14d) | 2026-10-06 → 2026-10-20 (+14d) |  | 35d → 19d |  |
| ADMIN.5473 | FOH/Welness 0108 // Install Ceiling grid | 2026-09-30 → 2026-10-21 (+21d) | 2026-10-05 → 2026-10-26 (+21d) |  | 33d → 19d | ADMIN.5253, ADMIN.5256 → ADMIN.5259, ADMIN.5256, ADMIN.5253 |
| ADMIN.5474 | FOH/Welness 0108 // Hang / drop Ceiling tiles | 2026-10-06 → 2026-10-27 (+21d) | 2026-10-07 → 2026-10-28 (+21d) |  | 33d → 19d |  |
| ADMIN.5475 | FOH/Welness 0108 // Hang / drop Ceiling trims | 2026-10-08 → 2026-10-29 (+21d) | 2026-10-09 → 2026-10-30 (+21d) |  | 33d → 19d |  |
| ADMIN.5260 | FOH/Welness 0108 // Install Trim-Out | 2026-10-09 → 2026-10-30 (+21d) | 2026-10-09 → 2026-10-30 (+21d) |  | 33d → 19d |  |
| ADMIN.5261 | FOH/Welness 0108 // Install Doors and Hardware | 2026-10-13 → 2026-11-02 (+20d) | 2026-10-13 → 2026-11-02 (+20d) |  | 33d → 19d | ADMIN.5260, ADMIN.5769 SS → ADMIN.5246, ADMIN.5769 SS, ADMIN.5260 |
| ADMIN.5769 | FOH/Welness 0108 // FOH- Room Ready to Receive Equipment | 2026-10-13 → 2026-11-02 (+20d) | 2026-10-13 → 2026-11-02 (+20d) |  | 33d → 19d |  |
| ADMIN.5262 | FOH/Welness 0108 // Finish & Clean | 2026-10-14 → 2026-11-03 (+20d) | 2026-10-14 → 2026-11-03 (+20d) |  | 33d → 19d |  |
| 8 | **Corridor 0112 / Freedom Cafe 0105** |  | 2026-10-14 → 2026-11-03 (+20d) |  |  |  |
| ADMIN.5266 | FOH/Corridor 0112 / Freedom Cafe 0105 // Install MEPF Overhead Supports | 2026-07-31 A → 2026-09-01 A (+32d) |  |  |  |  |
| ADMIN.5267 | FOH/Corridor 0112 / Freedom Cafe 0105 // MEPF Overhead Install | 2026-08-07 A → 2026-09-03 A (+27d) |  |  |  |  |
| ADMIN.5269 | FOH/Corridor 0112 / Freedom Cafe 0105 // Install Fire Alarm and Security | 2026-08-21 A → 2026-09-17 A (+27d) |  |  |  |  |
| ADMIN.5270 | FOH/Corridor 0112 / Freedom Cafe 0105 // 1-Side & Finish Priority Walls | 2026-08-25 A → 2026-09-17 A (+23d) |  |  |  |  |
| ADMIN.5969 | FOH/Corridor 0112 / Freedom Cafe 0105 // BMS & EPMS Rough In | 2026-09-30 → 2026-09-17 A (-13d) | 2026-10-01 → 2026-09-18 A (-13d) | 0% → 100% | 35d → none |  |
| ADMIN.5271 | FOH/Corridor 0112 / Freedom Cafe 0105 // Tape and Finish Walls | 2026-08-27 A → 2026-09-21 A (+25d) |  |  |  |  |
| ADMIN.5272 | FOH/Corridor 0112 / Freedom Cafe 0105 // Final paint | 2026-09-30 → 2026-10-14 (+14d) | 2026-10-01 → 2026-10-15 (+14d) |  | 35d → 19d |  |
| ADMIN.5273 | FOH/Corridor 0112 / Freedom Cafe 0105 // Install Flooring and Base | 2026-10-02 → 2026-10-16 (+14d) | 2026-10-06 → 2026-10-20 (+14d) |  | 35d → 19d |  |
| ADMIN.5503 | FOH/Corridor 0112 / Freedom Cafe 0105 // Install Ceiling grid | 2026-09-30 → 2026-10-21 (+21d) | 2026-10-05 → 2026-10-26 (+21d) |  | 33d → 19d | ADMIN.5270 → ADMIN.5273, ADMIN.5270 |
| ADMIN.5504 | FOH/Corridor 0112 / Freedom Cafe 0105 // Hang Hard-Lid Ceiling | 2026-10-06 → 2026-10-27 (+21d) | 2026-10-07 → 2026-10-28 (+21d) |  | 33d → 19d |  |
| ADMIN.5505 | FOH/Corridor 0112 / Freedom Cafe 0105 // Hang / drop Ceiling trims | 2026-10-08 → 2026-10-29 (+21d) | 2026-10-09 → 2026-10-30 (+21d) |  | 33d → 19d |  |
| ADMIN.5274 | FOH/Corridor 0112 / Freedom Cafe 0105 // Install Trim-Out | 2026-10-09 → 2026-10-30 (+21d) | 2026-10-09 → 2026-10-30 (+21d) |  | 33d → 19d |  |

| ID | Task | Start | Finish | Complete | Total float | Predecessors |
| --- | --- | --- | --- | --- | --- | --- |
| ADMIN.5275 | FOH/Corridor 0112 / Freedom Cafe 0105 // Install Doors and Hardware | 2026-10-13 → 2026-11-02 (+20d) | 2026-10-13 → 2026-11-02 (+20d) |  | 33d → 19d |  |
| ADMIN.5276 | FOH/Corridor 0112 / Freedom Cafe 0105 // Finish & Clean | 2026-10-14 → 2026-11-03 (+20d) | 2026-10-14 → 2026-11-03 (+20d) |  | 33d → 19d |  |
| 16 | **Conference 0103** |  | 2026-10-15 → 2026-11-06 (+22d) |  |  |  |
| ADMIN.5278 | FOH/Conference 0103 // MEPF Layout of Overhead Supports | 2026-07-29 A → 2026-08-19 A (+21d) |  |  |  |  |
| ADMIN.5280 | FOH/Conference 0103 // Install MEPF Overhead Supports | 2026-07-31 A → 2026-08-31 A (+31d) |  |  |  |  |
| ADMIN.5281 | FOH/Conference 0103 // MEPF Overhead Install | 2026-08-07 A → 2026-09-02 A (+26d) |  |  |  |  |
| ADMIN.5279 | FOH/Conference 0103 // Top Down Install of Sheetrock - Priority Walls | 2026-08-10 A → 2026-09-14 A (+35d) |  |  |  |  |
| ADMIN.5285 | FOH/Conference 0103 // Tape and Finish Walls | 2026-09-28 A → 2026-09-14 A (-14d) | 2026-10-02 → 2026-10-16 (+14d) |  | 32d → 16d |  |
| ADMIN.5282 | FOH/Conference 0103 // MEPF In-wall rough-in | 2026-08-21 A → 2026-09-17 A (+27d) |  |  |  |  |
| ADMIN.5283 | FOH/Conference 0103 // Install Fire Alarm and Security | 2026-08-21 A → 2026-09-17 A (+27d) |  |  |  |  |
| ADMIN.5979 | FOH/Conference 0103 // BMS & EPMS Rough In | 2026-09-30 → 2026-09-17 A (-13d) | 2026-10-01 → 2026-09-18 A (-13d) | 0% → 100% | 35d → none |  |
| ADMIN.5284 | FOH/Conference 0103 // 1-Side & Finish Priority Walls | 2026-08-25 A → 2026-09-24 A (+30d) |  |  |  |  |
| ADMIN.5286 | FOH/Conference 0103 // Final paint | 2026-10-05 → 2026-10-19 (+14d) | 2026-10-06 → 2026-10-20 (+14d) |  | 32d → 16d |  |
| ADMIN.5287 | FOH/Conference 0103 // Install Flooring and Base | 2026-10-07 → 2026-10-21 (+14d) | 2026-10-09 → 2026-10-23 (+14d) |  | 32d → 16d |  |
| ADMIN.5479 | FOH/Conference 0103 // Install Ceiling grid | 2026-09-30 → 2026-10-26 (+26d) | 2026-10-05 → 2026-10-29 (+24d) |  | 33d → 16d | ADMIN.5284 → ADMIN.5287, ADMIN.5284 |
| ADMIN.5480 | FOH/Conference 0103 // Hang / drop Ceiling tiles | 2026-10-06 → 2026-10-30 (+24d) | 2026-10-07 → 2026-11-02 (+26d) |  | 33d → 16d |  |
| ADMIN.5481 | FOH/Conference 0103 // Hang / drop Ceiling trims | 2026-10-08 → 2026-11-03 (+26d) | 2026-10-09 → 2026-11-04 (+26d) |  | 33d → 16d |  |
| ADMIN.5288 | FOH/Conference 0103 // Install Trim-Out | 2026-10-13 → 2026-11-04 (+22d) | 2026-10-13 → 2026-11-04 (+22d) |  | 32d → 16d |  |
| ADMIN.5289 | FOH/Conference 0103 // Install Doors and Hardware | 2026-10-14 → 2026-11-05 (+22d) | 2026-10-14 → 2026-11-05 (+22d) |  | 32d → 16d |  |
| ADMIN.5770 | FOH/Conference 0103 // FOH- Room Ready to Receive Equipment | 2026-10-13 → 2026-11-05 (+23d) | 2026-10-13 → 2026-11-05 (+23d) |  | 33d → 16d |  |
| ADMIN.5290 | FOH/Conference 0103 // Finish & Clean | 2026-10-15 → 2026-11-06 (+22d) | 2026-10-15 → 2026-11-06 (+22d) |  | 32d → 16d |  |
| 17 | **Conference 0102** |  | 2026-10-15 → 2026-11-03 (+19d) |  |  |  |
| ADMIN.5292 | FOH/Conference 0102 // MEPF Layout of Overhead Supports | 2026-07-29 A → 2026-08-19 A (+21d) |  |  |  |  |
| ADMIN.5294 | FOH/Conference 0102 // Install MEPF Overhead Supports | 2026-07-31 A → 2026-08-31 A (+31d) |  |  |  |  |
| ADMIN.5295 | FOH/Conference 0102 // MEPF Overhead Install | 2026-08-07 A → 2026-09-02 A (+26d) |  |  |  |  |
| ADMIN.5299 | FOH/Conference 0102 // Tape and Finish Walls | 2026-09-28 A → 2026-09-14 A (-14d) | 2026-10-02 → 2026-10-14 (+12d) | 0% → 100% | 32d → 19d |  |
| ADMIN.5296 | FOH/Conference 0102 // MEPF In-wall rough-in | 2026-08-21 A → 2026-09-17 A (+27d) |  |  |  |  |
| ADMIN.5297 | FOH/Conference 0102 // Install Fire Alarm and Security | 2026-08-21 A → 2026-09-17 A (+27d) |  |  |  |  |
| ADMIN.5989 | FOH/Conference 0102 // BMS & EPMS Rough In | 2026-09-30 → 2026-09-17 A (-13d) | 2026-10-01 → 2026-09-18 A (-13d) | 0% → 100% | 35d → none |  |
| ADMIN.5298 | FOH/Conference 0102 // 1-Side & Finish Priority Walls | 2026-08-25 A → 2026-09-24 A (+30d) |  |  |  |  |
| ADMIN.5300 | FOH/Conference 0102 // Final paint | 2026-10-05 → 2026-10-14 (+9d) | 2026-10-06 → 2026-10-15 (+9d) |  | 32d → 19d |  |
| ADMIN.5301 | FOH/Conference 0102 // Install Flooring and Base | 2026-10-07 → 2026-10-16 (+9d) | 2026-10-09 → 2026-10-20 (+11d) |  | 32d → 19d |  |
| ADMIN.5482 | FOH/Conference 0102 // Install Ceiling grid | 2026-09-30 → 2026-10-21 (+21d) | 2026-10-05 → 2026-10-26 (+21d) |  | 33d → 19d | ADMIN.5298 → ADMIN.5301, ADMIN.5298 |
| ADMIN.5483 | FOH/Conference 0102 // Hang / drop Ceiling tiles | 2026-10-06 → 2026-10-27 (+21d) | 2026-10-07 → 2026-10-28 (+21d) |  | 33d → 19d |  |
| ADMIN.5484 | FOH/Conference 0102 // Hang / drop Ceiling trims | 2026-10-08 → 2026-10-29 (+21d) | 2026-10-09 → 2026-10-30 (+21d) |  | 33d → 19d |  |
| ADMIN.5302 | FOH/Conference 0102 // Install Trim-Out | 2026-10-13 → 2026-10-30 (+17d) | 2026-10-13 → 2026-10-30 (+17d) |  | 32d → 19d |  |
| ADMIN.5303 | FOH/Conference 0102 // Install Doors and Hardware | 2026-10-14 → 2026-11-02 (+19d) | 2026-10-14 → 2026-11-02 (+19d) |  | 32d → 19d |  |
| ADMIN.5771 | FOH/Conference 0102 // FOH- Room Ready to Receive Equipment | 2026-10-13 → 2026-11-02 (+20d) | 2026-10-13 → 2026-11-02 (+20d) |  | 33d → 19d |  |
| ADMIN.5304 | FOH/Conference 0102 // Finish & Clean | 2026-10-15 → 2026-11-03 (+19d) | 2026-10-15 → 2026-11-03 (+19d) |  | 32d → 19d |  |
| 18 | **Lobby 0101 / Vestibule 0100** |  | 2026-10-15 → 2026-10-23 (+8d) |  |  |  |
| ADMIN.5311 | FOH/Lobby 0101 / Vestibule 0100 // Install Fire Alarm and Security | 2026-08-26 A → 2026-09-09 A (+14d) |  |  |  |  |
| ADMIN.5999 | FOH/Lobby 0101 / Vestibule 0100 // BMS & EPMS Rough In | 2026-09-30 → 2026-09-09 A (-21d) | 2026-10-01 → 2026-09-10 A (-21d) | 0% → 100% | 35d → none |  |
| ADMIN.5500 | FOH/Lobby 0101 / Vestibule 0100 // Install Ceiling grid | 2026-09-30 A | 2026-10-05 → 2026-10-09 A (+4d) | 0% → 100% | 32d → none |  |
| ADMIN.5501 | FOH/Lobby 0101 / Vestibule 0100 // Hang Hard-Lid Ceiling | 2026-10-06 A | 2026-10-07 → 2026-10-13 A (+6d) | 0% → 100% | 32d → none |  |
| ADMIN.5314 | FOH/Lobby 0101 / Vestibule 0100 // Final paint | 2026-09-30 → 2026-10-14 (+14d) | 2026-10-01 → 2026-10-15 (+14d) |  | 35d → 26d |  |
| ADMIN.5502 | FOH/Lobby 0101 / Vestibule 0100 // Hang / drop Ceiling trims | 2026-10-08 → 2026-10-14 (+6d) | 2026-10-09 → 2026-10-15 (+6d) |  | 32d → 29d |  |
| ADMIN.5315 | FOH/Lobby 0101 / Vestibule 0100 // Install Flooring and Base | 2026-10-02 → 2026-10-16 (+14d) | 2026-10-06 → 2026-10-20 (+14d) |  | 35d → 26d |  |
| ADMIN.5316 | FOH/Lobby 0101 / Vestibule 0100 // Install Trim-Out | 2026-10-13 → 2026-10-21 (+8d) | 2026-10-13 → 2026-10-21 (+8d) |  | 32d → 26d |  |
| ADMIN.5317 | FOH/Lobby 0101 / Vestibule 0100 // Install Doors and Hardware | 2026-10-14 → 2026-10-22 (+8d) | 2026-10-14 → 2026-10-22 (+8d) |  | 32d → 26d |  |
| ADMIN.5318 | FOH/Lobby 0101 / Vestibule 0100 // Finish & Clean | 2026-10-15 → 2026-10-23 (+8d) | 2026-10-15 → 2026-10-23 (+8d) |  | 32d → 26d |  |
| 19 | **Badging 0152** |  | 2026-10-14 → 2026-11-03 (+20d) |  |  |  |
| ADMIN.5325 | FOH/Badging 0152 // Install Fire Alarm and Security | 2026-08-21 A → 2026-09-08 A (+18d) |  |  |  |  |
| ADMIN.6009 | FOH/Badging 0152 // BMS & EPMS Rough In | 2026-09-30 → 2026-09-08 A (-22d) | 2026-10-01 → 2026-09-09 A (-22d) | 0% → 100% | 35d → none |  |
| ADMIN.5328 | FOH/Badging 0152 // Final paint | 2026-09-30 → 2026-10-14 (+14d) | 2026-10-01 → 2026-10-15 (+14d) |  | 35d → 19d |  |
| ADMIN.5329 | FOH/Badging 0152 // Install Flooring and Base | 2026-10-02 → 2026-10-16 (+14d) | 2026-10-06 → 2026-10-20 (+14d) |  | 35d → 19d |  |
| ADMIN.5485 | FOH/Badging 0152 // Install Ceiling grid | 2026-09-30 → 2026-10-21 (+21d) | 2026-10-05 → 2026-10-26 (+21d) |  | 33d → 19d | ADMIN.5326 → ADMIN.5329, ADMIN.5326 |
| ADMIN.5486 | FOH/Badging 0152 // Hang / drop Ceiling tiles | 2026-10-06 → 2026-10-27 (+21d) | 2026-10-07 → 2026-10-28 (+21d) |  | 33d → 19d |  |
| ADMIN.5487 | FOH/Badging 0152 // Hang / drop Ceiling trims | 2026-10-08 → 2026-10-29 (+21d) | 2026-10-09 → 2026-10-30 (+21d) |  | 33d → 19d |  |
| ADMIN.5330 | FOH/Badging 0152 // Install Trim-Out | 2026-10-09 → 2026-10-30 (+21d) | 2026-10-09 → 2026-10-30 (+21d) |  | 33d → 19d |  |
| ADMIN.5331 | FOH/Badging 0152 // Install Doors and Hardware | 2026-10-13 → 2026-11-02 (+20d) | 2026-10-13 → 2026-11-02 (+20d) |  | 33d → 19d |  |
| ADMIN.5772 | FOH/Badging 0152 // FOH- Room Ready to Receive Equipment | 2026-10-13 → 2026-11-02 (+20d) | 2026-10-13 → 2026-11-02 (+20d) |  | 33d → 19d |  |
| ADMIN.5332 | FOH/Badging 0152 // Finish & Clean | 2026-10-14 → 2026-11-03 (+20d) | 2026-10-14 → 2026-11-03 (+20d) |  | 33d → 19d |  |
| 20 | **Security Vestibule 0130/0131** |  | 2026-10-15 → 2026-11-04 (+20d) |  |  |  |
| ADMIN.5337 | FOH/Security Vestibule 0130/0131 // MEPF Overhead Install | 2026-08-07 A → 2026-08-24 A (+17d) |  |  |  |  |
| ADMIN.5339 | FOH/Security Vestibule 0130/0131 // Install Fire Alarm and Security | 2026-08-21 A → 2026-09-08 A (+18d) |  |  |  |  |
| ADMIN.6019 | FOH/Security Vestibule 0130/0131 // BMS & EPMS Rough In | 2026-09-30 → 2026-09-08 A (-22d) | 2026-10-01 → 2026-09-09 A (-22d) | 0% → 100% | 35d → none |  |
| ADMIN.5342 | FOH/Security Vestibule 0130/0131 // Final paint | 2026-09-30 → 2026-10-14 (+14d) | 2026-10-01 → 2026-10-15 (+14d) |  | 35d → 18d |  |
| ADMIN.5343 | FOH/Security Vestibule 0130/0131 // Install Flooring and Base | 2026-10-02 → 2026-10-16 (+14d) | 2026-10-06 → 2026-10-20 (+14d) |  | 35d → 18d |  |
| ADMIN.5488 | FOH/Security Vestibule 0130/0131 // Install Ceiling grid | 2026-09-30 → 2026-10-21 (+21d) | 2026-10-05 → 2026-10-26 (+21d) |  | 32d → 18d | ADMIN.5340 → ADMIN.5343, ADMIN.5340 |
| ADMIN.5489 | FOH/Security Vestibule 0130/0131 // Hang / drop Ceiling tiles | 2026-10-06 → 2026-10-27 (+21d) | 2026-10-07 → 2026-10-28 (+21d) |  | 32d → 18d |  |

| ID | Task | Start | Finish | Complete | Total float | Predecessors |
| --- | --- | --- | --- | --- | --- | --- |
| ADMIN.5490 | FOH/Security Vestibule 0130/0131 // Hang / drop Ceiling trims | 2026-10-08 → 2026-10-29 (+21d) | 2026-10-09 → 2026-10-30 (+21d) |  | 32d → 18d |  |
| ADMIN.5344 | FOH/Security Vestibule 0130/0131 // Install Trim-Out | 2026-10-13 → 2026-11-02 (+20d) | 2026-10-13 → 2026-11-02 (+20d) |  | 32d → 18d |  |
| ADMIN.5345 | FOH/Security Vestibule 0130/0131 // Install Doors and Hardware | 2026-10-14 → 2026-11-03 (+20d) | 2026-10-14 → 2026-11-03 (+20d) |  | 32d → 18d |  |
| ADMIN.5346 | FOH/Security Vestibule 0130/0131 // Finish & Clean | 2026-10-15 → 2026-11-04 (+20d) | 2026-10-15 → 2026-11-04 (+20d) |  | 32d → 18d |  |
| 21 | **Security Office 0155** |  | 2026-10-14 → 2026-11-03 (+20d) |  |  |  |
| ADMIN.5353 | FOH/Security Office 0155 // Install Fire Alarm and Security | 2026-08-21 A → 2026-09-03 A (+13d) |  |  |  |  |
| ADMIN.6029 | FOH/Security Office 0155 // BMS & EPMS Rough In | 2026-09-30 → 2026-09-03 A (-27d) | 2026-10-01 → 2026-09-04 A (-27d) | 0% → 100% | 35d → none |  |
| ADMIN.5356 | FOH/Security Office 0155 // Final paint | 2026-09-30 → 2026-10-14 (+14d) | 2026-10-01 → 2026-10-15 (+14d) |  | 35d → 19d |  |
| ADMIN.5357 | FOH/Security Office 0155 // Install Flooring and Base | 2026-10-02 → 2026-10-16 (+14d) | 2026-10-06 → 2026-10-20 (+14d) |  | 35d → 19d |  |
| ADMIN.5491 | FOH/Security Office 0155 // Install Ceiling grid | 2026-09-30 → 2026-10-21 (+21d) | 2026-10-05 → 2026-10-26 (+21d) |  | 33d → 19d | ADMIN.5354 → ADMIN.5357, ADMIN.5354 |
| ADMIN.5492 | FOH/Security Office 0155 // Hang / drop Ceiling tiles | 2026-10-06 → 2026-10-27 (+21d) | 2026-10-07 → 2026-10-28 (+21d) |  | 33d → 19d |  |
| ADMIN.5493 | FOH/Security Office 0155 // Hang / drop Ceiling trims | 2026-10-08 → 2026-10-29 (+21d) | 2026-10-09 → 2026-10-30 (+21d) |  | 33d → 19d |  |
| ADMIN.5358 | FOH/Security Office 0155 // Install Trim-Out | 2026-10-09 → 2026-10-30 (+21d) | 2026-10-09 → 2026-10-30 (+21d) |  | 33d → 19d |  |
| ADMIN.5359 | FOH/Security Office 0155 // Install Doors and Hardware | 2026-10-13 → 2026-11-02 (+20d) | 2026-10-13 → 2026-11-02 (+20d) |  | 33d → 19d |  |
| ADMIN.5360 | FOH/Security Office 0155 // Finish & Clean | 2026-10-14 → 2026-11-03 (+20d) | 2026-10-14 → 2026-11-03 (+20d) |  | 33d → 19d |  |
| 22 | **Security Suite 0150** |  | 2026-10-14 → 2026-11-03 (+20d) |  |  |  |
| ADMIN.5365 | FOH/Security Suite 0150 // MEPF Overhead Install | 2026-08-07 A → 2026-08-24 A (+17d) |  |  |  |  |
| ADMIN.5367 | FOH/Security Suite 0150 // Install Fire Alarm and Security | 2026-08-21 A → 2026-09-08 A (+18d) |  |  |  |  |
| ADMIN.6039 | FOH/Security Suite 0150 // BMS & EPMS Rough In | 2026-09-30 → 2026-09-08 A (-22d) | 2026-10-01 → 2026-09-09 A (-22d) | 0% → 100% | 35d → none |  |
| ADMIN.5370 | FOH/Security Suite 0150 // Final paint | 2026-09-30 → 2026-10-14 (+14d) | 2026-10-01 → 2026-10-15 (+14d) |  | 35d → 19d |  |
| ADMIN.5371 | FOH/Security Suite 0150 // Install Flooring and Base | 2026-10-02 → 2026-10-16 (+14d) | 2026-10-06 → 2026-10-20 (+14d) |  | 35d → 19d |  |
| ADMIN.5494 | FOH/Security Suite 0150 // Install Ceiling grid | 2026-09-30 → 2026-10-21 (+21d) | 2026-10-05 → 2026-10-26 (+21d) |  | 33d → 19d | ADMIN.5368 → ADMIN.5371, ADMIN.5368 |
| ADMIN.5495 | FOH/Security Suite 0150 // Hang / drop Ceiling tiles | 2026-10-06 → 2026-10-27 (+21d) | 2026-10-07 → 2026-10-28 (+21d) |  | 33d → 19d |  |
| ADMIN.5496 | FOH/Security Suite 0150 // Hang / drop Ceiling trims | 2026-10-08 → 2026-10-29 (+21d) | 2026-10-09 → 2026-10-30 (+21d) |  | 33d → 19d |  |
| ADMIN.5372 | FOH/Security Suite 0150 // Install Trim-Out | 2026-10-09 → 2026-10-30 (+21d) | 2026-10-09 → 2026-10-30 (+21d) |  | 33d → 19d |  |
| ADMIN.5373 | FOH/Security Suite 0150 // Install Doors and Hardware | 2026-10-13 → 2026-11-02 (+20d) | 2026-10-13 → 2026-11-02 (+20d) |  | 33d → 19d |  |
| ADMIN.5374 | FOH/Security Suite 0150 // Finish & Clean | 2026-10-14 → 2026-11-03 (+20d) | 2026-10-14 → 2026-11-03 (+20d) |  | 33d → 19d |  |
| 24 | **Security Storage 0151** |  | 2026-10-09 → 2026-11-03 (+25d) |  |  |  |
| ADMIN.5393 | FOH/Security Storage 0151 // MEPF Overhead Install | 2026-07-24 A → 2026-08-20 A (+27d) |  |  |  |  |
| ADMIN.5395 | FOH/Security Storage 0151 // Install Fire Alarm and Security | 2026-08-07 A → 2026-09-08 A (+32d) |  |  |  |  |
| ADMIN.6049 | FOH/Security Storage 0151 // BMS & EPMS Rough In | 2026-09-30 → 2026-09-08 A (-22d) | 2026-10-01 → 2026-09-09 A (-22d) | 0% → 100% | 35d → none |  |
| ADMIN.5398 | FOH/Security Storage 0151 // Final paint | 2026-09-30 → 2026-10-14 (+14d) | 2026-10-01 → 2026-10-15 (+14d) |  | 35d → 26d |  |
| ADMIN.5399 | FOH/Security Storage 0151 // Install Flooring and Base | 2026-10-02 → 2026-10-16 (+14d) | 2026-10-06 → 2026-10-20 (+14d) |  | 35d → 26d |  |
| ADMIN.5400 | FOH/Security Storage 0151 // Install Trim-Out | 2026-10-07 → 2026-10-21 (+14d) | 2026-10-07 → 2026-10-21 (+14d) |  | 35d → 26d |  |
| ADMIN.5401 | FOH/Security Storage 0151 // Install Doors and Hardware | 2026-10-08 → 2026-11-02 (+25d) | 2026-10-08 → 2026-11-02 (+25d) |  | 35d → 19d | ADMIN.5400 → ADMIN.5372, ADMIN.5400 |
| ADMIN.5402 | FOH/Security Storage 0151 // Finish & Clean | 2026-10-09 → 2026-11-03 (+25d) | 2026-10-09 → 2026-11-03 (+25d) |  | 35d → 19d |  |
| 25 | **RR Dock 0163** |  | 2026-10-09 → 2026-11-03 (+25d) |  |  |  |
| ADMIN.5407 | FOH/RR Dock 0163 // MEPF Overhead Install | 2026-07-24 A → 2026-08-31 A (+38d) |  |  |  |  |
| ADMIN.5409 | FOH/RR Dock 0163 // Install Fire Alarm and Security | 2026-08-07 A → 2026-09-15 A (+39d) |  |  |  |  |
| ADMIN.6059 | FOH/RR Dock 0163 // BMS & EPMS Rough In | 2026-09-30 → 2026-09-15 A (-15d) | 2026-10-01 → 2026-09-16 A (-15d) | 0% → 100% | 35d → none |  |
| ADMIN.5410 | FOH/RR Dock 0163 // 1-Side & Finish Priority Walls | 2026-08-11 A → 2026-09-24 A (+44d) |  |  |  |  |
| ADMIN.5411 | FOH/RR Dock 0163 // Tape and Finish Walls | 2026-08-13 A → 2026-09-28 A (+46d) |  |  |  |  |
| ADMIN.5412 | FOH/RR Dock 0163 // Final paint | 2026-09-30 → 2026-10-14 (+14d) | 2026-10-01 → 2026-10-15 (+14d) |  | 35d → 26d |  |
| ADMIN.5413 | FOH/RR Dock 0163 // Install Flooring and Base | 2026-10-02 → 2026-10-16 (+14d) | 2026-10-06 → 2026-10-20 (+14d) |  | 35d → 26d |  |
| ADMIN.5414 | FOH/RR Dock 0163 // Install Trim-Out | 2026-10-07 → 2026-10-21 (+14d) | 2026-10-07 → 2026-10-21 (+14d) |  | 35d → 26d |  |
| ADMIN.5415 | FOH/RR Dock 0163 // Install Doors and Hardware | 2026-10-08 → 2026-11-02 (+25d) | 2026-10-08 → 2026-11-02 (+25d) |  | 35d → 19d | ADMIN.5414 → ADMIN.5372, ADMIN.5414 |
| ADMIN.5416 | FOH/RR Dock 0163 // Finish & Clean | 2026-10-09 → 2026-11-03 (+25d) | 2026-10-09 → 2026-11-03 (+25d) |  | 35d → 19d |  |
| 26 | **Dock Storage 0162** |  | 2026-10-08 → 2026-10-26 (+18d) |  |  |  |
| ADMIN.5421 | FOH/Dock Storage 0162 // MEPF Overhead Install | 2026-07-24 A → 2026-08-24 A (+31d) |  |  |  |  |
| ADMIN.5428 | FOH/Dock Storage 0162 // Install Trim-Out | 2026-08-25 A → 2026-09-08 A (+14d) |  |  |  |  |
| ADMIN.6069 | FOH/Dock Storage 0162 // BMS & EPMS Rough In | 2026-09-30 → 2026-10-14 (+14d) | 2026-10-01 → 2026-10-15 (+14d) |  | 36d → 25d |  |
| ADMIN.5426 | FOH/Dock Storage 0162 // Final paint | 2026-09-30 → 2026-10-16 (+16d) | 2026-10-01 → 2026-10-19 (+18d) |  | 36d → 25d | ADMIN.6069 FF, ADMIN.5423, ADMIN.5425 → ADMIN.6069, ADMIN.5425, ADMIN.5423 |
| ADMIN.5427 | FOH/Dock Storage 0162 // Install Flooring and Base | 2026-10-02 → 2026-10-20 (+18d) | 2026-10-06 → 2026-10-22 (+16d) |  | 36d → 25d |  |
| ADMIN.5429 | FOH/Dock Storage 0162 // Install Doors and Hardware | 2026-10-07 → 2026-10-23 (+16d) | 2026-10-07 → 2026-10-23 (+16d) |  | 36d → 25d |  |
| ADMIN.5430 | FOH/Dock Storage 0162 // Finish & Clean | 2026-10-08 → 2026-10-26 (+18d) | 2026-10-08 → 2026-10-26 (+18d) |  | 36d → 25d |  |
| 27 | **Loading Dock 0160** |  | 2026-11-30 → 2026-12-04 (+4d) |  |  |  |
| DH1300.LD.2020 | FOH / Loading Dock #0160 // Hang, Tape, & Finish Drywall | 2026-09-30 → 2026-09-15 A (-15d) | 2026-10-14 → 2026-10-20 (+6d) | 0% → 50% | 2d → -2d |  |
| DH1300.LD.2021 | FOH / Loading Dock #0160 // Paint Walls | 2026-10-15 → 2026-10-21 (+6d) | 2026-10-21 → 2026-10-27 (+6d) |  | 2d → -2d |  |
| DH1300.LD.2022 | FOH / Loading Dock #0160 // Install Fire Alarm | 2026-10-22 → 2026-10-28 (+6d) | 2026-10-28 → 2026-11-03 (+6d) |  | 2d → -2d |  |
| DH1300.LD.2023 | FOH / Loading Dock #0160 // Pull, Test, & Terminate | 2026-10-22 → 2026-10-28 (+6d) | 2026-10-29 → 2026-11-04 (+6d) |  | 7d → 3d |  |
| DH1300.LD.2024 | FOH / Loading Dock #0160 // Install Overhead Door - 0160.2 | 2026-10-29 → 2026-11-04 (+6d) | 2026-11-02 → 2026-11-06 (+4d) |  | 2d → -2d |  |
| DH1300.LD.2027 | FOH / Loading Dock #0160 // Install Overhead Lighting Fixtures | 2026-10-30 → 2026-11-05 (+6d) | 2026-11-05 → 2026-11-12 (+7d) |  | 7d → 3d |  |
| DH1300.LD.2025 | FOH / Loading Dock #0160 // Install Overhead Door - 0160.3 | 2026-11-03 → 2026-11-09 (+6d) | 2026-11-05 → 2026-11-12 (+7d) |  | 2d → -2d |  |
| DH1300.LD.2026 | FOH / Loading Dock #0160 // Loading Dock Operational | 2026-11-05 → 2026-11-12 (+7d) | 2026-11-05 → 2026-11-12 (+7d) |  | 2d → -2d |  |
| DH1300.LD.2028 | FOH / Loading Dock #0160 // Install Fire Sprinkler Heads | 2026-11-06 → 2026-11-13 (+7d) | 2026-11-13 → 2026-11-19 (+6d) |  | 2d → -2d |  |
| DH1300.LD.2029 | FOH / Loading Dock #0160// Electrical Trim | 2026-11-16 → 2026-11-20 (+4d) | 2026-11-20 → 2026-11-27 (+7d) |  | 2d → -2d |  |
| DH1300.LD.2030 | FOH / Loading Dock #0160 // Clean and Punch | 2026-11-23 → 2026-11-30 (+7d) | 2026-11-30 → 2026-12-04 (+4d) |  | 2d → -2d |  |
| 28 | **Trash 0161** |  | 2026-10-09 → 2026-10-23 (+14d) |  |  |  |
| ADMIN.5451 | FOH/Trash 0161 // Install Fire Alarm and Security | 2026-08-05 A → 2026-09-24 A (+50d) |  |  |  |  |
| ADMIN.6079 | FOH/Trash 0161 // BMS & EPMS Rough In | 2026-09-30 → 2026-09-24 A (-6d) | 2026-10-01 → 2026-09-25 A (-6d) | 0% → 100% | 5d → none |  |

| ID | Task | Start | Finish | Complete | Total float | Predecessors |
| --- | --- | --- | --- | --- | --- | --- |
| ADMIN.5454 | FOH/Trash 0161 // Final paint | 2026-09-30 → 2026-10-14 (+14d) | 2026-10-01 → 2026-10-15 (+14d) |  | 5d → -4d |  |
| ADMIN.5455 | FOH/Trash 0161 // Install Flooring and Base | 2026-10-02 → 2026-10-16 (+14d) | 2026-10-06 → 2026-10-20 (+14d) |  | 5d → -4d |  |
| ADMIN.5456 | FOH/Trash 0161 // Install Trim-Out | 2026-10-07 → 2026-10-21 (+14d) | 2026-10-07 → 2026-10-21 (+14d) |  | 5d → -4d |  |
| ADMIN.5457 | FOH/Trash 0161 // Install Doors and Hardware | 2026-10-08 → 2026-10-22 (+14d) | 2026-10-08 → 2026-10-22 (+14d) |  | 5d → -4d |  |
| ADMIN.5458 | FOH/Trash 0161 // Finish & Clean | 2026-10-09 → 2026-10-23 (+14d) | 2026-10-09 → 2026-10-23 (+14d) |  | 5d → -4d |  |
| 1 | **Equipment** |  | 2026-11-12 → 2026-11-25 (+13d) |  |  |  |
| 2 | **Roof - RTUs** |  | 2026-11-12 → 2026-11-25 (+13d) |  |  |  |
| 1 | **Column Lines 01 thru 1.1** |  | 2026-11-12 → 2026-11-25 (+13d) |  |  |  |
| DH1100.7860 | FOH/Roof - RTUs // Install Mechanical Piping | 2026-09-30 → 2026-10-14 (+14d) | 2026-10-21 → 2026-11-03 (+13d) |  | -7d → -16d |  |
| DH1200.7790 | FOH/Roof - RTUs // Install Electrical Conduit and Controls Piping | 2026-10-07 → 2026-10-21 (+14d) | 2026-10-28 → 2026-11-10 (+13d) |  | 23d → -2d |  |
| DH1100.7870 | FOH/Roof - RTUs // Install heat trace system | 2026-10-22 → 2026-11-04 (+13d) | 2026-11-12 → 2026-11-25 (+13d) |  | -7d → -16d |  |
| 1 | **Gen - XFMRs etc** | 2026-07-24 → 2026-08-07 (+14d) | 2026-10-02 → 2026-10-16 (+14d) |  |  |  |
| DH1100.12096 | FOH/Gen - XFMRs etc // Set House Generator - GEN-HSE-FOH | 2026-07-24 A → 2026-08-07 A (+14d) |  |  |  |  |
| DH1100.12110 | FOH/Gen - XFMRs etc // Set House XFMR - XFMR-HSE-FOH | 2026-07-27 A → 2026-08-07 A (+11d) |  |  |  |  |
| DH1100.12111 | FOH/Gen - XFMRs etc // Set House XFMR - XFMR-HSE-1Da | 2026-07-28 A → 2026-08-28 A (+31d) |  |  |  |  |
| DH1100.12098 | FOH/Gen - XFMRs etc // Set House Static Transfer Switch - STS-HSE-1A1 | 2026-09-30 → 2026-10-14 (+14d) | 2026-09-30 → 2026-10-14 (+14d) |  | 10d → 1d |  |
| DH1100.12104 | FOH/Gen - XFMRs etc // Set House UPS - UPS-HSE-1A1 | 2026-09-30 → 2026-10-14 (+14d) | 2026-09-30 → 2026-10-14 (+14d) |  | 10d → 1d |  |
| DH1100.12099 | FOH/Gen - XFMRs etc // Set House Static Transfer Switch - STS-HSE-1A2 | 2026-10-01 → 2026-10-15 (+14d) | 2026-10-01 → 2026-10-15 (+14d) |  | 10d → 1d |  |
| DH1100.12105 | FOH/Gen - XFMRs etc // Set House UPS - UPS-HSE-1A2 | 2026-10-01 → 2026-10-15 (+14d) | 2026-10-01 → 2026-10-15 (+14d) |  | 10d → 1d |  |
| DH1100.12100 | FOH/Gen - XFMRs etc // Set House Static Transfer Switch - STS-HSE-1C | 2026-10-02 → 2026-10-16 (+14d) | 2026-10-02 → 2026-10-16 (+14d) |  | 10d → 1d |  |
| DH1100.12106 | FOH/Gen - XFMRs etc // Set House UPS - UPS-HSE-1C | 2026-10-02 → 2026-10-16 (+14d) | 2026-10-02 → 2026-10-16 (+14d) |  | 10d → 1d |  |
| 2 | **Commissioning & Start Up** | 2026-10-13 → 2026-10-26 (+13d) | 2026-12-11 → 2026-12-24 (+13d) |  |  |  |
| HSE-SYS-STU-1 | FOH/Commissioning & Start Up // L3 Start-Up | 2026-10-13 → 2026-10-26 (+13d) | 2026-10-26 → 2026-11-06 (+11d) |  | 5d → -4d |  |
| HSE-SYS-STU-2 | FOH/Commissioning & Start Up // L4 Cx | 2026-11-13 → 2026-11-27 (+14d) | 2026-12-04 → 2026-12-17 (+13d) |  | -7d → -16d |  |
| HSE-SYS-STU-16 | FOH/Commissioning & Start Up // FOH Clean & Punch | 2026-11-30 → 2026-12-04 (+4d) | 2026-11-30 → 2026-12-04 (+4d) |  | 2d → -2d |  |
| HSE-SYS-STU-3 | FOH/Commissioning & Start Up // L5 Cx (Completes Jan 01 2027) | 2026-12-07 → 2026-12-18 (+11d) | 2026-12-11 → 2026-12-24 (+13d) |  | -7d → -16d |  |
| 1 | **Back of House (BOH)** | 2026-07-24 → 2026-08-03 (+10d) | 2026-12-18 → 2027-01-04 (+17d) |  |  |  |
| 16 | **Priority Walls** | 2026-07-24 → 2026-08-03 (+10d) | 2026-11-02 → 2026-11-12 (+10d) |  |  |  |
| 1 | **Priority Rooms** | 2026-07-24 → 2026-08-03 (+10d) | 2026-11-02 → 2026-11-12 (+10d) |  |  |  |
| 15 | **House Elec 1000G15** | 2026-07-24 → 2026-08-03 (+10d) | 2026-11-02 → 2026-11-12 (+10d) |  |  |  |
| ADMIN.5506 | BOH/House Elec 1000G15 // Frame Priority Walls | 2026-07-24 A → 2026-08-03 A (+10d) |  |  |  |  |
| ADMIN.5509 | BOH/House Elec 1000G15 // Install MEPF Overhead Supports | 2026-07-31 A → 2026-08-05 A (+5d) |  |  |  |  |
| ADMIN.5508 | BOH/House Elec 1000G15 // Top Down Install of Sheetrock - Priority Walls | 2026-08-10 A → 2026-09-17 A (+38d) |  |  |  |  |
| ADMIN.5514 | BOH/House Elec 1000G15 // Tape and Finish Walls | 2026-10-19 → 2026-09-21 A (-28d) | 2026-10-21 → 2026-09-23 A (-28d) | 0% → 100% | 20d → none | ADMIN.5513 → ADMIN.5508 |
| ADMIN.5515 | BOH/House Elec 1000G15 // Final paint | 2026-10-22 → 2026-09-22 A (-30d) | 2026-10-23 → 2026-09-23 A (-30d) | 0% → 100% | 20d → none | ADMIN.6089 FF, ADMIN.5512, ADMIN.5514 → ADMIN.5514 FF |
| ADMIN.5510 | BOH/House Elec 1000G15 // MEPF Overhead Install |  | 2026-10-14 → 2026-10-27 (+13d) |  | 20d → 13d |  |
| ADMIN.6089 | BOH/House Elec 1000G15 // BMS & EPMS Rough In | 2026-10-16 → 2026-10-05 A (-11d) | 2026-10-19 → 2026-10-06 A (-13d) | 0% → 100% | 24d → none | ADMIN.5512 FF, ADMIN.5512 SS → ADMIN.5506 |
| ADMIN.5513 | BOH/House Elec 1000G15 // 1-Side & Finish Priority Walls | 2026-10-15 → 2026-10-08 A (-7d) | 2026-10-16 → 2026-10-28 (+12d) |  | 20d → 15d | ADMIN.5508, ADMIN.5510, ADMIN.5511 → ADMIN.5511, ADMIN.5510 FF+1d, ADMIN.5508 |
| ADMIN.5512 | BOH/House Elec 1000G15 // Install Fire Alarm and Security | 2026-10-15 → 2026-10-28 (+13d) | 2026-10-19 → 2026-10-30 (+11d) |  | 22d → 13d |  |
| ADMIN.5516 | BOH/House Elec 1000G15 // Install Flooring and Base | 2026-10-26 → 2026-11-04 (+9d) | 2026-10-28 → 2026-11-06 (+9d) |  | 20d → 13d | ADMIN.5515 → ADMIN.6249, ADMIN.5515 |
| ADMIN.5773 | BOH/House Elec 1000G15 // BOH - Room Ready to Receive Equipment | 2026-10-26 → 2026-11-04 (+9d) | 2026-10-26 → 2026-11-04 (+9d) |  | 24d → 17d | ADMIN.5515 → ADMIN.6249, ADMIN.5515 |
| ADMIN.5517 | BOH/House Elec 1000G15 // Install Trim-Out | 2026-10-29 → 2026-11-09 (+11d) | 2026-10-29 → 2026-11-09 (+11d) |  | 20d → 13d |  |
| ADMIN.5518 | BOH/House Elec 1000G15 // Install Doors and Hardware | 2026-10-30 → 2026-11-10 (+11d) | 2026-10-30 → 2026-11-10 (+11d) |  | 20d → 13d |  |
| ADMIN.5519 | BOH/House Elec 1000G15 // Finish & Clean | 2026-11-02 → 2026-11-12 (+10d) | 2026-11-02 → 2026-11-12 (+10d) |  | 20d → 13d |  |
| 10 | **UPS 1000G14** | 2026-07-29 → 2026-08-06 (+8d) | 2026-11-02 → 2026-11-12 (+10d) |  |  |  |
| ADMIN.5520 | BOH/UPS 1000G14 // Frame Priority Walls | 2026-07-29 A → 2026-08-06 A (+8d) |  |  |  |  |
| ADMIN.5521 | BOH/UPS 1000G14 // MEPF Layout of Overhead Supports | 2026-08-03 A → 2026-09-04 A (+32d) |  |  |  |  |
| ADMIN.5523 | BOH/UPS 1000G14 // Install MEPF Overhead Supports | 2026-08-05 A → 2026-09-17 A (+43d) |  |  |  |  |
| ADMIN.5522 | BOH/UPS 1000G14 // Top Down Install of Sheetrock - Priority Walls | 2026-08-13 A → 2026-09-21 A (+39d) |  |  |  |  |
| ADMIN.5524 | BOH/UPS 1000G14 // MEPF Overhead Install |  | 2026-10-14 → 2026-10-27 (+13d) |  | 20d → 13d |  |
| ADMIN.5528 | BOH/UPS 1000G14 // Tape and Finish Walls | 2026-10-19 → 2026-10-01 A (-18d) | 2026-10-21 → 2026-10-07 A (-14d) | 0% → 100% | 20d → none | ADMIN.5527 → ADMIN.5522 |
| ADMIN.6099 | BOH/UPS 1000G14 // BMS & EPMS Rough In | 2026-10-16 → 2026-10-05 A (-11d) | 2026-10-19 → 2026-10-06 A (-13d) | 0% → 100% | 24d → none | ADMIN.5526 FF, ADMIN.5526 SS → ADMIN.5520 |
| ADMIN.5527 | BOH/UPS 1000G14 // 1-Side & Finish Priority Walls | 2026-10-15 → 2026-10-08 A (-7d) | 2026-10-16 → 2026-10-27 (+11d) |  | 20d → 16d | ADMIN.5522, ADMIN.5524, ADMIN.5525 → ADMIN.5525, ADMIN.5524 FF, ADMIN.5522 |
| ADMIN.5526 | BOH/UPS 1000G14 // Install Fire Alarm and Security | 2026-10-15 → 2026-10-28 (+13d) | 2026-10-19 → 2026-10-30 (+11d) |  | 22d → 13d |  |
| ADMIN.5529 | BOH/UPS 1000G14 // Final paint | 2026-10-22 → 2026-11-02 (+11d) | 2026-10-23 → 2026-11-03 (+11d) |  | 20d → 13d | ADMIN.6099 FF, ADMIN.5526, ADMIN.5528 → ADMIN.5527, ADMIN.5528, ADMIN.5526, ADMIN.6099 FF |
| ADMIN.5530 | BOH/UPS 1000G14 // Install Flooring and Base | 2026-10-26 → 2026-11-04 (+9d) | 2026-10-28 → 2026-11-06 (+9d) |  | 20d → 13d |  |
| ADMIN.5774 | BOH/UPS 1000G14 // BOH - Room Ready to Receive Equipment | 2026-10-26 → 2026-11-04 (+9d) | 2026-10-26 → 2026-11-04 (+9d) |  | 24d → 17d |  |
| ADMIN.5531 | BOH/UPS 1000G14 // Install Trim-Out | 2026-10-29 → 2026-11-09 (+11d) | 2026-10-29 → 2026-11-09 (+11d) |  | 20d → 13d |  |
| ADMIN.5532 | BOH/UPS 1000G14 // Install Doors and Hardware | 2026-10-30 → 2026-11-10 (+11d) | 2026-10-30 → 2026-11-10 (+11d) |  | 20d → 13d |  |
| ADMIN.5533 | BOH/UPS 1000G14 // Finish & Clean | 2026-11-02 → 2026-11-12 (+10d) | 2026-11-02 → 2026-11-12 (+10d) |  | 20d → 13d |  |
| 9 | **Fire 1000G12** | 2026-08-03 → 2026-08-10 (+7d) | 2026-11-02 → 2026-11-12 (+10d) |  |  |  |
| ADMIN.5534 | BOH/Fire 1000G12 // Frame Priority Walls | 2026-08-03 A → 2026-08-10 A (+7d) |  |  |  |  |
| ADMIN.5535 | BOH/Fire 1000G12 // MEPF Layout of Overhead Supports | 2026-08-06 A → 2026-09-04 A (+29d) |  |  |  |  |
| ADMIN.5536 | BOH/Fire 1000G12 // Top Down Install of Sheetrock - Priority Walls | 2026-08-18 A → 2026-09-17 A (+30d) |  |  |  |  |
| ADMIN.5537 | BOH/Fire 1000G12 // Install MEPF Overhead Supports | 2026-08-10 A → 2026-09-17 A (+38d) |  |  |  |  |
| ADMIN.5538 | BOH/Fire 1000G12 // MEPF Overhead Install |  | 2026-10-14 → 2026-10-27 (+13d) |  | 20d → 13d |  |
| ADMIN.5542 | BOH/Fire 1000G12 // Tape and Finish Walls | 2026-10-19 → 2026-10-01 A (-18d) | 2026-10-21 → 2026-10-06 A (-15d) | 0% → 100% | 20d → none | ADMIN.5541 → ADMIN.5536 |
| ADMIN.6109 | BOH/Fire 1000G12 // BMS & EPMS Rough In | 2026-10-16 → 2026-10-05 A (-11d) | 2026-10-19 → 2026-10-06 A (-13d) | 0% → 100% | 24d → none | ADMIN.5540 FF, ADMIN.5540 SS → ADMIN.5534 |
| ADMIN.5541 | BOH/Fire 1000G12 // 1-Side & Finish Priority Walls | 2026-10-15 → 2026-10-08 A (-7d) | 2026-10-16 → 2026-10-27 (+11d) |  | 20d → 16d | ADMIN.5536, ADMIN.5538, ADMIN.5539 → ADMIN.5539, ADMIN.5538 FF, ADMIN.5536 |
| ADMIN.5540 | BOH/Fire 1000G12 // Install Fire Alarm and Security | 2026-10-15 → 2026-10-28 (+13d) | 2026-10-19 → 2026-10-30 (+11d) |  | 22d → 13d |  |

| ID | Task | Start | Finish | Complete | Total float | Predecessors |
| --- | --- | --- | --- | --- | --- | --- |
| ADMIN.5543 | BOH/Fire 1000G12 // Final paint | 2026-10-22 → 2026-11-02 (+11d) | 2026-10-23 → 2026-11-03 (+11d) |  | 20d → 13d | ADMIN.6109 FF, ADMIN.5540, ADMIN.5542 → ADMIN.5541, ADMIN.5542, ADMIN.5540, ADMIN.6109 FF |
| ADMIN.5544 | BOH/Fire 1000G12 // Install Flooring and Base | 2026-10-26 → 2026-11-04 (+9d) | 2026-10-28 → 2026-11-06 (+9d) |  | 20d → 13d |  |
| ADMIN.5775 | BOH/Fire 1000G12 // BOH - Room Ready to Receive Equipment | 2026-10-26 → 2026-11-04 (+9d) | 2026-10-26 → 2026-11-04 (+9d) |  | 24d → 17d |  |
| ADMIN.5545 | BOH/Fire 1000G12 // Install Trim-Out | 2026-10-29 → 2026-11-09 (+11d) | 2026-10-29 → 2026-11-09 (+11d) |  | 20d → 13d |  |
| ADMIN.5546 | BOH/Fire 1000G12 // Install Doors and Hardware | 2026-10-30 → 2026-11-10 (+11d) | 2026-10-30 → 2026-11-10 (+11d) |  | 20d → 13d |  |
| ADMIN.5547 | BOH/Fire 1000G12 // Finish & Clean | 2026-11-02 → 2026-11-12 (+10d) | 2026-11-02 → 2026-11-12 (+10d) |  | 20d → 13d |  |
| 3 | **MMR1B2** | 2026-08-06 → 2026-08-12 (+6d) | 2026-10-28 → 2026-11-03 (+6d) |  |  |  |
| ADMIN.5548 | BOH/MMR1B2 // Frame Priority Walls | 2026-08-06 A → 2026-08-12 A (+6d) |  |  |  |  |
| ADMIN.5549 | BOH/MMR1B2 // MEPF Layout of Overhead Supports | 2026-08-11 A → 2026-09-04 A (+24d) |  |  |  |  |
| ADMIN.5550 | BOH/MMR1B2 // Top Down Install of Sheetrock - Priority Walls | 2026-08-21 A → 2026-09-17 A (+27d) |  |  |  |  |
| ADMIN.5551 | BOH/MMR1B2 // Install MEPF Overhead Supports | 2026-08-13 A → 2026-09-17 A (+35d) |  |  |  |  |
| ADMIN.5552 | BOH/MMR1B2 // MEPF Overhead Install |  | 2026-10-08 → 2026-10-22 (+14d) |  | 23d → 19d |  |
| ADMIN.5556 | BOH/MMR1B2 // Tape and Finish Walls | 2026-10-14 → 2026-10-01 A (-13d) | 2026-10-16 → 2026-10-27 (+11d) |  | 23d → 19d | ADMIN.5555 → ADMIN.5554 FF |
| ADMIN.5557 | BOH/MMR1B2 // Final paint | 2026-10-19 → 2026-10-05 A (-14d) | 2026-10-20 → 2026-10-26 (+6d) |  | 23d → 19d | ADMIN.6119 FF, ADMIN.5554, ADMIN.5556 → ADMIN.5555 FF, ADMIN.5556 SS, ADMIN.6119 FF |
| ADMIN.6119 | BOH/MMR1B2 // BMS & EPMS Rough In | 2026-10-13 → 2026-10-05 A (-8d) | 2026-10-14 → 2026-10-06 A (-8d) | 0% → 100% | 27d → none | ADMIN.5554 FF, ADMIN.5554 SS → ADMIN.5548 |
| ADMIN.5555 | BOH/MMR1B2 // 1-Side & Finish Priority Walls | 2026-10-09 A | 2026-10-13 → 2026-10-22 (+9d) |  | 23d → 21d | ADMIN.5550, ADMIN.5552, ADMIN.5553 → ADMIN.5553, ADMIN.5552 FF, ADMIN.5550 |
| ADMIN.5554 | BOH/MMR1B2 // Install Fire Alarm and Security | 2026-10-09 → 2026-10-23 (+14d) | 2026-10-14 → 2026-10-27 (+13d) |  | 25d → 19d |  |
| ADMIN.5558 | BOH/MMR1B2 // Install Flooring and Base | 2026-10-21 → 2026-10-27 (+6d) | 2026-10-23 → 2026-10-29 (+6d) |  | 23d → 19d |  |
| ADMIN.5776 | BOH/MMR1B2 // BOH - Room Ready to Receive Equipment | 2026-10-21 → 2026-10-27 (+6d) | 2026-10-21 → 2026-10-27 (+6d) |  | 27d → 23d |  |
| ADMIN.5559 | BOH/MMR1B2 // Install Trim-Out | 2026-10-26 → 2026-10-30 (+4d) | 2026-10-26 → 2026-10-30 (+4d) |  | 23d → 19d |  |
| ADMIN.5560 | BOH/MMR1B2 // Install Doors and Hardware | 2026-10-27 → 2026-11-02 (+6d) | 2026-10-27 → 2026-11-02 (+6d) |  | 23d → 19d |  |
| ADMIN.5561 | BOH/MMR1B2 // Finish & Clean | 2026-10-28 → 2026-11-03 (+6d) | 2026-10-28 → 2026-11-03 (+6d) |  | 23d → 19d |  |
| 5 | **IDF 1000G7** | 2026-08-11 → 2026-08-14 (+3d) | 2026-10-29 → 2026-11-09 (+11d) |  |  |  |
| ADMIN.5562 | BOH/IDF 1000G7 // Frame Priority Walls | 2026-08-11 A → 2026-08-14 A (+3d) |  |  |  |  |
| ADMIN.5563 | BOH/IDF 1000G7 // MEPF Layout of Overhead Supports | 2026-08-14 A → 2026-09-04 A (+21d) |  |  |  |  |
| ADMIN.5565 | BOH/IDF 1000G7 // Install MEPF Overhead Supports | 2026-08-18 A → 2026-09-17 A (+30d) |  |  |  |  |
| ADMIN.5566 | BOH/IDF 1000G7 // MEPF Overhead Install |  | 2026-10-09 → 2026-10-23 (+14d) |  | 22d → 15d |  |
| ADMIN.5564 | BOH/IDF 1000G7 // Top Down Install of Sheetrock - Priority Walls | 2026-09-30 A | 2026-10-01 → 2026-10-08 A (+7d) | 0% → 100% | 28d → none |  |
| ADMIN.6129 | BOH/IDF 1000G7 // BMS & EPMS Rough In | 2026-10-14 → 2026-10-05 A (-9d) | 2026-10-15 → 2026-10-06 A (-9d) | 0% → 100% | 26d → none | ADMIN.5568 FF, ADMIN.5568 SS → ADMIN.5562 |
| ADMIN.5569 | BOH/IDF 1000G7 // 1-Side & Finish Priority Walls | 2026-10-13 → 2026-10-09 A (-4d) | 2026-10-14 → 2026-10-13 A (-1d) | 0% → 100% | 22d → none | ADMIN.5564, ADMIN.5566, ADMIN.5567 → ADMIN.5567, ADMIN.5564 |
| ADMIN.5570 | BOH/IDF 1000G7 // Tape and Finish Walls | 2026-10-15 → 2026-10-09 A (-6d) | 2026-10-19 → 2026-10-16 (-3d) |  | 22d → 23d | ADMIN.5569 → ADMIN.5564 SS+2d |
| ADMIN.5568 | BOH/IDF 1000G7 // Install Fire Alarm and Security | 2026-10-13 → 2026-10-26 (+13d) | 2026-10-15 → 2026-10-28 (+13d) |  | 24d → 15d |  |
| ADMIN.5571 | BOH/IDF 1000G7 // Final paint | 2026-10-20 → 2026-10-29 (+9d) | 2026-10-21 → 2026-10-30 (+9d) |  | 22d → 15d | ADMIN.6129 FF, ADMIN.5568, ADMIN.5570 → ADMIN.5569, ADMIN.5570, ADMIN.5568, ADMIN.6129 FF |
| ADMIN.5572 | BOH/IDF 1000G7 // Install Flooring and Base | 2026-10-22 → 2026-11-02 (+11d) | 2026-10-26 → 2026-11-04 (+9d) |  | 22d → 15d |  |
| ADMIN.5777 | BOH/IDF 1000G7 // BOH - Room Ready to Receive Equipment | 2026-10-22 → 2026-11-02 (+11d) | 2026-10-22 → 2026-11-02 (+11d) |  | 26d → 19d |  |
| ADMIN.5573 | BOH/IDF 1000G7 // Install Trim-Out | 2026-10-27 → 2026-11-05 (+9d) | 2026-10-27 → 2026-11-05 (+9d) |  | 22d → 15d |  |
| ADMIN.5574 | BOH/IDF 1000G7 // Install Doors and Hardware | 2026-10-28 → 2026-11-06 (+9d) | 2026-10-28 → 2026-11-06 (+9d) |  | 22d → 15d |  |
| ADMIN.5575 | BOH/IDF 1000G7 // Finish & Clean | 2026-10-29 → 2026-11-09 (+11d) | 2026-10-29 → 2026-11-09 (+11d) |  | 22d → 15d |  |
| 21 | **Other Rooms** |  | 2026-12-09 → 2026-12-22 (+13d) |  |  |  |
| 11 | **ELI 1000G13** |  | 2026-12-01 → 2026-11-17 (-14d) |  |  |  |
| ADMIN.5645 | BOH/ELI 1000G13 // MEPF Layout of Overhead Supports | 2026-10-15 → 2026-10-01 A (-14d) | 2026-10-26 → 2026-10-06 A (-20d) | 0% → 100% | 1d → none | ADMIN.5644, A5697 → ADMIN.5644 |
| ADMIN.5647 | BOH/ELI 1000G13 // Install MEPF Overhead Supports | 2026-10-19 → 2026-10-05 A (-14d) | 2026-10-20 → 2026-10-07 A (-13d) | 0% → 100% | 1d → none |  |
| ADMIN.6139 | BOH/ELI 1000G13 // BMS & EPMS Rough In | 2026-11-10 → 2026-10-05 A (-36d) | 2026-11-12 → 2026-10-06 A (-37d) | 0% → 100% | 7d → none | ADMIN.5650 FF, ADMIN.5650 SS → ADMIN.5644 |
| ADMIN.5648 | BOH/ELI 1000G13 // MEPF Overhead Install | 2026-10-26 → 2026-10-09 A (-17d) | 2026-11-06 → 2026-10-27 (-10d) |  | 1d → 10d |  |
| ADMIN.5646 | BOH/ELI 1000G13 // Top Down Install of Sheetrock - Priority Walls | 2026-10-27 → 2026-10-13 A (-14d) | 2026-10-28 → 2026-10-15 (-13d) |  | 10d → 19d |  |
| ADMIN.5649 | BOH/ELI 1000G13 // MEPF In-wall rough-in | 2026-11-09 → 2026-10-28 (-12d) | 2026-11-10 → 2026-10-29 (-12d) |  | 1d → 10d |  |
| ADMIN.5650 | BOH/ELI 1000G13 // Install Fire Alarm and Security | 2026-11-09 → 2026-10-28 (-12d) | 2026-11-12 → 2026-10-30 (-13d) |  | 5d → 13d |  |
| ADMIN.5651 | BOH/ELI 1000G13 // 1-Side & Finish Priority Walls | 2026-11-12 → 2026-10-29 (-14d) | 2026-11-13 → 2026-10-30 (-14d) |  | 1d → 10d | ADMIN.5646, ADMIN.5648, ADMIN.5649 → ADMIN.5649 FF+1d, ADMIN.5648 FF, ADMIN.5646 |
| ADMIN.5652 | BOH/ELI 1000G13 // Tape and Finish Walls | 2026-11-16 → 2026-11-02 (-14d) | 2026-11-18 → 2026-11-04 (-14d) |  | 1d → 10d |  |
| ADMIN.5653 | BOH/ELI 1000G13 // Final paint | 2026-11-19 → 2026-11-05 (-14d) | 2026-11-20 → 2026-11-06 (-14d) |  | 1d → 10d |  |
| ADMIN.5654 | BOH/ELI 1000G13 // Install Flooring and Base | 2026-11-23 → 2026-11-09 (-14d) | 2026-11-25 → 2026-11-12 (-13d) |  | 1d → 10d |  |
| ADMIN.5778 | BOH/ELI 1000G13 // BOH - Room Ready to Receive Equipment | 2026-11-23 → 2026-11-09 (-14d) | 2026-11-23 → 2026-11-09 (-14d) |  | 5d → 14d | ADMIN.5653 → A5697, ADMIN.5653 |
| ADMIN.5655 | BOH/ELI 1000G13 // Install Trim-Out | 2026-11-27 → 2026-11-13 (-14d) | 2026-11-27 → 2026-11-13 (-14d) |  | 1d → 10d |  |
| ADMIN.5656 | BOH/ELI 1000G13 // Install Doors and Hardware | 2026-11-30 → 2026-11-16 (-14d) | 2026-11-30 → 2026-11-16 (-14d) |  | 1d → 10d |  |
| ADMIN.5657 | BOH/ELI 1000G13 // Finish & Clean | 2026-12-01 → 2026-11-17 (-14d) | 2026-12-01 → 2026-11-17 (-14d) |  | 1d → 10d |  |
| 12 | **Flex 1000G11** | 2026-08-19 → 2026-09-01 (+13d) | 2026-11-04 → 2026-11-12 (+8d) |  |  |  |
| ADMIN.5658 | BOH/Flex 1000G11 // Frame Priority Walls | 2026-08-19 A → 2026-09-01 A (+13d) |  |  |  |  |
| ADMIN.5659 | BOH/Flex 1000G11 // MEPF Layout of Overhead Supports | 2026-08-24 A → 2026-09-09 A (+16d) |  |  |  |  |
| ADMIN.5660 | BOH/Flex 1000G11 // Top Down Install of Sheetrock - Priority Walls | 2026-09-03 A → 2026-09-21 A (+18d) |  |  |  |  |
| ADMIN.5661 | BOH/Flex 1000G11 // Install MEPF Overhead Supports | 2026-08-26 A → 2026-09-21 A (+26d) |  |  |  |  |
| ADMIN.5662 | BOH/Flex 1000G11 // MEPF Overhead Install |  | 2026-10-14 → 2026-10-27 (+13d) |  | 18d → 13d |  |
| ADMIN.6149 | BOH/Flex 1000G11 // BMS & EPMS Rough In | 2026-10-16 → 2026-10-05 A (-11d) | 2026-10-19 → 2026-10-06 A (-13d) | 0% → 100% | 24d → none | ADMIN.5664 FF, ADMIN.5664 SS → ADMIN.5658 |
| ADMIN.5663 | BOH/Flex 1000G11 // MEPF In-wall rough-in | 2026-10-15 → 2026-10-06 A (-9d) | 2026-10-16 → 2026-10-07 A (-9d) | 0% → 100% | 18d → none | ADMIN.5662 → ADMIN.5658 |
| ADMIN.5665 | BOH/Flex 1000G11 // 1-Side & Finish Priority Walls | 2026-10-19 → 2026-10-12 A (-7d) | 2026-10-20 → 2026-10-15 (-5d) |  | 18d → 24d | ADMIN.5660, ADMIN.5662, ADMIN.5663 → ADMIN.5663, ADMIN.5660 |
| ADMIN.5666 | BOH/Flex 1000G11 // Tape and Finish Walls | 2026-10-21 → 2026-10-13 A (-8d) | 2026-10-23 → 2026-10-16 (-7d) |  | 18d → 23d | ADMIN.5665 → ADMIN.5660 |
| ADMIN.5664 | BOH/Flex 1000G11 // Install Fire Alarm and Security | 2026-10-15 → 2026-10-28 (+13d) | 2026-10-19 → 2026-10-30 (+11d) |  | 22d → 13d |  |
| ADMIN.5667 | BOH/Flex 1000G11 // Final paint | 2026-10-26 → 2026-11-02 (+7d) | 2026-10-27 → 2026-11-03 (+7d) |  | 18d → 13d | ADMIN.6149 FF, ADMIN.5664, ADMIN.5666 → ADMIN.5665, ADMIN.5666, ADMIN.5664, ADMIN.6149 FF |
| ADMIN.5668 | BOH/Flex 1000G11 // Install Flooring and Base | 2026-10-28 → 2026-11-04 (+7d) | 2026-10-30 → 2026-11-06 (+7d) |  | 18d → 13d |  |
| ADMIN.5780 | BOH/Flex 1000G11 // BOH - Room Ready to Receive Equipment | 2026-10-28 → 2026-11-04 (+7d) | 2026-10-28 → 2026-11-04 (+7d) |  | 22d → 17d |  |
| ADMIN.5669 | BOH/Flex 1000G11 // Install Trim-Out | 2026-11-02 → 2026-11-09 (+7d) | 2026-11-02 → 2026-11-09 (+7d) |  | 18d → 13d |  |

| ID | Task | Start | Finish | Complete | Total float | Predecessors |
| --- | --- | --- | --- | --- | --- | --- |
| ADMIN.5670 | BOH/Flex 1000G11 // Install Doors and Hardware | 2026-11-03 → 2026-11-10 (+7d) | 2026-11-03 → 2026-11-10 (+7d) |  | 18d → 13d |  |
| ADMIN.5671 | BOH/Flex 1000G11 // Finish & Clean | 2026-11-04 → 2026-11-12 (+8d) | 2026-11-04 → 2026-11-12 (+8d) |  | 18d → 13d |  |
| 14 | **Roof 1000G10** | 2026-08-24 → 2026-09-08 (+15d) | 2026-11-04 → 2026-11-12 (+8d) |  |  |  |
| ADMIN.5672 | BOH/Roof 1000G10 // Frame Priority Walls | 2026-08-24 A → 2026-09-08 A (+15d) |  |  |  |  |
| ADMIN.5673 | BOH/Roof 1000G10 // MEPF Layout of Overhead Supports | 2026-08-27 A → 2026-09-11 A (+15d) |  |  |  |  |
| ADMIN.5675 | BOH/Roof 1000G10 // Install MEPF Overhead Supports | 2026-08-31 A → 2026-09-22 A (+22d) |  |  |  |  |
| ADMIN.5674 | BOH/Roof 1000G10 // Top Down Install of Sheetrock - Priority Walls |  | 2026-09-30 → 2026-10-08 A (+8d) |  | 30d → none |  |
| ADMIN.5676 | BOH/Roof 1000G10 // MEPF Overhead Install |  | 2026-10-14 → 2026-10-27 (+13d) |  | 18d → 13d |  |
| ADMIN.6159 | BOH/Roof 1000G10 // BMS & EPMS Rough In | 2026-10-16 → 2026-10-05 A (-11d) | 2026-10-19 → 2026-10-06 A (-13d) | 0% → 100% | 24d → none | ADMIN.5678 FF, ADMIN.5678 SS → ADMIN.5672 |
| ADMIN.5677 | BOH/Roof 1000G10 // MEPF In-wall rough-in | 2026-10-15 → 2026-10-08 A (-7d) | 2026-10-16 → 2026-10-09 A (-7d) | 0% → 100% | 18d → none | ADMIN.5676 → ADMIN.5672 FF |
| ADMIN.5680 | BOH/Roof 1000G10 // Tape and Finish Walls | 2026-10-21 → 2026-10-09 A (-12d) | 2026-10-23 → 2026-10-13 A (-10d) | 0% → 100% | 18d → none | ADMIN.5679 → ADMIN.5674 |
| ADMIN.5679 | BOH/Roof 1000G10 // 1-Side & Finish Priority Walls | 2026-10-19 → 2026-10-13 A (-6d) | 2026-10-20 → 2026-10-15 (-5d) |  | 18d → 24d | ADMIN.5674, ADMIN.5676, ADMIN.5677 → ADMIN.5677, ADMIN.5674 |
| ADMIN.5678 | BOH/Roof 1000G10 // Install Fire Alarm and Security | 2026-10-15 → 2026-10-28 (+13d) | 2026-10-19 → 2026-10-30 (+11d) |  | 22d → 13d |  |
| ADMIN.5681 | BOH/Roof 1000G10 // Final paint | 2026-10-26 → 2026-11-02 (+7d) | 2026-10-27 → 2026-11-03 (+7d) |  | 18d → 13d | ADMIN.6159 FF, ADMIN.5678, ADMIN.5680 → ADMIN.5679, ADMIN.5680, ADMIN.5678, ADMIN.6159 FF |
| ADMIN.5682 | BOH/Roof 1000G10 // Install Flooring and Base | 2026-10-28 → 2026-11-04 (+7d) | 2026-10-30 → 2026-11-06 (+7d) |  | 18d → 13d |  |
| ADMIN.5781 | BOH/Roof 1000G10 // BOH - Room Ready to Receive Equipment | 2026-10-28 → 2026-11-04 (+7d) | 2026-10-28 → 2026-11-04 (+7d) |  | 22d → 17d |  |
| ADMIN.5683 | BOH/Roof 1000G10 // Install Trim-Out | 2026-11-02 → 2026-11-09 (+7d) | 2026-11-02 → 2026-11-09 (+7d) |  | 18d → 13d |  |
| ADMIN.5684 | BOH/Roof 1000G10 // Install Doors and Hardware | 2026-11-03 → 2026-11-10 (+7d) | 2026-11-03 → 2026-11-10 (+7d) |  | 18d → 13d |  |
| ADMIN.5685 | BOH/Roof 1000G10 // Finish & Clean | 2026-11-04 → 2026-11-12 (+8d) | 2026-11-04 → 2026-11-12 (+8d) |  | 18d → 13d |  |
| 13 | **Corridor 1000H** | 2026-08-27 → 2026-09-14 (+18d) | 2026-11-04 → 2026-11-16 (+12d) |  |  |  |
| ADMIN.5687 | BOH/Corridor 1000H // MEPF Layout of Overhead Supports | 2026-09-01 A → 2026-09-14 A (+13d) |  |  |  |  |
| ADMIN.5686 | BOH/Corridor 1000H // Frame Priority Walls | 2026-08-27 A → 2026-09-15 A (+19d) |  |  |  |  |
| ADMIN.5689 | BOH/Corridor 1000H // Install MEPF Overhead Supports | 2026-09-03 A → 2026-09-22 A (+19d) |  |  |  |  |
| ADMIN.5688 | BOH/Corridor 1000H // Top Down Install of Sheetrock - Priority Walls |  | 2026-10-01 → 2026-10-09 A (+8d) | 0% → 100% | 28d → none |  |
| ADMIN.5690 | BOH/Corridor 1000H // MEPF Overhead Install |  | 2026-10-14 → 2026-10-27 (+13d) |  | 18d → 11d |  |
| ADMIN.6169 | BOH/Corridor 1000H // BMS & EPMS Rough In | 2026-10-16 → 2026-10-05 A (-11d) | 2026-10-19 → 2026-10-14 (-5d) | 0% → 100% | 24d → 28d | ADMIN.5692 FF, ADMIN.5692 SS → ADMIN.5686 |
| ADMIN.5691 | BOH/Corridor 1000H // MEPF In-wall rough-in | 2026-10-15 → 2026-10-09 A (-6d) | 2026-10-16 → 2026-10-15 (-1d) |  | 18d → 19d | ADMIN.5690 → ADMIN.5686 |
| ADMIN.5692 | BOH/Corridor 1000H // Install Fire Alarm and Security | 2026-10-15 → 2026-10-28 (+13d) | 2026-10-19 → 2026-10-30 (+11d) |  | 22d → 13d |  |
| ADMIN.5693 | BOH/Corridor 1000H // 1-Side & Finish Priority Walls | 2026-10-19 → 2026-10-28 (+9d) | 2026-10-20 → 2026-10-29 (+9d) |  | 18d → 11d |  |
| ADMIN.5694 | BOH/Corridor 1000H // Tape and Finish Walls | 2026-10-21 → 2026-10-30 (+9d) | 2026-10-23 → 2026-11-03 (+11d) |  | 18d → 11d |  |
| ADMIN.5695 | BOH/Corridor 1000H // Final paint | 2026-10-26 → 2026-11-04 (+9d) | 2026-10-27 → 2026-11-05 (+9d) |  | 18d → 11d |  |
| ADMIN.5696 | BOH/Corridor 1000H // Install Flooring and Base | 2026-10-28 → 2026-11-06 (+9d) | 2026-10-30 → 2026-11-10 (+11d) |  | 18d → 11d |  |
| ADMIN.5782 | BOH/Corridor 1000H // BOH - Room Ready to Receive Equipment | 2026-10-28 → 2026-11-06 (+9d) | 2026-10-28 → 2026-11-06 (+9d) |  | 22d → 15d |  |
| ADMIN.5697 | BOH/Corridor 1000H // Install Trim-Out | 2026-11-02 → 2026-11-12 (+10d) | 2026-11-02 → 2026-11-12 (+10d) |  | 18d → 11d |  |
| ADMIN.5698 | BOH/Corridor 1000H // Install Doors and Hardware | 2026-11-03 → 2026-11-13 (+10d) | 2026-11-03 → 2026-11-13 (+10d) |  | 18d → 11d |  |
| ADMIN.5699 | BOH/Corridor 1000H // Finish & Clean | 2026-11-04 → 2026-11-16 (+12d) | 2026-11-04 → 2026-11-16 (+12d) |  | 18d → 11d |  |
| 1 | **EF2R 1000G9** | 2026-09-01 → 2026-09-14 (+13d) | 2026-11-04 → 2026-11-12 (+8d) |  |  |  |
| ADMIN.5700 | BOH/EF2R 1000G9 // Frame Priority Walls | 2026-09-01 A → 2026-09-18 A (+17d) |  |  |  |  |
| ADMIN.5703 | BOH/EF2R 1000G9 // Install MEPF Overhead Supports | 2026-09-09 A → 2026-09-22 A (+13d) |  |  |  |  |
| ADMIN.5702 | BOH/EF2R 1000G9 // Top Down Install of Sheetrock - Priority Walls |  | 2026-10-01 → 2026-10-09 A (+8d) | 0% → 100% | 28d → none |  |
| ADMIN.5704 | BOH/EF2R 1000G9 // MEPF Overhead Install |  | 2026-10-14 → 2026-10-27 (+13d) |  | 18d → 13d |  |
| ADMIN.6179 | BOH/EF2R 1000G9 // BMS & EPMS Rough In | 2026-10-16 → 2026-10-08 A (-8d) | 2026-10-19 → 2026-10-09 A (-10d) | 0% → 100% | 24d → none | ADMIN.5706 FF, ADMIN.5706 SS → ADMIN.5700 |
| ADMIN.5705 | BOH/EF2R 1000G9 // MEPF In-wall rough-in | 2026-10-15 → 2026-10-12 A (-3d) | 2026-10-16 → 2026-10-13 A (-3d) | 0% → 100% | 18d → none | ADMIN.5704 → ADMIN.5700 |
| ADMIN.5707 | BOH/EF2R 1000G9 // 1-Side & Finish Priority Walls | 2026-10-19 → 2026-10-13 A (-6d) | 2026-10-20 → 2026-10-15 (-5d) |  | 18d → 21d | ADMIN.5702, ADMIN.5704, ADMIN.5705 → ADMIN.5705, ADMIN.5702 |
| ADMIN.5708 | BOH/EF2R 1000G9 // Tape and Finish Walls | 2026-10-21 → 2026-10-16 (-5d) | 2026-10-23 → 2026-10-20 (-3d) |  | 18d → 21d |  |
| ADMIN.5706 | BOH/EF2R 1000G9 // Install Fire Alarm and Security | 2026-10-15 → 2026-10-28 (+13d) | 2026-10-19 → 2026-10-30 (+11d) |  | 22d → 13d |  |
| ADMIN.5709 | BOH/EF2R 1000G9 // Final paint | 2026-10-26 → 2026-11-02 (+7d) | 2026-10-27 → 2026-11-03 (+7d) |  | 18d → 13d |  |
| ADMIN.5710 | BOH/EF2R 1000G9 // Install Flooring and Base | 2026-10-28 → 2026-11-04 (+7d) | 2026-10-30 → 2026-11-06 (+7d) |  | 18d → 13d |  |
| ADMIN.5783 | BOH/EF2R 1000G9 // BOH - Room Ready to Receive Equipment | 2026-10-28 → 2026-11-04 (+7d) | 2026-10-28 → 2026-11-04 (+7d) |  | 22d → 17d |  |
| ADMIN.5711 | BOH/EF2R 1000G9 // Install Trim-Out | 2026-11-02 → 2026-11-09 (+7d) | 2026-11-02 → 2026-11-09 (+7d) |  | 18d → 13d |  |
| ADMIN.5712 | BOH/EF2R 1000G9 // Install Doors and Hardware | 2026-11-03 → 2026-11-10 (+7d) | 2026-11-03 → 2026-11-10 (+7d) |  | 18d → 13d |  |
| ADMIN.5713 | BOH/EF2R 1000G9 // Finish & Clean | 2026-11-04 → 2026-11-12 (+8d) | 2026-11-04 → 2026-11-12 (+8d) |  | 18d → 13d |  |
| 2 | **RR 1025B/1025C/1025D** | 2026-09-04 → 2026-09-15 (+11d) | 2026-11-04 → 2026-11-18 (+14d) |  |  |  |
| ADMIN.5627 | BOH/RR 1025B-1025C-1025D // Frame Walls | 2026-09-04 A → 2026-09-22 A (+18d) |  |  |  |  |
| ADMIN.5630 | BOH/RR 1025B-1025C-1025D // Install MEPF Overhead Supports | 2026-09-14 A → 2026-09-23 A (+9d) |  |  |  |  |
| ADMIN.5629 | BOH/RR 1025B-1025C-1025D // Top Down Install of Sheetrock - Priority Walls |  | 2026-10-01 → 2026-10-09 A (+8d) | 0% → 100% | 28d → none |  |
| ADMIN.5631 | BOH/RR 1025B-1025C-1025D // MEPF Overhead Install |  | 2026-10-14 → 2026-10-27 (+13d) |  | 18d → 9d |  |
| ADMIN.6189 | BOH/RR 1025B-1025C-1025D // BMS & EPMS Rough In | 2026-10-16 → 2026-10-14 (-2d) | 2026-10-19 → 2026-10-15 (-4d) |  | 24d → 26d | ADMIN.5633 FF, ADMIN.5633 SS → ADMIN.5627 |
| ADMIN.5632 | BOH/RR 1025B-1025C-1025D // MEPF In-wall rough-in | 2026-10-15 → 2026-10-28 (+13d) | 2026-10-16 → 2026-10-29 (+13d) |  | 18d → 9d |  |
| ADMIN.5633 | BOH/RR 1025B-1025C-1025D // Install Fire Alarm and Security | 2026-10-15 → 2026-10-28 (+13d) | 2026-10-19 → 2026-10-30 (+11d) |  | 22d → 13d |  |
| ADMIN.5634 | BOH/RR 1025B-1025C-1025D // 1-Side & Finish Priority Walls | 2026-10-19 → 2026-10-30 (+11d) | 2026-10-20 → 2026-11-02 (+13d) |  | 18d → 9d |  |
| ADMIN.5635 | BOH/RR 1025B-1025C-1025D // Tape and Finish Walls | 2026-10-21 → 2026-11-03 (+13d) | 2026-10-23 → 2026-11-05 (+13d) |  | 18d → 9d |  |
| ADMIN.5636 | BOH/RR 1025B-1025C-1025D // Install Ceiling grid | 2026-10-21 → 2026-11-03 (+13d) | 2026-10-26 → 2026-11-06 (+11d) |  | 18d → 9d |  |
| ADMIN.5637 | BOH/RR 1025B-1025C-1025D // Final paint | 2026-10-26 → 2026-11-06 (+11d) | 2026-10-27 → 2026-11-09 (+13d) |  | 18d → 9d |  |
| ADMIN.5638 | BOH/RR 1025B-1025C-1025D // Hang Hard-Lid Ceiling | 2026-10-27 → 2026-11-09 (+13d) | 2026-10-28 → 2026-11-10 (+13d) |  | 18d → 9d |  |
| ADMIN.5639 | BOH/RR 1025B-1025C-1025D // Install Flooring and Base | 2026-10-28 → 2026-11-10 (+13d) | 2026-10-30 → 2026-11-13 (+14d) |  | 18d → 9d |  |
| ADMIN.5640 | BOH/RR 1025B-1025C-1025D // Hang / drop Ceiling trims | 2026-10-29 → 2026-11-12 (+14d) | 2026-10-30 → 2026-11-13 (+14d) |  | 18d → 9d |  |
| ADMIN.5641 | BOH/RR 1025B-1025C-1025D // Install Trim-Out | 2026-11-02 → 2026-11-16 (+14d) | 2026-11-02 → 2026-11-16 (+14d) |  | 18d → 9d |  |
| ADMIN.5784 | BOH/RR 1025B-1025C-1025D // BOH - Room Ready to Receive Equipment | 2026-11-02 → 2026-11-16 (+14d) | 2026-11-02 → 2026-11-16 (+14d) |  | 19d → 10d |  |
| ADMIN.5642 | BOH/RR 1025B-1025C-1025D // Install Doors and Hardware | 2026-11-03 → 2026-11-17 (+14d) | 2026-11-03 → 2026-11-17 (+14d) |  | 18d → 9d |  |

| ID | Task | Start | Finish | Complete | Total float | Predecessors |
| --- | --- | --- | --- | --- | --- | --- |
| ADMIN.5643 | BOH/RR 1025B-1025C-1025D // Finish & Clean | 2026-11-04 → 2026-11-18 (+14d) | 2026-11-04 → 2026-11-18 (+14d) |  | 18d → 9d |  |
| 3 | **Offices 1025E/1052F/1025G** | 2026-09-10 → 2026-09-22 (+12d) | 2026-11-09 → 2026-11-16 (+7d) |  |  |  |
| ADMIN.5613 | BOH/1025E-1052F-1025G // Frame Walls | 2026-09-10 A → 2026-09-22 A (+12d) |  |  |  |  |
| ADMIN.5612 | BOH/1025E-1052F-1025G // MEPF Layout of Overhead Supports |  | 2026-10-09 → 2026-10-08 A (-1d) | 0% → 100% | 15d → none |  |
| ADMIN.5610 | BOH/1025E-1052F-1025G // Install MEPF Overhead Supports |  | 2026-10-01 → 2026-10-08 A (+7d) | 0% → 100% | 15d → none |  |
| ADMIN.5620 | BOH/1025E-1052F-1025G // Top Down Install of Sheetrock - Priority Walls |  | 2026-10-01 → 2026-10-09 A (+8d) | 0% → 100% | 28d → none |  |
| ADMIN.5611 | BOH/1025E-1052F-1025G // MEPF Overhead Install | 2026-10-05 → 2026-10-08 A (+3d) | 2026-10-19 → 2026-10-27 (+8d) |  | 15d → 11d |  |
| ADMIN.6199 | BOH/1025E-1052F-1025G // BMS & EPMS Rough In | 2026-10-21 → 2026-10-08 A (-13d) | 2026-10-22 → 2026-10-15 (-7d) |  | 21d → 26d | ADMIN.5617 FF, ADMIN.5617 SS → ADMIN.5613 |
| ADMIN.5623 | BOH/1025E-1052F-1025G // MEPF In-wall rough-in | 2026-10-20 → 2026-10-13 A (-7d) | 2026-10-21 → 2026-10-15 (-6d) |  | 15d → 19d | ADMIN.5611 → ADMIN.5613 |
| ADMIN.5617 | BOH/1025E-1052F-1025G // Install Fire Alarm and Security | 2026-10-20 → 2026-10-28 (+8d) | 2026-10-22 → 2026-10-30 (+8d) |  | 19d → 13d |  |
| ADMIN.5622 | BOH/1025E-1052F-1025G // 1-Side & Finish Priority Walls | 2026-10-22 → 2026-10-28 (+6d) | 2026-10-23 → 2026-10-29 (+6d) |  | 15d → 11d |  |
| ADMIN.5621 | BOH/1025E-1052F-1025G // Tape and Finish Walls | 2026-10-26 → 2026-10-30 (+4d) | 2026-10-28 → 2026-11-03 (+6d) |  | 15d → 11d |  |
| ADMIN.5624 | BOH/1025E-1052F-1025G // Install Ceiling grid | 2026-10-26 → 2026-10-30 (+4d) | 2026-10-29 → 2026-11-04 (+6d) |  | 15d → 11d |  |
| ADMIN.5614 | BOH/1025E-1052F-1025G // Final paint | 2026-10-29 → 2026-11-04 (+6d) | 2026-10-30 → 2026-11-05 (+6d) |  | 15d → 11d |  |
| ADMIN.5625 | BOH/1025E-1052F-1025G // Hang hard-lid ceiling | 2026-10-30 → 2026-11-05 (+6d) | 2026-11-02 → 2026-11-06 (+4d) |  | 15d → 11d |  |
| ADMIN.5615 | BOH/1025E-1052F-1025G // Install Flooring and Base | 2026-11-02 → 2026-11-06 (+4d) | 2026-11-04 → 2026-11-10 (+6d) |  | 15d → 11d |  |
| ADMIN.5626 | BOH/1025E-1052F-1025G // Hang / drop Ceiling trims | 2026-11-03 → 2026-11-09 (+6d) | 2026-11-04 → 2026-11-10 (+6d) |  | 15d → 11d |  |
| ADMIN.5616 | BOH/1025E-1052F-1025G // Install Trim-Out | 2026-11-05 → 2026-11-12 (+7d) | 2026-11-05 → 2026-11-12 (+7d) |  | 15d → 11d |  |
| ADMIN.5785 | BOH/1025E-1052F-1025G // BOH - Room Ready to Receive Equipment | 2026-11-05 → 2026-11-12 (+7d) | 2026-11-05 → 2026-11-12 (+7d) |  | 16d → 12d |  |
| ADMIN.5619 | BOH/1025E-1052F-1025G // Install Doors and Hardware | 2026-11-06 → 2026-11-13 (+7d) | 2026-11-06 → 2026-11-13 (+7d) |  | 15d → 11d |  |
| ADMIN.5618 | BOH/1025E-1052F-1025G // Finish & Clean | 2026-11-09 → 2026-11-16 (+7d) | 2026-11-09 → 2026-11-16 (+7d) |  | 15d → 11d |  |
| 4 | **Break 1025A** | 2026-09-15 → 2026-09-21 (+6d) | 2026-11-09 → 2026-11-18 (+9d) |  |  |  |
| ADMIN.5593 | BOH/Break 1025A // Frame Walls | 2026-09-15 A → 2026-09-21 A (+6d) |  |  |  |  |
| ADMIN.5594 | BOH/Break 1025A // MEPF Layout of Overhead Supports |  | 2026-10-09 → 2026-10-08 A (-1d) | 0% → 100% | 15d → none |  |
| ADMIN.5595 | BOH/Break 1025A // Top Down Install of Sheetrock - Priority Walls |  | 2026-10-01 → 2026-10-09 A (+8d) | 0% → 100% | 28d → none |  |
| ADMIN.5596 | BOH/Break 1025A // Install MEPF Overhead Supports |  | 2026-10-01 → 2026-10-09 A (+8d) | 0% → 100% | 15d → none |  |
| ADMIN.5597 | BOH/Break 1025A // MEPF Overhead Install | 2026-10-05 → 2026-10-14 (+9d) | 2026-10-19 → 2026-10-27 (+8d) |  | 15d → 9d |  |
| ADMIN.6209 | BOH/Break 1025A // BMS & EPMS Rough In | 2026-10-21 → 2026-10-14 (-7d) | 2026-10-22 → 2026-10-15 (-7d) |  | 21d → 26d | ADMIN.5599 FF, ADMIN.5599 SS → ADMIN.5593 |
| ADMIN.5598 | BOH/Break 1025A // MEPF In-wall rough-in | 2026-10-20 → 2026-10-28 (+8d) | 2026-10-21 → 2026-10-29 (+8d) |  | 15d → 9d |  |
| ADMIN.5599 | BOH/Break 1025A // Install Fire Alarm and Security | 2026-10-20 → 2026-10-28 (+8d) | 2026-10-22 → 2026-10-30 (+8d) |  | 19d → 13d |  |
| ADMIN.5600 | BOH/Break 1025A // 1-Side & Finish Priority Walls | 2026-10-22 → 2026-10-30 (+8d) | 2026-10-23 → 2026-11-02 (+10d) |  | 15d → 9d |  |
| ADMIN.5601 | BOH/Break 1025A // Tape and Finish Walls | 2026-10-26 → 2026-11-03 (+8d) | 2026-10-28 → 2026-11-05 (+8d) |  | 15d → 9d |  |
| ADMIN.5602 | BOH/Break 1025A // Install Ceiling grid | 2026-10-26 → 2026-11-03 (+8d) | 2026-10-29 → 2026-11-06 (+8d) |  | 15d → 9d |  |
| ADMIN.5603 | BOH/Break 1025A // Final paint | 2026-10-29 → 2026-11-06 (+8d) | 2026-10-30 → 2026-11-09 (+10d) |  | 15d → 9d |  |
| ADMIN.5604 | BOH/Break 1025A // Hang hard-lid ceiling | 2026-10-30 → 2026-11-09 (+10d) | 2026-11-02 → 2026-11-10 (+8d) |  | 15d → 9d |  |
| ADMIN.5605 | BOH/Break 1025A // Install Flooring and Base | 2026-11-02 → 2026-11-10 (+8d) | 2026-11-04 → 2026-11-13 (+9d) |  | 15d → 9d |  |
| ADMIN.5606 | BOH/Break 1025A // Hang / drop Ceiling trims | 2026-11-03 → 2026-11-12 (+9d) | 2026-11-04 → 2026-11-13 (+9d) |  | 15d → 9d |  |
| ADMIN.5607 | BOH/Break 1025A // Install Trim-Out | 2026-11-05 → 2026-11-16 (+11d) | 2026-11-05 → 2026-11-16 (+11d) |  | 15d → 9d |  |
| ADMIN.5786 | BOH/Break 1025A // BOH - Room Ready to Receive Equipment | 2026-11-05 → 2026-11-16 (+11d) | 2026-11-05 → 2026-11-16 (+11d) |  | 16d → 10d |  |
| ADMIN.5608 | BOH/Break 1025A // Install Doors and Hardware | 2026-11-06 → 2026-11-17 (+11d) | 2026-11-06 → 2026-11-17 (+11d) |  | 15d → 9d |  |
| ADMIN.5609 | BOH/Break 1025A // Finish & Clean | 2026-11-09 → 2026-11-18 (+9d) | 2026-11-09 → 2026-11-18 (+9d) |  | 15d → 9d |  |
| 6 | **QTS Ops 1025** | 2026-09-18 → 2026-09-23 (+5d) | 2026-11-12 → 2026-11-20 (+8d) |  |  |  |
| ADMIN.5576 | BOH/QTS Ops 1025 // Frame Walls | 2026-09-18 A → 2026-09-23 A (+5d) |  |  |  |  |
| ADMIN.5577 | BOH/QTS Ops 1025 // MEPF Layout of Overhead Supports |  | 2026-10-09 → 2026-10-07 A (-2d) | 0% → 100% | 13d → none |  |
| ADMIN.5578 | BOH/QTS Ops 1025 // Top Down Install of Sheetrock - Priority Walls |  | 2026-10-01 → 2026-10-09 A (+8d) | 0% → 100% | 28d → none |  |
| ADMIN.6219 | BOH/QTS Ops 1025 // BMS & EPMS Rough In | 2026-10-23 → 2026-10-05 A (-18d) | 2026-10-26 → 2026-10-06 A (-20d) | 0% → 100% | 19d → none | ADMIN.5582 FF, ADMIN.5582 SS → ADMIN.5576 |
| ADMIN.5579 | BOH/QTS Ops 1025 // Install MEPF Overhead Supports | 2026-09-30 → 2026-10-08 A (+8d) | 2026-10-01 → 2026-10-14 (+13d) | 0% → 100% | 13d → 7d |  |
| ADMIN.5580 | BOH/QTS Ops 1025 // MEPF Overhead Install | 2026-10-07 → 2026-10-13 A (+6d) | 2026-10-21 → 2026-10-29 (+8d) |  | 13d → 7d |  |
| ADMIN.5581 | BOH/QTS Ops 1025 // MEPF In-wall rough-in | 2026-10-22 → 2026-10-30 (+8d) | 2026-10-23 → 2026-11-02 (+10d) |  | 13d → 7d |  |
| ADMIN.5582 | BOH/QTS Ops 1025 // Install Fire Alarm and Security | 2026-10-22 → 2026-10-30 (+8d) | 2026-10-26 → 2026-11-03 (+8d) |  | 17d → 11d |  |
| ADMIN.5583 | BOH/QTS Ops 1025 // 1-Side & Finish Priority Walls | 2026-10-26 → 2026-11-03 (+8d) | 2026-10-27 → 2026-11-04 (+8d) |  | 13d → 7d |  |
| ADMIN.5584 | BOH/QTS Ops 1025 // Tape and Finish Walls | 2026-10-28 → 2026-11-05 (+8d) | 2026-10-30 → 2026-11-09 (+10d) |  | 13d → 7d |  |
| ADMIN.5585 | BOH/QTS Ops 1025 // Install Ceiling grid | 2026-10-28 → 2026-11-05 (+8d) | 2026-11-02 → 2026-11-10 (+8d) |  | 13d → 7d |  |
| ADMIN.5586 | BOH/QTS Ops 1025 // Final paint | 2026-11-02 → 2026-11-10 (+8d) | 2026-11-03 → 2026-11-12 (+9d) |  | 13d → 7d |  |
| ADMIN.5587 | BOH/QTS Ops 1025 // Hang hard-lid ceiling | 2026-11-03 → 2026-11-12 (+9d) | 2026-11-04 → 2026-11-13 (+9d) |  | 13d → 7d |  |
| ADMIN.5588 | BOH/QTS Ops 1025 // Install Flooring and Base | 2026-11-04 → 2026-11-13 (+9d) | 2026-11-06 → 2026-11-17 (+11d) |  | 13d → 7d |  |
| ADMIN.5589 | BOH/QTS Ops 1025 // Hang / drop Ceiling trims | 2026-11-05 → 2026-11-16 (+11d) | 2026-11-06 → 2026-11-17 (+11d) |  | 13d → 7d |  |
| ADMIN.5590 | BOH/QTS Ops 1025 // Install Trim-Out | 2026-11-09 → 2026-11-18 (+9d) | 2026-11-09 → 2026-11-18 (+9d) |  | 13d → 7d |  |
| ADMIN.5787 | BOH/QTS Ops 1025 // BOH - Room Ready to Receive Equipment | 2026-11-09 → 2026-11-18 (+9d) | 2026-11-09 → 2026-11-18 (+9d) |  | 14d → 8d |  |
| ADMIN.5591 | BOH/QTS Ops 1025 // Install Doors and Hardware | 2026-11-10 → 2026-11-19 (+9d) | 2026-11-10 → 2026-11-19 (+9d) |  | 13d → 7d |  |
| ADMIN.5592 | BOH/QTS Ops 1025 // Finish & Clean | 2026-11-12 → 2026-11-20 (+8d) | 2026-11-12 → 2026-11-20 (+8d) |  | 13d → 7d |  |
| 7 | **Conf. Room 1025H** | 2026-09-18 → 2026-09-23 (+5d) | 2026-11-13 → 2026-11-20 (+7d) |  |  |  |
| ADMIN.5714 | BOH/Conf. Room 1025H // Frame Walls | 2026-09-18 A → 2026-09-23 A (+5d) |  |  |  |  |
| ADMIN.5715 | BOH/Conf. Room 1025H // MEPF Layout of Overhead Supports | 2026-09-29 A → 2026-09-28 A (-1d) | 2026-10-09 → 2026-10-07 A (-2d) | 0% → 100% | 12d → none |  |
| ADMIN.5716 | BOH/Conf. Room 1025H // Top Down Install of Sheetrock - Priority Walls |  | 2026-10-01 → 2026-10-06 A (+5d) | 0% → 100% | 28d → none |  |
| ADMIN.5717 | BOH/Conf. Room 1025H // Install MEPF Overhead Supports | 2026-10-01 → 2026-10-08 A (+7d) | 2026-10-02 → 2026-10-15 (+13d) |  | 12d → 7d |  |
| ADMIN.5718 | BOH/Conf. Room 1025H // MEPF Overhead Install | 2026-10-08 → 2026-10-13 A (+5d) | 2026-10-22 → 2026-10-29 (+7d) |  | 12d → 7d |  |
| ADMIN.6229 | BOH/Conf. Room 1025H // BMS & EPMS Rough In | 2026-10-26 → 2026-10-14 (-12d) | 2026-10-27 → 2026-10-15 (-12d) |  | 18d → 26d | ADMIN.5720 FF, ADMIN.5720 SS → ADMIN.5714 |
| ADMIN.5719 | BOH/Conf. Room 1025H // MEPF In-wall rough-in | 2026-10-23 → 2026-10-30 (+7d) | 2026-10-26 → 2026-11-02 (+7d) |  | 12d → 7d |  |
| ADMIN.5720 | BOH/Conf. Room 1025H // Install Fire Alarm and Security | 2026-10-23 → 2026-10-30 (+7d) | 2026-10-27 → 2026-11-03 (+7d) |  | 16d → 11d |  |

| ID | Task | Start | Finish | Complete | Total float | Predecessors |
| --- | --- | --- | --- | --- | --- | --- |
| ADMIN.5721 | BOH/Conf. Room 1025H // 1-Side & Finish Priority Walls | 2026-10-27 → 2026-11-03 (+7d) | 2026-10-28 → 2026-11-04 (+7d) |  | 12d → 7d |  |
| ADMIN.5722 | BOH/Conf. Room 1025H // Tape and Finish Walls | 2026-10-29 → 2026-11-05 (+7d) | 2026-11-02 → 2026-11-09 (+7d) |  | 12d → 7d |  |
| ADMIN.5723 | BOH/Conf. Room 1025H // Install Ceiling grid | 2026-10-29 → 2026-11-05 (+7d) | 2026-11-03 → 2026-11-10 (+7d) |  | 12d → 7d |  |
| ADMIN.5724 | BOH/Conf. Room 1025H // Final paint | 2026-11-03 → 2026-11-10 (+7d) | 2026-11-04 → 2026-11-12 (+8d) |  | 12d → 7d |  |
| ADMIN.5725 | BOH/Conf. Room 1025H // Hang hard-lid ceiling | 2026-11-04 → 2026-11-12 (+8d) | 2026-11-05 → 2026-11-13 (+8d) |  | 12d → 7d |  |
| ADMIN.5726 | BOH/Conf. Room 1025H // Install Flooring and Base | 2026-11-05 → 2026-11-13 (+8d) | 2026-11-09 → 2026-11-17 (+8d) |  | 12d → 7d |  |
| ADMIN.5727 | BOH/Conf. Room 1025H // Hang / drop Ceiling trims | 2026-11-06 → 2026-11-16 (+10d) | 2026-11-09 → 2026-11-17 (+8d) |  | 12d → 7d |  |
| ADMIN.5728 | BOH/Conf. Room 1025H // Install Trim-Out | 2026-11-10 → 2026-11-18 (+8d) | 2026-11-10 → 2026-11-18 (+8d) |  | 12d → 7d |  |
| ADMIN.5788 | BOH/Conf. Room 1025H // BOH - Room Ready to Receive Equipment | 2026-11-10 → 2026-11-18 (+8d) | 2026-11-10 → 2026-11-18 (+8d) |  | 13d → 8d |  |
| ADMIN.5729 | BOH/Conf. Room 1025H // Install Doors and Hardware | 2026-11-12 → 2026-11-19 (+7d) | 2026-11-12 → 2026-11-19 (+7d) |  | 12d → 7d |  |
| ADMIN.5730 | BOH/Conf. Room 1025H // Finish & Clean | 2026-11-13 → 2026-11-20 (+7d) | 2026-11-13 → 2026-11-20 (+7d) |  | 12d → 7d |  |
| 16 | **Flex 1020** | 2026-09-18 → 2026-09-24 (+6d) | 2026-11-10 → 2026-11-18 (+8d) |  |  |  |
| ADMIN.5731 | BOH/Flex 1020 // Frame Priority Walls | 2026-09-18 A → 2026-09-24 A (+6d) |  |  |  |  |
| ADMIN.5732 | BOH/Flex 1020 // MEPF Layout of Overhead Supports |  | 2026-10-09 → 2026-10-23 (+14d) |  | 14d → 9d |  |
| ADMIN.5734 | BOH/Flex 1020 // Install MEPF Overhead Supports |  | 2026-10-01 → 2026-10-15 (+14d) |  | 14d → 9d |  |
| ADMIN.6239 | BOH/Flex 1020 // BMS & EPMS Rough In | 2026-10-22 → 2026-10-05 A (-17d) | 2026-10-23 → 2026-10-06 A (-17d) | 0% → 100% | 20d → none | ADMIN.5737 FF, ADMIN.5737 SS → ADMIN.5731 |
| ADMIN.5735 | BOH/Flex 1020 // MEPF Overhead Install | 2026-10-06 → 2026-10-14 (+8d) | 2026-10-20 → 2026-10-27 (+7d) |  | 14d → 9d |  |
| ADMIN.5733 | BOH/Flex 1020 // Top Down Install of Sheetrock - Priority Walls | 2026-10-13 → 2026-10-26 (+13d) | 2026-10-14 → 2026-10-27 (+13d) |  | 20d → 11d |  |
| ADMIN.5736 | BOH/Flex 1020 // MEPF In-wall rough-in | 2026-10-21 → 2026-10-28 (+7d) | 2026-10-22 → 2026-10-29 (+7d) |  | 14d → 9d |  |
| ADMIN.5737 | BOH/Flex 1020 // Install Fire Alarm and Security | 2026-10-21 → 2026-10-28 (+7d) | 2026-10-23 → 2026-10-30 (+7d) |  | 18d → 13d |  |
| ADMIN.5738 | BOH/Flex 1020 // 1-Side & Finish Priority Walls | 2026-10-23 → 2026-10-30 (+7d) | 2026-10-26 → 2026-11-02 (+7d) |  | 14d → 9d |  |
| ADMIN.5739 | BOH/Flex 1020 // Tape and Finish Walls | 2026-10-27 → 2026-11-03 (+7d) | 2026-10-29 → 2026-11-05 (+7d) |  | 14d → 9d |  |
| ADMIN.5740 | BOH/Flex 1020 // Final paint | 2026-10-30 → 2026-11-06 (+7d) | 2026-11-02 → 2026-11-09 (+7d) |  | 14d → 9d |  |
| ADMIN.5741 | BOH/Flex 1020 // Install Flooring and Base | 2026-11-03 → 2026-11-10 (+7d) | 2026-11-05 → 2026-11-13 (+8d) |  | 14d → 9d |  |
| ADMIN.5742 | BOH/Flex 1020 // Install Trim-Out | 2026-11-06 → 2026-11-16 (+10d) | 2026-11-06 → 2026-11-16 (+10d) |  | 14d → 9d |  |
| ADMIN.5743 | BOH/Flex 1020 // Install Doors and Hardware | 2026-11-09 → 2026-11-17 (+8d) | 2026-11-09 → 2026-11-17 (+8d) |  | 14d → 9d |  |
| ADMIN.5744 | BOH/Flex 1020 // Finish & Clean | 2026-11-10 → 2026-11-18 (+8d) | 2026-11-10 → 2026-11-18 (+8d) |  | 14d → 9d |  |
| 17 | **Loading Dock 1010** | 2026-08-21 → 2026-09-16 (+26d) | 2026-12-09 → 2026-12-22 (+13d) |  |  |  |
| DH1300.LD.2031 | BOH/Loading Dock #1010 // Overhead Fire Protection | 2026-08-21 A → 2026-09-16 A (+26d) |  |  |  |  |
| DH1300.LD.2032 | BOH/Loading Dock #1010 // Overhead Mechanical Piping |  | 2026-10-06 → 2026-10-20 (+14d) |  | -5d → -14d |  |
| DH1300.LD.2033 | BOH/Loading Dock #1010 // OH Electrical Rough | 2026-10-07 → 2026-10-21 (+14d) | 2026-10-14 → 2026-10-27 (+13d) |  | -5d → -14d |  |
| DH1300.LD.2034 | BOH/Loading Dock #1010 // Overhead Mechanical Duct | 2026-10-07 → 2026-10-21 (+14d) | 2026-10-14 → 2026-10-27 (+13d) |  | -5d → -14d |  |
| DH1300.LD.2035 | BOH/Loading Dock #1010 // In-Wall Electrical Rough | 2026-10-15 → 2026-10-28 (+13d) | 2026-10-16 → 2026-10-29 (+13d) |  | -5d → -14d |  |
| DH1300.LD.2036 | BOH/Loading Dock #1010 // Top of Wall Fire Stop | 2026-10-15 → 2026-10-28 (+13d) | 2026-10-16 → 2026-10-29 (+13d) |  | 9d → 0d |  |
| DH1300.LD.2037 | BOH/Loading Dock #1010 // Install Dock Levelers | 2026-10-15 → 2026-10-28 (+13d) | 2026-10-16 → 2026-10-29 (+13d) |  | -5d → -14d |  |
| DH1300.LD.2038 | BOH/Loading Dock #1010 // In-Wall Inspection | 2026-10-19 → 2026-10-30 (+11d) | 2026-10-19 → 2026-10-30 (+11d) |  | -5d → -14d |  |
| DH1300.LD.2039 | BOH/Loading Dock #1010 // Hang, Tape, & Finish Drywall | 2026-10-20 → 2026-11-02 (+13d) | 2026-11-02 → 2026-11-16 (+14d) |  | -5d → -14d |  |
| DH1300.LD.2040 | BOH/Loading Dock #1010 // Paint Walls | 2026-11-03 → 2026-11-17 (+14d) | 2026-11-05 → 2026-11-19 (+14d) |  | -5d → -14d |  |
| DH1300.LD.2041 | BOH/Loading Dock #1010 // Install Fire Alarm | 2026-11-06 → 2026-11-20 (+14d) | 2026-11-13 → 2026-11-27 (+14d) |  | -5d → -14d |  |
| DH1300.LD.2042 | BOH/Loading Dock #1010 // Pull, Test, & Terminate | 2026-11-06 → 2026-11-20 (+14d) | 2026-11-16 → 2026-11-30 (+14d) |  | -4d → -13d |  |
| DH1300.LD.2043 | BOH/Loading Dock #1010 // Install Overhead Door - 0160.2 | 2026-11-16 → 2026-11-30 (+14d) | 2026-11-16 → 2026-11-30 (+14d) |  | -5d → -14d |  |
| DH1300.LD.2044 | BOH/Loading Dock #1010 // Install Overhead Door - 0160.3 | 2026-11-17 → 2026-12-01 (+14d) | 2026-11-17 → 2026-12-01 (+14d) |  | -5d → -14d |  |
| DH1300.LD.2046 | BOH/Loading Dock #1010 // Install Overhead Lighting Fixtures | 2026-11-17 → 2026-12-01 (+14d) | 2026-11-23 → 2026-12-07 (+14d) |  | -4d → -13d |  |
| DH1300.LD.2045 | BOH/Loading Dock #1010 // Loading Dock Operational | 2026-11-17 → 2026-12-01 (+14d) | 2026-11-17 → 2026-12-01 (+14d) |  | -5d → -14d |  |
| DH1300.LD.2047 | BOH/Loading Dock #1010 // Install Fire Sprinkler Heads | 2026-11-18 → 2026-12-02 (+14d) | 2026-11-24 → 2026-12-08 (+14d) |  | -5d → -14d |  |
| DH1300.LD.2048 | BOH/Loading Dock #1010// Electrical Trim | 2026-11-25 → 2026-12-09 (+14d) | 2026-12-02 → 2026-12-15 (+13d) |  | -5d → -14d |  |
| DH1300.LD.2049 | BOH/Loading Dock #1010 // Clean and Punch | 2026-12-03 → 2026-12-16 (+13d) | 2026-12-09 → 2026-12-22 (+13d) |  | -5d → -14d |  |
| 1 | **Equipment** |  | 2026-10-28 → 2026-11-10 (+13d) |  |  |  |
| 2 | **Roof - RTUs** |  | 2026-10-28 → 2026-11-10 (+13d) |  |  |  |
| 1 | **Column Lines 7.0 thru 7.3** |  | 2026-10-28 → 2026-11-10 (+13d) |  |  |  |
| DH1100.12063 | BOH/Roof - RTUs // Install Mechanical Piping | 2026-09-30 → 2026-10-14 (+14d) | 2026-10-14 → 2026-10-27 (+13d) |  | 8d → -1d |  |
| DH1100.12060 | BOH/Roof - RTUs // Install heat trace system | 2026-10-15 → 2026-10-28 (+13d) | 2026-10-28 → 2026-11-10 (+13d) |  | 8d → -1d |  |
| DH1200.7842 | BOH/Roof - RTUs // Install Electrical Conduit and Controls Piping | 2026-10-15 → 2026-10-28 (+13d) | 2026-10-28 → 2026-11-10 (+13d) |  | 23d → 14d |  |
| 1 | **Gens - XFMRs etc** | 2026-09-30 → 2026-10-14 (+14d) | 2026-10-15 → 2026-10-28 (+13d) |  |  |  |
| DH1100.12097 | BOH // Set House Generator - GEN-HSE-BOH | 2026-09-30 → 2026-10-14 (+14d) | 2026-09-30 → 2026-10-14 (+14d) |  | 17d → 8d |  |
| DH1600.2282 | BOH // Set House XFMR - XFMR-HSE-BOH | 2026-10-01 → 2026-10-15 (+14d) | 2026-10-01 → 2026-10-15 (+14d) |  | 17d → 8d |  |
| DH1600.2283 | BOH // Set House XFMR - XFMR-HSE-1Dp | 2026-10-02 → 2026-10-16 (+14d) | 2026-10-02 → 2026-10-16 (+14d) |  | 17d → 8d |  |
| DH1600.2020 | BOH // Set House Static Transfer Switch - STS-HSE-1B1 | 2026-10-05 → 2026-10-19 (+14d) | 2026-10-05 → 2026-10-19 (+14d) |  | 17d → 8d |  |
| DH1600.2280 | BOH // Set House Static Transfer Switch - STS-HSE-1B2 | 2026-10-06 → 2026-10-20 (+14d) | 2026-10-06 → 2026-10-20 (+14d) |  | 17d → 8d |  |
| DH1600.2281 | BOH // Set House Static Transfer Switch - STS-HSE-1D | 2026-10-07 → 2026-10-21 (+14d) | 2026-10-07 → 2026-10-21 (+14d) |  | 17d → 8d |  |
| DH1100.12102 | BOH // Set House SWD Switch - SWD-HSE-1B-MAIN | 2026-10-08 → 2026-10-22 (+14d) | 2026-10-08 → 2026-10-22 (+14d) |  | 17d → 8d |  |
| DH1100.12103 | BOH // Set House SWD Switch - SWD-HSE-1D-MAIN | 2026-10-09 → 2026-10-23 (+14d) | 2026-10-09 → 2026-10-23 (+14d) |  | 17d → 8d |  |
| DH1100.12107 | BOH // Set House UPS - UPS-HSE-1B1 | 2026-10-13 → 2026-10-26 (+13d) | 2026-10-13 → 2026-10-26 (+13d) |  | 17d → 8d |  |
| DH1100.12108 | BOH // Set House UPS - UPS-HSE-1B2 | 2026-10-14 → 2026-10-27 (+13d) | 2026-10-14 → 2026-10-27 (+13d) |  | 17d → 8d |  |
| DH1100.12109 | BOH // Set House UPS - UPS-HSE-1D | 2026-10-15 → 2026-10-28 (+13d) | 2026-10-15 → 2026-10-28 (+13d) |  | 17d → 8d |  |
| 2 | **Commissioning & Start Up** | 2026-10-29 → 2026-11-12 (+14d) | 2026-12-18 → 2027-01-04 (+17d) |  |  |  |
| HSE-SYS-STU-4 | BOH/Commissioning & Start Up // L3 Start-Up | 2026-10-29 → 2026-11-12 (+14d) | 2026-11-19 → 2026-12-03 (+14d) |  | 8d → -1d |  |
| HSE-SYS-STU-5 | BOH/Commissioning & Start Up // L4 Cx | 2026-11-20 → 2026-12-04 (+14d) | 2026-12-11 → 2026-12-24 (+13d) |  | 27d → 18d |  |
| HSE-SYS-STU-17 | BOH/Commissioning & Start Up // BOH Clean & Punch | 2026-12-09 → 2026-12-22 (+13d) | 2026-12-09 → 2026-12-22 (+13d) |  | -5d → -14d |  |
| HSE-SYS-STU-6 | BOH/Commissioning & Start Up // L5 Cx (Completes Jan 01 2027) | 2026-12-14 → 2026-12-28 (+14d) | 2026-12-18 → 2027-01-04 (+17d) |  | 27d → 18d |  |

| ID | Task | Start | Finish | Complete | Total float | Predecessors |
| --- | --- | --- | --- | --- | --- | --- |
| 5 | **Data Hall 1100** |  | 2027-02-09 → 2027-02-12 (+3d) |  |  |  |
| 10 | **Exterior Build Out** |  | 2026-11-12 → 2026-11-25 (+13d) |  |  |  |
| 1 | **Mechanical Yard** |  | 2026-10-30 → 2026-11-06 (+7d) |  |  |  |
| 5 | **Equipment** |  | 2026-10-26 → 2026-11-06 (+11d) |  |  |  |
| DH1100.12002 | DH1100/Mechanical Yard-A110 // Set TES tank - TES-1CY40-A110 | 2026-08-18 A → 2026-09-08 A (+21d) |  |  |  |  |
| 12 | **Test & Flushing** |  | 2026-10-26 → 2026-11-06 (+11d) |  |  |  |
| A5732 | DH1100/Mechanical Yard-Test & Flushing // Electrical & Controls Testing / Checking | 2026-09-30 → 2026-10-14 (+14d) | 2026-10-02 → 2026-10-16 (+14d) |  | 26d → 36d |  |
| A5731 | DH1100/Mechanical Yard-Test & Flushing // Fill, Flush & Purge | 2026-10-05 → 2026-10-19 (+14d) | 2026-10-26 → 2026-11-06 (+11d) |  | 26d → 36d |  |
| 2 | **Electrical & Controls** |  | 2026-10-30 → 2026-11-04 (+5d) |  |  |  |
| A3300 | DH1100/Electrical & Controls // Raceway connections to Chiller units | 2026-10-15 → 2026-10-02 A (-13d) | 2026-10-22 → 2026-10-27 (+5d) |  | 75d → 72d | STRUCTURE.4850 SS, A3320, DH1100.12021, DH1100.12019, DH1100.12017, DH1100.12015, DH1100.12013, DH1100.12011, DH1100.12009, DH1100.12007, DH1100.12005, DH1100.12003, DH1100.12001 → DH1100.12001, DH1100.12003, DH1100.12005, DH1100.12007, DH1100.12009, DH1100.12011, DH1100.12013, DH1100.12015, DH1100.12017, DH1100.12019, DH1100.12021, A3320 FF, STRUCTURE.4850 SS |
| A3380 | DH1100/Electrical & Controls // Chiller units Ready to Energize | 2026-10-07 → 2026-10-06 A (-1d) | 2026-10-15 → 2026-10-21 (+6d) |  | 164d → 43d | A3340, A5698 → A3340 |
| A3320 | DH1100/Electrical & Controls // Install Panels and Raceways to CHWP | 2026-09-30 → 2026-10-14 (+14d) | 2026-10-14 → 2026-10-27 (+13d) |  | 75d → 72d |  |
| A5698 | DH1100/Electrical & Controls // Fine Grade Install Landscape Fabric & Install Rock | 2026-09-30 → 2026-10-22 (+22d) | 2026-10-06 → 2026-10-28 (+22d) |  | 164d → 43d | A5699 → A3380, A5699 |
| A3360 | DH1100/Electrical & Controls // Pull and Terminate Feeders to Chiller units | 2026-10-23 → 2026-10-28 (+5d) | 2026-10-30 → 2026-11-04 (+5d) |  | 75d → 72d |  |
| 2 | **Roof - RTUs** |  | 2026-11-12 → 2026-11-25 (+13d) |  |  |  |
| 1 | **Column Lines 1.2 thru 2.0** |  | 2026-11-12 → 2026-11-25 (+13d) |  |  |  |
| DH1200.7841 | DH1100/Roof - RTUs // Install Electrical Conduit and Controls Piping | 2026-10-07 → 2026-09-21 A (-16d) | 2026-10-28 → 2026-11-03 (+6d) |  | -19d → -12d | DH1100.12064, DH1100.12059 FF+5d → DH1100.12059 FF, DH1100.12064 |
| DH1100.12059 | DH1100/Roof - RTUs // Install Mechanical Piping | 2026-09-30 → 2026-10-14 (+14d) | 2026-10-21 → 2026-11-03 (+13d) |  | -19d → -12d |  |
| DH1100.12056 | DH1100/Roof - RTUs // Install heat trace system | 2026-10-22 → 2026-11-04 (+13d) | 2026-11-12 → 2026-11-25 (+13d) |  | 14d → 13d |  |
| 1 | **Interior Build Out** |  | 2027-02-09 → 2027-02-12 (+3d) |  |  |  |
| 9 | **Flex 1000A10** |  | 2026-10-28 → 2026-10-29 (+1d) |  |  |  |
| F.1000A.1080 | DH1100/Flex 1000A10 // Rough Wall Inspspection (Approval to Close up) | 2026-08-03 A → 2026-08-17 A (+14d) |  |  |  |  |
| F.1000A.1090 | DH1100/Flex 1000A10 // Install Balance of Sheetrock | 2026-08-10 A → 2026-08-18 A (+8d) |  |  |  |  |
| F.1000A.1163 | DH1100/Flex 1000A10 // Install Security Devices | 2026-08-10 A → 2026-08-24 A (+14d) |  |  |  |  |
| F.1000A.1161 | DH1100/Flex 1000A10 // Rough-In Security | 2026-08-03 A → 2026-09-09 A (+37d) |  |  |  |  |
| F.1000A.1325 | DH1100/Flex 1000A10 // BMS & EPMS Rough-In | 2026-09-30 → 2026-09-09 A (-21d) | 2026-10-01 → 2026-09-10 A (-21d) | 0% → 100% | 37d → none |  |
| F.1000A.1100 | DH1100/Flex 1000A10 // Tape and Finish Walls |  | 2026-10-07 → 2026-09-28 A (-9d) | 0% → 100% | 24d → none |  |
| F.1000A.1110 | DH1100/Flex 1000A10 // Prime and First Coat of Paint | 2026-10-08 → 2026-09-29 A (-9d) | 2026-10-09 → 2026-09-30 A (-9d) | 0% → 100% | 24d → none |  |
| F.1000A.1000 | DH1100/Flex 1000A10 // Seal Concrete | 2026-10-13 → 2026-09-30 A (-13d) | 2026-10-19 → 2026-10-06 A (-13d) | 0% → 100% | 26d → none |  |
| F.1000A.1140 | DH1100/Flex 1000A10 // Wall Touch up Final Coat of Paint | 2026-09-30 → 2026-10-01 A (+1d) | 2026-10-02 → 2026-10-05 A (+3d) | 0% → 100% | 31d → none |  |
| F.1000A.1150 | DH1100/Flex 1000A10 // Install Wall Base, Trim, and Devices | 2026-10-05 → 2026-10-14 (+9d) | 2026-10-07 → 2026-10-16 (+9d) |  | 31d → 44d |  |
| F.1000A.1162 | DH1100/Flex 1000A10 // Pull & Test Security Cable | 2026-09-30 → 2026-10-14 (+14d) | 2026-10-02 → 2026-10-16 (+14d) |  | 34d → 44d |  |
| F.1000A.1164 | DH1100/Flex 1000A10 // Mount & Terminate Security Devices | 2026-10-13 → 2026-10-14 (+1d) | 2026-10-19 → 2026-10-20 (+1d) |  | 24d → 42d |  |
| F.1000A.1165 | DH1100/Flex 1000A10 // Test Security Devices | 2026-10-20 → 2026-10-21 (+1d) | 2026-10-21 → 2026-10-22 (+1d) |  | 24d → 42d |  |
| F.1000A.1160 | DH1100/Flex 1000A10 // Suffolk Pre Punch | 2026-10-22 → 2026-10-23 (+1d) | 2026-10-28 → 2026-10-29 (+1d) |  | 24d → 42d |  |
| 7 | **Electrical Room #5101** |  | 2026-11-03 → 2026-11-20 (+17d) |  |  |  |
| ER.5101.1080 | DH100/Electrical Room #5101 // Rough Wall Inspspection (Approval to Close up) | 2026-08-05 A → 2026-08-18 A (+13d) |  |  |  |  |
| ER.5101.1090 | DH100/Electrical Room #5101 // Install Balance of Sheetrock | 2026-08-12 A → 2026-08-19 A (+7d) |  |  |  |  |
| ER.5101.1120 | DH100/Electrical Room #5101 // Install MEPF Overhead Ceiling Rough | 2026-08-05 A → 2026-08-20 A (+15d) |  |  |  |  |
| ER.5101.1170 | DH100/Electrical Room #5101 // Install Overhead Buss duct | 2026-08-12 A → 2026-08-20 A (+8d) |  |  |  |  |
| B120001.3129 | DH100/Electrical Room #5101 // Install Overhead Cable Ladder / 36" Cable Tray - TFO | 2026-08-05 A → 2026-08-24 A (+19d) |  |  |  |  |
| ER.5101.1180 | DH100/Electrical Room #5101 // Install Cable Tray | 2026-08-12 A → 2026-08-24 A (+12d) |  |  |  |  |
| ER.5101.1100 | DH100/Electrical Room #5101 // Tape and Finish Walls | 2026-08-17 A → 2026-08-25 A (+8d) |  |  |  |  |
| F.1000A.1166 | DH100/Electrical Room #5101 // Rough-In Security | 2026-08-19 A → 2026-08-26 A (+7d) |  |  |  |  |
| F.1000A.1335 | DH100/Electrical Room #5101 // BMS & EPMS Rough-In | 2026-09-30 → 2026-08-26 A (-35d) | 2026-10-01 → 2026-08-27 A (-35d) | 0% → 100% | 39d → none |  |
| ER.5101.1320 | DH100/Electrical Room #5101 // Buss Duct Tie In to Elect Gear | 2026-08-14 A → 2026-09-17 A (+34d) |  |  |  |  |
| ER.5101.1200 | DH100/Electrical Room #5101 // Install Cable Buss From Exterior | 2026-08-19 A → 2026-09-24 A (+36d) |  |  |  |  |
| ER.5101.1260 | DH100/Electrical Room #5101 // Mechanical Connections to CRAHU | 2026-10-01 → 2026-09-24 A (-7d) | 2026-10-07 → 2026-09-30 A (-7d) | 0% → 100% | -7d → none |  |
| ER.5101.3095 | DH100/Electrical Room #5101 // Set PDU - PDU-R110-01 |  | 2026-09-30 → 2026-10-01 A (+1d) | 0% → 100% | -7d → none |  |
| ER.5101.1190 | DH100/Electrical Room #5101 // Set Skid - SKID-A110 | 2026-09-03 A → 2026-09-29 A (+26d) |  |  |  |  |
| ER.5101.3036 | DH100/Electrical Room #5101 // Set Skid - SKID-B110 |  | 2026-09-30 → 2026-10-01 A (+1d) | 0% → 100% | -11d → none |  |
| ER.5101.3037 | DH100/Electrical Room #5101 // Set Skid - SKID-C110 |  | 2026-09-30 → 2026-10-01 A (+1d) | 0% → 100% | -11d → none |  |
| ER.5101.3101 | DH100/Electrical Room #5101 // Set UPS - UPS-R110 |  | 2026-09-30 A | 0% → 100% | -7d → none |  |
| ER.5101.3038 | DH100/Electrical Room #5101 // Set Skid - SKID-D110 | 2026-09-30 A | 2026-09-30 → 2026-10-01 A (+1d) | 0% → 100% | -11d → none |  |
| ER.5101.3039 | DH100/Electrical Room #5101 // Set Skid - SKID-E110 | 2026-09-30 A | 2026-09-30 → 2026-10-01 A (+1d) | 0% → 100% | -11d → none |  |
| ER.5101.1270 | DH100/Electrical Room #5101 // Install Condensate lines from CRAHU's | 2026-10-08 → 2026-10-01 A (-7d) | 2026-10-09 → 2026-10-02 A (-7d) | 0% → 100% | 34d → none |  |
| B120001.3130 | DH100/Electrical Room #5101 // Install Overhead HAC - TFO | 2026-09-30 → 2026-10-14 (+14d) | 2026-10-06 → 2026-10-20 (+14d) |  | 27d → 37d |  |
| ER.5101.1210 | DH100/Electrical Room #5101 // Pull Cable Buss Feeders | 2026-09-30 → 2026-10-14 (+14d) | 2026-10-07 → 2026-10-21 (+14d) |  | -8d → -9d |  |
| ER.5101.1220 | DH100/Electrical Room #5101 // Pull Cable Tray Feeders (CRAHU/CDU) | 2026-09-30 → 2026-10-14 (+14d) | 2026-10-07 → 2026-10-21 (+14d) |  | -10d → -11d |  |
| ER.5101.1240 | DH100/Electrical Room #5101 // Land and Terminate Cabel Tray Feeders In Gear | 2026-09-30 → 2026-10-14 (+14d) | 2026-10-14 → 2026-10-27 (+13d) |  | -8d → -9d |  |
| ER.5101.1230 | DH100/Electrical Room #5101 // Terminate Cable Buss Feeders | 2026-10-08 → 2026-10-22 (+14d) | 2026-10-13 → 2026-10-26 (+13d) |  | -7d → -8d |  |
| ER.5101.1300 | DH100/Electrical Room #5101 // Land and Terminate Misc Feeder and Branch Circuits | 2026-10-08 → 2026-10-22 (+14d) | 2026-10-16 → 2026-10-29 (+13d) |  | -10d → -11d |  |
| ER.5101.1280 | DH100/Electrical Room #5101 // Install Elec Feeders to CRAHU's | 2026-10-14 → 2026-10-27 (+13d) | 2026-10-16 → 2026-10-29 (+13d) |  | -10d → -11d |  |
| ER.5101.1130 | DH100/Electrical Room #5101 // Install Lighting, Fire Alarm & Fire Protection | 2026-10-19 → 2026-10-30 (+11d) | 2026-10-20 → 2026-11-02 (+13d) |  | 20d → 14d |  |
| ER.5101.1310 | DH100/Electrical Room #5101 // Final FOD Check of all Panels | 2026-10-19 → 2026-10-30 (+11d) | 2026-10-20 → 2026-11-02 (+13d) |  | -10d → -11d |  |
| F.1000A.1167 | DH100/Electrical Room #5101 // Pull & Test Security Cable | 2026-09-30 → 2026-10-30 (+30d) | 2026-10-02 → 2026-11-03 (+32d) |  | 29d → 27d | F.1000A.1166 → ER.5101.1300, F.1000A.1166 |
| ER.5101.1140 | DH100/Electrical Room #5101 // Wall Touch up Final Coat of Paint | 2026-10-21 → 2026-11-03 (+13d) | 2026-10-23 → 2026-11-05 (+13d) |  | 25d → 14d |  |
| F.1000A.1168 | DH100/Electrical Room #5101 // Install Security Devices | 2026-10-07 → 2026-11-04 (+28d) | 2026-10-08 → 2026-11-05 (+28d) |  |  |  |
| ER.5101.1330 | DH100/Electrical Room #5101 // Mechanical Equipment Pre-Start up | 2026-10-26 → 2026-11-06 (+11d) | 2026-10-27 → 2026-11-09 (+13d) |  | 25d → 14d |  |
| F.1000A.1169 | DH100/Electrical Room #5101 // Mount & Terminate Security Devices | 2026-10-21 → 2026-11-06 (+16d) | 2026-10-27 → 2026-11-13 (+17d) |  | 20d → 27d |  |

| ID | Task | Start | Finish | Complete | Total float | Predecessors |
| --- | --- | --- | --- | --- | --- | --- |
| ER.5101.1160 | DH100/Electrical Room #5101 // Suffolk Pre Punch | 2026-10-28 → 2026-11-16 (+19d) | 2026-11-03 → 2026-11-20 (+17d) |  | 20d → 27d |  |
| F.1000A.1170 | DH100/Electrical Room #5101 // Test Security Devices | 2026-10-28 → 2026-11-16 (+19d) | 2026-10-29 → 2026-11-17 (+19d) |  | 20d → 27d |  |
| 2 | **Electrcal Room #5104** |  | 2026-10-23 → 2026-11-17 (+25d) |  |  |  |
| ER.5104.1140 | DH100/Electrical Room #5104 // Install Cable Tray | 2026-08-13 A → 2026-08-21 A (+8d) |  |  |  |  |
| F.1000A.1171 | DH100/Electrical Room #5104 // Rough-In Security | 2026-08-07 A → 2026-08-25 A (+18d) |  |  |  |  |
| F.1000A.1345 | DH100/Electrical Room #5104 // BMS & EPMS Rough-In | 2026-09-30 → 2026-08-25 A (-36d) | 2026-10-01 → 2026-08-26 A (-36d) | 0% → 100% | 37d → none |  |
| B120001.3127 | DH100/Electrical Room #5104 // Install Overhead Cable Ladder / 36" Cable Tray - TFO | 2026-08-07 A → 2026-09-02 A (+26d) |  |  |  |  |
| ER.5104.1130 | DH100/Electrical Room #5104 // Install MEPF Overhead Ceiling Rough | 2026-08-13 A → 2026-09-08 A (+26d) |  |  |  |  |
| ER.5104.1200 | DH100/Electrical Room #5104 // Pull Cable Tray Feeders (CRAHU/CDU) |  | 2026-10-05 → 2026-10-06 A (+1d) | 60% → 100% | -8d → none |  |
| ER.5104.1080 | DH100/Electrical Room #5104 // Install Overhead Buss duct | 2026-08-12 A → 2026-09-24 A (+43d) |  |  |  |  |
| ER.5104.1190 | DH100/Electrical Room #5104 // Install Cable Buss From Exterior | 2026-08-18 A → 2026-09-24 A (+37d) |  |  |  |  |
| ER.5104.1160 | DH100/Electrical Room #5104 // Mechanical Connections to CRAHU | 2026-09-30 → 2026-09-25 A (-5d) | 2026-10-06 → 2026-10-01 A (-5d) | 0% → 100% | -5d → none |  |
| ER.5101.3040 | DH100/Electrical Room #5104 // Set Skid - SKID-F110 | 2026-10-01 A | 2026-10-01 A | 0% → 100% | -11d → none | ER.5101.3039, ER.5101.3111 → ER.5101.3111, ER.5101.3039, ER.5101.3041 SS |
| ER.5101.3041 | DH100/Electrical Room #5104 // Set Skid - SKID-G110 | 2026-10-01 A | 2026-10-01 A | 0% → 100% | -11d → none | ER.5101.3040 SS → ER.5101.3042 |
| F.1000A.1172 | DH100/Electrical Room #5104 // Pull & Test Security Cable | 2026-09-30 → 2026-10-01 A (+1d) | 2026-10-02 → 2026-10-05 A (+3d) | 0% → 100% | 27d → none |  |
| ER.5104.1210 | DH100/Electrical Room #5104 // Install Condensate lines from CRAHU's | 2026-10-07 → 2026-10-02 A (-5d) | 2026-10-08 → 2026-10-05 A (-3d) | 0% → 100% | -5d → none |  |
| ER.5101.3042 | DH100/Electrical Room #5104 // Set Skid - SKID-H110 | 2026-10-02 A | 2026-10-02 → 2026-10-05 A (+3d) | 0% → 100% | -11d → none | ER.5101.3041 → ER.5101.3111 |
| ER.5101.3043 | DH100/Electrical Room #5104 // Set Skid - SKID-J110 | 2026-10-02 A | 2026-10-02 → 2026-10-05 A (+3d) | 0% → 100% | -11d → none |  |
| ER.5101.3044 | DH100/Electrical Room #5104 // Set Skid - SKID-K110 | 2026-10-02 A | 2026-10-02 → 2026-10-05 A (+3d) | 0% → 100% | -11d → none |  |
| ER.5104.1180 | DH100/Electrical Room #5104 // Pull Misc Feeder and Branch Circuits | 2026-09-30 → 2026-10-05 A (+5d) | 2026-10-14 → 2026-10-27 (+13d) |  | -12d → -9d |  |
| B120001.3128 | DH100/Electrical Room #5104 // Install Overhead HAC - TFO | 2026-09-30 → 2026-10-14 (+14d) | 2026-10-06 → 2026-10-20 (+14d) |  | -13d → -4d |  |
| ER.5104.1220 | DH100/Electrical Room #5104 // Install Elec Feeders to CRAHU's | 2026-10-02 → 2026-10-14 (+12d) | 2026-10-06 → 2026-10-16 (+10d) |  | -3d → -2d |  |
| ER.5104.1230 | DH100/Electrical Room #5104 // Buss Duct Tie In to Elect Gear | 2026-09-30 → 2026-10-14 (+14d) | 2026-10-02 → 2026-10-16 (+14d) |  | -1d → -2d |  |
| ER.5104.1240 | DH100/Electrical Room #5104 // Pull Cable Buss Feeders | 2026-10-05 → 2026-10-14 (+9d) | 2026-10-13 → 2026-10-21 (+8d) |  | -10d → -8d | ER.5101.3044, ER.5104.1190 → ER.5104.1190, ER.5101.3044, ER.5101.3040, ER.5101.3041 |
| ER.5104.1260 | DH100/Electrical Room #5104 // Land and Terminate Misc Feeder and Branch Circuits | 2026-10-07 → 2026-10-14 (+7d) | 2026-10-21 → 2026-10-27 (+6d) |  | -13d → -9d | B120001.3128, ER.5104.1180 FF+4d → ER.5104.1180 FF, B120001.3128 FF |
| ER.5104.1280 | DH100/Electrical Room #5104 // Land and Terminate Cabel Tray Feeders In Gear | 2026-10-05 → 2026-10-14 (+9d) | 2026-10-19 → 2026-10-27 (+8d) |  | -11d → -9d | ER.5104.1200 SS+5d, ER.5101.3044 → ER.5101.3044, ER.5104.1200 SS+5d, ER.5101.3040, ER.5101.3041 |
| ER.5104.1270 | DH100/Electrical Room #5104 // Terminate Cable Buss Feeders | 2026-10-14 → 2026-10-22 (+8d) | 2026-10-16 → 2026-10-26 (+10d) |  | -10d → -8d |  |
| ER.5104.1250 | DH100/Electrical Room #5104 // Mechanical Equipment Pre-Start up | 2026-10-20 → 2026-10-28 (+8d) | 2026-10-21 → 2026-10-29 (+8d) |  | -11d → 1d |  |
| ER.5104.1310 | DH100/Electrical Room #5104 // Final FOD Check of all Panels | 2026-10-22 → 2026-10-28 (+6d) | 2026-10-23 → 2026-10-29 (+6d) |  | -13d → -9d |  |
| F.1000A.1173 | DH100/Electrical Room #5104 // Install Security Devices | 2026-10-05 → 2026-10-28 (+23d) | 2026-10-06 → 2026-10-29 (+23d) |  | 27d → 30d | F.1000A.1172 → ER.5104.1260, F.1000A.1172 |
| F.1000A.1174 | DH100/Electrical Room #5104 // Mount & Terminate Security Devices | 2026-10-07 → 2026-10-30 (+23d) | 2026-10-14 → 2026-11-05 (+22d) |  | 27d → 30d |  |
| F.1000A.1175 | DH100/Electrical Room #5104 // Test Security Devices | 2026-10-15 → 2026-11-06 (+22d) | 2026-10-16 → 2026-11-09 (+24d) |  | 27d → 30d |  |
| ER.5104.1330 | DH100/Electrical Room #5104 // Suffolk Pre Punch | 2026-10-19 → 2026-11-10 (+22d) | 2026-10-23 → 2026-11-17 (+25d) |  | 27d → 30d |  |
| 3 | **Data Hall 1100** |  | 2026-11-04 → 2026-11-03 (-1d) |  |  |  |
| DH1100.6320 | DH1100 // MEP rough in walls | 2026-08-10 A → 2026-08-18 A (+8d) |  |  |  |  |
| DH1100.12067 | DH1100 // Install 1-Side Sheet Rock (DH-Side) | 2026-08-17 A → 2026-08-27 A (+10d) |  |  |  |  |
| F.1000A.1355 | DH1100 // BMS & EPMS Rough-In | 2026-10-07 → 2026-09-01 A (-36d) | 2026-10-08 → 2026-09-02 A (-36d) | 0% → 100% | 32d → none | F.1000A.1176 FF, F.1000A.1176 SS → DH1100.6300 |
| DH1100.6360 | DH1100 // Tape and finish walls | 2026-08-20 A → 2026-09-09 A (+20d) |  |  |  |  |
| DH1100.6220 | DH1100 // Install Ceiling Grid System |  | 2026-10-09 → 2026-10-05 A (-4d) | 0% → 100% | 19d → none |  |
| DH1100.6310 | DH1100 // Install wall door frames | 2026-09-03 A → 2026-09-24 A (+21d) |  |  |  |  |
| DH1100.6410 | DH1100 // Prime and 1st coat of Paint | 2026-08-27 A → 2026-09-24 A (+28d) |  |  |  |  |
| F.1000A.1176 | DH1100 // Rough-In Security | 2026-10-07 → 2026-09-24 A (-13d) | 2026-10-08 → 2026-09-25 A (-13d) | 0% → 100% | 20d → none | DH1100.6290, B120001.3132 → DH1100.6290 |
| F.1000A.1177 | DH1100 // Pull & Test Security Cable | 2026-10-09 → 2026-09-28 A (-11d) | 2026-10-14 → 2026-09-30 A (-14d) | 0% → 100% | 20d → none |  |
| F.1000A.1178 | DH1100 // Install Security Devices | 2026-10-15 → 2026-09-30 A (-15d) | 2026-10-16 → 2026-10-01 A (-15d) | 0% → 100% | 20d → none |  |
| DH1100.12112 | DH1100 // Ready to Receive Equipment | 2026-10-26 → 2026-10-01 A (-25d) | 2026-10-26 → 2026-10-01 A (-25d) | 0% → 100% | 21d → none | DH1100.7810 FF → DH1100.7810 SS |
| DH1100.7810 | DH1100 // Install MEPF Trim and Finishes | 2026-10-20 → 2026-10-01 A (-19d) | 2026-10-26 → 2026-10-06 A (-20d) | 0% → 100% | 19d → none | DH1100.7790, DH1100.6310 → DH1100.6310, DH1100.7790 SS |
| F.1000A.1179 | DH1100 // Mount & Terminate Security Devices | 2026-10-19 → 2026-10-01 A (-18d) | 2026-10-23 → 2026-10-06 A (-17d) | 0% → 100% | 20d → none |  |
| DH1100.7790 | DH1100 // Final Paint & Touch up walls | 2026-10-13 → 2026-10-06 A (-7d) | 2026-10-19 → 2026-10-23 (+4d) |  | 19d → 44d | DH1100.6360, DH1100.6410, DH1100.6220, DH1100.6240 → DH1100.6240 FF, DH1100.6220 FF, DH1100.6410, DH1100.6360 |
| B120001.3132 | DH1100 // Install Overhead HAC - TFO | 2026-09-30 → 2026-10-14 (+14d) | 2026-10-06 → 2026-10-20 (+14d) |  | 20d → 39d |  |
| DH1100.6240 | DH1100 // Install ceiling grid tiles | 2026-09-30 → 2026-10-21 (+21d) | 2026-10-02 → 2026-10-23 (+21d) |  | 24d → 39d | DH1100.6220 SS+3d, DH1100.6250 → B120001.3132, DH1100.6250, DH1100.6220 SS+3d |
| F.1000A.1180 | DH1100 // Test Security Devices | 2026-10-27 → 2026-10-26 (-1d) | 2026-10-28 → 2026-10-27 (-1d) |  | 19d → 39d | F.1000A.1355 FF, F.1000A.1179, DH1100.7810 → DH1100.6240, DH1100.7810, F.1000A.1179, F.1000A.1355 FF |
| DH1100.7820 | DH1100 // Suffolk Pre Punch | 2026-10-29 → 2026-10-28 (-1d) | 2026-11-04 → 2026-11-03 (-1d) |  | 19d → 39d |  |
| PDU.1100.1050 | DH1100/PDU Gallery // Install wall door frames | 2026-08-07 A → 2026-08-19 A (+12d) |  |  |  |  |
| PDU.1100.1711 | DH1100/PDU Gallery // MEP rough in walls | 2026-08-13 A → 2026-08-19 A (+6d) |  |  |  |  |
| PDU.1100.1070 | DH1100/PDU Gallery // In wall inspection | 2026-08-18 A → 2026-08-21 A (+3d) |  |  |  |  |
| PDU.1100.1090 | DH1100/PDU Gallery // Tape and finish walls | 2026-08-26 A → 2026-08-28 A (+2d) |  |  |  |  |
| PDU.1100.1713 | DH1100/PDU Gallery // Install Cable Tray (From Elec Rm 5104 to CRAHU Gallery) | 2026-07-24 A → 2026-09-03 A (+41d) |  |  |  |  |
| PDU.1100.1100 | DH1100/PDU Gallery // Paint walls | 2026-09-03 A → 2026-09-09 A (+6d) |  |  |  |  |
| 14 | **CRAH/CDU Galleries** |  | 2026-11-20 → 2026-11-23 (+3d) |  |  |  |
| 2 | **Gallery 1102** |  | 2026-11-20 → 2026-11-23 (+3d) |  |  |  |
| 4 | **Architectural** |  | 2026-10-20 → 2026-11-02 (+13d) |  |  |  |
| F.1000A.1181 | DH 1100/Gallery 1102 // Rough-In Security | 2026-08-07 A → 2026-08-12 A (+5d) |  |  |  |  |
| F.1000A.1365 | DH 1100/Gallery 1102 // BMS & EPMS Rough-In | 2026-09-30 → 2026-08-12 A (-49d) | 2026-10-01 → 2026-08-13 A (-49d) | 0% → 100% | 37d → none |  |
| G1102.4730 | DH 1100/Gallery 1102 // MEP rough in walls | 2026-08-07 A → 2026-08-20 A (+13d) |  |  |  |  |
| G1102.4750 | DH 1100/Gallery 1102 // Install Balance of Sheetrock on walls | 2026-08-07 A → 2026-08-26 A (+19d) |  |  |  |  |
| G1102.4770 | DH 1100/Gallery 1102 // Tape and finish walls | 2026-08-12 A → 2026-08-26 A (+14d) |  |  |  |  |
| G1102.4790 | DH 1100/Gallery 1102 // Prime and Paint walls | 2026-08-19 A → 2026-09-01 A (+13d) |  |  |  |  |
| G1102.4660 | DH 1100/Gallery 1102 // Seal concrete | 2026-08-19 A → 2026-09-04 A (+16d) |  |  |  |  |
| G1102.4740 | DH 1100/Gallery 1102 // In wall inspection | 2026-08-13 A → 2026-09-04 A (+22d) |  |  |  |  |
| G1102.4800 | DH 1100/Gallery 1102 // Touch up Walls and Final Paint | 2026-08-25 A → 2026-09-04 A (+10d) |  |  |  |  |

| ID | Task | Start | Finish | Duration | Complete | Total float | Predecessors |
| --- | --- | --- | --- | --- | --- | --- | --- |
| G1102.4710 | DH 1100/Gallery 1102 // Install wall door frames | 2026-08-19 A → 2026-09-07 A (+19d) |  |  |  |  |  |
| G1102.4810 | DH 1100/Gallery 1102 // Install Trim and Devices | 2026-09-01 A → 2026-09-08 A (+7d) |  |  |  |  |  |
| F.1000A.1182 | DH 1100/Gallery 1102 // Pull & Test Security Cable |  | 2026-09-30 → 2026-10-14 (+14d) |  |  | 30d → 40d |  |
| F.1000A.1183 | DH 1100/Gallery 1102 // Install Security Devices |  | 2026-10-01 → 2026-10-15 (+14d) |  |  | 30d → 40d |  |
| F.1000A.1184 | DH 1100/Gallery 1102 // Mount & Terminate Security Devices | 2026-10-02 → 2026-10-16 (+14d) | 2026-10-08 → 2026-10-22 (+14d) |  |  | 30d → 40d |  |
| F.1000A.1185 | DH 1100/Gallery 1102 // Test Security Devices | 2026-10-09 → 2026-10-23 (+14d) | 2026-10-13 → 2026-10-26 (+13d) |  |  | 30d → 40d |  |
| G1102.4820 | DH 1100/Gallery 1102 // Suffolk Pre Punch | 2026-10-14 → 2026-10-27 (+13d) | 2026-10-20 → 2026-11-02 (+13d) |  |  | 30d → 40d |  |
| 3 | **Equipment Line-Ups** | 2026-08-25 → 2026-09-09 (+15d) | 2026-11-20 → 2026-11-23 (+3d) |  |  |  |  |
| 1 | **A110** | 2026-08-25 → 2026-09-09 (+15d) | 2026-11-17 → 2026-11-18 (+1d) |  |  |  |  |
| DH1100-A-EQP-1 | Gallery 1102 - A110/Line-Ups // Set CRAH-DH1100- 23 | 2026-09-03 A → 2026-09-09 A (+6d) |  |  |  |  |  |
| DH1100-A-EQP-3 | Gallery 1102 - A110/Line-Ups // Set CRAH-DH1100- 24 | 2026-09-03 A → 2026-09-09 A (+6d) |  |  |  |  |  |
| DH1100-A-EQP-9 | Gallery 1102 - A110/Line-Ups // Pull Feeder from SWD to MOD | 2026-08-26 A → 2026-09-10 A (+15d) |  |  |  |  |  |
| DH1100-A-EQP-5 | Gallery 1102 - A110/Line-Ups // Set MOD-A110-01 | 2026-08-25 A → 2026-09-11 A (+17d) |  |  |  |  |  |
| DH1100-A-EQP-6 | Gallery 1102 - A110/Line-Ups // Set MOD-A110-02 | 2026-08-25 A → 2026-09-11 A (+17d) |  |  |  |  |  |
| DH1100-A-EQP-10 | Gallery 1102 - A110/Line-Ups // Pull Cable Tray Feed from MOD to CRAHU's |  | 2026-10-02 → 2026-10-16 (+14d) |  |  | -6d → -4d |  |
| DH1100-A-EQP-12 | Gallery 1102 - A110/Line-Ups // Mount Electrial Gear for Chiller Controls | 2026-08-26 A → 2026-09-14 A (+19d) |  |  |  |  |  |
| DH1100-A-EQP-13 | Gallery 1102 - A110/Line-Ups // Pull Cable Tray Feed from MOD to CRAHU's | 2026-10-05 → 2026-09-14 A (-21d) | 2026-10-09 → 2026-10-20 (+11d) |  |  | -6d → -4d | DH1100-A-EQP-10 → DH1100-A-EQP-10 SS |
| DH1100-A-EQP-11 | Gallery 1102 - A110/Line-Ups // Mechanical Connections to CRAHU Units |  | 2026-10-13 → 2026-10-26 (+13d) |  |  |  |  |
| DH1100-A-EQP-4 | Gallery 1102 - A110/Line-Ups // Condensate connections to Floor Drains |  | 2026-10-13 → 2026-10-08 A (-5d) |  | 10% → 100% | 1d → none |  |
| DH1100-A-EQP-7 | Gallery 1102 - A110/Line-Ups // Set CDU-DH1100- 21 | 2026-09-30 A | 2026-09-30 → 2026-10-07 A (+7d) |  | 0% → 100% | 8d → none |  |
| DH1100-A-EQP-8 | Gallery 1102 - A110/Line-Ups // Set CDU-DH1100- 22 | 2026-10-01 A | 2026-10-01 → 2026-10-07 A (+6d) |  | 0% → 100% | 8d → none |  |
| DH1100-A-EQP-17 | Gallery 1102 - A110/Line-Ups // Pull Feeder and Branch circuits to MIsc equipment and Chiller controls | 2026-09-30 → 2026-10-14 (+14d) | 2026-10-14 → 2026-10-27 (+13d) |  |  | 4d → 3d |  |
| DH1100-A-EQP-16 | Gallery 1102 - A110/Line-Ups // Terminate CRAHU Electrical Connections | 2026-10-07 → 2026-10-19 (+12d) | 2026-10-14 → 2026-10-23 (+9d) |  |  | 8d → 9d |  |
| DH1100-A-EQP-19 | Gallery 1102 - A110/Line-Ups // Teminate all Misc Equipment and Chiller Controls | 2026-10-06 → 2026-10-20 (+14d) | 2026-10-20 → 2026-11-02 (+13d) |  |  | 4d → 3d |  |
| DH1100-A-EQP-15 | Gallery 1102 - A110/Line-Ups // Terminate Mod Panels | 2026-10-13 → 2026-10-21 (+8d) | 2026-10-13 → 2026-10-21 (+8d) |  |  | -6d → -4d |  |
| DH1100-A-EQP-20 | Gallery 1102 - A110/Line-Ups // Electrical Gear FOD Inspection Pre-Start Up | 2026-10-21 → 2026-11-03 (+13d) | 2026-10-21 → 2026-11-03 (+13d) |  |  | 4d → 3d |  |
| DH1100-A-EQP-14 | Gallery 1102 - A110/Line-Ups // Condensate connections to Floor Drains | 2026-10-29 → 2026-11-04 (+6d) | 2026-11-12 → 2026-11-18 (+6d) |  |  | -19d → -12d |  |
| DH1100-A-EQP-18 | Gallery 1102 - A110/Line-Ups // Mechanical Gear FOD Inspection Pre-Start Up | 2026-11-13 → 2026-11-16 (+3d) | 2026-11-17 → 2026-11-18 (+1d) |  |  | -19d → -12d | DH1100-A-EQP-11, DH1100-A-EQP-4, DH1100-A-EQP-14, DH1100-A-EQP-3 → DH1100-A-EQP-3, DH1100-A-EQP-14 FF, DH1100-A-EQP-4, DH1100-A-EQP-11 |
| 2 | **B110** | 2026-08-26 → 2026-09-09 (+14d) | 2026-11-17 → 2026-11-18 (+1d) |  |  |  |  |
| DH1100-A-EQP-21 | Gallery 1102 - B110/Line-Ups // Set CRAH-DH1100- 25 | 2026-09-03 A → 2026-09-09 A (+6d) |  |  |  |  |  |
| DH1100-A-EQP-23 | Gallery 1102 - B110/Line-Ups // Set CRAH-DH1100- 26 | 2026-09-03 A → 2026-09-09 A (+6d) |  |  |  |  |  |
| DH1100-A-EQP-25 | Gallery 1102 - B110/Line-Ups // Set MOD-B110-01 | 2026-08-26 A → 2026-09-11 A (+16d) |  |  |  |  |  |
| DH1100-A-EQP-26 | Gallery 1102 - B110/Line-Ups // Set MOD-B110-02 | 2026-08-26 A → 2026-09-11 A (+16d) |  |  |  |  |  |
| DH1100-A-EQP-30 | Gallery 1102 - B110/Line-Ups // Pull Cable Tray Feed from MOD to CRAHU's | 2026-08-27 A → 2026-09-14 A (+18d) |  |  |  |  |  |
| DH1100-A-EQP-32 | Gallery 1102 - B110/Line-Ups // Mount Electrial Gear for Chiller Controls | 2026-08-27 A → 2026-09-14 A (+18d) |  |  |  |  |  |
| DH1100-A-EQP-31 | Gallery 1102 - B110/Line-Ups // Mechanical Connections to CRAHU Units |  | 2026-10-13 → 2026-10-26 (+13d) |  |  | 1d → 0d |  |
| DH1100-A-EQP-24 | Gallery 1102 - B110/Line-Ups // Condensate connections to Floor Drains |  | 2026-10-13 → 2026-10-08 A (-5d) |  | 10% → 100% | 1d → none |  |
| DH1100-A-EQP-27 | Gallery 1102 - B110/Line-Ups // Set CDU-DH1100- 23 | 2026-09-30 A | 2026-09-30 → 2026-10-07 A (+7d) |  | 0% → 100% | 8d → none |  |
| DH1100-A-EQP-28 | Gallery 1102 - B110/Line-Ups // Set CDU-DH1100- 24 | 2026-10-01 A | 2026-10-01 → 2026-10-07 A (+6d) |  | 0% → 100% | 8d → none |  |
| DH1100-A-EQP-29 | Gallery 1102 - B110/Line-Ups // Pull Feeder from SWD to MOD | 2026-09-30 → 2026-10-14 (+14d) | 2026-09-30 → 2026-10-14 (+14d) |  |  | 2d → 1d |  |
| DH1100-A-EQP-33 | Gallery 1102 - B110/Line-Ups // Pull Cable Tray Feed from MOD to CRAHU's | 2026-09-30 → 2026-10-14 (+14d) | 2026-10-06 → 2026-10-20 (+14d) |  |  | -2d → -3d |  |
| DH1100-A-EQP-34 | Gallery 1102 - B110/Line-Ups // Condensate connections to Floor Drains | 2026-09-30 → 2026-10-14 (+14d) | 2026-10-14 → 2026-10-27 (+13d) |  |  | 1d → 0d |  |
| DH1100-A-EQP-37 | Gallery 1102 - B110/Line-Ups // Pull Feeder and Branch circuits to MIsc equipment and Chiller controls | 2026-09-30 → 2026-10-14 (+14d) | 2026-10-14 → 2026-10-27 (+13d) |  |  | 4d → 3d |  |
| DH1100-A-EQP-36 | Gallery 1102 - B110/Line-Ups // Terminate CRAHU Electrical Connections | 2026-10-02 → 2026-10-16 (+14d) | 2026-10-08 → 2026-10-22 (+14d) |  |  | 11d → 10d |  |
| DH1100-A-EQP-39 | Gallery 1102 - B110/Line-Ups // Teminate all Misc Equipment and Chiller Controls | 2026-10-06 → 2026-10-20 (+14d) | 2026-10-20 → 2026-11-02 (+13d) |  |  | 4d → 3d |  |
| DH1100-A-EQP-35 | Gallery 1102 - B110/Line-Ups // Terminate Mod Panels | 2026-10-14 → 2026-10-22 (+8d) | 2026-10-14 → 2026-10-22 (+8d) |  |  | -6d → -4d |  |
| DH1100-A-EQP-40 | Gallery 1102 - B110/Line-Ups // Electrical Gear FOD Inspection Pre-Start Up | 2026-10-21 → 2026-11-03 (+13d) | 2026-10-21 → 2026-11-03 (+13d) |  |  | 4d → 3d |  |
| DH1100-A-EQP-38 | Gallery 1102 - B110/Line-Ups // Mechanical Gear FOD Inspection Pre-Start Up | 2026-11-13 → 2026-11-16 (+3d) | 2026-11-17 → 2026-11-18 (+1d) |  |  | -19d → -12d |  |
| 3 | **C110** | 2026-08-27 → 2026-09-11 (+15d) | 2026-11-17 → 2026-11-18 (+1d) |  |  |  |  |
| DH1100-A-EQP-45 | Gallery 1102 - C110/Line-Ups // Set MOD-C110-01 | 2026-08-27 A → 2026-09-11 A (+15d) |  |  |  |  |  |
| DH1100-A-EQP-46 | Gallery 1102 - C110/Line-Ups // Set MOD-C110-02 | 2026-08-27 A → 2026-09-11 A (+15d) |  |  |  |  |  |
| DH1100-A-EQP-50 | Gallery 1102 - C110/Line-Ups // Pull Cable Tray Feed from MOD to CRAHU's | 2026-08-28 A → 2026-09-14 A (+17d) |  |  |  |  |  |
| DH1100-A-EQP-52 | Gallery 1102 - C110/Line-Ups // Mount Electrial Gear for Chiller Controls | 2026-08-28 A → 2026-09-14 A (+17d) |  |  |  |  |  |
| DH1100-A-EQP-41 | Gallery 1102 - C110/Line-Ups // Set CRAH-DH1100- 27 | 2026-09-03 A → 2026-09-21 A (+18d) |  |  |  |  |  |
| DH1100-A-EQP-43 | Gallery 1102 - C110/Line-Ups // Set CRAH-DH1100- 28 | 2026-09-03 A → 2026-09-21 A (+18d) |  |  |  |  |  |
| DH1100-A-EQP-49 | Gallery 1102 - C110/Line-Ups // Pull Feeder from SWD to MOD |  | 2026-09-30 → 2026-10-14 (+14d) |  |  | 2d → 1d |  |
| DH1100-A-EQP-47 | Gallery 1102 - C110/Line-Ups // Set CDU-DH1100- 25 | 2026-09-30 A | 2026-09-30 → 2026-10-01 A (+1d) |  | 0% → 100% | -6d → none |  |
| DH1100-A-EQP-48 | Gallery 1102 - C110/Line-Ups // Set CDU-DH1100- 26 | 2026-10-01 A | 2026-10-01 → 2026-10-02 A (+1d) |  | 0% → 100% | -6d → none |  |
| DH1100-A-EQP-44 | Gallery 1102 - C110/Line-Ups // Condensate connections to Floor Drains | 2026-10-02 → 2026-10-08 A (+6d) | 2026-10-16 → 2026-10-08 A (-8d) | 10d → 1d | 0% → 100% | -6d → none |  |
| DH1100-A-EQP-51 | Gallery 1102 - C110/Line-Ups // Mechanical Connections to CRAHU Units | 2026-09-30 → 2026-10-14 (+14d) | 2026-10-14 → 2026-10-27 (+13d) |  |  | -4d → -5d |  |
| DH1100-A-EQP-53 | Gallery 1102 - C110/Line-Ups // Pull Cable Tray Feed from MOD to CRAHU's | 2026-09-30 → 2026-10-14 (+14d) | 2026-10-06 → 2026-10-20 (+14d) |  |  | -2d → -3d |  |
| DH1100-A-EQP-57 | Gallery 1102 - C110/Line-Ups // Pull Feeder and Branch circuits to MIsc equipment and Chiller controls | 2026-09-30 → 2026-10-14 (+14d) | 2026-10-14 → 2026-10-27 (+13d) |  |  | 4d → 3d |  |
| DH1100-A-EQP-56 | Gallery 1102 - C110/Line-Ups // Terminate CRAHU Electrical Connections | 2026-10-02 → 2026-10-16 (+14d) | 2026-10-08 → 2026-10-22 (+14d) |  |  | 11d → 10d |  |
| DH1100-A-EQP-59 | Gallery 1102 - C110/Line-Ups // Teminate all Misc Equipment and Chiller Controls | 2026-10-06 → 2026-10-20 (+14d) | 2026-10-20 → 2026-11-02 (+13d) |  |  | 4d → 3d |  |
| DH1100-A-EQP-54 | Gallery 1102 - C110/Line-Ups // Condensate connections to Floor Drains | 2026-10-09 → 2026-10-21 (+12d) | 2026-10-23 → 2026-11-03 (+11d) |  |  | -6d → -5d |  |
| DH1100-A-EQP-55 | Gallery 1102 - C110/Line-Ups // Terminate Mod Panels | 2026-10-14 → 2026-10-22 (+8d) | 2026-10-14 → 2026-10-22 (+8d) |  |  | -6d → -4d |  |
| DH1100-A-EQP-60 | Gallery 1102 - C110/Line-Ups // Electrical Gear FOD Inspection Pre-Start Up | 2026-10-21 → 2026-11-03 (+13d) | 2026-10-21 → 2026-11-03 (+13d) |  |  | 4d → 3d |  |
| DH1100-A-EQP-58 | Gallery 1102 - C110/Line-Ups // Mechanical Gear FOD Inspection Pre-Start Up | 2026-11-13 → 2026-11-16 (+3d) | 2026-11-17 → 2026-11-18 (+1d) |  |  | -19d → -12d |  |
| 4 | **D110** | 2026-08-28 → 2026-09-11 (+14d) | 2026-11-17 → 2026-11-18 (+1d) |  |  |  |  |
| DH1100-A-EQP-65 | Gallery 1102 - D110/Line-Ups // Set MOD-D110-01 | 2026-08-28 A → 2026-09-11 A (+14d) |  |  |  |  |  |

| ID | Task | Start | Finish | Duration | Complete | Total float |
| --- | --- | --- | --- | --- | --- | --- |
| DH1100-A-EQP-66 | Gallery 1102 - D110/Line-Ups // Set MOD-D110-02 | 2026-08-28 A → 2026-09-11 A (+14d) |  |  |  |  |
| DH1100-A-EQP-61 | Gallery 1102 - D110/Line-Ups // Set CRAH-DH1100- 29 | 2026-09-04 A → 2026-09-21 A (+17d) |  |  |  |  |
| DH1100-A-EQP-63 | Gallery 1102 - D110/Line-Ups // Set CRAH-DH1100- 30 | 2026-09-04 A → 2026-09-21 A (+17d) |  |  |  |  |
| DH1100-A-EQP-70 | Gallery 1102 - D110/Line-Ups // Pull Cable Tray Feed from MOD to CRAHU's | 2026-08-31 A → 2026-09-24 A (+24d) |  |  |  |  |
| DH1100-A-EQP-72 | Gallery 1102 - D110/Line-Ups // Mount Electrial Gear for Chiller Controls |  | 2026-10-14 → 2026-10-27 (+13d) |  |  | 4d → 3d |
| DH1100-A-EQP-67 | Gallery 1102 - D110/Line-Ups // Set CDU-DH1100- 27 | 2026-09-30 A | 2026-09-30 → 2026-10-01 A (+1d) |  | 0% → 100% | -6d → none |
| DH1100-A-EQP-68 | Gallery 1102 - D110/Line-Ups // Set CDU-DH1100- 28 | 2026-10-01 A | 2026-10-01 → 2026-10-02 A (+1d) |  | 0% → 100% | -6d → none |
| DH1100-A-EQP-64 | Gallery 1102 - D110/Line-Ups // Condensate connections to Floor Drains | 2026-10-02 → 2026-10-08 A (+6d) | 2026-10-16 → 2026-10-08 A (-8d) | 10d → 1d | 0% → 100% | -6d → none |
| DH1100-A-EQP-69 | Gallery 1102 - D110/Line-Ups // Pull Feeder from SWD to MOD | 2026-09-30 → 2026-10-14 (+14d) | 2026-09-30 → 2026-10-14 (+14d) |  |  | 2d → 1d |
| DH1100-A-EQP-71 | Gallery 1102 - D110/Line-Ups // Mechanical Connections to CRAHU Units | 2026-09-30 → 2026-10-14 (+14d) | 2026-10-14 → 2026-10-27 (+13d) |  |  | -4d → -5d |
| DH1100-A-EQP-73 | Gallery 1102 - D110/Line-Ups // Pull Cable Tray Feed from MOD to CRAHU's | 2026-09-30 → 2026-10-14 (+14d) | 2026-10-06 → 2026-10-20 (+14d) |  |  | -2d → -3d |
| DH1100-A-EQP-77 | Gallery 1102 - D110/Line-Ups // Pull Feeder and Branch circuits to MIsc equipment and Chiller controls | 2026-09-30 → 2026-10-14 (+14d) | 2026-10-14 → 2026-10-27 (+13d) |  |  | 4d → 3d |
| DH1100-A-EQP-76 | Gallery 1102 - D110/Line-Ups // Terminate CRAHU Electrical Connections | 2026-10-02 → 2026-10-16 (+14d) | 2026-10-08 → 2026-10-22 (+14d) |  |  | 11d → 10d |
| DH1100-A-EQP-79 | Gallery 1102 - D110/Line-Ups // Teminate all Misc Equipment and Chiller Controls | 2026-10-06 → 2026-10-20 (+14d) | 2026-10-20 → 2026-11-02 (+13d) |  |  | 4d → 3d |
| DH1100-A-EQP-74 | Gallery 1102 - D110/Line-Ups // Condensate connections to Floor Drains | 2026-10-09 → 2026-10-21 (+12d) | 2026-10-23 → 2026-11-03 (+11d) |  |  | -6d → -5d |
| DH1100-A-EQP-75 | Gallery 1102 - D110/Line-Ups // Terminate Mod Panels | 2026-10-14 → 2026-10-22 (+8d) | 2026-10-14 → 2026-10-22 (+8d) |  |  | -6d → -4d |
| DH1100-A-EQP-80 | Gallery 1102 - D110/Line-Ups // Electrical Gear FOD Inspection Pre-Start Up | 2026-10-21 → 2026-11-03 (+13d) | 2026-10-21 → 2026-11-03 (+13d) |  |  | 4d → 3d |
| DH1100-A-EQP-78 | Gallery 1102 - D110/Line-Ups // Mechanical Gear FOD Inspection Pre-Start Up | 2026-11-13 → 2026-11-16 (+3d) | 2026-11-17 → 2026-11-18 (+1d) |  |  | -19d → -12d |
| 5 | **E110** | 2026-08-31 → 2026-09-11 (+11d) | 2026-11-17 → 2026-11-18 (+1d) |  |  |  |
| DH1100-A-EQP-85 | Gallery 1102 - E110/Line-Ups // Set MOD-E110-01 | 2026-08-31 A → 2026-09-11 A (+11d) |  |  |  |  |
| DH1100-A-EQP-86 | Gallery 1102 - E110/Line-Ups // Set MOD-E110-02 | 2026-08-31 A → 2026-09-11 A (+11d) |  |  |  |  |
| DH1100-A-EQP-81 | Gallery 1102 - E110/Line-Ups // Set CRAH-DH1100- 31 | 2026-09-04 A → 2026-09-22 A (+18d) |  |  |  |  |
| DH1100-A-EQP-83 | Gallery 1102 - E110/Line-Ups // Set CRAH-DH1100- 32 | 2026-09-04 A → 2026-09-22 A (+18d) |  |  |  |  |
| DH1100-A-EQP-90 | Gallery 1102 - E110/Line-Ups // Pull Cable Tray Feed from MOD to CRAHU's | 2026-09-01 A → 2026-09-24 A (+23d) |  |  |  |  |
| DH1100-A-EQP-92 | Gallery 1102 - E110/Line-Ups // Mount Electrial Gear for Chiller Controls |  | 2026-10-14 → 2026-10-27 (+13d) |  |  | 4d → 3d |
| DH1100-A-EQP-87 | Gallery 1102 - E110/Line-Ups // Set CDU-DH1100- 29 | 2026-09-30 A | 2026-09-30 → 2026-10-01 A (+1d) |  | 0% → 100% | -6d → none |
| DH1100-A-EQP-88 | Gallery 1102 - E110/Line-Ups // Set CDU-DH1100- 30 | 2026-10-01 A | 2026-10-01 → 2026-10-02 A (+1d) |  | 0% → 100% | -6d → none |
| DH1100-A-EQP-84 | Gallery 1102 - E110/Line-Ups // Condensate connections to Floor Drains | 2026-10-02 → 2026-10-08 A (+6d) | 2026-10-16 → 2026-10-08 A (-8d) | 10d → 1d | 0% → 100% | -6d → none |
| DH1100-A-EQP-89 | Gallery 1102 - E110/Line-Ups // Pull Feeder from SWD to MOD | 2026-09-30 → 2026-10-14 (+14d) | 2026-09-30 → 2026-10-14 (+14d) |  |  | -2d → -3d |
| DH1100-A-EQP-91 | Gallery 1102 - E110/Line-Ups // Mechanical Connections to CRAHU Units | 2026-09-30 → 2026-10-14 (+14d) | 2026-10-14 → 2026-10-27 (+13d) |  |  | -4d → -5d |
| DH1100-A-EQP-96 | Gallery 1102 - E110/Line-Ups // Terminate CRAHU Electrical Connections | 2026-09-30 → 2026-10-14 (+14d) | 2026-10-06 → 2026-10-20 (+14d) |  |  | 13d → 12d |
| DH1100-A-EQP-97 | Gallery 1102 - E110/Line-Ups // Pull Feeder and Branch circuits to MIsc equipment and Chiller controls | 2026-09-30 → 2026-10-14 (+14d) | 2026-10-14 → 2026-10-27 (+13d) |  |  | 4d → 3d |
| DH1100-A-EQP-95 | Gallery 1102 - E110/Line-Ups // Terminate Mod Panels | 2026-10-07 → 2026-10-16 (+9d) | 2026-10-14 → 2026-10-22 (+8d) |  |  | -6d → -4d |
| DH1100-A-EQP-99 | Gallery 1102 - E110/Line-Ups // Teminate all Misc Equipment and Chiller Controls | 2026-10-06 → 2026-10-20 (+14d) | 2026-10-20 → 2026-11-02 (+13d) |  |  | 4d → 3d |
| DH1100-A-EQP-94 | Gallery 1102 - E110/Line-Ups // Condensate connections to Floor Drains | 2026-10-09 → 2026-10-21 (+12d) | 2026-10-23 → 2026-11-03 (+11d) |  |  | -6d → -5d |
| DH1100-A-EQP-100 | Gallery 1102 - E110/Line-Ups // Electrical Gear FOD Inspection Pre-Start Up | 2026-10-21 → 2026-11-03 (+13d) | 2026-10-21 → 2026-11-03 (+13d) |  |  | 4d → 3d |
| DH1100-A-EQP-98 | Gallery 1102 - E110/Line-Ups // Mechanical Gear FOD Inspection Pre-Start Up | 2026-11-13 → 2026-11-16 (+3d) | 2026-11-17 → 2026-11-18 (+1d) |  |  | -19d → -12d |
| 6 | **F110** | 2026-09-01 → 2026-09-11 (+10d) | 2026-11-20 → 2026-11-23 (+3d) |  |  |  |
| DH1100-A-EQP-105 | Gallery 1102 - F110/Line-Ups // Set MOD-F110-01 | 2026-09-01 A → 2026-09-11 A (+10d) |  |  |  |  |
| DH1100-A-EQP-106 | Gallery 1102 - F110/Line-Ups // Set MOD-F110-02 | 2026-09-01 A → 2026-09-11 A (+10d) |  |  |  |  |
| DH1100-A-EQP-101 | Gallery 1102 - F110/Line-Ups // Set CRAH-DH1100- 33 | 2026-09-04 A → 2026-09-22 A (+18d) |  |  |  |  |
| DH1100-A-EQP-103 | Gallery 1102 - F110/Line-Ups // Set CRAH-DH1100- 34 | 2026-09-04 A → 2026-09-22 A (+18d) |  |  |  |  |
| DH1100-A-EQP-110 | Gallery 1102 - F110/Line-Ups // Pull Cable Tray Feed from MOD to CRAHU's | 2026-09-02 A → 2026-09-24 A (+22d) |  |  |  |  |
| DH1100-A-EQP-112 | Gallery 1102 - F110/Line-Ups // Mount Electrial Gear for Chiller Controls |  | 2026-10-14 → 2026-10-27 (+13d) |  |  | 4d → 3d |
| DH1100-A-EQP-107 | Gallery 1102 - F110/Line-Ups // Set CDU-DH1100- 31 | 2026-09-30 A | 2026-09-30 → 2026-10-01 A (+1d) |  | 0% → 100% | -3d → none |
| DH1100-A-EQP-108 | Gallery 1102 - F110/Line-Ups // Set CDU-DH1100- 32 | 2026-10-01 A | 2026-10-01 → 2026-10-02 A (+1d) |  | 0% → 100% | -3d → none |
| DH1100-A-EQP-104 | Gallery 1102 - F110/Line-Ups // Condensate connections to Floor Drains | 2026-10-02 → 2026-10-14 (+12d) | 2026-10-16 → 2026-10-14 (-2d) | 10d → 1d |  | -3d → -2d |
| DH1100-A-EQP-109 | Gallery 1102 - F110/Line-Ups // Pull Feeder from SWD to MOD | 2026-09-30 → 2026-10-14 (+14d) | 2026-09-30 → 2026-10-14 (+14d) |  |  | 2d → 1d |
| DH1100-A-EQP-111 | Gallery 1102 - F110/Line-Ups // Mechanical Connections to CRAHU Units | 2026-09-30 → 2026-10-14 (+14d) | 2026-10-14 → 2026-10-27 (+13d) |  |  | -1d → -2d |
| DH1100-A-EQP-113 | Gallery 1102 - F110/Line-Ups // Pull Cable Tray Feed from MOD to CRAHU's | 2026-09-30 → 2026-10-14 (+14d) | 2026-10-06 → 2026-10-20 (+14d) |  |  | -2d → -3d |
| DH1100-A-EQP-117 | Gallery 1102 - F110/Line-Ups // Pull Feeder and Branch circuits to MIsc equipment and Chiller controls | 2026-09-30 → 2026-10-14 (+14d) | 2026-10-14 → 2026-10-27 (+13d) |  |  | 4d → 3d |
| DH1100-A-EQP-116 | Gallery 1102 - F110/Line-Ups // Terminate CRAHU Electrical Connections | 2026-10-02 → 2026-10-16 (+14d) | 2026-10-08 → 2026-10-22 (+14d) |  |  | 11d → 10d |
| DH1100-A-EQP-119 | Gallery 1102 - F110/Line-Ups // Teminate all Misc Equipment and Chiller Controls | 2026-10-06 → 2026-10-20 (+14d) | 2026-10-20 → 2026-11-02 (+13d) |  |  | 4d → 3d |
| DH1100-A-EQP-114 | Gallery 1102 - F110/Line-Ups // Condensate connections to Floor Drains | 2026-10-09 → 2026-10-21 (+12d) | 2026-10-23 → 2026-11-03 (+11d) |  |  | -3d → -2d |
| DH1100-A-EQP-115 | Gallery 1102 - F110/Line-Ups // Terminate Mod Panels | 2026-10-14 → 2026-10-22 (+8d) | 2026-10-14 → 2026-10-22 (+8d) |  |  | -6d → -4d |
| DH1100-A-EQP-120 | Gallery 1102 - F110/Line-Ups // Electrical Gear FOD Inspection Pre-Start Up | 2026-10-21 → 2026-11-03 (+13d) | 2026-10-21 → 2026-11-03 (+13d) |  |  | 4d → 3d |
| DH1100-A-EQP-118 | Gallery 1102 - F110/Line-Ups // Mechanical Gear FOD Inspection Pre-Start Up | 2026-11-18 → 2026-11-19 (+1d) | 2026-11-20 → 2026-11-23 (+3d) |  |  | -19d → -12d |
| 7 | **G110** | 2026-09-02 → 2026-09-11 (+9d) | 2026-11-20 → 2026-11-23 (+3d) |  |  |  |
| DH1100-A-EQP-125 | Gallery 1102 - G110/Line-Ups // Set MOD-G110-01 | 2026-09-02 A → 2026-09-11 A (+9d) |  |  |  |  |
| DH1100-A-EQP-126 | Gallery 1102 - G110/Line-Ups // Set MOD-G110-02 | 2026-09-02 A → 2026-09-11 A (+9d) |  |  |  |  |
| DH1100-A-EQP-121 | Gallery 1102 - G110/Line-Ups // Set CRAH-DH1100- 35 | 2026-09-08 A → 2026-09-23 A (+15d) |  |  |  |  |
| DH1100-A-EQP-123 | Gallery 1102 - G110/Line-Ups // Set CRAH-DH1100- 36 | 2026-09-08 A → 2026-09-23 A (+15d) |  |  |  |  |
| DH1100-A-EQP-129 | Gallery 1102 - G110/Line-Ups // Pull Feeder from SWD to MOD |  | 2026-09-30 → 2026-10-14 (+14d) |  |  | 2d → 1d |
| DH1100-A-EQP-130 | Gallery 1102 - G110/Line-Ups // Pull Cable Tray Feed from MOD to CRAHU's |  | 2026-10-06 → 2026-10-20 (+14d) |  |  | -7d → -8d |
| DH1100-A-EQP-132 | Gallery 1102 - G110/Line-Ups // Mount Electrial Gear for Chiller Controls |  | 2026-10-14 → 2026-10-27 (+13d) |  |  | 14d → 13d |
| DH1100-A-EQP-127 | Gallery 1102 - G110/Line-Ups // Set CDU-DH1100- 33 | 2026-09-30 A | 2026-09-30 → 2026-10-01 A (+1d) |  | 0% → 100% | -3d → none |
| DH1100-A-EQP-128 | Gallery 1102 - G110/Line-Ups // Set CDU-DH1100- 34 | 2026-10-01 A | 2026-10-01 → 2026-10-02 A (+1d) |  | 0% → 100% | -3d → none |
| DH1100-A-EQP-124 | Gallery 1102 - G110/Line-Ups // Condensate connections to Floor Drains | 2026-10-02 → 2026-10-14 (+12d) | 2026-10-16 → 2026-10-14 (-2d) | 10d → 1d |  | -3d → -2d |
| DH1100-A-EQP-131 | Gallery 1102 - G110/Line-Ups // Mechanical Connections to CRAHU Units | 2026-09-30 → 2026-10-14 (+14d) | 2026-10-14 → 2026-10-27 (+13d) |  |  | -1d → -2d |
| DH1100-A-EQP-137 | Gallery 1102 - G110/Line-Ups // Pull Feeder and Branch circuits to MIsc equipment and Chiller controls | 2026-09-30 → 2026-10-14 (+14d) | 2026-10-14 → 2026-10-27 (+13d) |  |  | 14d → 13d |

| ID | Task | Start | Finish | Duration | Complete | Total float | Predecessors |
| --- | --- | --- | --- | --- | --- | --- | --- |
| DH1100-A-EQP-139 | Gallery 1102 - G110/Line-Ups // Teminate all Misc Equipment and Chiller Controls | 2026-10-06 → 2026-10-20 (+14d) | 2026-10-20 → 2026-11-02 (+13d) |  |  | 14d → 13d |  |
| DH1100-A-EQP-133 | Gallery 1102 - G110/Line-Ups // Pull Cable Tray Feed from MOD to CRAHU's | 2026-10-07 → 2026-10-21 (+14d) | 2026-10-14 → 2026-10-27 (+13d) |  |  | -7d → -8d |  |
| DH1100-A-EQP-134 | Gallery 1102 - G110/Line-Ups // Condensate connections to Floor Drains | 2026-10-09 → 2026-10-21 (+12d) | 2026-10-23 → 2026-11-03 (+11d) |  |  | -3d → -2d |  |
| DH1100-A-EQP-136 | Gallery 1102 - G110/Line-Ups // Terminate CRAHU Electrical Connections | 2026-10-09 → 2026-10-23 (+14d) | 2026-10-16 → 2026-10-29 (+13d) |  |  | 6d → 5d |  |
| DH1100-A-EQP-135 | Gallery 1102 - G110/Line-Ups // Terminate Mod Panels | 2026-10-15 → 2026-10-28 (+13d) | 2026-10-15 → 2026-10-28 (+13d) |  |  | -7d → -8d |  |
| DH1100-A-EQP-140 | Gallery 1102 - G110/Line-Ups // Electrical Gear FOD Inspection Pre-Start Up | 2026-10-21 → 2026-11-03 (+13d) | 2026-10-21 → 2026-11-03 (+13d) |  |  | 4d → 3d |  |
| DH1100-A-EQP-138 | Gallery 1102 - G110/Line-Ups // Mechanical Gear FOD Inspection Pre-Start Up | 2026-11-18 → 2026-11-19 (+1d) | 2026-11-20 → 2026-11-23 (+3d) |  |  | -19d → -12d |  |
| 8 | **H110** | 2026-09-03 → 2026-09-11 (+8d) | 2026-11-20 → 2026-11-23 (+3d) |  |  |  |  |
| DH1100-A-EQP-145 | Gallery 1102 - H110/Line-Ups // Set MOD-H110-01 | 2026-09-03 A → 2026-09-11 A (+8d) |  |  |  |  |  |
| DH1100-A-EQP-146 | Gallery 1102 - H110/Line-Ups // Set MOD-H110-02 | 2026-09-03 A → 2026-09-11 A (+8d) |  |  |  |  |  |
| DH1100-A-EQP-141 | Gallery 1102 - H110/Line-Ups // Set CRAH-DH1100- 37 | 2026-09-08 A → 2026-09-23 A (+15d) |  |  |  |  |  |
| DH1100-A-EQP-143 | Gallery 1102 - H110/Line-Ups // Set CRAH-DH1100- 38 | 2026-09-08 A → 2026-09-23 A (+15d) |  |  |  |  |  |
| DH1100-A-EQP-149 | Gallery 1102 - H110/Line-Ups // Pull Feeder from SWD to MOD |  | 2026-09-30 → 2026-10-14 (+14d) |  |  | 2d → 1d |  |
| DH1100-A-EQP-150 | Gallery 1102 - H110/Line-Ups // Pull Cable Tray Feed from MOD to CRAHU's |  | 2026-10-06 → 2026-10-20 (+14d) |  |  | -7d → -8d |  |
| DH1100-A-EQP-152 | Gallery 1102 - H110/Line-Ups // Mount Electrial Gear for Chiller Controls |  | 2026-10-14 → 2026-10-27 (+13d) |  |  | 4d → 3d |  |
| DH1100-A-EQP-147 | Gallery 1102 - H110/Line-Ups // Set CDU-DH1100- 35 | 2026-09-30 A | 2026-09-30 → 2026-10-01 A (+1d) |  | 0% → 100% | -3d → none |  |
| DH1100-A-EQP-148 | Gallery 1102 - H110/Line-Ups // Set CDU-DH1100- 36 | 2026-10-01 A | 2026-10-01 → 2026-10-02 A (+1d) |  | 0% → 100% | -3d → none |  |
| DH1100-A-EQP-144 | Gallery 1102 - H110/Line-Ups // Condensate connections to Floor Drains | 2026-10-02 → 2026-10-08 A (+6d) | 2026-10-16 → 2026-10-08 A (-8d) | 10d → 1d | 0% → 100% | -3d → none |  |
| DH1100-A-EQP-151 | Gallery 1102 - H110/Line-Ups // Mechanical Connections to CRAHU Units | 2026-09-30 → 2026-10-14 (+14d) | 2026-10-14 → 2026-10-27 (+13d) |  |  | -1d → -2d |  |
| DH1100-A-EQP-157 | Gallery 1102 - H110/Line-Ups // Pull Feeder and Branch circuits to MIsc equipment and Chiller controls | 2026-09-30 → 2026-10-14 (+14d) | 2026-10-14 → 2026-10-27 (+13d) |  |  | 4d → 3d |  |
| DH1100-A-EQP-159 | Gallery 1102 - H110/Line-Ups // Teminate all Misc Equipment and Chiller Controls | 2026-10-06 → 2026-10-20 (+14d) | 2026-10-20 → 2026-11-02 (+13d) |  |  | 4d → 3d |  |
| DH1100-A-EQP-153 | Gallery 1102 - H110/Line-Ups // Pull Cable Tray Feed from MOD to CRAHU's | 2026-10-07 → 2026-10-21 (+14d) | 2026-10-14 → 2026-10-27 (+13d) |  |  | -7d → -8d |  |
| DH1100-A-EQP-154 | Gallery 1102 - H110/Line-Ups // Condensate connections to Floor Drains | 2026-10-09 → 2026-10-21 (+12d) | 2026-10-23 → 2026-11-03 (+11d) |  |  | -3d → -2d |  |
| DH1100-A-EQP-156 | Gallery 1102 - H110/Line-Ups // Terminate CRAHU Electrical Connections | 2026-10-09 → 2026-10-23 (+14d) | 2026-10-16 → 2026-10-29 (+13d) |  |  | 6d → 5d |  |
| DH1100-A-EQP-155 | Gallery 1102 - H110/Line-Ups // Terminate Mod Panels | 2026-10-15 → 2026-10-28 (+13d) | 2026-10-15 → 2026-10-28 (+13d) |  |  | -7d → -8d |  |
| DH1100-A-EQP-160 | Gallery 1102 - H110/Line-Ups // Electrical Gear FOD Inspection Pre-Start Up | 2026-10-21 → 2026-11-03 (+13d) | 2026-10-21 → 2026-11-03 (+13d) |  |  | 4d → 3d |  |
| DH1100-A-EQP-158 | Gallery 1102 - H110/Line-Ups // Mechanical Gear FOD Inspection Pre-Start Up | 2026-11-18 → 2026-11-19 (+1d) | 2026-11-20 → 2026-11-23 (+3d) |  |  | -19d → -12d |  |
| 9 | **J110** | 2026-09-04 → 2026-09-11 (+7d) | 2026-11-20 → 2026-11-23 (+3d) |  |  |  |  |
| DH1100-A-EQP-165 | Gallery 1102 - J110/Line-Ups // Set MOD-J110-01 | 2026-09-04 A → 2026-09-11 A (+7d) |  |  |  |  |  |
| DH1100-A-EQP-166 | Gallery 1102 - J110/Line-Ups // Set MOD-J110-02 | 2026-09-04 A → 2026-09-11 A (+7d) |  |  |  |  |  |
| DH1100-A-EQP-161 | Gallery 1102 - J110/Line-Ups // Set CRAH-DH1100- 39 | 2026-09-08 A → 2026-09-23 A (+15d) |  |  |  |  |  |
| DH1100-A-EQP-163 | Gallery 1102 - J110/Line-Ups // Set CRAH-DH1100- 40 | 2026-09-08 A → 2026-09-23 A (+15d) |  |  |  |  |  |
| DH1100-A-EQP-170 | Gallery 1102 - J110/Line-Ups // Pull Cable Tray Feed from MOD to CRAHU's |  | 2026-10-06 → 2026-10-20 (+14d) |  |  | -7d → -8d |  |
| DH1100-A-EQP-168 | Gallery 1102 - J110/Line-Ups // Set CDU-DH1100- 38 | 2026-10-01 A | 2026-10-01 → 2026-10-02 A (+1d) |  | 0% → 100% | -3d → none | DH1100-A-EQP-163, DH1100-A-EQP-167 → DH1100-A-EQP-163 |
| DH1100-A-EQP-167 | Gallery 1102 - J110/Line-Ups // Set CDU-DH1100- 37 | 2026-09-30 → 2026-10-14 (+14d) | 2026-09-30 → 2026-10-14 (+14d) |  |  |  | DH1100-A-EQP-161 → DH1100-A-EQP-161, DH1100-A-EQP-168 |
| DH1100-A-EQP-169 | Gallery 1102 - J110/Line-Ups // Pull Feeder from SWD to MOD | 2026-09-30 → 2026-10-14 (+14d) | 2026-09-30 → 2026-10-14 (+14d) |  |  | 2d → 1d |  |
| DH1100-A-EQP-171 | Gallery 1102 - J110/Line-Ups // Mechanical Connections to CRAHU Units | 2026-09-30 → 2026-10-14 (+14d) | 2026-10-14 → 2026-10-27 (+13d) |  |  | -1d → -2d |  |
| DH1100-A-EQP-172 | Gallery 1102 - J110/Line-Ups // Mount Electrial Gear for Chiller Controls | 2026-09-30 → 2026-10-14 (+14d) | 2026-10-14 → 2026-10-27 (+13d) |  |  | 0d → -1d |  |
| DH1100-A-EQP-164 | Gallery 1102 - J110/Line-Ups // Condensate connections to Floor Drains | 2026-10-02 → 2026-10-15 (+13d) | 2026-10-16 → 2026-10-28 (+12d) |  |  |  |  |
| DH1100-A-EQP-177 | Gallery 1102 - J110/Line-Ups // Pull Feeder and Branch circuits to MIsc equipment and Chiller controls | 2026-10-06 → 2026-10-20 (+14d) | 2026-10-20 → 2026-11-02 (+13d) |  |  | 0d → -1d |  |
| DH1100-A-EQP-173 | Gallery 1102 - J110/Line-Ups // Pull Cable Tray Feed from MOD to CRAHU's | 2026-10-07 → 2026-10-21 (+14d) | 2026-10-14 → 2026-10-27 (+13d) |  |  | -7d → -8d |  |
| DH1100-A-EQP-174 | Gallery 1102 - J110/Line-Ups // Condensate connections to Floor Drains | 2026-10-09 → 2026-10-22 (+13d) | 2026-10-23 → 2026-11-04 (+12d) |  |  |  |  |
| DH1100-A-EQP-176 | Gallery 1102 - J110/Line-Ups // Terminate CRAHU Electrical Connections | 2026-10-09 → 2026-10-23 (+14d) | 2026-10-16 → 2026-10-29 (+13d) |  |  | 6d → 5d |  |
| DH1100-A-EQP-179 | Gallery 1102 - J110/Line-Ups // Teminate all Misc Equipment and Chiller Controls | 2026-10-13 → 2026-10-26 (+13d) | 2026-10-26 → 2026-11-06 (+11d) |  |  | 0d → -1d |  |
| DH1100-A-EQP-175 | Gallery 1102 - J110/Line-Ups // Terminate Mod Panels | 2026-10-15 → 2026-10-28 (+13d) | 2026-10-15 → 2026-10-28 (+13d) |  |  | -7d → -8d |  |
| DH1100-A-EQP-180 | Gallery 1102 - J110/Line-Ups // Electrical Gear FOD Inspection Pre-Start Up | 2026-10-27 → 2026-11-09 (+13d) | 2026-10-27 → 2026-11-09 (+13d) |  |  | 0d → -1d |  |
| DH1100-A-EQP-178 | Gallery 1102 - J110/Line-Ups // Mechanical Gear FOD Inspection Pre-Start Up | 2026-11-18 → 2026-11-19 (+1d) | 2026-11-20 → 2026-11-23 (+3d) |  |  | -19d → -12d |  |
| 10 | **K110** | 2026-09-08 → 2026-09-11 (+3d) | 2026-11-20 → 2026-11-23 (+3d) |  |  |  |  |
| DH1100-A-EQP-185 | Gallery 1102 - K110/Line-Ups // Set MOD-K110-01 | 2026-09-08 A → 2026-09-11 A (+3d) |  |  |  |  |  |
| DH1100-A-EQP-186 | Gallery 1102 - K110/Line-Ups // Set MOD-K110-02 | 2026-09-08 A → 2026-09-11 A (+3d) |  |  |  |  |  |
| DH1100-A-EQP-181 | Gallery 1102 - K110/Line-Ups // Set CRAH-DH1100- 41 | 2026-09-09 A → 2026-09-24 A (+15d) |  |  |  |  |  |
| DH1100-A-EQP-183 | Gallery 1102 - K110/Line-Ups // Set CRAH-DH1100- 42 | 2026-09-09 A → 2026-09-24 A (+15d) |  |  |  |  |  |
| DH1100-A-EQP-190 | Gallery 1102 - K110/Line-Ups // Pull Cable Tray Feed from MOD to CRAHU's | 2026-09-09 A → 2026-09-24 A (+15d) |  |  |  |  |  |
| DH1100-A-EQP-197 | Gallery 1102 - K110/Line-Ups // Pull Feeder and Branch circuits to MIsc equipment and Chiller controls |  | 2026-10-14 → 2026-10-27 (+13d) |  |  | 5d → 7d |  |
| DH1100-A-EQP-187 | Gallery 1102 - K110/Line-Ups // Set CDU-DH1100- 39 | 2026-09-30 A | 2026-09-30 → 2026-10-01 A (+1d) |  | 0% → 100% | -3d → none |  |
| DH1100-A-EQP-188 | Gallery 1102 - K110/Line-Ups // Set CDU-DH1100- 40 | 2026-10-01 A | 2026-10-01 → 2026-10-02 A (+1d) |  | 0% → 100% | -3d → none |  |
| DH1100-A-EQP-184 | Gallery 1102 - K110/Line-Ups // Condensate connections to Floor Drains | 2026-10-02 → 2026-10-14 (+12d) | 2026-10-16 → 2026-10-27 (+11d) |  |  | -3d → -2d |  |
| DH1100-A-EQP-189 | Gallery 1102 - K110/Line-Ups // Pull Feeder from SWD to MOD | 2026-09-30 → 2026-10-14 (+14d) | 2026-09-30 → 2026-10-14 (+14d) |  |  | 2d → 1d |  |
| DH1100-A-EQP-191 | Gallery 1102 - K110/Line-Ups // Mechanical Connections to CRAHU Units | 2026-09-30 → 2026-10-14 (+14d) | 2026-10-14 → 2026-10-27 (+13d) |  |  | -1d → -2d |  |
| DH1100-A-EQP-192 | Gallery 1102 - K110/Line-Ups // Mount Electrial Gear for Chiller Controls | 2026-09-30 → 2026-10-14 (+14d) | 2026-10-09 → 2026-10-23 (+14d) |  |  | 3d → 2d |  |
| DH1100-A-EQP-193 | Gallery 1102 - K110/Line-Ups // Pull Cable Tray Feed from MOD to CRAHU's | 2026-09-30 → 2026-10-14 (+14d) | 2026-10-06 → 2026-10-20 (+14d) |  |  | -2d → -3d |  |
| DH1100-A-EQP-196 | Gallery 1102 - K110/Line-Ups // Terminate CRAHU Electrical Connections | 2026-10-02 → 2026-10-16 (+14d) | 2026-10-08 → 2026-10-22 (+14d) |  |  | 11d → 10d |  |
| DH1100-A-EQP-194 | Gallery 1102 - K110/Line-Ups // Condensate connections to Floor Drains | 2026-10-09 → 2026-10-21 (+12d) | 2026-10-23 → 2026-11-03 (+11d) |  |  | -3d → -2d |  |
| DH1100-A-EQP-199 | Gallery 1102 - K110/Line-Ups // Teminate all Misc Equipment and Chiller Controls | 2026-10-07 → 2026-10-21 (+14d) | 2026-10-21 → 2026-11-03 (+13d) |  |  | 3d → 2d |  |
| DH1100-A-EQP-195 | Gallery 1102 - K110/Line-Ups // Terminate Mod Panels | 2026-10-15 → 2026-10-28 (+13d) | 2026-10-15 → 2026-10-28 (+13d) |  |  | -7d → -8d |  |
| DH1100-A-EQP-200 | Gallery 1102 - K110/Line-Ups // Electrical Gear FOD Inspection Pre-Start Up | 2026-10-27 → 2026-11-09 (+13d) | 2026-10-27 → 2026-11-09 (+13d) |  |  | 0d → -1d |  |
| DH1100-A-EQP-198 | Gallery 1102 - K110/Line-Ups // Mechanical Gear FOD Inspection Pre-Start Up | 2026-11-18 → 2026-11-19 (+1d) | 2026-11-20 → 2026-11-23 (+3d) |  |  | -19d → -12d |  |
| 11 | **R110** | 2026-09-09 → 2026-09-11 (+2d) | 2026-11-20 → 2026-11-23 (+3d) |  |  |  |  |
| DH1100-A-EQP-205 | Gallery 1102 - R110/Line-Ups // Set MOD-R110-01 | 2026-09-09 A → 2026-09-11 A (+2d) |  |  |  |  |  |
| DH1100-A-EQP-206 | Gallery 1102 - R110/Line-Ups // Set MOD-R110-02 | 2026-09-09 A → 2026-09-11 A (+2d) |  |  |  |  |  |

| ID | Task | Start | Finish | Duration | Complete | Total float | Predecessors |
| --- | --- | --- | --- | --- | --- | --- | --- |
| DH1100-A-EQP-201 | Gallery 1102 - R110/Line-Ups // Set CRAH-DH1100- 43 | 2026-09-09 A → 2026-09-24 A (+15d) |  |  |  |  |  |
| DH1100-A-EQP-203 | Gallery 1102 - R110/Line-Ups // Set CRAH-DH1100- 44 | 2026-09-09 A → 2026-09-24 A (+15d) |  |  |  |  |  |
| DH1100-A-EQP-207 | Gallery 1102 - R110/Line-Ups // Set CDU-DH1100- 41 | 2026-09-30 A | 2026-09-30 → 2026-10-07 A (+7d) |  | 0% → 100% | -11d → none |  |
| DH1100-A-EQP-208 | Gallery 1102 - R110/Line-Ups // Set CDU-DH1100- 42 | 2026-09-30 A | 2026-09-30 → 2026-10-07 A (+7d) |  | 0% → 100% | -11d → none |  |
| DH1100-A-EQP-204 | Gallery 1102 - R110/Line-Ups // Condensate connections to Floor Drains | 2026-10-01 → 2026-10-08 A (+7d) | 2026-10-15 → 2026-10-08 A (-7d) | 10d → 1d | 0% → 100% | -11d → none |  |
| DH1100-A-EQP-214 | Gallery 1102 - R110/Line-Ups // Condensate connections to Floor Drains | 2026-10-01 → 2026-10-08 A (+7d) | 2026-10-15 → 2026-10-08 A (-7d) | 10d → 1d | 0% → 100% | -11d → none | DH1100-A-EQP-204 SS, DH1100-A-EQP-211 FF → DH1100-A-EQP-204 SS |
| DH1100-A-EQP-211 | Gallery 1102 - R110/Line-Ups // Mechanical Connections to CRAHU Units | 2026-09-30 → 2026-10-14 (+14d) | 2026-10-14 → 2026-10-27 (+13d) |  |  | -10d → 3d |  |
| DH1100-A-EQP-212 | Gallery 1102 - R110/Line-Ups // Mount Electrial Gear for Chiller Controls | 2026-09-30 → 2026-10-14 (+14d) | 2026-10-06 → 2026-10-20 (+14d) |  |  | 5d → 4d |  |
| DH1100-A-EQP-213 | Gallery 1102 - R110/Line-Ups // Pull Cable Tray Feed from MOD to CRAHU's | 2026-09-30 → 2026-10-14 (+14d) | 2026-10-06 → 2026-10-20 (+14d) |  |  | -11d → -12d |  |
| DH1100-A-EQP-221 | Gallery 1102 - R110/Line-Ups // Set SWD-R110 | 2026-10-01 → 2026-10-14 (+13d) | 2026-10-01 → 2026-10-14 (+13d) |  |  |  |  |
| DH1100-A-EQP-222 | Gallery 1102 - R110/Line-Ups // Set SWD-TIE-R110 | 2026-10-02 → 2026-10-15 (+13d) | 2026-10-02 → 2026-10-15 (+13d) |  |  |  |  |
| DH1100-A-EQP-209 | Gallery 1102 - R110/Line-Ups // Pull Feeder from SWD to MOD | 2026-10-05 → 2026-10-16 (+11d) | 2026-10-05 → 2026-10-16 (+11d) |  |  |  |  |
| DH1100-A-EQP-216 | Gallery 1102 - R110/Line-Ups // Terminate CRAHU Electrical Connections | 2026-10-02 → 2026-10-16 (+14d) | 2026-10-08 → 2026-10-22 (+14d) |  |  | -11d → -12d |  |
| DH1100-A-EQP-217 | Gallery 1102 - R110/Line-Ups // Pull Feeder and Branch circuits to MIsc equipment and Chiller controls | 2026-10-06 → 2026-10-20 (+14d) | 2026-10-20 → 2026-11-02 (+13d) |  |  | 5d → 4d |  |
| DH1100-A-EQP-219 | Gallery 1102 - R110/Line-Ups // Teminate all Misc Equipment and Chiller Controls | 2026-10-13 → 2026-10-26 (+13d) | 2026-10-19 → 2026-10-30 (+11d) |  |  | 5d → 4d |  |
| DH1100-A-EQP-215 | Gallery 1102 - R110/Line-Ups // Terminate Mod Panels | 2026-10-15 → 2026-10-28 (+13d) | 2026-10-15 → 2026-10-28 (+13d) |  |  | -7d → -8d |  |
| DH1100-A-EQP-220 | Gallery 1102 - R110/Line-Ups // Electrical Gear FOD Inspection Pre-Start Up | 2026-10-27 → 2026-11-09 (+13d) | 2026-10-27 → 2026-11-09 (+13d) |  |  | 0d → -1d |  |
| DH1100-A-EQP-218 | Gallery 1102 - R110/Line-Ups // Mechanical Gear FOD Inspection Pre-Start Up | 2026-11-18 → 2026-11-19 (+1d) | 2026-11-20 → 2026-11-23 (+3d) |  |  | -19d → -12d |  |
| 12 | **Equipment Connections** | 2026-10-07 → 2026-10-14 (+7d) | 2026-10-21 → 2026-11-03 (+13d) |  |  |  |  |
| 1 | **CRAH** | 2026-10-09 → 2026-10-23 (+14d) | 2026-10-21 → 2026-11-03 (+13d) |  |  |  |  |
| DH1100.MG.A110.8678 | Gallery 1102 // DH 1100 / Elec Room // CRAH Duct Work Termination | 2026-10-09 → 2026-10-23 (+14d) | 2026-10-13 → 2026-10-26 (+13d) |  |  | -11d → -12d |  |
| DH1100.MG.A110.8677 | Gallery 1102 // DH 1100 / Elec Room // CRAH Chilled Water | 2026-10-14 → 2026-10-27 (+13d) | 2026-10-15 → 2026-10-28 (+13d) |  |  | -11d → -12d |  |
| DH1100.MG.A110.8675 | Gallery 1102 // DH 1100 / Elec Room // CRAH Power Connections | 2026-10-16 → 2026-10-29 (+13d) | 2026-10-19 → 2026-10-30 (+11d) |  |  | -11d → -12d |  |
| DH1100.MG.A110.8676 | Gallery 1102 // DH 1100 / Elec Room // CRAH LV Connections | 2026-10-20 → 2026-11-02 (+13d) | 2026-10-21 → 2026-11-03 (+13d) |  |  | -11d → -12d |  |
| 3 | **MOD** | 2026-10-07 → 2026-10-21 (+14d) | 2026-10-13 → 2026-10-22 (+9d) |  |  |  |  |
| DH1100.MG.A110.8682 | Gallery 1102 // DH 1100 / Elec Room // MOD Power Connections | 2026-10-07 → 2026-10-21 (+14d) | 2026-10-08 → 2026-10-22 (+14d) |  |  | -5d → -4d |  |
| DH1100.MG.A110.8683 | Gallery 1102 // DH 1100 / Elec Room // MOD LV Connections | 2026-10-09 → 2026-10-21 (+12d) | 2026-10-13 → 2026-10-22 (+9d) |  |  | -5d → -4d | DH1100.MG.A110.8682 → DH1100.MG.A110.8682 FF |
| 4 | **Gallery 1103** |  | 2026-11-02 → 2026-11-16 (+14d) |  |  |  |  |
| 1 | **Architectural** |  | 2026-10-23 → 2026-11-05 (+13d) |  |  |  |  |
| F.1000A.1186 | DH 1100/Gallery 1103 // Rough-In Security | 2026-08-07 A → 2026-08-11 A (+4d) |  |  |  |  |  |
| F.1000A.1375 | DH 1100/Gallery 1103 // BMS & EPMS Rough-In | 2026-09-30 → 2026-08-11 A (-50d) | 2026-10-01 → 2026-08-12 A (-50d) |  | 0% → 100% | 37d → none |  |
| G.1103.1090 | DH 1100/Gallery 1103 // Install Balance of Sheetrock on walls | 2026-08-07 A → 2026-08-17 A (+10d) |  |  |  |  |  |
| G.1103.1100 | DH 1100/Gallery 1103 // Tape and finish walls | 2026-08-17 A → 2026-08-21 A (+4d) |  |  |  |  |  |
| G.1103.1060 | DH 1100/Gallery 1103 // Install wall door frames | 2026-08-27 A → 2026-08-31 A (+4d) |  |  |  |  |  |
| G.1103.1110 | DH 1100/Gallery 1103 // Prime and Paint walls | 2026-08-21 A → 2026-09-02 A (+12d) |  |  |  |  |  |
| G.1103.1120 | DH 1100/Gallery 1103 // Touch up Walls and Final Paint | 2026-08-31 A → 2026-09-14 A (+14d) |  |  |  |  |  |
| G.1103.1130 | DH 1100/Gallery 1103 // Install Trim and Devices | 2026-09-08 A → 2026-09-17 A (+9d) |  |  |  |  |  |
| F.1000A.1187 | DH 1100/Gallery 1103 // Pull & Test Security Cable | 2026-09-30 → 2026-10-14 (+14d) | 2026-10-02 → 2026-10-16 (+14d) |  |  | 27d → 37d |  |
| F.1000A.1188 | DH 1100/Gallery 1103 // Install Security Devices | 2026-10-05 → 2026-10-19 (+14d) | 2026-10-06 → 2026-10-20 (+14d) |  |  | 27d → 37d |  |
| F.1000A.1189 | DH 1100/Gallery 1103 // Mount & Terminate Security Devices | 2026-10-07 → 2026-10-21 (+14d) | 2026-10-14 → 2026-10-27 (+13d) |  |  | 27d → 37d |  |
| F.1000A.1190 | DH 1100/Gallery 1103 // Test Security Devices | 2026-10-15 → 2026-10-28 (+13d) | 2026-10-16 → 2026-10-29 (+13d) |  |  | 27d → 37d |  |
| G.1103.1140 | DH 1100/Gallery 1103 // Suffolk Pre Punch | 2026-10-19 → 2026-10-30 (+11d) | 2026-10-23 → 2026-11-05 (+13d) |  |  | 27d → 37d |  |
| 3 | **Equipment Line-Ups** | 2026-09-10 → 2026-09-15 (+5d) | 2026-11-02 → 2026-11-16 (+14d) |  |  |  |  |
| 1 | **A110** | 2026-09-10 → 2026-09-15 (+5d) | 2026-10-28 → 2026-11-10 (+13d) |  |  |  |  |
| DH1100-B-EQP-1 | Gallery 1103 - A110/Line-Ups // Set CRAH-DH1100- 01 | 2026-09-10 A → 2026-09-15 A (+5d) |  |  |  |  |  |
| DH1100-B-EQP-4 | Gallery 1103 - A110/Line-Ups // Set CRAH-DH1100- 02 | 2026-09-10 A → 2026-09-15 A (+5d) |  |  |  |  |  |
| DH1100-B-EQP-199 | Gallery 1103 - A110/Line-Ups // Set CDU-DH1100-01 | 2026-09-30 A | 2026-09-30 → 2026-10-07 A (+7d) |  | 0% → 100% | 38d → none |  |
| DH1100-B-EQP-200 | Gallery 1103 - A110/Line-Ups // Set CDU-DH1100-02 | 2026-10-01 A | 2026-10-01 → 2026-10-02 A (+1d) |  | 0% → 100% | 38d → none | DH1100-B-EQP-199 → DH1100-B-EQP-4 |
| DH1100-B-EQP-10 | Gallery 1103 - A110/Line-Ups // Mount Electrial Gear for Chiller Controls | 2026-09-30 → 2026-10-14 (+14d) | 2026-10-14 → 2026-10-27 (+13d) |  |  | 24d → -2d |  |
| DH1100-B-EQP-14 | Gallery 1103 - A110/Line-Ups // Terminate Electrical Connections - CRAHU | 2026-10-05 → 2026-10-14 (+9d) | 2026-10-07 → 2026-10-16 (+9d) |  |  | 36d → 13d | Gallery 1103 - A110/Line-Ups // Pull Cable Tray Feed from MOD to CRAHU's → DH1100-B-EQP-1 |
| DH1100-B-EQP-3 | Gallery 1103 - A110/Line-Ups // Condensate connections to Floor Drains | 2026-09-30 → 2026-10-14 (+14d) | 2026-10-14 → 2026-10-27 (+13d) |  |  | 26d → -5d |  |
| DH1100-B-EQP-9 | Gallery 1103 - A110/Line-Ups // Mechanical Connections to CRAHU Units | 2026-09-30 → 2026-10-14 (+14d) | 2026-10-06 → 2026-10-20 (+14d) |  |  | 26d → -5d |  |
| DH1100-B-EQP-15 | Gallery 1103 - A110/Line-Ups // Pull Feeder and Branch circuits to MIsc equipment and Chiller controls | 2026-10-06 → 2026-10-20 (+14d) | 2026-10-20 → 2026-11-02 (+13d) |  |  | 24d → -2d | DH1100-B-EQP-10 SS+4d → DH1100-B-EQP-10 SS+4d, DH1100-B-EQP-199, DH1100-B-EQP-200 |
| DH1100-B-EQP-12 | Gallery 1103 - A110/Line-Ups // Condensate connections to Floor Drains | 2026-10-07 → 2026-10-21 (+14d) | 2026-10-21 → 2026-11-03 (+13d) |  |  | 26d → -5d |  |
| DH1100-B-EQP-17 | Gallery 1103 - A110/Line-Ups // Teminate all Misc Equipment and Chiller Controls | 2026-10-13 → 2026-10-26 (+13d) | 2026-10-26 → 2026-11-06 (+11d) |  |  | 24d → -2d |  |
| DH1100-B-EQP-16 | Gallery 1103 - A110/Line-Ups // Mechanical Gear FOD Inspection Pre-Start Up | 2026-10-22 → 2026-11-04 (+13d) | 2026-10-26 → 2026-11-06 (+11d) |  |  | 26d → -5d |  |
| DH1100-B-EQP-18 | Gallery 1103 - A110/Line-Ups // Electrical Gear FOD Inspection Pre-Start Up | 2026-10-27 → 2026-11-09 (+13d) | 2026-10-28 → 2026-11-10 (+13d) |  |  | 24d → -2d | Gallery 1103 - A110/Line-Ups // Terminate MOD Panels, DH1100-B-EQP-17, DH1100-B-EQP-14 → DH1100-B-EQP-14, DH1100-B-EQP-17 |
| 2 | **B110** | 2026-09-10 → 2026-09-15 (+5d) | 2026-11-02 → 2026-11-16 (+14d) |  |  |  |  |
| DH1100-B-EQP-19 | Gallery 1103 - B110/Line-Ups // Set CRAH-DH1100- 03 | 2026-09-10 A → 2026-09-15 A (+5d) |  |  |  |  |  |
| DH1100-B-EQP-22 | Gallery 1103 - B110/Line-Ups // Set CRAH-DH1100- 04 | 2026-09-10 A → 2026-09-15 A (+5d) |  |  |  |  |  |
| DH1100-B-EQP-201 | Gallery 1103 - B110/Line-Ups // Set CDU-DH1100-03 |  | 2026-09-30 → 2026-10-07 A (+7d) |  | 0% → 100% | 39d → none | Gallery 1103 - B110/Line-Ups // Set MOD B140-02 (Does No apply) → DH1100-B-EQP-22 |
| DH1100-B-EQP-202 | Gallery 1103 - B110/Line-Ups // Set CDU-DH1100-04 |  | 2026-09-30 → 2026-10-07 A (+7d) |  | 0% → 100% | 39d → none | DH1100-B-EQP-201 SS+1d → DH1100-B-EQP-22 |
| DH1100-B-EQP-20 | Gallery 1103 - B110/Line-Ups // Connect CRAH units | 2026-09-30 → 2026-10-14 (+14d) | 2026-10-14 → 2026-10-27 (+13d) |  |  | 21d → -10d |  |
| DH1100-B-EQP-27 | Gallery 1103 - B110/Line-Ups // Mechanical Connections to CRAHU Units | 2026-09-30 → 2026-10-14 (+14d) | 2026-10-14 → 2026-10-27 (+13d) |  |  | 26d → -5d |  |
| DH1100-B-EQP-28 | Gallery 1103 - B110/Line-Ups // Mount Electrial Gear for Chiller Controls | 2026-09-30 → 2026-10-14 (+14d) | 2026-10-14 → 2026-10-27 (+13d) |  |  | 24d → -2d | Gallery 1103 - B110/Line-Ups // Set MOD B140-02 (Does No apply) → DH1100-B-EQP-19 |
| DH1100-B-EQP-32 | Gallery 1103 - B110/Line-Ups // Terminate CRAHU Electrical Connections | 2026-10-09 → 2026-10-14 (+5d) | 2026-10-16 → 2026-10-20 (+4d) |  |  | 30d → 11d | Gallery 1103 - B110/Line-Ups // Pull Cable Tray Feed from MOD to CRAHU's, Gallery 1103 - B110/Line-Ups // Pull Cable Tray Feed from MOD to CRAHU's SS+2d → DH1100-B-EQP-19 |
| DH1100-B-EQP-33 | Gallery 1103 - B110/Line-Ups // Pull Feeder and Branch circuits to MIsc equipment and Chiller controls | 2026-10-06 → 2026-10-20 (+14d) | 2026-10-20 → 2026-11-02 (+13d) |  |  | 24d → -2d | DH1100-B-EQP-28 SS+4d → DH1100-B-EQP-202, DH1100-B-EQP-201, DH1100-B-EQP-28 SS+4d |
| DH1100-B-EQP-21 | Gallery 1103 - B110/Line-Ups // Condensate connections to Floor Drains | 2026-10-07 → 2026-10-21 (+14d) | 2026-10-21 → 2026-11-03 (+13d) |  |  | 21d → -10d |  |
| DH1100-B-EQP-35 | Gallery 1103 - B110/Line-Ups // Teminate all Misc Equipment and Chiller Controls | 2026-10-13 → 2026-10-26 (+13d) | 2026-10-26 → 2026-11-06 (+11d) |  |  | 24d → -2d |  |
| DH1100-B-EQP-30 | Gallery 1103 - B110/Line-Ups // Condensate connections to Floor Drains | 2026-10-15 → 2026-10-28 (+13d) | 2026-10-28 → 2026-11-10 (+13d) |  |  | 21d → -10d |  |

| ID | Task | Start | Finish | Complete | Total float | Predecessors |
| --- | --- | --- | --- | --- | --- | --- |
| DH1100-B-EQP-36 | Gallery 1103 - B110/Line-Ups // Electrical Gear FOD Inspection Pre-Start Up | 2026-10-27 → 2026-11-09 (+13d) | 2026-10-28 → 2026-11-10 (+13d) |  | 24d → -2d | Gallery 1103 - B110/Line-Ups // Terminat Mod Panels, DH1100-B-EQP-35, DH1100-B-EQP-32 → DH1100-B-EQP-32, DH1100-B-EQP-35 |
| DH1100-B-EQP-34 | Gallery 1103 - B110/Line-Ups // Mechanical Gear FOD Inspection Pre-Start Up | 2026-10-29 → 2026-11-12 (+14d) | 2026-11-02 → 2026-11-16 (+14d) |  | 21d → -10d |  |
| 3 | **C110** | 2026-09-10 → 2026-09-16 (+6d) | 2026-11-02 → 2026-11-16 (+14d) |  |  |  |
| DH1100-B-EQP-37 | Gallery 1103 - C110/Line-Ups // Set CRAH-DH1100- 05 | 2026-09-10 A → 2026-09-16 A (+6d) |  |  |  |  |
| DH1100-B-EQP-40 | Gallery 1103 - C110/Line-Ups // Set CRAH-DH1100- 06 | 2026-09-10 A → 2026-09-16 A (+6d) |  |  |  |  |
| DH1100-B-EQP-46 | Gallery 1103 - C110/Line-Ups // Mount Electrial Gear for Chiller Controls |  | 2026-10-14 → 2026-10-27 (+13d) |  | 28d → 2d | Gallery 1103 - C110/Line-Ups // Set MOD C140-02 (Does No apply) → DH1100-B-EQP-37, DH1100-B-EQP-40 |
| DH1100-B-EQP-203 | Gallery 1103 - C110/Line-Ups // Set CDU-DH1100-05 | 2026-09-30 A | 2026-09-30 → 2026-10-07 A (+7d) | 0% → 100% | 38d → none | Gallery 1103 - C110/Line-Ups // Set MOD C140-02 (Does No apply) → DH1100-B-EQP-40 |
| DH1100-B-EQP-204 | Gallery 1103 - C110/Line-Ups // Set CDU-DH1100-06 | 2026-10-01 A | 2026-10-01 → 2026-10-07 A (+6d) | 0% → 100% | 38d → none | DH1100-B-EQP-203 → DH1100-B-EQP-40 |
| DH1100-B-EQP-38 | Gallery 1103 - C110/Line-Ups // Connect CRAH units | 2026-09-30 → 2026-10-14 (+14d) | 2026-10-14 → 2026-10-27 (+13d) |  | 21d → -10d |  |
| DH1100-B-EQP-45 | Gallery 1103 - C110/Line-Ups // Mechanical Connections to CRAHU Units | 2026-09-30 → 2026-10-14 (+14d) | 2026-10-14 → 2026-10-27 (+13d) |  | 26d → -5d |  |
| DH1100-B-EQP-50 | Gallery 1103 - C110/Line-Ups // Terminate CRAHU Electrical Connections | 2026-10-09 → 2026-10-14 (+5d) | 2026-10-16 → 2026-10-20 (+4d) |  | 30d → 11d | Gallery 1103 - C110/Line-Ups // Pull Cable Tray Feed from MOD to CRAHU's, Gallery 1103 - C110/Line-Ups // Pull Cable Tray Feed from MOD to CRAHU's SS+2d → DH1100-B-EQP-40, DH1100-B-EQP-37 |
| DH1100-B-EQP-51 | Gallery 1103 - C110/Line-Ups // Pull Feeder and Branch circuits to MIsc equipment and Chiller controls | 2026-09-30 → 2026-10-14 (+14d) | 2026-10-14 → 2026-10-27 (+13d) |  | 28d → 2d | DH1100-B-EQP-46 SS+4d → DH1100-B-EQP-204, DH1100-B-EQP-203, DH1100-B-EQP-46 SS+4d |
| DH1100-B-EQP-53 | Gallery 1103 - C110/Line-Ups // Teminate all Misc Equipment and Chiller Controls | 2026-10-06 → 2026-10-20 (+14d) | 2026-10-20 → 2026-11-02 (+13d) |  | 28d → 2d |  |
| DH1100-B-EQP-39 | Gallery 1103 - C110/Line-Ups // Condensate connections to Floor Drains | 2026-10-07 → 2026-10-21 (+14d) | 2026-10-21 → 2026-11-03 (+13d) |  | 21d → -10d |  |
| DH1100-B-EQP-48 | Gallery 1103 - C110/Line-Ups // Condensate connections to Floor Drains | 2026-10-15 → 2026-10-28 (+13d) | 2026-10-28 → 2026-11-10 (+13d) |  | 21d → -10d |  |
| DH1100-B-EQP-54 | Gallery 1103 - C110/Line-Ups // Electrical Gear FOD Inspection Pre-Start Up | 2026-10-21 → 2026-11-03 (+13d) | 2026-10-22 → 2026-11-04 (+13d) |  | 28d → 2d | Gallery 1103 - C110/Line-Ups // Terminat Mod Panels, DH1100-B-EQP-53, DH1100-B-EQP-50 → DH1100-B-EQP-50, DH1100-B-EQP-53 |
| DH1100-B-EQP-52 | Gallery 1103 - C110/Line-Ups // Mechanical Gear FOD Inspection Pre-Start Up | 2026-10-29 → 2026-11-12 (+14d) | 2026-11-02 → 2026-11-16 (+14d) |  | 21d → -10d |  |
| 4 | **D110** | 2026-09-11 → 2026-09-16 (+5d) | 2026-10-27 → 2026-11-06 (+10d) |  |  |  |
| DH1100-B-EQP-55 | Gallery 1103 - D110/Line-Ups // Set CRAH-DH1100- 07 | 2026-09-11 A → 2026-09-16 A (+5d) |  |  |  |  |
| DH1100-B-EQP-58 | Gallery 1103 - D110/Line-Ups // Set CRAH-DH1100-08 | 2026-09-11 A → 2026-09-16 A (+5d) |  |  |  |  |
| DH1100-B-EQP-205 | Gallery 1103 - D110/Line-Ups // Set CDU-DH1100-07 |  | 2026-09-30 → 2026-10-07 A (+7d) | 0% → 100% | 39d → none | Gallery 1103 - D110/Line-Ups // Set MOD D140-02 (Does No apply) → DH1100-B-EQP-58 |
| DH1100-B-EQP-56 | Gallery 1103 - D110/Line-Ups // Connect CRAH units |  | 2026-10-14 → 2026-10-27 (+13d) |  | 25d → -5d |  |
| DH1100-B-EQP-63 | Gallery 1103 - D110/Line-Ups // Mechanical Connections to CRAHU Units |  | 2026-10-14 → 2026-10-27 (+13d) |  | 30d → 0d |  |
| DH1100-B-EQP-64 | Gallery 1103 - D110/Line-Ups // Mount Electrial Gear for Chiller Controls |  | 2026-10-14 → 2026-10-27 (+13d) |  | 28d → 2d | Gallery 1103 - D110/Line-Ups // Set MOD D140-02 (Does No apply) → DH1100-B-EQP-58, DH1100-B-EQP-55 |
| DH1100-B-EQP-206 | Gallery 1103 - D110/Line-Ups // Set CDU-DH1100-08 |  | 2026-09-30 → 2026-10-07 A (+7d) | 0% → 100% | 39d → none | DH1100-B-EQP-205 SS+1d → DH1100-B-EQP-58 |
| DH1100-B-EQP-57 | Gallery 1103 - D110/Line-Ups // Condensate connections to Floor Drains | 2026-10-01 → 2026-10-14 (+13d) | 2026-10-15 → 2026-10-27 (+12d) |  | 25d → -5d |  |
| DH1100-B-EQP-68 | Gallery 1103 - D110/Line-Ups // Terminate CRAHU Electrical Connections | 2026-10-09 → 2026-10-14 (+5d) | 2026-10-16 → 2026-10-20 (+4d) |  | 30d → 11d | Gallery 1103 - D110/Line-Ups // Pull Cable Tray Feed from MOD to CRAHU's, Gallery 1103 - D110/Line-Ups // Pull Cable Tray Feed from MOD to CRAHU's SS+2d → DH1100-B-EQP-58, DH1100-B-EQP-55 |
| DH1100-B-EQP-69 | Gallery 1103 - D110/Line-Ups // Pull Feeder and Branch circuits to MIsc equipment and Chiller controls | 2026-09-30 → 2026-10-14 (+14d) | 2026-10-14 → 2026-10-27 (+13d) |  | 28d → 2d | DH1100-B-EQP-64 SS+4d → DH1100-B-EQP-206, DH1100-B-EQP-205, DH1100-B-EQP-64 SS+4d |
| DH1100-B-EQP-71 | Gallery 1103 - D110/Line-Ups // Teminate all Misc Equipment and Chiller Controls | 2026-10-06 → 2026-10-20 (+14d) | 2026-10-20 → 2026-11-02 (+13d) |  | 28d → 2d |  |
| DH1100-B-EQP-66 | Gallery 1103 - D110/Line-Ups // Condensate connections to Floor Drains | 2026-10-08 → 2026-10-21 (+13d) | 2026-10-22 → 2026-11-03 (+12d) |  | 25d → -5d |  |
| DH1100-B-EQP-72 | Gallery 1103 - D110/Line-Ups // Electrical Gear FOD Inspection Pre-Start Up | 2026-10-21 → 2026-11-03 (+13d) | 2026-10-22 → 2026-11-04 (+13d) |  | 28d → 2d | Gallery 1103 - D110/Line-Ups // Terminat Mod Panels, DH1100-B-EQP-71, DH1100-B-EQP-68 → DH1100-B-EQP-68, DH1100-B-EQP-71 |
| DH1100-B-EQP-70 | Gallery 1103 - D110/Line-Ups // Mechanical Gear FOD Inspection Pre-Start Up | 2026-10-23 → 2026-11-04 (+12d) | 2026-10-27 → 2026-11-06 (+10d) |  | 25d → -5d |  |
| 5 | **E110** | 2026-09-11 → 2026-09-17 (+6d) | 2026-11-02 → 2026-11-16 (+14d) |  |  |  |
| DH1100-B-EQP-73 | Gallery 1103 - E110/Line-Ups // Set CRAH-DH1100- 09 | 2026-09-11 A → 2026-09-17 A (+6d) |  |  |  |  |
| DH1100-B-EQP-76 | Gallery 1103 - E110/Line-Ups // Set CRAH-DH1100-10 | 2026-09-11 A → 2026-09-17 A (+6d) |  |  |  |  |
| DH1100-B-EQP-207 | Gallery 1103 - E110/Line-Ups // Set CDU-DH1100-09 | 2026-09-30 A | 2026-09-30 → 2026-10-01 A (+1d) | 0% → 100% | 38d → none | Gallery 1103 - E110/Line-Ups // Set MOD E140-02 (Does No apply) → DH1100-B-EQP-76 |
| DH1100-B-EQP-208 | Gallery 1103 - E110/Line-Ups // Set CDU-DH1100-10 | 2026-10-01 A | 2026-10-01 → 2026-10-02 A (+1d) | 0% → 100% | 38d → none | DH1100-B-EQP-207 → DH1100-B-EQP-76 |
| DH1100-B-EQP-74 | Gallery 1103 - E110/Line-Ups // Connect CRAH units | 2026-09-30 → 2026-10-14 (+14d) | 2026-10-14 → 2026-10-27 (+13d) |  | 21d → -10d |  |
| DH1100-B-EQP-81 | Gallery 1103 - E110/Line-Ups // Mechanical Connections to CRAHU Units | 2026-09-30 → 2026-10-14 (+14d) | 2026-10-14 → 2026-10-27 (+13d) |  | 26d → -5d |  |
| DH1100-B-EQP-82 | Gallery 1103 - E110/Line-Ups // Mount Electrial Gear for Chiller Controls | 2026-09-30 → 2026-10-14 (+14d) | 2026-10-14 → 2026-10-27 (+13d) |  | 24d → -2d | Gallery 1103 - E110/Line-Ups // Set MOD E140-02 (Does No apply) → DH1100-B-EQP-73, DH1100-B-EQP-76 |
| DH1100-B-EQP-86 | Gallery 1103 - E110/Line-Ups // Terminate CRAHU Electrical Connections | 2026-10-09 → 2026-10-14 (+5d) | 2026-10-16 → 2026-10-20 (+4d) |  | 30d → 11d | Gallery 1103 - E110/Line-Ups // Pull Cable Tray Feed from MOD to CRAHU's, Gallery 1103 - E110/Line-Ups // Pull Cable Tray Feed from MOD to CRAHU's SS+2d → DH1100-B-EQP-76, DH1100-B-EQP-73 |
| DH1100-B-EQP-87 | Gallery 1103 - E110/Line-Ups // Pull Feeder and Branch circuits to MIsc equipment and Chiller controls | 2026-10-06 → 2026-10-20 (+14d) | 2026-10-20 → 2026-11-02 (+13d) |  | 24d → -2d | DH1100-B-EQP-82 SS+4d → DH1100-B-EQP-208, DH1100-B-EQP-207, DH1100-B-EQP-82 SS+4d |
| DH1100-B-EQP-75 | Gallery 1103 - E110/Line-Ups // Condensate connections to Floor Drains | 2026-10-07 → 2026-10-21 (+14d) | 2026-10-21 → 2026-11-03 (+13d) |  | 21d → -10d |  |
| DH1100-B-EQP-89 | Gallery 1103 - E110/Line-Ups // Teminate all Misc Equipment and Chiller Controls | 2026-10-13 → 2026-10-26 (+13d) | 2026-10-26 → 2026-11-06 (+11d) |  | 24d → -2d |  |
| DH1100-B-EQP-84 | Gallery 1103 - E110/Line-Ups // Condensate connections to Floor Drains | 2026-10-15 → 2026-10-28 (+13d) | 2026-10-28 → 2026-11-10 (+13d) |  | 21d → -10d |  |
| DH1100-B-EQP-90 | Gallery 1103 - E110/Line-Ups // Electrical Gear FOD Inspection Pre-Start Up | 2026-10-27 → 2026-11-09 (+13d) | 2026-10-28 → 2026-11-10 (+13d) |  | 24d → -2d | Gallery 1103 - E110/Line-Ups // Terminat Mod Panels, DH1100-B-EQP-89, DH1100-B-EQP-86 → DH1100-B-EQP-86, DH1100-B-EQP-89 |
| DH1100-B-EQP-88 | Gallery 1103 - E110/Line-Ups // Mechanical Gear FOD Inspection Pre-Start Up | 2026-10-29 → 2026-11-12 (+14d) | 2026-11-02 → 2026-11-16 (+14d) |  | 21d → -10d |  |
| 6 | **F110** | 2026-09-11 → 2026-09-17 (+6d) | 2026-11-02 → 2026-11-16 (+14d) |  |  |  |
| DH1100-B-EQP-91 | Gallery 1103 - F110/Line-Ups // Set CRAH-DH1100-11 | 2026-09-11 A → 2026-09-17 A (+6d) |  |  |  |  |
| DH1100-B-EQP-94 | Gallery 1103 - F110/Line-Ups // Set CRAH-DH1100-12 | 2026-09-11 A → 2026-09-17 A (+6d) |  |  |  |  |
| DH1100-B-EQP-209 | Gallery 1103 - F110/Line-Ups // Set CDU-DH1100-11 | 2026-09-30 A | 2026-09-30 → 2026-10-07 A (+7d) | 0% → 100% | 38d → none | Gallery 1103 - F110/Line-Ups // Set MOD F140-02 (Does No apply) → DH1100-B-EQP-94 |
| DH1100-B-EQP-210 | Gallery 1103 - F110/Line-Ups // Set CDU-DH1100-12 | 2026-10-01 A | 2026-10-01 → 2026-10-07 A (+6d) | 0% → 100% | 38d → none | DH1100-B-EQP-209 → DH1100-B-EQP-94 |
| DH1100-B-EQP-100 | Gallery 1103 - F110/Line-Ups // Mount Electrial Gear for Chiller Controls | 2026-09-30 → 2026-10-14 (+14d) | 2026-10-14 → 2026-10-27 (+13d) |  | 24d → -2d | Gallery 1103 - F110/Line-Ups // Set MOD F140-02 (Does No apply) → DH1100-B-EQP-91, DH1100-B-EQP-94 |
| DH1100-B-EQP-104 | Gallery 1103 - F110/Line-Ups // Terminate CRAHU Electrical Connections | 2026-10-09 → 2026-10-14 (+5d) | 2026-10-16 → 2026-10-20 (+4d) |  | 30d → 11d | Gallery 1103 - F110/Line-Ups // Pull Cable Tray Feed from MOD to CRAHU's, Gallery 1103 - F110/Line-Ups // Pull Cable Tray Feed from MOD to CRAHU's SS+2d → DH1100-B-EQP-94, DH1100-B-EQP-91 |
| DH1100-B-EQP-92 | Gallery 1103 - F110/Line-Ups // Connect CRAH units | 2026-09-30 → 2026-10-14 (+14d) | 2026-10-14 → 2026-10-27 (+13d) |  | 21d → -10d |  |
| DH1100-B-EQP-99 | Gallery 1103 - F110/Line-Ups // Mechanical Connections to CRAHU Units | 2026-09-30 → 2026-10-14 (+14d) | 2026-10-14 → 2026-10-27 (+13d) |  | 26d → -5d |  |
| DH1100-B-EQP-105 | Gallery 1103 - F110/Line-Ups // Pull Feeder and Branch circuits to MIsc equipment and Chiller controls | 2026-10-06 → 2026-10-20 (+14d) | 2026-10-20 → 2026-11-02 (+13d) |  | 24d → -2d | DH1100-B-EQP-100 SS+4d → DH1100-B-EQP-210, DH1100-B-EQP-209, DH1100-B-EQP-100 SS+4d |
| DH1100-B-EQP-93 | Gallery 1103 - F110/Line-Ups // Condensate connections to Floor Drains | 2026-10-07 → 2026-10-21 (+14d) | 2026-10-21 → 2026-11-03 (+13d) |  | 21d → -10d |  |
| DH1100-B-EQP-107 | Gallery 1103 - F110/Line-Ups // Teminate all Misc Equipment and Chiller Controls | 2026-10-13 → 2026-10-26 (+13d) | 2026-10-26 → 2026-11-06 (+11d) |  | 24d → -2d |  |
| DH1100-B-EQP-102 | Gallery 1103 - F110/Line-Ups // Condensate connections to Floor Drains | 2026-10-15 → 2026-10-28 (+13d) | 2026-10-28 → 2026-11-10 (+13d) |  | 21d → -10d |  |
| DH1100-B-EQP-108 | Gallery 1103 - F110/Line-Ups // Electrical Gear FOD Inspection Pre-Start Up | 2026-10-27 → 2026-11-09 (+13d) | 2026-10-28 → 2026-11-10 (+13d) |  | 24d → -2d | Gallery 1103 - F110/Line-Ups // Terminat Mod Panels, DH1100-B-EQP-107, DH1100-B-EQP-104 → DH1100-B-EQP-104, DH1100-B-EQP-107 |
| DH1100-B-EQP-106 | Gallery 1103 - F110/Line-Ups // Mechanical Gear FOD Inspection Pre-Start Up | 2026-10-29 → 2026-11-12 (+14d) | 2026-11-02 → 2026-11-16 (+14d) |  | 21d → -10d |  |
| 7 | **G110** | 2026-09-14 → 2026-09-17 (+3d) | 2026-11-02 → 2026-11-16 (+14d) |  |  |  |
| DH1100-B-EQP-109 | Gallery 1103 - G110/Line-Ups // Set CRAH-DH1100-13 | 2026-09-14 A → 2026-09-17 A (+3d) |  |  |  |  |
| DH1100-B-EQP-112 | Gallery 1103 - G110/Line-Ups // Set CRAH-DH1100-14 | 2026-09-14 A → 2026-09-17 A (+3d) |  |  |  |  |
| DH1100-B-EQP-211 | Gallery 1103 - G110/Line-Ups // Set CDU-DH1100-13 | 2026-09-30 A | 2026-09-30 → 2026-10-07 A (+7d) | 0% → 100% | 38d → none | Gallery 1103 - G110/Line-Ups // Set MOD G140-02 (Does No apply) → DH1100-B-EQP-112 |
| DH1100-B-EQP-212 | Gallery 1103 - G110/Line-Ups // Set CDU-DH1100-14 | 2026-10-01 A | 2026-10-01 → 2026-10-07 A (+6d) | 0% → 100% | 38d → none | DH1100-B-EQP-211 → DH1100-B-EQP-112 |
| DH1100-B-EQP-110 | Gallery 1103 - G110/Line-Ups // Connect CRAH units | 2026-09-30 → 2026-10-14 (+14d) | 2026-10-14 → 2026-10-27 (+13d) |  | 21d → -10d |  |
| DH1100-B-EQP-117 | Gallery 1103 - G110/Line-Ups // Mechanical Connections to CRAHU Units | 2026-09-30 → 2026-10-14 (+14d) | 2026-10-14 → 2026-10-27 (+13d) |  | 26d → -5d |  |
| DH1100-B-EQP-118 | Gallery 1103 - G110/Line-Ups // Mount Electrial Gear for Chiller Controls | 2026-09-30 → 2026-10-14 (+14d) | 2026-10-14 → 2026-10-27 (+13d) |  | 24d → -2d | Gallery 1103 - G110/Line-Ups // Set MOD G140-02 (Does No apply) → DH1100-B-EQP-112 |

| ID | Task | Start | Finish | Complete | Total float | Predecessors |
| --- | --- | --- | --- | --- | --- | --- |
| DH1100-B-EQP-122 | Gallery 1103 - G110/Line-Ups // Terminate CRAHU Electrical Connections | 2026-10-09 → 2026-10-14 (+5d) | 2026-10-16 → 2026-10-20 (+4d) |  | 30d → 11d | Gallery 1103 - G110/Line-Ups // Pull Cable Tray Feed from MOD to CRAHU's, Gallery 1103 - G110/Line-Ups // Pull Cable Tray Feed from MOD to CRAHU's SS+2d → DH1100-B-EQP-112, DH1100-B-EQP-109 |
| DH1100-B-EQP-123 | Gallery 1103 - G110/Line-Ups // Pull Feeder and Branch circuits to MIsc equipment and Chiller controls | 2026-10-06 → 2026-10-20 (+14d) | 2026-10-20 → 2026-11-02 (+13d) |  | 24d → -2d | DH1100-B-EQP-118 SS+4d → DH1100-B-EQP-212, DH1100-B-EQP-211, DH1100-B-EQP-118 SS+4d |
| DH1100-B-EQP-111 | Gallery 1103 - G110/Line-Ups // Condensate connections to Floor Drains | 2026-10-07 → 2026-10-21 (+14d) | 2026-10-21 → 2026-11-03 (+13d) |  | 21d → -10d |  |
| DH1100-B-EQP-125 | Gallery 1103 - G110/Line-Ups // Teminate all Misc Equipment and Chiller Controls | 2026-10-13 → 2026-10-26 (+13d) | 2026-10-26 → 2026-11-06 (+11d) |  | 24d → -2d |  |
| DH1100-B-EQP-120 | Gallery 1103 - G110/Line-Ups // Condensate connections to Floor Drains | 2026-10-15 → 2026-10-28 (+13d) | 2026-10-28 → 2026-11-10 (+13d) |  | 21d → -10d |  |
| DH1100-B-EQP-126 | Gallery 1103 - G110/Line-Ups // Electrical Gear FOD Inspection Pre-Start Up | 2026-10-27 → 2026-11-09 (+13d) | 2026-10-28 → 2026-11-10 (+13d) |  | 24d → -2d | Gallery 1103 - G110/Line-Ups // Terminat Mod Panels, DH1100-B-EQP-125, DH1100-B-EQP-122 → DH1100-B-EQP-122, DH1100-B-EQP-125 |
| DH1100-B-EQP-124 | Gallery 1103 - G110/Line-Ups // Mechanical Gear FOD Inspection Pre-Start Up | 2026-10-29 → 2026-11-12 (+14d) | 2026-11-02 → 2026-11-16 (+14d) |  | 21d → -10d |  |
| 8 | **H110** | 2026-09-14 → 2026-09-18 (+4d) | 2026-11-02 → 2026-11-16 (+14d) |  |  |  |
| DH1100-B-EQP-127 | Gallery 1103 - H110/Line-Ups // Set CRAH-DH1100-15 | 2026-09-14 A → 2026-09-18 A (+4d) |  |  |  |  |
| DH1100-B-EQP-130 | Gallery 1103 - H110/Line-Ups // Set CRAH-DH1100-16 | 2026-09-14 A → 2026-09-18 A (+4d) |  |  |  |  |
| DH1100-B-EQP-213 | Gallery 1103 - H110/Line-Ups // Set CDU-DH1100-15 | 2026-09-30 A | 2026-09-30 → 2026-10-01 A (+1d) | 0% → 100% | 38d → none | Gallery 1103 - H110/Line-Ups // Set MOD H140-02 (Does No apply) → DH1100-B-EQP-130 |
| DH1100-B-EQP-214 | Gallery 1103 - H110/Line-Ups // Set CDU-DH1100-16 | 2026-10-01 A | 2026-10-01 → 2026-10-02 A (+1d) | 0% → 100% | 38d → none | DH1100-B-EQP-213 → DH1100-B-EQP-130 |
| DH1100-B-EQP-128 | Gallery 1103 - H110/Line-Ups // Connect CRAH units | 2026-09-30 → 2026-10-14 (+14d) | 2026-10-14 → 2026-10-27 (+13d) |  | 21d → -10d |  |
| DH1100-B-EQP-135 | Gallery 1103 - H110/Line-Ups // Mechanical Connections to CRAHU Units | 2026-09-30 → 2026-10-14 (+14d) | 2026-10-14 → 2026-10-27 (+13d) |  | 26d → -5d |  |
| DH1100-B-EQP-136 | Gallery 1103 - H110/Line-Ups // Mount Electrial Gear for Chiller Controls | 2026-09-30 → 2026-10-14 (+14d) | 2026-10-14 → 2026-10-27 (+13d) |  | 24d → -2d | Gallery 1103 - H110/Line-Ups // Set MOD H140-02 (Does No apply) → DH1100-B-EQP-130 |
| DH1100-B-EQP-140 | Gallery 1103 - H110/Line-Ups // Terminate CRAHU Electrical Connections | 2026-10-09 → 2026-10-14 (+5d) | 2026-10-16 → 2026-10-20 (+4d) |  | 30d → 11d | Gallery 1103 - H110/Line-Ups // Pull Cable Tray Feed from MOD to CRAHU's, Gallery 1103 - H110/Line-Ups // Pull Cable Tray Feed from MOD to CRAHU's SS+2d → DH1100-B-EQP-127 |
| DH1100-B-EQP-141 | Gallery 1103 - H110/Line-Ups // Pull Feeder and Branch circuits to MIsc equipment and Chiller controls | 2026-10-06 → 2026-10-20 (+14d) | 2026-10-20 → 2026-11-02 (+13d) |  | 24d → -2d | DH1100-B-EQP-136 SS+4d → DH1100-B-EQP-214, DH1100-B-EQP-213, DH1100-B-EQP-136 SS+4d |
| DH1100-B-EQP-129 | Gallery 1103 - H110/Line-Ups // Condensate connections to Floor Drains | 2026-10-07 → 2026-10-21 (+14d) | 2026-10-21 → 2026-11-03 (+13d) |  | 21d → -10d |  |
| DH1100-B-EQP-143 | Gallery 1103 - H110/Line-Ups // Teminate all Misc Equipment and Chiller Controls | 2026-10-13 → 2026-10-26 (+13d) | 2026-10-26 → 2026-11-06 (+11d) |  | 24d → -2d |  |
| DH1100-B-EQP-138 | Gallery 1103 - H110/Line-Ups // Condensate connections to Floor Drains | 2026-10-15 → 2026-10-28 (+13d) | 2026-10-28 → 2026-11-10 (+13d) |  | 21d → -10d |  |
| DH1100-B-EQP-144 | Gallery 1103 - H110/Line-Ups // Electrical Gear FOD Inspection Pre-Start Up | 2026-10-27 → 2026-11-09 (+13d) | 2026-10-28 → 2026-11-10 (+13d) |  | 24d → -2d | Gallery 1103 - H110/Line-Ups // Terminat Mod Panels, DH1100-B-EQP-143, DH1100-B-EQP-140 → DH1100-B-EQP-140, DH1100-B-EQP-143 |
| DH1100-B-EQP-142 | Gallery 1103 - H110/Line-Ups // Mechanical Gear FOD Inspection Pre-Start Up | 2026-10-29 → 2026-11-12 (+14d) | 2026-11-02 → 2026-11-16 (+14d) |  | 21d → -10d |  |
| 9 | **J110** | 2026-09-14 → 2026-09-18 (+4d) | 2026-11-02 → 2026-11-16 (+14d) |  |  |  |
| DH1100-B-EQP-145 | Gallery 1103 - J110/Line-Ups // Set CRAH-DH1100-17 | 2026-09-14 A → 2026-09-18 A (+4d) |  |  |  |  |
| DH1100-B-EQP-148 | Gallery 1103 - J110/Line-Ups // Set CRAH-DH1100-18 | 2026-09-14 A → 2026-09-18 A (+4d) |  |  |  |  |
| DH1100-B-EQP-154 | Gallery 1103 - J110/Line-Ups // Mount Electrial Gear for Chiller Controls |  | 2026-10-14 → 2026-10-27 (+13d) |  | 28d → 2d | Gallery 1103 - J110/Line-Ups // Set MOD J140-02 (Does No apply) → DH1100-B-EQP-148 |
| DH1100-B-EQP-215 | Gallery 1103 - J110/Line-Ups // Set CDU-DH1100-17 | 2026-09-30 A | 2026-09-30 → 2026-10-01 A (+1d) | 0% → 100% | 38d → none | Gallery 1103 - J110/Line-Ups // Set MOD J140-02 (Does No apply) → DH1100-B-EQP-148 |
| DH1100-B-EQP-216 | Gallery 1103 - J110/Line-Ups // Set CDU-DH1100-18 | 2026-10-01 A | 2026-10-01 → 2026-10-02 A (+1d) | 0% → 100% | 38d → none | DH1100-B-EQP-215 → DH1100-B-EQP-148 |
| DH1100-B-EQP-146 | Gallery 1103 - J110/Line-Ups // Connect CRAH units | 2026-09-30 → 2026-10-14 (+14d) | 2026-10-14 → 2026-10-27 (+13d) |  | 21d → -10d |  |
| DH1100-B-EQP-153 | Gallery 1103 - J110/Line-Ups // Mechanical Connections to CRAHU Units | 2026-09-30 → 2026-10-14 (+14d) | 2026-10-14 → 2026-10-27 (+13d) |  | 26d → -5d |  |
| DH1100-B-EQP-158 | Gallery 1103 - J110/Line-Ups // Terminate CRAHU Electrical Connections | 2026-10-09 → 2026-10-14 (+5d) | 2026-10-16 → 2026-10-20 (+4d) |  | 30d → 11d | Gallery 1103 - J110/Line-Ups // Pull Cable Tray Feed from MOD to CRAHU's, Gallery 1103 - J110/Line-Ups // Pull Cable Tray Feed from MOD to CRAHU's SS+2d → DH1100-B-EQP-145 |
| DH1100-B-EQP-159 | Gallery 1103 - J110/Line-Ups // Pull Feeder and Branch circuits to MIsc equipment and Chiller controls | 2026-09-30 → 2026-10-14 (+14d) | 2026-10-14 → 2026-10-27 (+13d) |  | 28d → 2d | DH1100-B-EQP-154 SS+4d → DH1100-B-EQP-216, DH1100-B-EQP-215, DH1100-B-EQP-154 SS+4d |
| DH1100-B-EQP-161 | Gallery 1103 - J110/Line-Ups // Teminate all Misc Equipment and Chiller Controls | 2026-10-06 → 2026-10-20 (+14d) | 2026-10-20 → 2026-11-02 (+13d) |  | 28d → 2d |  |
| DH1100-B-EQP-147 | Gallery 1103 - J110/Line-Ups // Condensate connections to Floor Drains | 2026-10-07 → 2026-10-21 (+14d) | 2026-10-21 → 2026-11-03 (+13d) |  | 21d → -10d |  |
| DH1100-B-EQP-156 | Gallery 1103 - J110/Line-Ups // Condensate connections to Floor Drains | 2026-10-15 → 2026-10-28 (+13d) | 2026-10-28 → 2026-11-10 (+13d) |  | 21d → -10d |  |
| DH1100-B-EQP-162 | Gallery 1103 - J110/Line-Ups // Electrical Gear FOD Inspection Pre-Start Up | 2026-10-21 → 2026-11-03 (+13d) | 2026-10-22 → 2026-11-04 (+13d) |  | 28d → 2d | Gallery 1103 - J110/Line-Ups // Terminat Mod Panels, DH1100-B-EQP-161, DH1100-B-EQP-158 → DH1100-B-EQP-158, DH1100-B-EQP-161 |
| DH1100-B-EQP-160 | Gallery 1103 - J110/Line-Ups // Mechanical Gear FOD Inspection Pre-Start Up | 2026-10-29 → 2026-11-12 (+14d) | 2026-11-02 → 2026-11-16 (+14d) |  | 21d → -10d |  |
| 10 | **K110** | 2026-09-15 → 2026-09-18 (+3d) | 2026-11-02 → 2026-11-16 (+14d) |  |  |  |
| DH1100-B-EQP-163 | Gallery 1103 - K110/Line-Ups // Set CRAH-DH1100-19 | 2026-09-15 A → 2026-09-18 A (+3d) |  |  |  |  |
| DH1100-B-EQP-166 | Gallery 1103 - K110/Line-Ups // Set CRAH-DH1100-20 | 2026-09-15 A → 2026-09-18 A (+3d) |  |  |  |  |
| DH1100-B-EQP-172 | Gallery 1103 - K110/Line-Ups // Mount Electrial Gear for Chiller Controls |  | 2026-10-14 → 2026-10-27 (+13d) |  | 28d → 2d | Gallery 1103 - K110/Line-Ups // Set MOD K140-02 (Does No apply) → DH1100-B-EQP-166 |
| DH1100-B-EQP-164 | Gallery 1103 - K110/Line-Ups // Connect CRAH units | 2026-09-30 → 2026-10-14 (+14d) | 2026-10-14 → 2026-10-27 (+13d) |  | 21d → -10d |  |
| DH1100-B-EQP-171 | Gallery 1103 - K110/Line-Ups // Mechanical Connections to CRAHU Units | 2026-09-30 → 2026-10-14 (+14d) | 2026-10-14 → 2026-10-27 (+13d) |  | 26d → -5d |  |
| DH1100-B-EQP-176 | Gallery 1103 - K110/Line-Ups // Terminate CRAHU Electrical Connections | 2026-10-09 → 2026-10-14 (+5d) | 2026-10-16 → 2026-10-20 (+4d) |  | 30d → 11d | Gallery 1103 - K110/Line-Ups // Pull Cable Tray Feed from MOD to CRAHU's, Gallery 1103 - K110/Line-Ups // Pull Cable Tray Feed from MOD to CRAHU's SS+2d → DH1100-B-EQP-163 |
| DH1100-B-EQP-177 | Gallery 1103 - K110/Line-Ups // Pull Feeder and Branch circuits to MIsc equipment and Chiller controls | 2026-09-30 → 2026-10-14 (+14d) | 2026-10-14 → 2026-10-27 (+13d) |  | 28d → 2d |  |
| DH1100-B-EQP-179 | Gallery 1103 - K110/Line-Ups // Teminate all Misc Equipment and Chiller Controls | 2026-10-06 → 2026-10-20 (+14d) | 2026-10-20 → 2026-11-02 (+13d) |  | 28d → 2d |  |
| DH1100-B-EQP-165 | Gallery 1103 - K110/Line-Ups // Condensate connections to Floor Drains | 2026-10-07 → 2026-10-21 (+14d) | 2026-10-21 → 2026-11-03 (+13d) |  | 21d → -10d |  |
| DH1100-B-EQP-174 | Gallery 1103 - K110/Line-Ups // Condensate connections to Floor Drains | 2026-10-15 → 2026-10-28 (+13d) | 2026-10-28 → 2026-11-10 (+13d) |  | 21d → -10d |  |
| DH1100-B-EQP-180 | Gallery 1103 - K110/Line-Ups // Electrical Gear FOD Inspection Pre-Start Up | 2026-10-21 → 2026-11-03 (+13d) | 2026-10-22 → 2026-11-04 (+13d) |  | 28d → 2d | Gallery 1103 - K110/Line-Ups // Terminat Mod Panels, DH1100-B-EQP-179, DH1100-B-EQP-176 → DH1100-B-EQP-176, DH1100-B-EQP-179 |
| DH1100-B-EQP-178 | Gallery 1103 - K110/Line-Ups // Mechanical Gear FOD Inspection Pre-Start Up | 2026-10-29 → 2026-11-12 (+14d) | 2026-11-02 → 2026-11-16 (+14d) |  | 21d → -10d |  |
| 11 | **R110** | 2026-09-15 → 2026-09-18 (+3d) | 2026-10-19 → 2026-11-05 (+17d) |  |  |  |
| DH1100-B-EQP-181 | Gallery 1103 - R110/Line-Ups // Set CRAH-DH1100-21 | 2026-09-15 A → 2026-09-18 A (+3d) |  |  |  |  |
| DH1100-B-EQP-184 | Gallery 1103 - R110/Line-Ups // Set CRAH-DH1100-22 | 2026-09-15 A → 2026-09-18 A (+3d) |  |  |  |  |
| DH1100-B-EQP-182 | Gallery 1103 - R110/Line-Ups // Connect CRAH units | 2026-09-30 → 2026-10-14 (+14d) | 2026-10-14 → 2026-10-27 (+13d) |  | -9d → -10d |  |
| DH1100-B-EQP-189 | Gallery 1103 - R110/Line-Ups // Mechanical Connections to CRAHU Units | 2026-09-30 → 2026-10-14 (+14d) | 2026-10-14 → 2026-10-27 (+13d) |  | -12d → -11d |  |
| DH1100-B-EQP-190 | Gallery 1103 - R110/Line-Ups // Mount Electrial Gear for Chiller Controls | 2026-09-30 → 2026-10-14 (+14d) | 2026-10-14 → 2026-10-27 (+13d) |  | -8d → -14d |  |
| DH1100-B-EQP-195 | Gallery 1103 - R110/Line-Ups // Pull Feeder and Branch circuits to MIsc equipment and Chiller controls | 2026-09-30 → 2026-10-14 (+14d) | 2026-10-14 → 2026-10-27 (+13d) |  | -8d → -9d |  |
| DH1100-B-EQP-197 | Gallery 1103 - R110/Line-Ups // Teminate all Misc Equipment and Chiller Controls | 2026-09-30 → 2026-10-14 (+14d) | 2026-10-14 → 2026-10-27 (+13d) |  | -8d → -9d |  |
| DH1100-B-EQP-183 | Gallery 1103 - R110/Line-Ups // Condensate connections to Floor Drains | 2026-10-05 → 2026-10-19 (+14d) | 2026-10-09 → 2026-10-23 (+14d) |  | -9d → -10d |  |
| DH1100-B-EQP-192 | Gallery 1103 - R110/Line-Ups // Condensate connections to Floor Drains | 2026-10-07 → 2026-10-21 (+14d) | 2026-10-14 → 2026-10-27 (+13d) |  | -9d → -10d |  |
| DH1100-B-EQP-194 | Gallery 1103 - R110/Line-Ups // Terminate CRAHU Electrical Connections | 2026-10-07 → 2026-10-28 (+21d) | 2026-10-14 → 2026-11-03 (+20d) |  | -8d → -14d | Gallery 1103 - R110/Line-Ups // Pull Cable Tray Feed from MOD to CRAHU's → DH1100-B-EQP-190 |
| DH1100-B-EQP-196 | Gallery 1103 - R110/Line-Ups // Mechanical Gear FOD Inspection Pre-Start Up | 2026-10-15 → 2026-10-28 (+13d) | 2026-10-19 → 2026-10-30 (+11d) |  | -9d → -10d |  |
| DH1100-B-EQP-198 | Gallery 1103 - R110/Line-Ups // Electrical Gear FOD Inspection Pre-Start Up | 2026-10-15 → 2026-11-04 (+20d) | 2026-10-16 → 2026-11-05 (+20d) |  | -8d → -14d | Gallery 1103 - R110/Line-Ups // Terminat Mod Panels, DH1100-B-EQP-197, DH1100-B-EQP-194 → DH1100-B-EQP-194, DH1100-B-EQP-197 |
| 12 | **Equipment Connections** | 2026-10-07 → 2026-10-14 (+7d) | 2026-10-22 → 2026-11-02 (+11d) |  |  |  |
| 1 | **CRAH** | 2026-10-07 → 2026-10-14 (+7d) | 2026-10-19 → 2026-10-23 (+4d) |  |  |  |
| DH1100.MG.A110.8687 | Gallery 1103 // DH 1100 / Elec Room // CRAH Duct Work Termination | 2026-10-07 → 2026-10-14 (+7d) | 2026-10-08 → 2026-10-15 (+7d) |  | -9d → -5d | Gallery 1103 - R110/Line-Ups // Pull Cable Tray Feed from MOD to CRAHU's → DH1100-B-EQP-184, DH1100-B-EQP-181 |
| DH1100.MG.A110.8686 | Gallery 1103 // DH 1100 / Elec Room // CRAH Chilled Water | 2026-10-09 → 2026-10-16 (+7d) | 2026-10-13 → 2026-10-19 (+6d) |  | -9d → -5d |  |
| DH1100.MG.A110.8684 | Gallery 1103 // DH 1100 / Elec Room // CRAH Power Connections | 2026-10-14 → 2026-10-20 (+6d) | 2026-10-15 → 2026-10-21 (+6d) |  | -9d → -5d |  |
| DH1100.MG.A110.8685 | Gallery 1103 // DH 1100 / Elec Room // CRAH LV Connections | 2026-10-16 → 2026-10-22 (+6d) | 2026-10-19 → 2026-10-23 (+4d) |  | -9d → -5d |  |
| 2 | **CDU** | 2026-10-15 → 2026-10-26 (+11d) | 2026-10-22 → 2026-11-02 (+11d) |  |  |  |

| ID | Task | Start | Finish | Complete | Total float | Predecessors |
| --- | --- | --- | --- | --- | --- | --- |
| DH1100.MG.A110.8690 | Gallery 1103 // DH 1100 / Elec Room // CDU Chilled Water Connections | 2026-10-15 → 2026-10-26 (+11d) | 2026-10-16 → 2026-10-27 (+11d) |  | -12d → -11d | DH1100-B-EQP-189 → DH1100-B-EQP-189 FF |
| DH1100.MG.A110.8688 | Gallery 1103 // DH 1100 /Elec Room // CDU Power Connections | 2026-10-19 → 2026-10-28 (+9d) | 2026-10-20 → 2026-10-29 (+9d) |  | -12d → -11d |  |
| DH1100.MG.A110.8689 | Gallery 1103 // DH 1100 / Elec Room // CDU Controls Connections | 2026-10-21 → 2026-10-30 (+9d) | 2026-10-22 → 2026-11-02 (+11d) |  | -12d → -11d |  |
| 3 | **MOD** | 2026-10-07 → 2026-10-26 (+19d) | 2026-10-13 → 2026-10-29 (+16d) |  |  |  |
| DH1100.MG.A110.8691 | Gallery 1103 // DH 1100 / Elec Room // MOD Power Connections | 2026-10-07 → 2026-10-26 (+19d) | 2026-10-08 → 2026-10-27 (+19d) |  | -5d → -9d | Gallery 1103 - R110/Line-Ups // Pull Cable Tray Feed from MOD to CRAHU's → DH1100-B-EQP-195 FF |
| DH1100.MG.A110.8692 | Gallery 1103 // DH 1100 / Elec Room // MOD LV Connections | 2026-10-09 → 2026-10-28 (+19d) | 2026-10-13 → 2026-10-29 (+16d) |  | -5d → -9d |  |
| 6 | **Corridors** |  | 2026-10-16 → 2026-10-22 (+6d) |  |  |  |
| 1 | **Corridor 1000A** |  | 2026-10-13 → 2026-10-22 (+9d) |  |  |  |
| DH1100.6440 | DH 1100/Corridor 1000A // MEPF Overhead Hangers | 2026-07-24 A → 2026-08-03 A (+10d) |  |  |  |  |
| DH1100.6470 | DH 1100/Corridor 1000A // Frame walls | 2026-07-24 A → 2026-08-03 A (+10d) |  |  |  |  |
| DH1100.12119 | DH 1100/Corridor 1000A // Electrical Equipment Install | 2026-09-30 → 2026-09-28 A (-2d) | 2026-10-08 → 2026-10-06 A (-2d) | 0% → 100% | -5d → none | DH1100.8080 FF → DH1100.6530 |
| B120001.3137 | DH 1100/Corridor 1000A // Install Overhead Cable Ladder / 36" Cable Tray - TFO | 2026-09-30 → 2026-10-01 A (+1d) | 2026-10-06 → 2026-10-07 A (+1d) | 0% → 100% | 39d → none |  |
| DH1100.12113 | DH 1100/Corridor 1000A // Ready to Receive Equipment | 2026-10-06 → 2026-10-01 A (-5d) | 2026-10-06 → 2026-10-01 A (-5d) | 0% → 100% | 39d → none | B120001.3138, DH1100.6530 FF → DH1100.6530 FF |
| DH1100.6590 | DH 1100/Corridor 1000A // Install lights and exit signs | 2026-09-30 → 2026-10-01 A (+1d) | 2026-10-02 → 2026-10-05 A (+3d) | 0% → 100% | -5d → none |  |
| DH1100.8080 | DH 1100/Corridor 1000A // Final Coat Paint & Touchup Walls | 2026-10-05 → 2026-10-07 A (+2d) | 2026-10-08 → 2026-10-13 A (+5d) | 0% → 100% | -5d → none |  |
| B120001.3138 | DH 1100/Corridor 1000A // Install Overhead HAC - TFO | 2026-09-30 → 2026-10-14 (+14d) | 2026-10-06 → 2026-10-20 (+14d) |  | 39d → -4d | B120001.3137 FF → B120001.3137 |
| DH1100.6540 | DH 1100/Corridor 1000A // Install MEP Devices and Trim | 2026-10-09 → 2026-10-21 (+12d) | 2026-10-13 → 2026-10-22 (+9d) |  | -5d → -4d | DH1100.12119, DH1100.8080 → B120001.3138, DH1100.8080, DH1100.12119 |
| 3 | **Corridor 1000** |  | 2026-10-16 → 2026-10-20 (+4d) |  |  |  |
| DH1100.12068 | DH 1100/Corridor 1000 // MEPF Overhead Hangers | 2026-07-24 A → 2026-08-03 A (+10d) |  |  |  |  |
| DH1100.12069 | DH 1100/Corridor 1000 // Frame walls | 2026-07-29 A → 2026-08-06 A (+8d) |  |  |  |  |
| DH1100.12070 | DH 1100/Corridor 1000 // Install Top Down Sheetrock | 2026-08-03 A → 2026-08-11 A (+8d) |  |  |  |  |
| DH1100.12077 | DH 1100/Corridor 1000 // Prime and Paint first coat walls |  | 2026-10-02 A | 0% → 100% | -8d → none |  |
| B120001.3139 | DH 1100/Corridor 1000 // Install Overhead Cable Ladder / 36" Cable Tray - TFO | 2026-07-31 A → 2026-09-24 A (+55d) |  |  |  |  |
| DH1100.12079 | DH 1100/Corridor 1000 // Install lights and exit signs | 2026-10-05 → 2026-10-02 A (-3d) | 2026-10-07 → 2026-10-06 A (-1d) | 0% → 100% | -8d → none |  |
| DH1100.12120 | DH 1100/Corridor 1000 // Electrical Equipment Install | 2026-10-05 → 2026-10-02 A (-3d) | 2026-10-14 → 2026-10-13 A (-1d) | 0% → 100% | -8d → none |  |
| DH1100.12080 | DH 1100/Corridor 1000 // Final Coat Paint & Touchup Walls | 2026-10-08 → 2026-10-07 A (-1d) | 2026-10-14 → 2026-10-13 A (-1d) | 0% → 100% | -8d → none | DH1100.12079 → DH1100.12079 SS |
| B120001.3140 | DH 1100/Corridor 1000 // Install Overhead HAC - TFO | 2026-09-30 → 2026-10-14 (+14d) | 2026-10-06 → 2026-10-20 (+14d) |  | 39d → 49d |  |
| DH1100.12081 | DH 1100/Corridor 1000 // Install MEP Devices and Trim | 2026-10-15 → 2026-10-14 (-1d) | 2026-10-16 → 2026-10-15 (-1d) |  | -8d → 1d |  |
| DH1100.12114 | DH 1100/Corridor 1000 // Ready to Receive Equipment | 2026-10-06 → 2026-10-20 (+14d) | 2026-10-06 → 2026-10-20 (+14d) |  | 39d → 49d |  |
| 2 | **Corridor 1000B** |  | 2026-10-14 → 2026-10-22 (+8d) |  |  |  |
| DH1100.12082 | DH 1100/Corridor 1000B // MEPF Overhead Hangers | 2026-07-24 A → 2026-08-03 A (+10d) |  |  |  |  |
| DH1100.12083 | DH 1100/Corridor 1000B // Frame walls | 2026-08-03 A → 2026-08-11 A (+8d) |  |  |  |  |
| DH1100.12084 | DH 1100/Corridor 1000B // Install Top Down Sheetrock | 2026-08-06 A → 2026-08-11 A (+5d) |  |  |  |  |
| DH1100.12085 | DH 1100/Corridor 1000B // MEPF high overhead install | 2026-08-11 A → 2026-08-17 A (+6d) |  |  |  |  |
| DH1100.12095 | DH 1100/Corridor 1000B // Install MEP Devices and Trim |  | 2026-10-01 → 2026-10-15 (+14d) |  | 2d → 1d |  |
| DH1100.12089 | DH 1100/Corridor 1000B // Tape and finish walls |  | 2026-09-30 → 2026-10-08 A (+8d) |  | -6d → none |  |
| DH1100.12091 | DH 1100/Corridor 1000B // Prime and Paint first coat walls |  | 2026-10-02 → 2026-10-16 (+14d) |  | -6d → -4d |  |
| DH1100.12093 | DH 1100/Corridor 1000B // Install lights and exit signs | 2026-10-05 → 2026-10-06 A (+1d) | 2026-10-07 → 2026-10-16 (+9d) |  | -6d → -4d | DH1100.12090, DH1100.12091 → DH1100.12091 SS, DH1100.12090 |
| B120001.3141 | DH 1100/Corridor 1000B // Install Overhead Cable Ladder / 36" Cable Tray - TFO | 2026-09-30 → 2026-10-14 (+14d) | 2026-10-06 → 2026-10-20 (+14d) |  | 39d → 49d |  |
| B120001.3142 | DH 1100/Corridor 1000B // Install Overhead HAC - TFO | 2026-09-30 → 2026-10-14 (+14d) | 2026-10-06 → 2026-10-20 (+14d) |  | 39d → 49d |  |
| DH1100.12121 | DH 1100/Corridor 1000B // Electrical Equipment Install | 2026-10-05 → 2026-10-14 (+9d) | 2026-10-14 → 2026-10-22 (+8d) |  | -6d → -4d |  |
| DH1100.12094 | DH 1100/Corridor 1000B // Final Coat Paint & Touchup Walls | 2026-10-08 → 2026-10-19 (+11d) | 2026-10-14 → 2026-10-22 (+8d) |  | -6d → -4d |  |
| DH1100.12115 | DH 1100/Corridor 1000B // Ready to Receive Equipment | 2026-10-06 → 2026-10-20 (+14d) | 2026-10-06 → 2026-10-20 (+14d) |  | 39d → 49d |  |
| 10 | **Flex 1000B1** |  | 2026-10-22 → 2026-10-29 (+7d) |  |  |  |
| F.1000B..1010 | DH 1100/Flex 1000B1 // MEPF Layout of Overhead Supports | 2026-07-31 A → 2026-08-10 A (+10d) |  |  |  |  |
| F.1000B..1040 | DH 1100/Flex 1000B1 // Frame Walls including Backing | 2026-08-04 A → 2026-08-11 A (+7d) |  |  |  |  |
| F.1000B..1060 | DH 1100/Flex 1000B1 // MEPF Install Rough Wall | 2026-08-12 A → 2026-08-19 A (+7d) |  |  |  |  |
| F.1000B..1080 | DH 1100/Flex 1000B1 // Rough Wall Inspspection (Approval to Close up) | 2026-08-14 A → 2026-08-20 A (+6d) |  |  |  |  |
| F.1000B..1090 | DH 1100/Flex 1000B1 // Install Balance of Sheetrock | 2026-08-17 A → 2026-09-09 A (+23d) |  |  |  |  |
| F.1000B..1100 | DH 1100/Flex 1000B1 // Tape and Finish Walls | 2026-08-20 A → 2026-09-14 A (+25d) |  |  |  |  |
| F.1000B..1120 | DH 1100/Flex 1000B1 // Install MEPF Overhead Ceiling Rough |  | 2026-10-02 → 2026-10-16 (+14d) |  | -12d → -9d |  |
| F.1000B..1140 | DH 1100/Flex 1000B1 // Wall Touch up Final Coat of Paint | 2026-10-07 → 2026-10-05 A (-2d) | 2026-10-09 → 2026-10-19 (+10d) |  | -12d → -9d | F.1000B..1130 → F.1000B..1130 SS |
| F.1000B..1130 | DH 1100/Flex 1000B1 // Install Lighting, Fire Alarm & Fire Protection | 2026-10-05 → 2026-10-06 A (+1d) | 2026-10-06 → 2026-10-16 (+10d) |  | -12d → -9d | F.1000B..1120, F.1000B..1110 → F.1000B..1120 FF |
| F.1000B..1110 | DH 1100/Flex 1000B1 // Prime and First Coat of Paint | 2026-09-30 → 2026-10-14 (+14d) | 2026-10-01 → 2026-10-15 (+14d) |  | -11d → -8d |  |
| F.1000B..1050 | DH 1100/Flex 1000B1 // Install Door Frames | 2026-10-05 → 2026-10-19 (+14d) | 2026-10-05 → 2026-10-19 (+14d) |  | -8d → -9d |  |
| F.1000B..1150 | DH 1100/Flex 1000B1 // Install Wall Base, Trim, and Devices | 2026-10-13 → 2026-10-20 (+7d) | 2026-10-15 → 2026-10-22 (+7d) |  | -12d → -9d |  |
| F.1000B..1161 | DH 1100/Flex 1000B1 // Ready to Receive Equipment | 2026-10-15 → 2026-10-22 (+7d) | 2026-10-15 → 2026-10-22 (+7d) |  | -12d → -9d |  |
| F.1000B..1160 | DH 1100/Flex 1000B1 // Suffolk Pre Punch | 2026-10-16 → 2026-10-23 (+7d) | 2026-10-22 → 2026-10-29 (+7d) |  | -12d → -9d |  |
| 11 | **IDF 1000C2** |  | 2026-10-16 → 2026-10-29 (+13d) |  |  |  |
| IDF.C2.1040 | DH 1100/IDF 1000B2 // Install wall door frames | 2026-08-12 A → 2026-08-27 A (+15d) |  |  |  |  |
| IDF.C2.1100 | DH 1100/IDF 1000B2 // Tape and finish walls |  | 2026-10-06 → 2026-10-20 (+14d) |  | -8d → -9d |  |
| IDF.C2.1110 | DH 1100/IDF 1000B2 // Prime and Paint first coat walls |  | 2026-10-02 → 2026-10-16 (+14d) |  | -8d → -9d |  |
| IDF.C2.1120 | DH 1100/IDF 1000B2 // Install lights and exit signs | 2026-10-05 → 2026-10-19 (+14d) | 2026-10-07 → 2026-10-21 (+14d) |  | -8d → -9d |  |
| IDF.C2.1130 | DH 1100/IDF 1000B2 // Final Coat Paint & Touchup Walls | 2026-10-08 → 2026-10-22 (+14d) | 2026-10-14 → 2026-10-27 (+13d) |  | -8d → -9d |  |
| IDF.C2.1140 | DH 1100/IDF 1000B2 // Install MEP Devices and Trim | 2026-10-15 → 2026-10-28 (+13d) | 2026-10-16 → 2026-10-29 (+13d) |  | -8d → -9d |  |
| IDF.C2.1141 | DH 1100/IDF 1000B2 // Ready to Receive Equipment | 2026-10-16 → 2026-10-29 (+13d) | 2026-10-16 → 2026-10-29 (+13d) |  | -8d → -9d |  |
| 12 | **Preaction 1000B3** |  | 2026-10-16 → 2026-10-29 (+13d) |  |  |  |
| PRE.C3.1100 | DH 1100/Preaction 1000B3 // Tape and finish walls |  | 2026-10-06 → 2026-10-13 A (+7d) | 0% → 100% | -8d → none |  |
| PRE.C3.1110 | DH 1100/Preaction 1000B3 // Prime and Paint first coat walls |  | 2026-10-02 → 2026-10-16 (+14d) |  | -8d → -9d |  |
| PRE.C3.1120 | DH 1100/Preaction 1000B3 // Install lights and exit signs | 2026-10-05 → 2026-10-19 (+14d) | 2026-10-07 → 2026-10-21 (+14d) |  | -8d → -9d |  |

| ID | Task | Start | Finish | Complete | Total float | Predecessors |
| --- | --- | --- | --- | --- | --- | --- |
| PRE.C3.1130 | DH 1100/Preaction 1000B3 // Final Coat Paint & Touchup Walls | 2026-10-08 → 2026-10-22 (+14d) | 2026-10-14 → 2026-10-27 (+13d) |  | -8d → -9d |  |
| PRE.C3.1140 | DH 1100/Preaction 1000B3 // Install MEP Devices and Trim | 2026-10-15 → 2026-10-28 (+13d) | 2026-10-16 → 2026-10-29 (+13d) |  | -8d → -9d |  |
| PRE.C3.1155 | DH 1100/Preaction 1000B3 // Ready to Receive Equipment | 2026-10-16 → 2026-10-29 (+13d) | 2026-10-16 → 2026-10-29 (+13d) |  | -8d → -9d |  |
| 13 | **Restroom-Dock & Janitor** |  | 2026-10-16 → 2026-10-29 (+13d) |  |  |  |
| RR.DJ.1040 | DH 1100 // RR-Doc-Jan Install wall door frames | 2026-08-17 A → 2026-09-08 A (+22d) |  |  |  |  |
| RR.DJ.1090 | DH 1100 // RR-Doc-Jan Install Balance of Sheetrock on Walls | 2026-08-31 A → 2026-09-14 A (+14d) |  |  |  |  |
| RR.DJ.1100 | DH 1100 // RR-Doc-Jan Tape and finish walls |  | 2026-10-06 → 2026-10-20 (+14d) |  | -8d → -9d |  |
| RR.DJ.1110 | DH 1100 // RR-Doc-Jan Prime and Paint first coat walls |  | 2026-10-02 → 2026-10-16 (+14d) |  | -8d → -9d |  |
| RR.DJ.1120 | DH 1100 // RR-Doc-Jan Install lights and exit signs | 2026-10-05 → 2026-10-19 (+14d) | 2026-10-07 → 2026-10-21 (+14d) |  | -8d → -9d |  |
| RR.DJ.1130 | DH 1100 // RR-Doc-Jan Final Coat Paint & Touchup Walls | 2026-10-08 → 2026-10-22 (+14d) | 2026-10-14 → 2026-10-27 (+13d) |  | -8d → -9d |  |
| RR.DJ.1140 | DH 1100 // RR-Doc-Jan Install MEP Devices and Trim | 2026-10-15 → 2026-10-28 (+13d) | 2026-10-16 → 2026-10-29 (+13d) |  | -8d → -9d |  |
| 1 | **1100 Energization, Start-up & Commissioning** | 2026-10-26 → 2026-11-06 (+11d) | 2027-02-09 → 2027-02-12 (+3d) |  |  |  |
| 1 | **Energization & L3 Prefunctional Testing** | 2026-10-26 → 2026-11-06 (+11d) | 2027-01-04 → 2027-01-07 (+3d) |  |  |  |
| DH1100.L3CX.000 | DH1100 L3 Start | 2026-10-26 → 2026-11-06 (+11d) | 2026-10-26 → 2026-11-06 (+11d) |  | -13d → -14d | DH1100.12121, ER.5101.1300, ER.5104.1280, ER.5104.1250, DH1100-A-EQP-215, ER.5101.1310, ER.5104.1140, ER.5104.1260, ER.5104.1310, PDU.1100.1712, DH1100.MG.A110.8676, DH1100.MG.A110.8680, DH1100.MG.A110.8683, DH1100-B-EQP-196, DH1100-B-EQP-198, DH1100.MG.A110.8685, DH1100.MG.A110.8689, DH1100.MG.A110.8692, DH1100.6540, DH1100.12081, DH1100.12095, IDF.C2.1141, F.1000B..1160, PRE.C3.1155, RR.DJ.1140 → RR.DJ.1140, PRE.C3.1155, F.1000B..1160, IDF.C2.1141, DH1100.12095, DH1100.12081, DH1100.6540, DH1100.MG.A110.8692, DH1100.MG.A110.8689, DH1100.MG.A110.8685, DH1100-B-EQP-198, DH1100-B-EQP-196, DH1100.MG.A110.8683, DH1100.MG.A110.8680, DH1100.MG.A110.8676, PDU.1100.1712, ER.5104.1310, ER.5104.1260, ER.5104.1140, ER.5101.1310, DH1100-A-EQP-215, ER.5104.1280, ER.5101.1300, DH1100.12121 |
| DH1100.L3CX.BMS.001 | DH1100 L3 PTPs & SOOs – BMS | 2026-10-26 → 2026-11-06 (+11d) | 2026-12-22 → 2027-01-06 (+15d) |  | -13d → -14d |  |
| DH1100.L3CX.ELEC.01 | DH1100 L3 FTEs | 2026-10-26 → 2026-11-06 (+11d) | 2026-10-30 → 2026-11-13 (+14d) |  | -13d → -14d |  |
| DH1100.L3CX.ELEC.002 | DH1100 L3 Startup / Pre-Functional – ELECTRICAL | 2026-11-02 → 2026-11-16 (+14d) | 2026-11-23 → 2026-12-07 (+14d) |  | -3d → -4d | DH1100.L3CX.ELEC.01, ER.5104.1310, DH1100-A-EQP-220 → DH1100-A-EQP-220, ER.5104.1310, DH1100.L3CX.ELEC.01, DH1100-B-EQP-198, DH1100-B-EQP-180, DH1100-B-EQP-162, DH1100-B-EQP-144, DH1100-B-EQP-126, DH1100-B-EQP-108, DH1100-B-EQP-90, DH1100-B-EQP-72, DH1100-B-EQP-54, DH1100-B-EQP-36, DH1100-B-EQP-18, DH1200.7790 |
| DH1100.L3CX.MECH.001 | DH1100 L3 Startup / Pre-Functional – MECHANICAL | 2026-11-18 → 2026-11-19 (+1d) | 2026-12-16 → 2026-12-17 (+1d) |  | -19d → -12d | DH1100.L3CX.ELEC.01 SS+3d, ER.5104.1140, DH1100-A-EQP-218 SS → DH1100-A-EQP-218 SS, ER.5104.1140, DH1100.L3CX.ELEC.01 SS+3d, DH1100-B-EQP-196, DH1100-B-EQP-178, DH1100-B-EQP-160, DH1100-B-EQP-142, DH1100-B-EQP-124, DH1100-B-EQP-106, DH1100-B-EQP-88, DH1100-B-EQP-70, DH1100-B-EQP-52, DH1100-B-EQP-34, DH1100-B-EQP-16, ER.5101.1330 FF, ER.5104.1250 |
| DH1100.L3CX.MECH.002 | DH1100 L3 TAB (Air, Water and Reports) – MECHANICAL | 2026-12-17 → 2026-12-22 (+5d) | 2026-12-31 → 2027-01-06 (+6d) |  | -19d → -14d |  |
| DH1100.L3CX.MECH.003 | DH1100 L3 FLS – MECHANICAL | 2026-12-17 → 2026-12-22 (+5d) | 2026-12-31 → 2027-01-06 (+6d) |  | -19d → -14d |  |
| DH1100.L3CX.009 | DH1100 L3 Cx Complete | 2027-01-04 → 2027-01-07 (+3d) | 2027-01-04 → 2027-01-07 (+3d) |  | -19d → -14d | DH1100.L3CX.MECH.003 FF, DH1100.L3CX.MECH.002 FF → DH1100.L3CX.MECH.002 FF, DH1100.L3CX.MECH.003 FF, DH1100.7870 FF, DH1100.12056 FF |
| 2 | **L4 Function Testing** | 2026-12-04 → 2026-12-09 (+5d) | 2027-01-11 → 2027-01-14 (+3d) |  |  |  |
| DH1100.L4CX.COMM.120 | DH1100 L4 Cx | 2026-12-04 → 2026-12-09 (+5d) | 2027-01-11 → 2027-01-14 (+3d) |  | -11d → -14d |  |
| 3 | **L5 Integrated System Testing (IST)** | 2026-12-18 → 2026-12-23 (+5d) | 2027-02-09 → 2027-02-12 (+3d) |  |  |  |
| DH1100.L5CX.COMM.170 | DH1100 L5 Integrated Systems Testing - IST | 2026-12-18 → 2026-12-23 (+5d) | 2027-01-19 → 2027-01-22 (+3d) |  | -11d → -14d |  |
| DH1100.A2110.CO | L5 Integrated System Testing (IST) // DH1100– Phase Closeout Period O&M / TRAINING/ CLOSEOUT DOCS | 2027-01-20 → 2027-01-25 (+5d) | 2027-02-09 → 2027-02-12 (+3d) |  | 63d → 77d |  |
| DH1100.L5CX.COMM.190 | DH1100 – IST / L5 Cx Complete | 2027-01-20 → 2027-01-25 (+5d) | 2027-01-20 → 2027-01-25 (+5d) |  | -11d → -14d |  |
| 1 | **Data Hall 1300** |  | 2027-03-18 → 2027-03-19 (+1d) |  |  |  |
| 10 | **Exterior Build Out** |  | 2026-11-18 → 2027-01-12 (+55d) |  |  |  |
| 1 | **Mechanical Yard** |  | 2026-11-18 → 2027-01-12 (+55d) |  |  |  |
| 5 | **Equipment** | 2026-08-28 → 2026-09-02 (+5d) | 2026-11-02 → 2026-12-08 (+36d) |  |  |  |
| 1 | **A130** | 2026-08-28 → 2026-09-02 (+5d) | 2026-10-02 → 2026-12-07 (+66d) |  |  |  |
| DH.130012023 | DH1300/Mechanical Yard-A130 // Install CHWP | 2026-08-28 A → 2026-09-02 A (+5d) |  |  |  |  |
| DH.130012024 | DH1300/Mechanical Yard-A130 // Install Mechanical Piping Mains (Building -to Line) | 2026-08-31 A → 2026-09-16 A (+16d) |  |  |  |  |
| DH.130012002 | DH1300/Mechanical Yard-A130 // Set TES tank - TES-1CY40-A130 | 2026-10-01 A | 2026-10-01 → 2026-10-12 A (+11d) | 0% → 100% | 70d → none | DH.130012001 → A5750 |
| DH.130012025 | DH1300/Mechanical Yard-A130 // Install Mechanical Chiller to Mains | 2026-10-02 → 2026-10-14 (+12d) | 2026-10-02 → 2026-10-14 (+12d) |  | 70d → 63d |  |
| DH.130012001 | DH1300/Mechanical Yard-A130 // Set Chiller - CHLR-1CY40-A130 | 2026-09-30 → 2026-12-07 (+68d) | 2026-09-30 → 2026-12-07 (+68d) |  | 49d → 13d | STRUCTURE.6900, A5750 → A5890, A5750, STRUCTURE.6900 |
| 2 | **B130** | 2026-08-31 → 2026-09-02 (+2d) | 2026-10-05 → 2026-12-07 (+63d) |  |  |  |
| DH.130012026 | DH1300/Mechanical Yard-B130 // Install CHWP | 2026-08-31 A → 2026-09-02 A (+2d) |  |  |  |  |
| DH.130012027 | DH1300/Mechanical Yard-B130 // Install Mechanical Piping Mains (Building -to Line) | 2026-09-01 A → 2026-09-16 A (+15d) |  |  |  |  |
| DH.130012004 | DH1300/Mechanical Yard-B130 // Set TES tank - TES-1CY40-B130 | 2026-10-02 A | 2026-10-02 → 2026-10-12 A (+10d) | 0% → 100% | 69d → none | DH.130012003 → A5750 |
| DH.130012028 | DH1300/Mechanical Yard-B130 // Install Mechanical Chiller to Mains | 2026-10-05 → 2026-10-14 (+9d) | 2026-10-05 → 2026-10-14 (+9d) |  | 69d → 63d |  |
| DH.130012003 | DH1300/Mechanical Yard-B130 // Set Chiller - CHLR-1CY40-B130 | 2026-10-01 → 2026-12-07 (+67d) | 2026-10-01 → 2026-12-07 (+67d) |  | 49d → 13d | DH.130012001 → A5890, DH.130012001 SS |
| 3 | **C130** | 2026-09-01 → 2026-09-02 (+1d) | 2026-10-06 → 2026-12-07 (+62d) |  |  |  |
| DH.130012029 | DH1300/Mechanical Yard-C130 // Install CHWP | 2026-09-01 A → 2026-09-02 A (+1d) |  |  |  |  |
| DH.130012030 | DH1300/Mechanical Yard-C130 // Install Mechanical Piping Mains (Building -to Line) | 2026-09-02 A → 2026-09-16 A (+14d) |  |  |  |  |
| DH.130012006 | DH1300/Mechanical Yard-C130 // Set TES tank - TES-1CY40-C130 | 2026-10-05 A | 2026-10-05 → 2026-10-12 A (+7d) | 0% → 100% | 68d → none | DH.130012005 → A5750 |
| DH.130012031 | DH1300/Mechanical Yard-C130 // Install Mechanical Chiller to Mains | 2026-10-06 → 2026-10-14 (+8d) | 2026-10-06 → 2026-10-14 (+8d) |  | 68d → 63d |  |
| DH.130012005 | DH1300/Mechanical Yard-C130 // Set Chiller - CHLR-1CY40-C130 | 2026-10-02 → 2026-12-07 (+66d) | 2026-10-02 → 2026-12-07 (+66d) |  | 49d → 13d | DH.130012003 → A5890, DH.130012003 SS |
| 4 | **D130** |  | 2026-10-07 → 2026-12-07 (+61d) |  |  |  |
| DH.130012033 | DH1300/Mechanical Yard-D130 // Install Mechanical Piping Mains (Building -to Line) | 2026-09-03 A → 2026-09-17 A (+14d) |  |  |  |  |
| DH.130012008 | DH1300/Mechanical Yard-D130 // Set TES tank - TES-1CY40-D130 | 2026-10-06 A | 2026-10-06 → 2026-10-12 A (+6d) | 0% → 100% | 67d → none | DH.130012007 → A5752 |
| DH.130012034 | DH1300/Mechanical Yard-D130 // Install Mechanical Chiller to Mains | 2026-10-07 → 2026-10-14 (+7d) | 2026-10-07 → 2026-10-14 (+7d) |  | 67d → 63d |  |
| DH.130012007 | DH1300/Mechanical Yard-D130 // Set Chiller - CHLR-1CY40-D130 | 2026-10-05 → 2026-12-07 (+63d) | 2026-10-05 → 2026-12-07 (+63d) |  | 49d → 13d | DH.130012005 → A5890, DH.130012005 SS |
| 5 | **E130** |  | 2026-10-08 → 2026-12-07 (+60d) |  |  |  |
| DH.130012036 | DH1300/Mechanical Yard-E130 // Install Mechanical Piping Mains (Building -to Line) | 2026-09-04 A → 2026-09-17 A (+13d) |  |  |  |  |
| DH.130012010 | DH1300/Mechanical Yard-E130 // Set TES tank - TES-1CY40-E130 | 2026-10-07 A | 2026-10-07 → 2026-10-12 A (+5d) | 0% → 100% | 66d → none | DH.130012009 → A5752 |
| DH.130012037 | DH1300/Mechanical Yard-E130 // Install Mechanical Chiller to Mains | 2026-10-08 → 2026-10-14 (+6d) | 2026-10-08 → 2026-10-14 (+6d) |  | 66d → 63d |  |
| DH.130012009 | DH1300/Mechanical Yard-E130 // Set Chiller - CHLR-1CY40-E130 | 2026-10-06 → 2026-12-07 (+62d) | 2026-10-06 → 2026-12-07 (+62d) |  | 49d → 13d | DH.130012007 → A5890, DH.130012007 SS |
| 6 | **F130** | 2026-09-04 → 2026-09-09 (+5d) | 2026-10-09 → 2026-12-07 (+59d) |  |  |  |
| DH.130012038 | DH1300/Mechanical Yard-F130 // Install CHWP | 2026-09-04 A → 2026-09-09 A (+5d) |  |  |  |  |
| DH.130012039 | DH1300/Mechanical Yard-F130 // Install Mechanical Piping Mains (Building -to Line) | 2026-09-08 A → 2026-09-17 A (+9d) |  |  |  |  |
| DH.130012012 | DH1300/Mechanical Yard-F130 // Set TES tank - TES-1CY40-F130 | 2026-10-08 A | 2026-10-08 → 2026-10-12 A (+4d) | 0% → 100% | 65d → none | DH.130012011 → A5752 |
| DH.130012040 | DH1300/Mechanical Yard-F130 // Install Mechanical Chiller to Mains | 2026-10-09 → 2026-10-14 (+5d) | 2026-10-09 → 2026-10-14 (+5d) |  | 65d → 63d |  |
| DH.130012011 | DH1300/Mechanical Yard-F130 // Set Chiller - CHLR-1CY40-F130 | 2026-10-07 → 2026-12-07 (+61d) | 2026-10-07 → 2026-12-07 (+61d) |  | 49d → 13d | DH.130012009 → A5890, DH.130012009 SS |
| 7 | **G130** | 2026-09-08 → 2026-09-09 (+1d) | 2026-10-13 → 2026-12-08 (+56d) |  |  |  |
| DH.130012041 | DH1300/Mechanical Yard-G130 // Install CHWP | 2026-09-08 A → 2026-09-09 A (+1d) |  |  |  |  |
| DH.130012042 | DH1300/Mechanical Yard-G130 // Install Mechanical Piping Mains (Building -to Line) | 2026-09-09 A → 2026-09-18 A (+9d) |  |  |  |  |
| DH.130012014 | DH1300/Mechanical Yard-G130 // Set TES tank - TES-1CY40-G130 | 2026-10-09 A | 2026-10-09 → 2026-10-13 A (+4d) | 0% → 100% | 64d → none | DH.130012013 → A5752 |
| DH.130012043 | DH1300/Mechanical Yard-G130 // Install Mechanical Chiller to Mains | 2026-10-13 → 2026-10-14 (+1d) | 2026-10-13 → 2026-10-14 (+1d) |  | 64d → 63d |  |

| ID | Task | Start | Finish | Complete | Total float | Predecessors |
| --- | --- | --- | --- | --- | --- | --- |
| DH.130012013 | DH1300/Mechanical Yard-G130 // Set Chiller - CHLR-1CY40-G130 | 2026-10-08 → 2026-12-08 (+61d) | 2026-10-08 → 2026-12-08 (+61d) |  | 49d → 13d |  |
| 8 | **H130** |  | 2026-10-14 → 2026-12-08 (+55d) |  |  |  |
| DH.130012045 | DH1300/Mechanical Yard-H130 // Install Mechanical Piping Mains (Building -to Line) | 2026-09-10 A → 2026-09-18 A (+8d) |  |  |  |  |
| DH.130012016 | DH1300/Mechanical Yard-H130 // Set TES tank - TES-1CY40-H130 | 2026-10-13 A | 2026-10-13 A | 0% → 100% | 63d → none | DH.130012015 → A5753 |
| DH.130012015 | DH1300/Mechanical Yard-H130 // Set Chiller - CHLR-1CY40-H130 | 2026-10-09 → 2026-12-08 (+60d) | 2026-10-09 → 2026-12-08 (+60d) |  | 49d → 13d | DH.130012013 → DH.130012013 SS |
| 9 | **J130** |  | 2026-10-15 → 2026-12-08 (+54d) |  |  |  |
| DH.130012048 | DH1300/Mechanical Yard-J130 // Install Mechanical Piping Mains (Building -to Line) | 2026-09-11 A → 2026-09-18 A (+7d) |  |  |  |  |
| DH.130012018 | DH1300/Mechanical Yard-J130 // Set TES tank - TES-1CY40-J130 | 2026-10-14 → 2026-10-13 A (-1d) | 2026-10-14 → 2026-10-13 A (-1d) | 0% → 100% | 62d → none | DH.130012017 → A5753 |
| DH.130012049 | DH1300/Mechanical Yard-J130 // Install Mechanical Chiller to Mains | 2026-10-15 → 2026-10-14 (-1d) | 2026-10-15 → 2026-10-14 (-1d) |  | 62d → 63d |  |
| DH.130012017 | DH1300/Mechanical Yard-J130 // Set Chiller - CHLR-1CY40-J130 | 2026-10-13 → 2026-12-08 (+56d) | 2026-10-13 → 2026-12-08 (+56d) |  | 49d → 13d | DH.130012015 → DH.130012015 SS |
| 10 | **K130** |  | 2026-10-16 → 2026-12-08 (+53d) |  |  |  |
| DH.130012051 | DH1300/Mechanical Yard-K130 // Install Mechanical Piping Mains (Building -to Line) | 2026-09-14 A → 2026-09-18 A (+4d) |  |  |  |  |
| DH.130012020 | DH1300/Mechanical Yard-K130 // Set TES tank - TES-1CY40-K130 | 2026-10-15 → 2026-10-13 A (-2d) | 2026-10-15 → 2026-10-13 A (-2d) | 0% → 100% | 61d → none | DH.130012019 → A5753 |
| DH.130012052 | DH1300/Mechanical Yard-K130 // Install Mechanical Chiller to Mains | 2026-10-16 → 2026-10-14 (-2d) | 2026-10-16 → 2026-10-14 (-2d) |  | 61d → 63d |  |
| DH.130012019 | DH1300/Mechanical Yard-K130 // Set Chiller - CHLR-1CY40-K130 | 2026-10-14 → 2026-12-08 (+55d) | 2026-10-14 → 2026-12-08 (+55d) |  | 49d → 13d | DH.130012017 → DH.130012017 SS |
| 11 | **R130** |  | 2026-10-19 → 2026-12-08 (+50d) |  |  |  |
| DH.130012054 | DH1300/Mechanical Yard-R130 // Install Mechanical Piping Mains (Building -to Line) | 2026-09-15 A → 2026-09-18 A (+3d) |  |  |  |  |
| DH.130012022 | DH1300/Mechanical Yard-R130 // Set TES tank - TES-1CY40-R130 | 2026-10-16 → 2026-10-14 (-2d) | 2026-10-16 → 2026-10-14 (-2d) |  | 60d → 62d | DH.130012021 → A5753 |
| DH.130012055 | DH1300/Mechanical Yard-R130 // Install Mechanical Chiller to Mains | 2026-10-19 → 2026-10-15 (-4d) | 2026-10-19 → 2026-10-15 (-4d) |  | 60d → 62d |  |
| DH.130012021 | DH1300/Mechanical Yard-R130 // Set Chiller - CHLR-1CY40-R130 | 2026-10-15 → 2026-12-08 (+54d) | 2026-10-15 → 2026-12-08 (+54d) |  | 49d → 13d | DH.130012019 → DH.130012019 SS |
| 12 | **Test & Flushing** | 2026-10-20 → 2026-10-16 (-4d) | 2026-11-02 → 2026-10-29 (-4d) |  |  |  |
| A5736 | DH1300/Mechanical Yard-Test & Flushing // Line Test & Checking | 2026-10-20 → 2026-10-16 (-4d) | 2026-10-21 → 2026-10-19 (-2d) |  | 60d → 62d |  |
| A5738 | DH1300/Mechanical Yard-Test & Flushing // Electrical & Controls Testing / Checking | 2026-10-22 → 2026-10-20 (-2d) | 2026-10-26 → 2026-10-22 (-4d) |  | 60d → 62d |  |
| A5737 | DH1300/Mechanical Yard-Test & Flushing // Fill, Flush & Purge | 2026-10-27 → 2026-10-23 (-4d) | 2026-11-02 → 2026-10-29 (-4d) |  | 60d → 62d |  |
| 2 | **Electrical & Controls** |  | 2026-11-18 → 2027-01-12 (+55d) |  |  |  |
| A5759 | DH1300/Electrical & Controls // Raceway connections to Chiller units | 2026-10-16 → 2026-12-09 (+54d) | 2026-10-23 → 2026-12-16 (+54d) |  | 49d → 13d |  |
| A5761 | DH1300/Electrical & Controls // Install Panels and Raceways to CHWP | 2026-10-16 → 2026-12-09 (+54d) | 2026-10-29 → 2026-12-22 (+54d) |  | 49d → 13d |  |
| A5762 | DH1300/Electrical & Controls // Install Controls conduits and wire to Chiller units | 2026-10-16 → 2026-12-09 (+54d) | 2026-11-02 → 2026-12-24 (+52d) |  | 49d → 13d |  |
| A5765 | DH1300/Electrical & Controls // Pull and Terminate Feeders to Chiller units | 2026-10-26 → 2026-12-17 (+52d) | 2026-11-02 → 2026-12-24 (+52d) |  | 49d → 13d |  |
| A5768 | DH1300/Electrical & Controls // Chiller units Ready to Energize | 2026-11-03 → 2026-12-28 (+55d) | 2026-11-10 → 2027-01-05 (+56d) |  | 49d → 13d |  |
| A5769 | DH1300/Electrical & Controls // Fine Grade Install Landscape Fabric & Install Rock | 2026-11-12 → 2027-01-06 (+55d) | 2026-11-18 → 2027-01-12 (+55d) |  | 49d → 13d |  |
| 2 | **Roof - RTUs** | 2026-08-04 → 2026-08-07 (+3d) | 2026-10-21 → 2026-11-03 (+13d) |  |  |  |
| 1 | **Column Lines 1.2 thru 2.0** | 2026-08-04 → 2026-08-07 (+3d) | 2026-10-21 → 2026-11-03 (+13d) |  |  |  |
| DH.130012058 | DH1300/Roof - RTUs // - RTU-RT- 08 | 2026-08-04 A → 2026-08-07 A (+3d) |  |  |  |  |
| DH.130012057 | DH1300/Roof - RTUs // - RTU-RT- 09 | 2026-08-06 A → 2026-08-11 A (+5d) |  |  |  |  |
| DH.130012064 | DH1300/Roof - RTUs // - RTU-RT- 010 | 2026-08-07 A → 2026-08-12 A (+5d) |  |  |  |  |
| DH.130012056 | DH1300/Roof - RTUs // Install heat trace system | 2026-09-30 → 2026-10-14 (+14d) | 2026-10-21 → 2026-11-03 (+13d) |  | 68d → 59d |  |
| DH.13007841 | DH1300/Roof - RTUs // Install Electrical Conduit and Controls Piping | 2026-09-30 → 2026-10-14 (+14d) | 2026-10-21 → 2026-11-03 (+13d) |  | 55d → 46d |  |
| 1 | **Interior Build Out** | 2026-08-03 → 2026-08-04 (+1d) | 2027-03-18 → 2027-03-19 (+1d) |  |  |  |
| 9 | **Flex 1000C10** | 2026-08-03 → 2026-08-05 (+2d) | 2026-11-10 → 2026-11-17 (+7d) |  |  |  |
| DH.1300.1010 | DH1300/Flex 1000C10 // MEPF Layout of Overhead Supports | 2026-08-03 A → 2026-08-05 A (+2d) |  |  |  |  |
| DH.1300.1040 | DH1300/Flex 1000C10 // Frame Walls including Backing | 2026-08-05 A → 2026-08-31 A (+26d) |  |  |  |  |
| DH.1300.1070 | DH1300/Flex 1000C10 // Install Top Down Sheet Rock |  | 2026-09-30 → 2026-10-14 (+14d) |  | 21d → 18d |  |
| DH.1300.1060 | DH1300/Flex 1000C10 // MEPF Install Rough Wall |  | 2026-09-30 → 2026-10-08 A (+8d) | 50% → 100% | 19d → none |  |
| DH.1300.1020 | DH1300/Flex 1000C10 // MEPF Install High Overhead Systems | 2026-09-30 → 2026-10-01 A (+1d) | 2026-10-07 → 2026-10-21 (+14d) |  | 26d → 22d |  |
| DH.1300.1120 | DH1300/Flex 1000C10 // Install MEPF Overhead Ceiling Rough | 2026-10-08 → 2026-10-01 A (-7d) | 2026-10-13 → 2026-10-21 (+8d) |  | 26d → 22d | DH.1300.1020 → DH.1300.1020 FF, DH.1300.1020 SS |
| DH.1300.1080 | DH1300/Flex 1000C10 // Rough Wall Inspspection (Approval to Close up) | 2026-10-01 A | 2026-10-01 → 2026-10-08 A (+7d) | 0% → 100% | 19d → none |  |
| DH.1300.1050 | DH1300/Flex 1000C10 // Install Door Frames | 2026-10-16 → 2026-10-05 A (-11d) | 2026-10-16 → 2026-10-21 (+5d) |  | 25d → 22d | DH.1300.1040 FF, DH.1300.1100 → DH.1300.1100 FF, DH.1300.1040 |
| DH.1300.1100 | DH1300/Flex 1000C10 // Tape and Finish Walls | 2026-10-07 → 2026-10-05 A (-2d) | 2026-10-15 → 2026-10-21 (+6d) |  | 19d → 15d | DH.1300.1090 → DH.1300.1090 FF |
| DH.1300.1130 | DH1300/Flex 1000C10 // Install Lighting, Fire Alarm & Fire Protection | 2026-10-14 → 2026-10-06 A (-8d) | 2026-10-15 → 2026-10-21 (+6d) |  | 26d → 22d | DH.1300.1120 → DH.1300.1120 FF |
| DH.1300.1090 | DH1300/Flex 1000C10 // Install Balance of Sheetrock | 2026-10-02 → 2026-10-14 (+12d) | 2026-10-06 → 2026-10-16 (+10d) |  | 19d → 18d |  |
| DH.1300.1000 | DH1300/Flex 1000C10 // Seal Concrete | 2026-10-16 → 2026-10-22 (+6d) | 2026-10-22 → 2026-10-28 (+6d) |  | 19d → 15d |  |
| DH.1300.1110 | DH1300/Flex 1000C10 // Prime and First Coat of Paint | 2026-10-23 → 2026-10-29 (+6d) | 2026-10-26 → 2026-10-30 (+4d) |  | 19d → 15d |  |
| DH.1300.1140 | DH1300/Flex 1000C10 // Wall Touch up Final Coat of Paint | 2026-10-27 → 2026-11-02 (+6d) | 2026-10-29 → 2026-11-04 (+6d) |  | 19d → 15d |  |
| DH.1300.1150 | DH1300/Flex 1000C10 // Install Wall Base, Trim, and Devices | 2026-10-30 → 2026-11-05 (+6d) | 2026-11-03 → 2026-11-09 (+6d) |  | 19d → 15d |  |
| DH.1300.3067 | DH1300/Flex 1000C10 // Ready to Receive Equipment | 2026-11-03 → 2026-11-09 (+6d) | 2026-11-03 → 2026-11-09 (+6d) |  | 19d → 15d |  |
| DH.1300.1160 | DH1300/Flex 1000C10 // Suffolk Pre Punch | 2026-11-04 → 2026-11-10 (+6d) | 2026-11-10 → 2026-11-17 (+7d) |  | 54d → 50d |  |
| 7 | **Electrical Room #5301** |  | 2026-12-11 → 2026-12-15 (+4d) |  |  |  |
| B120001.3038 | DH1300/Electrical Room #5301 // Frame Walls including Backing | 2026-08-07 A → 2026-09-14 A (+38d) |  |  |  |  |
| F.1000A.1435 | DH1300/Electrical Room #5301 // BMS & EPMS Rough-In | 2026-10-08 → 2026-09-24 A (-14d) | 2026-10-09 → 2026-09-25 A (-14d) | 0% → 100% | 33d → none | F.1000A.1216 FF, F.1000A.1216 SS → B120001.3038 |
| B120001.3041 | DH1300/Electrical Room #5301 // Install Top Down Sheet Rock |  | 2026-10-06 → 2026-09-29 A (-7d) | 0% → 100% | 2d → none |  |
| B120001.3040 | DH1300/Electrical Room #5301 // MEPF Install Rough Wall |  | 2026-10-01 → 2026-10-02 A (+1d) | 0% → 100% | 1d → none |  |
| B120001.3042 | DH1300/Electrical Room #5301 // Rough Wall Inspspection (Approval to Close up) | 2026-10-02 → 2026-09-30 A (-2d) | 2026-10-02 → 2026-09-30 A (-2d) | 0% → 100% | 1d → none |  |
| B120001.3044 | DH1300/Electrical Room #5301 // Install Balance of Sheetrock | 2026-10-05 → 2026-09-30 A (-5d) | 2026-10-07 → 2026-10-08 A (+1d) | 0% → 100% | 1d → none |  |
| B120001.3037 | DH1300/Electrical Room #5301 // MEPF Install High Overhead Systems | 2026-09-30 → 2026-10-01 A (+1d) | 2026-10-07 → 2026-10-21 (+14d) |  | 21d → 12d |  |
| B120001.3045 | DH1300/Electrical Room #5301 // Tape and Finish Walls | 2026-10-08 → 2026-10-05 A (-3d) | 2026-10-16 → 2026-10-09 A (-7d) | 0% → 100% | 1d → none | B120001.3044 → B120001.3044 FF |
| B120001.3047 | DH1300/Electrical Room #5301 // Prime and First Coat of Paint | 2026-10-19 → 2026-10-12 A (-7d) | 2026-10-20 → 2026-10-15 (-5d) |  | 1d → 4d |  |
| B120001.3143 | DH1300/Electrical Room #5301 // Install Overhead Cable Ladder / 36" Cable Tray - TFO | 2026-09-30 → 2026-10-14 (+14d) | 2026-10-06 → 2026-10-20 (+14d) |  | 33d → -3d |  |
| B120001.3108 | DH1300/Electrical Room #5301 // Room Ready to Receive Equipment | 2026-10-20 → 2026-10-15 (-5d) | 2026-10-20 → 2026-10-15 (-5d) |  | 1d → 4d |  |
| DH.1300.1220 | DH1300/Electrical Room #5301 // Pull Cable Tray Feeders (CRAHU/CDU) | 2026-09-30 → 2026-10-21 (+21d) | 2026-10-14 → 2026-11-03 (+20d) |  | 11d → -3d | none → B120001.3143 |

| ID | Task | Start | Finish | Complete | Total float | Predecessors |
| --- | --- | --- | --- | --- | --- | --- |
| DH.1300.1250 | DH1300/Electrical Room #5301 // Set CRAH-ER5301- 01 | 2026-11-03 → 2026-10-21 (-13d) | 2026-11-03 → 2026-10-21 (-13d) |  | -7d → 2d | ER.5101.3059, ER.5101.3059 SS → DH.1300.3102 |
| DH.1300.3031 | DH1300/Electrical Room #5301 // Set CRAH-ER5301- 02 | 2026-11-03 → 2026-10-21 (-13d) | 2026-11-03 → 2026-10-21 (-13d) |  | -7d → 2d | DH.1300.1250 SS → DH.1300.3102, DH.1300.1250 SS |
| DH.1300.3032 | DH1300/Electrical Room #5301 // Set CRAH-ER5301- 03 | 2026-11-03 → 2026-10-21 (-13d) | 2026-11-03 → 2026-10-21 (-13d) |  | -7d → 2d | DH.1300.3031 SS → DH.1300.3102, DH.1300.3031 SS |
| DH.1300.3033 | DH1300/Electrical Room #5301 // Set CRAH-ER5301- 04 | 2026-11-03 → 2026-10-21 (-13d) | 2026-11-03 → 2026-10-21 (-13d) |  | -7d → 2d | DH.1300.3032 SS → DH.1300.3102, DH.1300.3032 SS |
| DH.1300.3034 | DH1300/Electrical Room #5301 // Set CRAH-ER5301- 05 | 2026-11-03 → 2026-10-21 (-13d) | 2026-11-03 → 2026-10-21 (-13d) |  | -7d → 2d | DH.1300.3033 SS → DH.1300.3102, DH.1300.3033 SS |
| B120001.3043 | DH1300/Electrical Room #5301 // Install Overhead Buss duct | 2026-10-08 → 2026-10-22 (+14d) | 2026-10-09 → 2026-10-23 (+14d) |  | 30d → 21d |  |
| B120001.3144 | DH1300/Electrical Room #5301 // Install Overhead HAC - TFO | 2026-10-08 → 2026-10-22 (+14d) | 2026-10-15 → 2026-10-28 (+13d) |  | 27d → 18d |  |
| DH.1300.1180 | DH1300/Electrical Room #5301 // Install Cable Tray | 2026-10-08 → 2026-10-22 (+14d) | 2026-10-13 → 2026-10-26 (+13d) |  | 29d → 20d |  |
| DH.1300.3035 | DH1300/Electrical Room #5301 // Set CRAH-ER5301- 06 | 2026-11-04 → 2026-10-22 (-13d) | 2026-11-04 → 2026-10-22 (-13d) |  | -7d → 2d | DH.1300.3034 → DH.1300.3102, DH.1300.3034 |
| F.1000A.1216 | DH1300/Electrical Room #5301 // Rough-In Security | 2026-10-08 → 2026-10-22 (+14d) | 2026-10-09 → 2026-10-23 (+14d) |  | 21d → 12d |  |
| DH.1300.1260 | DH1300/Electrical Room #5301 // Mechanical Connections to CRAHU | 2026-11-05 → 2026-10-23 (-13d) | 2026-11-12 → 2026-10-29 (-14d) |  | -7d → 2d |  |
| F.1000A.1217 | DH1300/Electrical Room #5301 // Pull & Test Security Cable | 2026-10-13 → 2026-10-26 (+13d) | 2026-10-15 → 2026-10-28 (+13d) |  | 21d → 12d |  |
| DH.1300.1320 | DH1300/Electrical Room #5301 // Buss Duct Tie In to Elect Gear | 2026-10-16 → 2026-10-29 (+13d) | 2026-10-20 → 2026-11-02 (+13d) |  | 27d → 18d |  |
| F.1000A.1218 | DH1300/Electrical Room #5301 // Install Security Devices | 2026-10-16 → 2026-10-29 (+13d) | 2026-10-19 → 2026-10-30 (+11d) |  | 21d → 12d |  |
| DH.1300.1270 | DH1300/Electrical Room #5301 // Install Condensate lines from CRAHU's | 2026-11-13 → 2026-10-30 (-14d) | 2026-11-16 → 2026-11-02 (-14d) |  | -7d → 2d |  |
| DH.1300.1280 | DH1300/Electrical Room #5301 // Install Elec Feeders to CRAHU's | 2026-11-13 → 2026-10-30 (-14d) | 2026-11-17 → 2026-11-03 (-14d) |  | 8d → 17d |  |
| ER.5101.3056 | DH1300/Electrical Room #5301 // Set Skid - SKID-B130 |  |  |  |  | ER.5101.3055 SS → DH.1300.3069, ER.5101.3055 SS |
| ER.5101.3057 | DH1300/Electrical Room #5301 // Set Skid - SKID-C130 |  |  |  |  | ER.5101.3056 SS → DH.1300.3069, ER.5101.3056 SS |
| F.1000A.1219 | DH1300/Electrical Room #5301 // Mount & Terminate Security Devices | 2026-10-21 → 2026-11-02 (+12d) | 2026-10-27 → 2026-11-06 (+10d) |  | 20d → 12d |  |
| B120001.3039 | DH1300/Electrical Room #5301 // Install Door Frames | 2026-11-17 → 2026-11-03 (-14d) | 2026-11-17 → 2026-11-03 (-14d) |  | -7d → 2d |  |
| DH.1300.1210 | DH1300/Electrical Room #5301 // Pull Cable Buss Feeders | 2026-10-29 → 2026-11-03 (+5d) | 2026-11-05 → 2026-11-10 (+5d) |  | -6d → -9d |  |
| ER.5101.3058 | DH1300/Electrical Room #5301 // Set Skid - SKID-D130 | 2026-11-02 → 2026-11-05 (+3d) | 2026-11-02 → 2026-11-05 (+3d) |  | -7d → -9d | ER.5101.3057 SS → DH.1300.3082, ER.5101.3057 |
| ER.5101.3059 | DH1300/Electrical Room #5301 // Set Skid - SKID-E130 | 2026-11-02 → 2026-11-05 (+3d) | 2026-11-02 → 2026-11-05 (+3d) |  | -7d → -9d | ER.5101.3058 SS → DH.1300.3082, ER.5101.3058 SS |
| DH.1300.1200 | DH1300/Electrical Room #5301 // Install Cable Buss From Exterior | 2026-11-03 → 2026-11-06 (+3d) | 2026-11-05 → 2026-11-10 (+5d) |  | -6d → -9d |  |
| F.1000A.1220 | DH1300/Electrical Room #5301 // Test Security Devices | 2026-11-18 → 2026-11-09 (-9d) | 2026-11-19 → 2026-11-10 (-9d) |  | 6d → 12d |  |
| DH.1300.1230 | DH1300/Electrical Room #5301 // Terminate Cable Buss Feeders | 2026-11-06 → 2026-11-12 (+6d) | 2026-11-10 → 2026-11-16 (+6d) |  | 12d → 9d |  |
| ER.5101.3097 | DH1300/Electrical Room #5301 // Set PDU - PDU-R130-01 | 2026-11-06 → 2026-11-12 (+6d) | 2026-11-06 → 2026-11-12 (+6d) |  | -6d → -9d |  |
| ER.5101.3103 | DH1300/Electrical Room #5301 // Set UPS - UPS-R130 | 2026-11-06 → 2026-11-12 (+6d) | 2026-11-06 → 2026-11-12 (+6d) |  | -6d → -9d |  |
| DH.1300.1240 | DH1300/Electrical Room #5301 // Land and Terminate Cabel Tray Feeders In Gear | 2026-11-09 → 2026-11-13 (+4d) | 2026-11-23 → 2026-11-27 (+4d) |  | -6d → -9d |  |
| DH.1300.1290 | DH1300/Electrical Room #5301 // Pull Misc Feeder and Branch Circuits | 2026-11-18 → 2026-11-20 (+2d) | 2026-12-02 → 2026-12-04 (+2d) |  | -7d → -9d |  |
| DH.1300.1300 | DH1300/Electrical Room #5301 // Land and Terminate Misc Feeder and Branch Circuits | 2026-11-25 → 2026-11-30 (+5d) | 2026-12-09 → 2026-12-11 (+2d) |  | -7d → -9d |  |
| DH.1300.1330 | DH1300/Electrical Room #5301 // Mechanical Equipment Pre-Start up | 2026-11-24 → 2026-11-30 (+6d) | 2026-11-25 → 2026-12-01 (+6d) |  | 4d → 1d |  |
| DH.1300.1310 | DH1300/Electrical Room #5301 // Final FOD Check of all Panels | 2026-12-10 → 2026-12-14 (+4d) | 2026-12-11 → 2026-12-15 (+4d) |  | -7d → -9d |  |
| B120001.3073 | DH1300/Electrical Room #5304 // Frame Walls including Backing | 2026-08-11 A → 2026-09-17 A (+37d) |  |  |  |  |
| F.1000A.1445 | DH1300/Electrical Room #5304 // BMS & EPMS Rough-In | 2026-10-15 → 2026-09-24 A (-21d) | 2026-10-16 → 2026-09-25 A (-21d) | 0% → 100% | 29d → none | F.1000A.1221 FF, F.1000A.1221 SS → B120001.3073 |
| B120001.3075 | DH1300/Electrical Room #5304 // MEPF Install Rough Wall | 2026-08-17 A → 2026-09-28 A (+42d) |  |  |  |  |
| B120001.3076 | DH1300/Electrical Room #5304 // Install Top Down Sheet Rock |  | 2026-10-06 → 2026-10-08 A (+2d) | 0% → 100% | 6d → none |  |
| B120001.3077 | DH1300/Electrical Room #5304 // Rough Wall Inspection (Approval to Close up) | 2026-09-30 A | 2026-09-30 A | 0% → 100% | 7d → none |  |
| B120001.3079 | DH1300/Electrical Room #5304 // Install Balance of Sheetrock | 2026-10-02 → 2026-09-30 A (-2d) | 2026-10-06 → 2026-10-14 (+8d) | 0% → 100% | 6d → 8d |  |
| B120001.3080 | DH1300/Electrical Room #5304 // Tape and Finish Walls | 2026-10-07 → 2026-09-30 A (-7d) | 2026-10-15 → 2026-10-14 (-1d) | 0% → 83% | 6d → 7d | B120001.3079 → B120001.3079 FF |
| B120001.3074 | DH1300/Electrical Room #5304 // MEPF Install High Overhead Systems | 2026-09-30 → 2026-10-01 A (+1d) | 2026-10-07 → 2026-10-21 (+14d) |  | 11d → 2d |  |
| B120001.3082 | DH1300/Electrical Room #5304 // Prime and First Coat of Paint | 2026-10-16 → 2026-10-13 A (-3d) | 2026-10-19 → 2026-10-16 (-3d) | 0% → 50% | 6d → 7d | B120001.3080 → B120001.3080 FF+2d |
| B120001.3145 | DH1300/Electrical Room #5304 // Install Overhead Cable Ladder / 36" Cable Tray - TFO | 2026-09-30 → 2026-10-14 (+14d) | 2026-10-06 → 2026-10-20 (+14d) |  | 17d → 8d |  |
| B120001.3109 | DH1300/Electrical Room #5304 // Room Ready to Receive Equipment | 2026-10-19 → 2026-10-16 (-3d) | 2026-10-19 → 2026-10-16 (-3d) |  | 6d → 7d |  |
| B120001.3146 | DH1300/Electrical Room #5304 // Install Overhead HAC - TFO | 2026-10-07 → 2026-10-21 (+14d) | 2026-10-14 → 2026-10-27 (+13d) |  | 17d → 8d |  |
| B120001.3078 | DH1300/Electrical Room #5304 // Install Overhead Buss duct | 2026-10-08 → 2026-10-22 (+14d) | 2026-10-09 → 2026-10-23 (+14d) |  | 12d → 3d |  |
| DH.1300.3042 | DH1300/Electrical Room #5304 // Install Cable Tray | 2026-10-08 → 2026-10-22 (+14d) | 2026-10-13 → 2026-10-26 (+13d) |  | 11d → 2d |  |
| DH.1300.3048 | DH1300/Electrical Room #5304 // Set CRAH-ER5304- 01 | 2026-11-09 → 2026-10-22 (-18d) | 2026-11-09 → 2026-10-22 (-18d) |  | 4d → 16d | B120001.3082, ER.5101.3064 SS → DH.1300.3102 FS+1d, B120001.3082 |
| DH.1300.3049 | DH1300/Electrical Room #5304 // Set CRAH-ER5304- 02 | 2026-11-09 → 2026-10-22 (-18d) | 2026-11-09 → 2026-10-22 (-18d) |  | 4d → 16d | DH.1300.3048 SS → DH.1300.3102 FS+1d, DH.1300.3048 SS |
| DH.1300.3050 | DH1300/Electrical Room #5304 // Set CRAH-ER5304- 03 | 2026-11-09 → 2026-10-22 (-18d) | 2026-11-09 → 2026-10-22 (-18d) |  | 4d → 16d | DH.1300.3049 SS → DH.1300.3102 FS+1d, DH.1300.3049 SS |
| DH.1300.3051 | DH1300/Electrical Room #5304 // Set CRAH-ER5304- 04 | 2026-11-10 → 2026-10-23 (-18d) | 2026-11-10 → 2026-10-23 (-18d) |  | 4d → 16d | DH.1300.3050 → DH.1300.3102 FS+1d, DH.1300.3050 |
| DH.1300.3052 | DH1300/Electrical Room #5304 // Set CRAH-ER5304- 05 | 2026-11-10 → 2026-10-23 (-18d) | 2026-11-10 → 2026-10-23 (-18d) |  | 4d → 16d | DH.1300.3051 SS → DH.1300.3102 FS+1d, DH.1300.3051 SS |
| DH.1300.3053 | DH1300/Electrical Room #5304 // Set CRAH-ER5304- 06 | 2026-11-10 → 2026-10-23 (-18d) | 2026-11-10 → 2026-10-23 (-18d) |  | 4d → 16d | DH.1300.3052 SS → DH.1300.3102 FS+1d, DH.1300.3052 SS |
| DH.1300.3055 | DH1300/Electrical Room #5304 // Mechanical Connections to CRAHU | 2026-11-12 → 2026-10-26 (-17d) | 2026-11-18 → 2026-10-30 (-19d) |  | 4d → 16d |  |
| F.1000A.1221 | DH1300/Electrical Room #5304 // Rough-In Security | 2026-10-15 → 2026-10-28 (+13d) | 2026-10-16 → 2026-10-29 (+13d) |  | 17d → 8d |  |
| F.1000A.1222 | DH1300/Electrical Room #5304 // Pull & Test Security Cable | 2026-10-19 → 2026-10-30 (+11d) | 2026-10-21 → 2026-11-03 (+13d) |  | 17d → 8d |  |
| DH.1300.3057 | DH1300/Electrical Room #5304 // Install Condensate lines from CRAHU's | 2026-11-19 → 2026-11-02 (-17d) | 2026-11-23 → 2026-11-04 (-19d) |  | 4d → 16d |  |
| DH.1300.3058 | DH1300/Electrical Room #5304 // Install Elec Feeders to CRAHU's | 2026-11-19 → 2026-11-02 (-17d) | 2026-11-23 → 2026-11-04 (-19d) |  | 4d → 16d |  |
| F.1000A.1223 | DH1300/Electrical Room #5304 // Install Security Devices | 2026-10-22 → 2026-11-04 (+13d) | 2026-10-23 → 2026-11-05 (+13d) |  | 17d → 8d |  |
| ER.5101.3060 | DH1300/Electrical Room #5304 // Set Skid - SKID-F130 | 2026-11-09 → 2026-11-05 (-4d) | 2026-11-09 → 2026-11-05 (-4d) |  | -8d → -7d | ER.5101.3059 SS, DH.1300.3071 → DH.1300.3082, ER.5101.3059 SS |
| ER.5101.3061 | DH1300/Electrical Room #5304 // Set Skid - SKID-G130 | 2026-11-09 → 2026-11-05 (-4d) | 2026-11-09 → 2026-11-05 (-4d) |  | -8d → -7d | ER.5101.3060 SS → DH.1300.3082, ER.5101.3060 SS |
| F.1000A.1224 | DH1300/Electrical Room #5304 // Mount & Terminate Security Devices | 2026-10-26 → 2026-11-06 (+11d) | 2026-10-30 → 2026-11-13 (+14d) |  | 17d → 8d |  |
| ER.5101.3062 | DH1300/Electrical Room #5304 // Set Skid - SKID-H130 |  |  |  |  | ER.5101.3061 SS → DH.1300.3071, ER.5101.3061 |
| ER.5101.3063 | DH1300/Electrical Room #5304 // Set Skid - SKID-J130 |  |  |  |  | ER.5101.3062 SS → DH.1300.3071, ER.5101.3062 SS |
| ER.5101.3064 | DH1300/Electrical Room #5304 // Set Skid - SKID-K130 |  |  |  |  | ER.5101.3063 SS → DH.1300.3071, ER.5101.3063 SS |
| F.1000A.1225 | DH1300/Electrical Room #5304 // Test Security Devices | 2026-11-02 → 2026-11-16 (+14d) | 2026-11-03 → 2026-11-17 (+14d) |  | 17d → 8d |  |
| 3 | **Data Hall 1300** |  | 2026-12-10 → 2026-12-22 (+12d) |  |  |  |
| DH.13006300 | DH 1300 // Frame walls |  | 2026-10-08 → 2026-09-29 A (-9d) | 30% → 100% | -8d → none |  |
| F.1000A.1455 | DH 1300 // BMS & EPMS Rough-In | 2026-10-29 → 2026-09-24 A (-35d) | 2026-10-30 → 2026-09-25 A (-35d) | 0% → 100% | 61d → none | F.1000A.1226 FF, F.1000A.1226 SS → DH.13006300 |
| DH.130012067 | DH 1300 // Install 1-Side Sheet Rock (DH-Side) | 2026-10-09 → 2026-09-30 A (-9d) | 2026-10-14 → 2026-10-02 A (-12d) | 0% → 100% | -6d → none |  |

| ID | Task | Start | Finish | Complete | Total float | Predecessors |
| --- | --- | --- | --- | --- | --- | --- |
| DH.13006290 | DH 1300 // MEPF high overhead install | 2026-09-30 → 2026-10-01 A (+1d) | 2026-10-14 → 2026-10-27 (+13d) |  | 2d → -7d |  |
| DH.13006320 | DH 1300 // MEP rough in walls | 2026-10-09 → 2026-10-05 A (-4d) | 2026-10-16 → 2026-10-09 A (-7d) | 0% → 100% | -8d → none |  |
| B120001.3147 | DH 1300 // Install Overhead Cable Ladder / 36" Cable Tray - TFO | 2026-10-15 → 2026-10-06 A (-9d) | 2026-10-21 → 2026-10-20 (-1d) |  | 49d → 63d | DH.13006270, DH.13006290 → DH.13006290 SS+3d, DH.13006270 |
| DH.13006360 | DH 1300 // Tape and finish walls | 2026-10-19 → 2026-10-06 A (-13d) | 2026-11-06 → 2026-11-03 (-3d) |  | -8d → -5d | DH.13006320, DH.130012067, DH.13006300 SS → DH.13006300 SS, DH.130012067, DH.13006320 FF+2d |
| B120001.3148 | DH 1300 // Install Overhead HAC - TFO | 2026-10-22 → 2026-10-21 (-1d) | 2026-10-28 → 2026-10-27 (-1d) |  | 49d → 63d |  |
| DH.13007800 | DH 1300 // Install Ceiling supports (rods/wires) no grid | 2026-10-15 → 2026-10-28 (+13d) | 2026-10-21 → 2026-11-03 (+13d) |  | 2d → -7d |  |
| F.1000A.1226 | DH 1300 // Rough-In Security | 2026-10-29 → 2026-10-28 (-1d) | 2026-10-30 → 2026-10-29 (-1d) |  | 49d → 63d |  |
| F.1000A.1227 | DH 1300 // Pull & Test Security Cable | 2026-11-02 → 2026-10-30 (-3d) | 2026-11-04 → 2026-11-03 (-1d) |  | 49d → 63d |  |
| DH.13006220 | DH 1300 // Install ceiling grid system | 2026-10-22 → 2026-11-04 (+13d) | 2026-11-02 → 2026-11-16 (+14d) |  | 2d → -7d |  |
| DH.13006260 | DH 1300 // Polish concrete | 2026-11-09 → 2026-11-04 (-5d) | 2026-11-10 → 2026-11-05 (-5d) |  | 4d → 7d |  |
| DH.13006310 | DH 1300 // Install wall door frames | 2026-11-09 → 2026-11-04 (-5d) | 2026-11-12 → 2026-11-06 (-6d) |  | 8d → 11d |  |
| DH.13006410 | DH 1300 // Prime and 1st coat of Paint | 2026-11-09 → 2026-11-04 (-5d) | 2026-11-16 → 2026-11-10 (-6d) |  | 1d → 4d |  |
| F.1000A.1228 | DH 1300 // Install Security Devices | 2026-11-05 → 2026-11-04 (-1d) | 2026-11-06 → 2026-11-05 (-1d) |  | 49d → 63d |  |
| F.1000A.1229 | DH 1300 // Mount & Terminate Security Devices | 2026-11-17 → 2026-11-12 (-5d) | 2026-11-23 → 2026-11-18 (-5d) |  | 44d → 60d |  |
| DH.13006250 | DH 1300 // Install overhead MEP and lighting | 2026-11-03 → 2026-11-17 (+14d) | 2026-11-09 → 2026-11-23 (+14d) |  | 2d → -7d |  |
| DH.13006240 | DH 1300 // Install ceiling grid tiles | 2026-11-10 → 2026-11-24 (+14d) | 2026-11-13 → 2026-11-27 (+14d) |  | 2d → -7d |  |
| DH.13007790 | DH 1300 // Final Paint & Touch up walls | 2026-11-17 → 2026-11-30 (+13d) | 2026-11-23 → 2026-12-04 (+11d) |  | 1d → -7d |  |
| DH.13007810 | DH 1300 // Install MEPF Trim and Finishes | 2026-11-24 → 2026-12-07 (+13d) | 2026-12-01 → 2026-12-11 (+10d) |  | 1d → -7d |  |
| DH.160012144 | DH 1300 // Ready to Receive Equipment | 2026-12-01 → 2026-12-11 (+10d) | 2026-12-01 → 2026-12-11 (+10d) |  | 1d → -7d |  |
| F.1000A.1230 | DH 1300 // Test Security Devices | 2026-12-02 → 2026-12-14 (+12d) | 2026-12-03 → 2026-12-15 (+12d) |  | 39d → 44d |  |
| DH.13007820 | DH 1300 // Suffolk Pre Punch | 2026-12-04 → 2026-12-16 (+12d) | 2026-12-10 → 2026-12-22 (+12d) |  | 52d → 44d |  |
| 15 | **PDU Gallery** | 2026-08-03 → 2026-08-05 (+2d) | 2026-10-23 → 2026-10-22 (-1d) |  |  |  |
| DH.13000.1000 | DH1300/PDU Gallery // Seal concrete | 2026-08-03 A → 2026-08-05 A (+2d) |  |  |  |  |
| DH.13000.1010 | DH1300/PDU Gallery // MEPF overhead layout | 2026-08-05 A → 2026-09-01 A (+27d) |  |  |  |  |
| DH.13000.1040 | DH1300/PDU Gallery // Frame walls |  | 2026-10-06 → 2026-09-29 A (-7d) | 0% → 100% | 32d → none |  |
| DH.13000.1030 | DH1300/PDU Gallery // MEPF high overhead install | 2026-09-30 → 2026-10-01 A (+1d) | 2026-10-02 → 2026-10-16 (+14d) |  | 28d → 27d |  |
| DH.13000.1060 | DH1300/PDU Gallery // Install Sheetrock Top Down | 2026-10-08 → 2026-10-01 A (-7d) | 2026-10-13 → 2026-10-16 (+3d) |  | 26d → 28d | DH.13000.1040 SS, DH.13000.1070 → DH.13000.1040 SS |
| DH.13000.1080 | DH1300/PDU Gallery // Install sheetrock on walls (Balance) | 2026-10-14 → 2026-10-05 A (-9d) |  |  | 26d → 27d | DH.13000.1060 → DH.13000.1060 FF, DH.13000.1070 FF+1d |
| DH.13000.1711 | DH1300/PDU Gallery // MEP rough in walls | 2026-10-02 → 2026-10-05 A (+3d) | 2026-10-06 → 2026-10-16 (+10d) |  | 26d → 27d | DH.13000.1110 → DH.13000.1040 |
| DH.13000.1050 | DH1300/PDU Gallery // Install wall door frames | 2026-10-21 → 2026-10-12 A (-9d) | 2026-10-21 → 2026-10-12 A (-9d) | 0% → 100% | 28d → none | DH.13000.1040, DH.13000.1080 → DH.13000.1040 |
| DH.13000.1090 | DH1300/PDU Gallery // Tape and finish walls | 2026-10-21 → 2026-10-13 A (-8d) | 2026-10-21 → 2026-10-19 (-2d) |  | 26d → 28d | DH.13000.1080 → DH.13000.1060 FF+1d |
| DH.13000.1110 | DH1300/PDU Gallery // Install Cable Tray (From Elec Rm 5301 to CRAHU Gallery) | 2026-09-30 → 2026-10-14 (+14d) | 2026-10-01 → 2026-10-15 (+14d) |  | 26d → 32d |  |
| DH.13000.1070 | DH1300/PDU Gallery // In wall inspection | 2026-10-07 → 2026-10-19 (+12d) | 2026-10-07 → 2026-10-19 (+12d) |  | 26d → 27d |  |
| DH.13000.1100 | DH1300/PDU Gallery // Paint walls | 2026-10-22 → 2026-10-21 (-1d) | 2026-10-23 → 2026-10-22 (-1d) |  | 26d → 27d | DH.13000.1090 → DH.13000.1080, DH.13000.1090 |
| DH.13000.1712 | DH1300/PDU Gallery // Ready to Receive Equipment | 2026-10-23 → 2026-10-22 (-1d) | 2026-10-23 → 2026-10-22 (-1d) |  | 26d → 27d |  |
| 14 | **CRAH/CDU Galleries** | 2026-08-03 → 2026-08-05 (+2d) | 2026-12-24 → 2026-12-18 (-6d) |  |  |  |
| 2 | **Gallery 1302** | 2026-08-03 → 2026-08-05 (+2d) | 2026-12-16 → 2026-12-11 (-5d) |  |  |  |
| 4 | **Architectural** | 2026-08-03 → 2026-08-05 (+2d) | 2026-11-24 → 2026-12-07 (+13d) |  |  |  |
| DH.1300660 | DH 1300/Gallery 1302 // Seal concrete | 2026-08-03 A → 2026-09-02 A (+30d) |  |  |  | DH.13000.1000 SS → DH.13001000, DH.13000.1000 SS |
| DH.1300700 | DH 1300/Gallery 1302 // Frame walls | 2026-08-12 A → 2026-09-21 A (+40d) |  |  |  |  |
| F.1000A.1465 | DH 1300/Gallery 1302 // BMS & EPMS Rough-In | 2026-10-27 → 2026-09-24 A (-33d) | 2026-10-28 → 2026-09-25 A (-33d) | 0% → 100% | 58d → none | F.1000A.1276 FF, F.1000A.1276 SS → DH.1300700 |
| DH.1300720 | DH 1300/Gallery 1302 // Install Sheetrock Top Down |  | 2026-10-07 → 2026-10-21 (+14d) |  | -6d → -2d |  |
| DH.1300690 | DH 1300/Gallery 1302 // MEPF high overhead install | 2026-09-30 → 2026-10-01 A (+1d) | 2026-10-09 → 2026-10-23 (+14d) |  | -8d → 37d |  |
| DH.1300730 | DH 1300/Gallery 1302 // MEP rough in walls | 2026-10-13 → 2026-10-06 A (-7d) | 2026-10-16 → 2026-10-12 A (-4d) | 0% → 100% | 5d → none | DH.1300750 SS, DH.1300720 → DH.1300700 |
| DH.1300750 | DH 1300/Gallery 1302 // Install Balance of Sheetrock on walls | 2026-10-13 → 2026-10-06 A (-7d) | 2026-10-20 → 2026-10-21 (+1d) |  | -8d → -2d | DH.1300690 → DH.1300740 FF, DH.1300730 FF, DH.1300720 FF |
| DH.1300740 | DH 1300/Gallery 1302 // In wall inspection | 2026-10-19 → 2026-10-13 A (-6d) | 2026-10-19 → 2026-10-13 A (-6d) | 0% → 100% | 5d → none |  |
| DH.1300770 | DH 1300/Gallery 1302 // Tape and finish walls | 2026-10-21 → 2026-10-13 A (-8d) | 2026-10-30 → 2026-10-23 (-7d) |  | -8d → -3d | DH.1300750 → DH.1300750 FF+1d |
| B120001.3149 | DH 1300/Gallery 1302 // Install Overhead Cable Ladder / 36" Cable Tray - TFO | 2026-10-13 → 2026-10-26 (+13d) | 2026-10-19 → 2026-10-30 (+11d) |  | 46d → 37d |  |
| DH.1300710 | DH 1300/Gallery 1302 // Install wall door frames | 2026-11-02 → 2026-10-26 (-7d) | 2026-11-02 → 2026-10-26 (-7d) |  | -4d → 1d |  |
| DH.1300790 | DH 1300/Gallery 1302 // Prime and Paint walls | 2026-11-02 → 2026-10-26 (-7d) | 2026-11-05 → 2026-10-29 (-7d) |  | -8d → -3d |  |
| DH.1300800 | DH 1300/Gallery 1302 // Touch up Walls and Fianl Paint | 2026-11-02 → 2026-10-26 (-7d) | 2026-11-06 → 2026-10-30 (-7d) |  | -8d → -3d |  |
| DH.1300810 | DH 1300/Gallery 1302 // Install Trim and Devices | 2026-11-04 → 2026-10-28 (-7d) | 2026-11-05 → 2026-10-29 (-7d) |  | -7d → -2d |  |
| DH.160012145 | DH 1300/Gallery 1302 // Ready to Receive Equipment | 2026-11-06 → 2026-10-30 (-7d) | 2026-11-06 → 2026-10-30 (-7d) |  | -8d → -3d |  |
| B120001.3150 | DH 1300/Gallery 1302 // Install Overhead HAC - TFO | 2026-10-20 → 2026-11-02 (+13d) | 2026-10-26 → 2026-11-06 (+11d) |  | 46d → 37d |  |
| F.1000A.1276 | DH 1300/Gallery 1302 // Rough-In Security | 2026-10-27 → 2026-11-09 (+13d) | 2026-10-28 → 2026-11-10 (+13d) |  | 46d → 37d |  |
| F.1000A.1277 | DH 1300/Gallery 1302 // Pull & Test Security Cable | 2026-10-29 → 2026-11-12 (+14d) | 2026-11-02 → 2026-11-16 (+14d) |  | 46d → 37d |  |
| F.1000A.1278 | DH 1300/Gallery 1302 // Install Security Devices | 2026-11-03 → 2026-11-17 (+14d) | 2026-11-04 → 2026-11-18 (+14d) |  | 46d → 37d |  |
| F.1000A.1279 | DH 1300/Gallery 1302 // Mount & Terminate Security Devices | 2026-11-06 → 2026-11-19 (+13d) | 2026-11-13 → 2026-11-25 (+12d) |  | 45d → 37d |  |
| F.1000A.1280 | DH 1300/Gallery 1302 // Test Security Devices | 2026-11-16 → 2026-11-27 (+11d) | 2026-11-17 → 2026-11-30 (+13d) |  | 45d → 37d |  |
| DH.1300820 | DH 1300/Gallery 1302 // Suffolk Pre Punch | 2026-11-18 → 2026-12-01 (+13d) | 2026-11-24 → 2026-12-07 (+13d) |  | 45d → 37d |  |
| 3 | **Equipment Line-Ups** | 2026-11-09 → 2026-11-04 (-5d) | 2026-12-16 → 2026-12-11 (-5d) |  |  |  |
| 1 | **A130** | 2026-11-09 → 2026-11-04 (-5d) | 2026-12-11 → 2026-12-08 (-3d) |  |  |  |
| DH.1300A-EQP-1 | Gallery 1302 - A130/Line-Ups // Set CRAH-DH1300- 01 | 2026-11-09 → 2026-11-04 (-5d) | 2026-11-09 → 2026-11-04 (-5d) |  | -8d → -5d |  |
| DH.1300A-EQP-3 | Gallery 1302 - A130/Line-Ups // Set CRAH-DH1300- 02 | 2026-11-09 → 2026-11-04 (-5d) | 2026-11-09 → 2026-11-04 (-5d) |  | -8d → -5d |  |
| DH.1300A-EQP-5 | Gallery 1302 - A130/Line-Ups // Set MOD-A130-01 | 2026-11-09 → 2026-11-04 (-5d) | 2026-11-09 → 2026-11-04 (-5d) |  | 35d → 38d |  |
| DH.1300A-EQP-6 | Gallery 1302 - A130/Line-Ups // Set MOD-A130-02 | 2026-11-09 → 2026-11-04 (-5d) | 2026-11-09 → 2026-11-04 (-5d) |  | 35d → 38d |  |
| DH.1300A-EQP-10 | Gallery 1302 - A130/Line-Ups // Pull Cable Tray Feed from MOD to CRAHU's | 2026-11-10 → 2026-11-05 (-5d) | 2026-11-17 → 2026-11-12 (-5d) |  | 41d → 44d |  |
| DH.1300A-EQP-12 | Gallery 1302 - A130/Line-Ups // Mount Electrial Gear for Chiller Controls | 2026-11-10 → 2026-11-05 (-5d) | 2026-11-24 → 2026-11-19 (-5d) |  | 35d → 38d |  |
| DH.1300A-EQP-7 | Gallery 1302 - A130/Line-Ups // Set CDU-DH1300- 01 | 2026-11-10 → 2026-11-05 (-5d) | 2026-11-10 → 2026-11-05 (-5d) |  | 35d → 38d |  |
| DH.1300A-EQP-9 | Gallery 1302 - A130/Line-Ups // Pull Feeder from SWD to MOD | 2026-11-10 → 2026-11-05 (-5d) | 2026-11-10 → 2026-11-05 (-5d) |  | 51d → 54d |  |

| ID | Task | Start | Finish | Total float |
| --- | --- | --- | --- | --- |
| DH.1300A-EQP-8 | Gallery 1302 - A130/Line-Ups // Set CDU-DH1300- 02 | 2026-11-12 → 2026-11-06 (-6d) | 2026-11-12 → 2026-11-06 (-6d) | 35d → 38d |
| DH.1300A-EQP-4 | Gallery 1302 - A130/Line-Ups // Condensate connections to Floor Drains | 2026-11-13 → 2026-11-09 (-4d) | 2026-11-27 → 2026-11-23 (-4d) | 35d → 38d |
| DH.1300A-EQP-11 | Gallery 1302 - A130/Line-Ups // Mechanical Connections to CRAHU Units | 2026-11-17 → 2026-11-12 (-5d) | 2026-12-01 → 2026-11-25 (-6d) | 33d → 36d |
| DH.1300A-EQP-17 | Gallery 1302 - A130/Line-Ups // Pull Feeder and Branch circuits to MIsc equipment and Chiller controls | 2026-11-17 → 2026-11-12 (-5d) | 2026-12-01 → 2026-11-25 (-6d) | 35d → 38d |
| DH.1300A-EQP-13 | Gallery 1302 - A130/Line-Ups // Pull Cable Tray Feed from MOD to CRAHU's | 2026-11-18 → 2026-11-13 (-5d) | 2026-11-24 → 2026-11-19 (-5d) | 41d → 44d |
| DH.1300A-EQP-16 | Gallery 1302 - A130/Line-Ups // Terminate CRAHU Electrical Connections | 2026-11-20 → 2026-11-17 (-3d) | 2026-11-27 → 2026-11-23 (-4d) | 41d → 44d |
| DH.1300A-EQP-19 | Gallery 1302 - A130/Line-Ups // Teminate all Misc Equipment and Chiller Controls | 2026-11-23 → 2026-11-18 (-5d) | 2026-12-07 → 2026-12-02 (-5d) | 35d → 38d |
| DH.1300A-EQP-14 | Gallery 1302 - A130/Line-Ups // Condensate connections to Floor Drains | 2026-11-24 → 2026-11-19 (-5d) | 2026-12-08 → 2026-12-03 (-5d) | 33d → 36d |
| DH.1300A-EQP-15 | Gallery 1302 - A130/Line-Ups // Terminate Mod Panels | 2026-11-25 → 2026-11-20 (-5d) | 2026-11-25 → 2026-11-20 (-5d) | 42d → 45d |
| DH.1300A-EQP-20 | Gallery 1302 - A130/Line-Ups // Electrical Gear FOD Inspection Pre-Start Up | 2026-12-08 → 2026-12-03 (-5d) | 2026-12-09 → 2026-12-04 (-5d) | 35d → 38d |
| DH.1300A-EQP-18 | Gallery 1302 - A130/Line-Ups // Mechanical Gear FOD Inspection Pre-Start Up | 2026-12-09 → 2026-12-04 (-5d) | 2026-12-11 → 2026-12-08 (-3d) | 33d → 36d |
| 2 | **B130** | 2026-11-09 → 2026-11-04 (-5d) | 2026-12-11 → 2026-12-08 (-3d) |  |
| DH.1300A-EQP-21 | Gallery 1302 - B130/Line-Ups // Set CRAH-DH1300- 03 | 2026-11-09 → 2026-11-04 (-5d) | 2026-11-09 → 2026-11-04 (-5d) | -8d → -5d |
| DH.1300A-EQP-23 | Gallery 1302 - B130/Line-Ups // Set CRAH-DH1300- 04 | 2026-11-09 → 2026-11-04 (-5d) | 2026-11-09 → 2026-11-04 (-5d) | -8d → -5d |
| DH.1300A-EQP-25 | Gallery 1302 - B130/Line-Ups // Set MOD-B130-01 | 2026-11-09 → 2026-11-04 (-5d) | 2026-11-09 → 2026-11-04 (-5d) | 35d → 38d |
| DH.1300A-EQP-26 | Gallery 1302 - B130/Line-Ups // Set MOD-B130-02 | 2026-11-09 → 2026-11-04 (-5d) | 2026-11-09 → 2026-11-04 (-5d) | 35d → 38d |
| DH.1300A-EQP-27 | Gallery 1302 - B130/Line-Ups // Set CDU-DH1300- 03 | 2026-11-10 → 2026-11-05 (-5d) | 2026-11-10 → 2026-11-05 (-5d) | 35d → 38d |
| DH.1300A-EQP-29 | Gallery 1302 - B130/Line-Ups // Pull Feeder from SWD to MOD | 2026-11-10 → 2026-11-05 (-5d) | 2026-11-10 → 2026-11-05 (-5d) | 51d → 54d |
| DH.1300A-EQP-30 | Gallery 1302 - B130/Line-Ups // Pull Cable Tray Feed from MOD to CRAHU's | 2026-11-10 → 2026-11-05 (-5d) | 2026-11-17 → 2026-11-12 (-5d) | 41d → 44d |
| DH.1300A-EQP-32 | Gallery 1302 - B130/Line-Ups // Mount Electrial Gear for Chiller Controls | 2026-11-10 → 2026-11-05 (-5d) | 2026-11-24 → 2026-11-19 (-5d) | 35d → 38d |
| DH.1300A-EQP-28 | Gallery 1302 - B130/Line-Ups // Set CDU-DH1300- 04 | 2026-11-12 → 2026-11-06 (-6d) | 2026-11-12 → 2026-11-06 (-6d) | 35d → 38d |
| DH.1300A-EQP-24 | Gallery 1302 - B130/Line-Ups // Condensate connections to Floor Drains | 2026-11-13 → 2026-11-09 (-4d) | 2026-11-27 → 2026-11-23 (-4d) | 35d → 38d |
| DH.1300A-EQP-31 | Gallery 1302 - B130/Line-Ups // Mechanical Connections to CRAHU Units | 2026-11-17 → 2026-11-12 (-5d) | 2026-12-01 → 2026-11-25 (-6d) | 33d → 36d |
| DH.1300A-EQP-37 | Gallery 1302 - B130/Line-Ups // Pull Feeder and Branch circuits to MIsc equipment and Chiller controls | 2026-11-17 → 2026-11-12 (-5d) | 2026-12-01 → 2026-11-25 (-6d) | 35d → 38d |
| DH.1300A-EQP-33 | Gallery 1302 - B130/Line-Ups // Pull Cable Tray Feed from MOD to CRAHU's | 2026-11-18 → 2026-11-13 (-5d) | 2026-11-24 → 2026-11-19 (-5d) | 41d → 44d |
| DH.1300A-EQP-36 | Gallery 1302 - B130/Line-Ups // Terminate CRAHU Electrical Connections | 2026-11-20 → 2026-11-17 (-3d) | 2026-11-27 → 2026-11-23 (-4d) | 41d → 44d |
| DH.1300A-EQP-39 | Gallery 1302 - B130/Line-Ups // Teminate all Misc Equipment and Chiller Controls | 2026-11-23 → 2026-11-18 (-5d) | 2026-12-07 → 2026-12-02 (-5d) | 35d → 38d |
| DH.1300A-EQP-34 | Gallery 1302 - B130/Line-Ups // Condensate connections to Floor Drains | 2026-11-24 → 2026-11-19 (-5d) | 2026-12-08 → 2026-12-03 (-5d) | 33d → 36d |
| DH.1300A-EQP-35 | Gallery 1302 - B130/Line-Ups // Terminate Mod Panels | 2026-11-25 → 2026-11-20 (-5d) | 2026-11-25 → 2026-11-20 (-5d) | 42d → 45d |
| DH.1300A-EQP-40 | Gallery 1302 - B130/Line-Ups // Electrical Gear FOD Inspection Pre-Start Up | 2026-12-08 → 2026-12-03 (-5d) | 2026-12-09 → 2026-12-04 (-5d) | 35d → 38d |
| DH.1300A-EQP-38 | Gallery 1302 - B130/Line-Ups // Mechanical Gear FOD Inspection Pre-Start Up | 2026-12-09 → 2026-12-04 (-5d) | 2026-12-11 → 2026-12-08 (-3d) | 33d → 36d |
| 3 | **C130** | 2026-11-09 → 2026-11-04 (-5d) | 2026-12-11 → 2026-12-08 (-3d) |  |
| DH.1300A-EQP-41 | Gallery 1302 - C130/Line-Ups // Set CRAH-DH1300- 05 | 2026-11-09 → 2026-11-04 (-5d) | 2026-11-09 → 2026-11-04 (-5d) | -8d → -5d |
| DH.1300A-EQP-43 | Gallery 1302 - C130/Line-Ups // Set CRAH-DH1300- 06 | 2026-11-09 → 2026-11-04 (-5d) | 2026-11-09 → 2026-11-04 (-5d) | -8d → -5d |
| DH.1300A-EQP-45 | Gallery 1302 - C130/Line-Ups // Set MOD-C130-01 | 2026-11-09 → 2026-11-04 (-5d) | 2026-11-09 → 2026-11-04 (-5d) | 35d → 38d |
| DH.1300A-EQP-46 | Gallery 1302 - C130/Line-Ups // Set MOD-C130-02 | 2026-11-09 → 2026-11-04 (-5d) | 2026-11-09 → 2026-11-04 (-5d) | 35d → 38d |
| DH.1300A-EQP-47 | Gallery 1302 - C130/Line-Ups // Set CDU-DH1300- 05 | 2026-11-10 → 2026-11-05 (-5d) | 2026-11-10 → 2026-11-05 (-5d) | 35d → 38d |
| DH.1300A-EQP-49 | Gallery 1302 - C130/Line-Ups // Pull Feeder from SWD to MOD | 2026-11-10 → 2026-11-05 (-5d) | 2026-11-10 → 2026-11-05 (-5d) | 51d → 54d |
| DH.1300A-EQP-50 | Gallery 1302 - C130/Line-Ups // Pull Cable Tray Feed from MOD to CRAHU's | 2026-11-10 → 2026-11-05 (-5d) | 2026-11-17 → 2026-11-12 (-5d) | 41d → 44d |
| DH.1300A-EQP-52 | Gallery 1302 - C130/Line-Ups // Mount Electrial Gear for Chiller Controls | 2026-11-10 → 2026-11-05 (-5d) | 2026-11-24 → 2026-11-19 (-5d) | 35d → 38d |
| DH.1300A-EQP-48 | Gallery 1302 - C130/Line-Ups // Set CDU-DH1300- 06 | 2026-11-12 → 2026-11-06 (-6d) | 2026-11-12 → 2026-11-06 (-6d) | 35d → 38d |
| DH.1300A-EQP-44 | Gallery 1302 - C130/Line-Ups // Condensate connections to Floor Drains | 2026-11-13 → 2026-11-09 (-4d) | 2026-11-27 → 2026-11-23 (-4d) | 35d → 38d |
| DH.1300A-EQP-51 | Gallery 1302 - C130/Line-Ups // Mechanical Connections to CRAHU Units | 2026-11-17 → 2026-11-12 (-5d) | 2026-12-01 → 2026-11-25 (-6d) | 33d → 36d |
| DH.1300A-EQP-57 | Gallery 1302 - C130/Line-Ups // Pull Feeder and Branch circuits to MIsc equipment and Chiller controls | 2026-11-17 → 2026-11-12 (-5d) | 2026-12-01 → 2026-11-25 (-6d) | 35d → 38d |
| DH.1300A-EQP-53 | Gallery 1302 - C130/Line-Ups // Pull Cable Tray Feed from MOD to CRAHU's | 2026-11-18 → 2026-11-13 (-5d) | 2026-11-24 → 2026-11-19 (-5d) | 41d → 44d |
| DH.1300A-EQP-56 | Gallery 1302 - C130/Line-Ups // Terminate CRAHU Electrical Connections | 2026-11-20 → 2026-11-17 (-3d) | 2026-11-27 → 2026-11-23 (-4d) | 41d → 44d |
| DH.1300A-EQP-59 | Gallery 1302 - C130/Line-Ups // Teminate all Misc Equipment and Chiller Controls | 2026-11-23 → 2026-11-18 (-5d) | 2026-12-07 → 2026-12-02 (-5d) | 35d → 38d |
| DH.1300A-EQP-54 | Gallery 1302 - C130/Line-Ups // Condensate connections to Floor Drains | 2026-11-24 → 2026-11-19 (-5d) | 2026-12-08 → 2026-12-03 (-5d) | 33d → 36d |
| DH.1300A-EQP-55 | Gallery 1302 - C130/Line-Ups // Terminate Mod Panels | 2026-11-25 → 2026-11-20 (-5d) | 2026-11-25 → 2026-11-20 (-5d) | 42d → 45d |
| DH.1300A-EQP-60 | Gallery 1302 - C130/Line-Ups // Electrical Gear FOD Inspection Pre-Start Up | 2026-12-08 → 2026-12-03 (-5d) | 2026-12-09 → 2026-12-04 (-5d) | 35d → 38d |
| DH.1300A-EQP-58 | Gallery 1302 - C130/Line-Ups // Mechanical Gear FOD Inspection Pre-Start Up | 2026-12-09 → 2026-12-04 (-5d) | 2026-12-11 → 2026-12-08 (-3d) | 33d → 36d |
| 4 | **D130** | 2026-11-10 → 2026-11-05 (-5d) | 2026-12-14 → 2026-12-09 (-5d) |  |
| DH.1300A-EQP-61 | Gallery 1302 - D130/Line-Ups // Set CRAH-DH1300- 07 | 2026-11-10 → 2026-11-05 (-5d) | 2026-11-10 → 2026-11-05 (-5d) | -8d → -5d |
| DH.1300A-EQP-63 | Gallery 1302 - D130/Line-Ups // Set CRAH-DH1300- 08 | 2026-11-10 → 2026-11-05 (-5d) | 2026-11-10 → 2026-11-05 (-5d) | -8d → -5d |
| DH.1300A-EQP-65 | Gallery 1302 - D130/Line-Ups // Set MOD-D130-01 | 2026-11-10 → 2026-11-05 (-5d) | 2026-11-10 → 2026-11-05 (-5d) | 34d → 37d |
| DH.1300A-EQP-66 | Gallery 1302 - D130/Line-Ups // Set MOD-D130-02 | 2026-11-10 → 2026-11-05 (-5d) | 2026-11-10 → 2026-11-05 (-5d) | 34d → 37d |
| DH.1300A-EQP-67 | Gallery 1302 - D130/Line-Ups // Set CDU-DH1300- 07 | 2026-11-12 → 2026-11-06 (-6d) | 2026-11-12 → 2026-11-06 (-6d) | 34d → 37d |
| DH.1300A-EQP-69 | Gallery 1302 - D130/Line-Ups // Pull Feeder from SWD to MOD | 2026-11-12 → 2026-11-06 (-6d) | 2026-11-12 → 2026-11-06 (-6d) | 50d → 53d |
| DH.1300A-EQP-70 | Gallery 1302 - D130/Line-Ups // Pull Cable Tray Feed from MOD to CRAHU's | 2026-11-12 → 2026-11-06 (-6d) | 2026-11-18 → 2026-11-13 (-5d) | 40d → 43d |
| DH.1300A-EQP-72 | Gallery 1302 - D130/Line-Ups // Mount Electrial Gear for Chiller Controls | 2026-11-12 → 2026-11-06 (-6d) | 2026-11-25 → 2026-11-20 (-5d) | 34d → 37d |
| DH.1300A-EQP-68 | Gallery 1302 - D130/Line-Ups // Set CDU-DH1300- 08 | 2026-11-13 → 2026-11-09 (-4d) | 2026-11-13 → 2026-11-09 (-4d) | 34d → 37d |
| DH.1300A-EQP-64 | Gallery 1302 - D130/Line-Ups // Condensate connections to Floor Drains | 2026-11-16 → 2026-11-10 (-6d) | 2026-11-30 → 2026-11-24 (-6d) | 34d → 37d |
| DH.1300A-EQP-71 | Gallery 1302 - D130/Line-Ups // Mechanical Connections to CRAHU Units | 2026-11-18 → 2026-11-13 (-5d) | 2026-12-02 → 2026-11-27 (-5d) | 32d → 35d |
| DH.1300A-EQP-77 | Gallery 1302 - D130/Line-Ups // Pull Feeder and Branch circuits to MIsc equipment and Chiller controls | 2026-11-18 → 2026-11-13 (-5d) | 2026-12-02 → 2026-11-27 (-5d) | 34d → 37d |
| DH.1300A-EQP-73 | Gallery 1302 - D130/Line-Ups // Pull Cable Tray Feed from MOD to CRAHU's | 2026-11-19 → 2026-11-16 (-3d) | 2026-11-25 → 2026-11-20 (-5d) | 40d → 43d |
| DH.1300A-EQP-76 | Gallery 1302 - D130/Line-Ups // Terminate CRAHU Electrical Connections | 2026-11-23 → 2026-11-18 (-5d) | 2026-11-30 → 2026-11-24 (-6d) | 40d → 43d |
| DH.1300A-EQP-79 | Gallery 1302 - D130/Line-Ups // Teminate all Misc Equipment and Chiller Controls | 2026-11-24 → 2026-11-19 (-5d) | 2026-12-08 → 2026-12-03 (-5d) | 34d → 37d |
| DH.1300A-EQP-74 | Gallery 1302 - D130/Line-Ups // Condensate connections to Floor Drains | 2026-11-25 → 2026-11-20 (-5d) | 2026-12-09 → 2026-12-04 (-5d) | 32d → 35d |
| DH.1300A-EQP-75 | Gallery 1302 - D130/Line-Ups // Terminate Mod Panels | 2026-11-27 → 2026-11-23 (-4d) | 2026-11-27 → 2026-11-23 (-4d) | 41d → 44d |
| DH.1300A-EQP-80 | Gallery 1302 - D130/Line-Ups // Electrical Gear FOD Inspection Pre-Start Up | 2026-12-09 → 2026-12-04 (-5d) | 2026-12-10 → 2026-12-07 (-3d) | 34d → 37d |

| ID | Task | Start | Finish | Total float |
| --- | --- | --- | --- | --- |
| DH.1300A-EQP-78 | Gallery 1302 - D130/Line-Ups // Mechanical Gear FOD Inspection Pre-Start Up | 2026-12-10 → 2026-12-07 (-3d) | 2026-12-14 → 2026-12-09 (-5d) | 32d → 35d |
| 5 | **E130** | 2026-11-10 → 2026-11-05 (-5d) | 2026-12-14 → 2026-12-09 (-5d) |  |
| DH.1300A-EQP-81 | Gallery 1302 - D130/Line-Ups // Set CRAH-DH1300- 09 | 2026-11-10 → 2026-11-05 (-5d) | 2026-11-10 → 2026-11-05 (-5d) | -8d → -5d |
| DH.1300A-EQP-83 | Gallery 1302 - D130/Line-Ups // Set CRAH-DH1300- 10 | 2026-11-10 → 2026-11-05 (-5d) | 2026-11-10 → 2026-11-05 (-5d) | -8d → -5d |
| DH.1300A-EQP-85 | Gallery 1302 - D130/Line-Ups // Set MOD-E130-01 | 2026-11-10 → 2026-11-05 (-5d) | 2026-11-10 → 2026-11-05 (-5d) | 34d → 37d |
| DH.1300A-EQP-86 | Gallery 1302 - D130/Line-Ups // Set MOD-E130-02 | 2026-11-10 → 2026-11-05 (-5d) | 2026-11-10 → 2026-11-05 (-5d) | 34d → 37d |
| DH.1300A-EQP-87 | Gallery 1302 - D130/Line-Ups // Set CDU-DH1300- 09 | 2026-11-12 → 2026-11-06 (-6d) | 2026-11-12 → 2026-11-06 (-6d) | 34d → 37d |
| DH.1300A-EQP-89 | Gallery 1302 - D130/Line-Ups // Pull Feeder from SWD to MOD | 2026-11-12 → 2026-11-06 (-6d) | 2026-11-12 → 2026-11-06 (-6d) | 50d → 53d |
| DH.1300A-EQP-90 | Gallery 1302 - D130/Line-Ups // Pull Cable Tray Feed from MOD to CRAHU's | 2026-11-12 → 2026-11-06 (-6d) | 2026-11-18 → 2026-11-13 (-5d) | 40d → 43d |
| DH.1300A-EQP-92 | Gallery 1302 - D130/Line-Ups // Mount Electrial Gear for Chiller Controls | 2026-11-12 → 2026-11-06 (-6d) | 2026-11-25 → 2026-11-20 (-5d) | 34d → 37d |
| DH.1300A-EQP-88 | Gallery 1302 - D130/Line-Ups // Set CDU-DH1300- 10 | 2026-11-13 → 2026-11-09 (-4d) | 2026-11-13 → 2026-11-09 (-4d) | 34d → 37d |
| DH.1300A-EQP-84 | Gallery 1302 - D130/Line-Ups // Condensate connections to Floor Drains | 2026-11-16 → 2026-11-10 (-6d) | 2026-11-30 → 2026-11-24 (-6d) | 34d → 37d |
| DH.1300A-EQP-91 | Gallery 1302 - D130/Line-Ups // Mechanical Connections to CRAHU Units | 2026-11-18 → 2026-11-13 (-5d) | 2026-12-02 → 2026-11-27 (-5d) | 32d → 35d |
| DH.1300A-EQP-97 | Gallery 1302 - D130/Line-Ups // Pull Feeder and Branch circuits to MIsc equipment and Chiller controls | 2026-11-18 → 2026-11-13 (-5d) | 2026-12-02 → 2026-11-27 (-5d) | 34d → 37d |
| DH.1300A-EQP-93 | Gallery 1302 - D130/Line-Ups // Pull Cable Tray Feed from MOD to CRAHU's | 2026-11-19 → 2026-11-16 (-3d) | 2026-11-25 → 2026-11-20 (-5d) | 40d → 43d |
| DH.1300A-EQP-96 | Gallery 1302 - D130/Line-Ups // Terminate CRAHU Electrical Connections | 2026-11-23 → 2026-11-18 (-5d) | 2026-11-30 → 2026-11-24 (-6d) | 40d → 43d |
| DH.1300A-EQP-99 | Gallery 1302 - D130/Line-Ups // Teminate all Misc Equipment and Chiller Controls | 2026-11-24 → 2026-11-19 (-5d) | 2026-12-08 → 2026-12-03 (-5d) | 34d → 37d |
| DH.1300A-EQP-94 | Gallery 1302 - D130/Line-Ups // Condensate connections to Floor Drains | 2026-11-25 → 2026-11-20 (-5d) | 2026-12-09 → 2026-12-04 (-5d) | 32d → 35d |
| DH.1300A-EQP-95 | Gallery 1302 - D130/Line-Ups // Terminate Mod Panels | 2026-11-27 → 2026-11-23 (-4d) | 2026-11-27 → 2026-11-23 (-4d) | 41d → 44d |
| DH.1300A-EQP-100 | Gallery 1302 - D130/Line-Ups // Electrical Gear FOD Inspection Pre-Start Up | 2026-12-09 → 2026-12-04 (-5d) | 2026-12-10 → 2026-12-07 (-3d) | 34d → 37d |
| DH.1300A-EQP-98 | Gallery 1302 - D130/Line-Ups // Mechanical Gear FOD Inspection Pre-Start Up | 2026-12-10 → 2026-12-07 (-3d) | 2026-12-14 → 2026-12-09 (-5d) | 32d → 35d |
| 6 | **F130** | 2026-11-10 → 2026-11-05 (-5d) | 2026-12-14 → 2026-12-09 (-5d) |  |
| DH.1300A-EQP-101 | Gallery 1302 - F130/Line-Ups // Set CRAH-DH1300- 11 | 2026-11-10 → 2026-11-05 (-5d) | 2026-11-10 → 2026-11-05 (-5d) | -8d → -5d |
| DH.1300A-EQP-103 | Gallery 1302 - F130/Line-Ups // Set CRAH-DH1300- 12 | 2026-11-10 → 2026-11-05 (-5d) | 2026-11-10 → 2026-11-05 (-5d) | -8d → -5d |
| DH.1300A-EQP-105 | Gallery 1302 - F130/Line-Ups // Set MOD-F130-01 | 2026-11-10 → 2026-11-05 (-5d) | 2026-11-10 → 2026-11-05 (-5d) | 34d → 37d |
| DH.1300A-EQP-106 | Gallery 1302 - F130/Line-Ups // Set MOD-F130-02 | 2026-11-10 → 2026-11-05 (-5d) | 2026-11-10 → 2026-11-05 (-5d) | 34d → 37d |
| DH.1300A-EQP-107 | Gallery 1302 - F130/Line-Ups // Set CDU-DH1300- 11 | 2026-11-12 → 2026-11-06 (-6d) | 2026-11-12 → 2026-11-06 (-6d) | 34d → 37d |
| DH.1300A-EQP-109 | Gallery 1302 - F130/Line-Ups // Pull Feeder from SWD to MOD | 2026-11-12 → 2026-11-06 (-6d) | 2026-11-12 → 2026-11-06 (-6d) | 50d → 53d |
| DH.1300A-EQP-110 | Gallery 1302 - F130/Line-Ups // Pull Cable Tray Feed from MOD to CRAHU's | 2026-11-12 → 2026-11-06 (-6d) | 2026-11-18 → 2026-11-13 (-5d) | 40d → 43d |
| DH.1300A-EQP-112 | Gallery 1302 - F130/Line-Ups // Mount Electrial Gear for Chiller Controls | 2026-11-12 → 2026-11-06 (-6d) | 2026-11-25 → 2026-11-20 (-5d) | 34d → 37d |
| DH.1300A-EQP-108 | Gallery 1302 - F130/Line-Ups // Set CDU-DH1300- 12 | 2026-11-13 → 2026-11-09 (-4d) | 2026-11-13 → 2026-11-09 (-4d) | 34d → 37d |
| DH.1300A-EQP-104 | Gallery 1302 - F130/Line-Ups // Condensate connections to Floor Drains | 2026-11-16 → 2026-11-10 (-6d) | 2026-11-30 → 2026-11-24 (-6d) | 34d → 37d |
| DH.1300A-EQP-111 | Gallery 1302 - F130/Line-Ups // Mechanical Connections to CRAHU Units | 2026-11-18 → 2026-11-13 (-5d) | 2026-12-02 → 2026-11-27 (-5d) | 32d → 35d |
| DH.1300A-EQP-117 | Gallery 1302 - F130/Line-Ups // Pull Feeder and Branch circuits to MIsc equipment and Chiller controls | 2026-11-18 → 2026-11-13 (-5d) | 2026-12-02 → 2026-11-27 (-5d) | 34d → 37d |
| DH.1300A-EQP-113 | Gallery 1302 - F130/Line-Ups // Pull Cable Tray Feed from MOD to CRAHU's | 2026-11-19 → 2026-11-16 (-3d) | 2026-11-25 → 2026-11-20 (-5d) | 40d → 43d |
| DH.1300A-EQP-116 | Gallery 1302 - F130/Line-Ups // Terminate CRAHU Electrical Connections | 2026-11-23 → 2026-11-18 (-5d) | 2026-11-30 → 2026-11-24 (-6d) | 40d → 43d |
| DH.1300A-EQP-119 | Gallery 1302 - F130/Line-Ups // Teminate all Misc Equipment and Chiller Controls | 2026-11-24 → 2026-11-19 (-5d) | 2026-12-08 → 2026-12-03 (-5d) | 34d → 37d |
| DH.1300A-EQP-114 | Gallery 1302 - F130/Line-Ups // Condensate connections to Floor Drains | 2026-11-25 → 2026-11-20 (-5d) | 2026-12-09 → 2026-12-04 (-5d) | 32d → 35d |
| DH.1300A-EQP-115 | Gallery 1302 - F130/Line-Ups // Terminate Mod Panels | 2026-11-27 → 2026-11-23 (-4d) | 2026-11-27 → 2026-11-23 (-4d) | 41d → 44d |
| DH.1300A-EQP-120 | Gallery 1302 - F130/Line-Ups // Electrical Gear FOD Inspection Pre-Start Up | 2026-12-09 → 2026-12-04 (-5d) | 2026-12-10 → 2026-12-07 (-3d) | 34d → 37d |
| DH.1300A-EQP-118 | Gallery 1302 - F130/Line-Ups // Mechanical Gear FOD Inspection Pre-Start Up | 2026-12-10 → 2026-12-07 (-3d) | 2026-12-14 → 2026-12-09 (-5d) | 32d → 35d |
| 7 | **G130** | 2026-11-12 → 2026-11-06 (-6d) | 2026-12-15 → 2026-12-10 (-5d) |  |
| DH.1300A-EQP-121 | Gallery 1302 - G130/Line-Ups // Set CRAH-DH1300- 13 | 2026-11-12 → 2026-11-06 (-6d) | 2026-11-12 → 2026-11-06 (-6d) | -8d → -5d |
| DH.1300A-EQP-123 | Gallery 1302 - G130/Line-Ups // Set CRAH-DH1300- 14 | 2026-11-12 → 2026-11-06 (-6d) | 2026-11-12 → 2026-11-06 (-6d) | -8d → -5d |
| DH.1300A-EQP-125 | Gallery 1302 - G130/Line-Ups // Set MOD-G130-01 | 2026-11-12 → 2026-11-06 (-6d) | 2026-11-12 → 2026-11-06 (-6d) | 33d → 36d |
| DH.1300A-EQP-126 | Gallery 1302 - G130/Line-Ups // Set MOD-G130-02 | 2026-11-12 → 2026-11-06 (-6d) | 2026-11-12 → 2026-11-06 (-6d) | 33d → 36d |
| DH.1300A-EQP-127 | Gallery 1302 - G130/Line-Ups // Set CDU-DH1300- 13 | 2026-11-13 → 2026-11-09 (-4d) | 2026-11-13 → 2026-11-09 (-4d) | 33d → 36d |
| DH.1300A-EQP-129 | Gallery 1302 - G130/Line-Ups // Pull Feeder from SWD to MOD | 2026-11-13 → 2026-11-09 (-4d) | 2026-11-13 → 2026-11-09 (-4d) | 49d → 52d |
| DH.1300A-EQP-130 | Gallery 1302 - G130/Line-Ups // Pull Cable Tray Feed from MOD to CRAHU's | 2026-11-13 → 2026-11-09 (-4d) | 2026-11-19 → 2026-11-16 (-3d) | 39d → 42d |
| DH.1300A-EQP-132 | Gallery 1302 - G130/Line-Ups // Mount Electrial Gear for Chiller Controls | 2026-11-13 → 2026-11-09 (-4d) | 2026-11-27 → 2026-11-23 (-4d) | 33d → 36d |
| DH.1300A-EQP-128 | Gallery 1302 - G130/Line-Ups // Set CDU-DH1300- 14 | 2026-11-16 → 2026-11-10 (-6d) | 2026-11-16 → 2026-11-10 (-6d) | 33d → 36d |
| DH.1300A-EQP-124 | Gallery 1302 - G130/Line-Ups // Condensate connections to Floor Drains | 2026-11-17 → 2026-11-12 (-5d) | 2026-12-01 → 2026-11-25 (-6d) | 33d → 36d |
| DH.1300A-EQP-131 | Gallery 1302 - G130/Line-Ups // Mechanical Connections to CRAHU Units | 2026-11-19 → 2026-11-16 (-3d) | 2026-12-03 → 2026-11-30 (-3d) | 31d → 34d |
| DH.1300A-EQP-137 | Gallery 1302 - G130/Line-Ups // Pull Feeder and Branch circuits to MIsc equipment and Chiller controls | 2026-11-19 → 2026-11-16 (-3d) | 2026-12-03 → 2026-11-30 (-3d) | 33d → 36d |
| DH.1300A-EQP-133 | Gallery 1302 - G130/Line-Ups // Pull Cable Tray Feed from MOD to CRAHU's | 2026-11-20 → 2026-11-17 (-3d) | 2026-11-27 → 2026-11-23 (-4d) | 39d → 42d |
| DH.1300A-EQP-136 | Gallery 1302 - G130/Line-Ups // Terminate CRAHU Electrical Connections | 2026-11-24 → 2026-11-19 (-5d) | 2026-12-01 → 2026-11-25 (-6d) | 39d → 42d |
| DH.1300A-EQP-139 | Gallery 1302 - G130/Line-Ups // Teminate all Misc Equipment and Chiller Controls | 2026-11-25 → 2026-11-20 (-5d) | 2026-12-09 → 2026-12-04 (-5d) | 33d → 36d |
| DH.1300A-EQP-134 | Gallery 1302 - G130/Line-Ups // Condensate connections to Floor Drains | 2026-11-27 → 2026-11-23 (-4d) | 2026-12-10 → 2026-12-07 (-3d) | 31d → 34d |
| DH.1300A-EQP-135 | Gallery 1302 - G130/Line-Ups // Terminate Mod Panels | 2026-11-30 → 2026-11-24 (-6d) | 2026-11-30 → 2026-11-24 (-6d) | 40d → 43d |
| DH.1300A-EQP-140 | Gallery 1302 - G130/Line-Ups // Electrical Gear FOD Inspection Pre-Start Up | 2026-12-10 → 2026-12-07 (-3d) | 2026-12-11 → 2026-12-08 (-3d) | 33d → 36d |
| DH.1300A-EQP-138 | Gallery 1302 - G130/Line-Ups // Mechanical Gear FOD Inspection Pre-Start Up | 2026-12-11 → 2026-12-08 (-3d) | 2026-12-15 → 2026-12-10 (-5d) | 31d → 34d |
| 8 | **H130** | 2026-11-12 → 2026-11-06 (-6d) | 2026-12-15 → 2026-12-10 (-5d) |  |
| DH.1300A-EQP-141 | Gallery 1302 - H130/Line-Ups // Set CRAH-DH1300- 15 | 2026-11-12 → 2026-11-06 (-6d) | 2026-11-12 → 2026-11-06 (-6d) | -8d → -5d |
| DH.1300A-EQP-143 | Gallery 1302 - H130/Line-Ups // Set CRAH-DH1300- 16 | 2026-11-12 → 2026-11-06 (-6d) | 2026-11-12 → 2026-11-06 (-6d) | -8d → -5d |
| DH.1300A-EQP-145 | Gallery 1302 - H130/Line-Ups // Set MOD-H130-01 | 2026-11-12 → 2026-11-06 (-6d) | 2026-11-12 → 2026-11-06 (-6d) | 33d → 36d |
| DH.1300A-EQP-146 | Gallery 1302 - H130/Line-Ups // Set MOD-H130-02 | 2026-11-12 → 2026-11-06 (-6d) | 2026-11-12 → 2026-11-06 (-6d) | 33d → 36d |
| DH.1300A-EQP-147 | Gallery 1302 - H130/Line-Ups // Set CDU-DH1300- 15 | 2026-11-13 → 2026-11-09 (-4d) | 2026-11-13 → 2026-11-09 (-4d) | 33d → 36d |
| DH.1300A-EQP-149 | Gallery 1302 - H130/Line-Ups // Pull Feeder from SWD to MOD | 2026-11-13 → 2026-11-09 (-4d) | 2026-11-13 → 2026-11-09 (-4d) | 49d → 52d |
| DH.1300A-EQP-150 | Gallery 1302 - H130/Line-Ups // Pull Cable Tray Feed from MOD to CRAHU's | 2026-11-13 → 2026-11-09 (-4d) | 2026-11-19 → 2026-11-16 (-3d) | 39d → 42d |
| DH.1300A-EQP-152 | Gallery 1302 - H130/Line-Ups // Mount Electrial Gear for Chiller Controls | 2026-11-13 → 2026-11-09 (-4d) | 2026-11-27 → 2026-11-23 (-4d) | 33d → 36d |

| ID | Task | Start | Finish | Total float |
| --- | --- | --- | --- | --- |
| DH.1300A-EQP-148 | Gallery 1302 - H130/Line-Ups // Set CDU-DH1300- 16 | 2026-11-16 → 2026-11-10 (-6d) | 2026-11-16 → 2026-11-10 (-6d) | 33d → 36d |
| DH.1300A-EQP-144 | Gallery 1302 - H130/Line-Ups // Condensate connections to Floor Drains | 2026-11-17 → 2026-11-12 (-5d) | 2026-12-01 → 2026-11-25 (-6d) | 33d → 36d |
| DH.1300A-EQP-151 | Gallery 1302 - H130/Line-Ups // Mechanical Connections to CRAHU Units | 2026-11-19 → 2026-11-16 (-3d) | 2026-12-03 → 2026-11-30 (-3d) | 31d → 34d |
| DH.1300A-EQP-157 | Gallery 1302 - H130/Line-Ups // Pull Feeder and Branch circuits to MIsc equipment and Chiller controls | 2026-11-19 → 2026-11-16 (-3d) | 2026-12-03 → 2026-11-30 (-3d) | 33d → 36d |
| DH.1300A-EQP-153 | Gallery 1302 - H130/Line-Ups // Pull Cable Tray Feed from MOD to CRAHU's | 2026-11-20 → 2026-11-17 (-3d) | 2026-11-27 → 2026-11-23 (-4d) | 39d → 42d |
| DH.1300A-EQP-156 | Gallery 1302 - H130/Line-Ups // Terminate CRAHU Electrical Connections | 2026-11-24 → 2026-11-19 (-5d) | 2026-12-01 → 2026-11-25 (-6d) | 39d → 42d |
| DH.1300A-EQP-159 | Gallery 1302 - H130/Line-Ups // Teminate all Misc Equipment and Chiller Controls | 2026-11-25 → 2026-11-20 (-5d) | 2026-12-09 → 2026-12-04 (-5d) | 33d → 36d |
| DH.1300A-EQP-154 | Gallery 1302 - H130/Line-Ups // Condensate connections to Floor Drains | 2026-11-27 → 2026-11-23 (-4d) | 2026-12-10 → 2026-12-07 (-3d) | 31d → 34d |
| DH.1300A-EQP-155 | Gallery 1302 - H130/Line-Ups // Terminate Mod Panels | 2026-11-30 → 2026-11-24 (-6d) | 2026-11-30 → 2026-11-24 (-6d) | 40d → 43d |
| DH.1300A-EQP-160 | Gallery 1302 - H130/Line-Ups // Electrical Gear FOD Inspection Pre-Start Up | 2026-12-10 → 2026-12-07 (-3d) | 2026-12-11 → 2026-12-08 (-3d) | 33d → 36d |
| DH.1300A-EQP-158 | Gallery 1302 - H130/Line-Ups // Mechanical Gear FOD Inspection Pre-Start Up | 2026-12-11 → 2026-12-08 (-3d) | 2026-12-15 → 2026-12-10 (-5d) | 31d → 34d |
| 9 | **J130** | 2026-11-12 → 2026-11-06 (-6d) | 2026-12-15 → 2026-12-10 (-5d) |  |
| DH.1300A-EQP-161 | Gallery 1302 - J130/Line-Ups // Set CRAH-DH1300- 17 | 2026-11-12 → 2026-11-06 (-6d) | 2026-11-12 → 2026-11-06 (-6d) | -8d → -5d |
| DH.1300A-EQP-163 | Gallery 1302 - J130/Line-Ups // Set CRAH-DH1300- 18 | 2026-11-12 → 2026-11-06 (-6d) | 2026-11-12 → 2026-11-06 (-6d) | -8d → -5d |
| DH.1300A-EQP-165 | Gallery 1302 - J130/Line-Ups // Set MOD-J130-01 | 2026-11-12 → 2026-11-06 (-6d) | 2026-11-12 → 2026-11-06 (-6d) | 33d → 36d |
| DH.1300A-EQP-166 | Gallery 1302 - J130/Line-Ups // Set MOD-J130-02 | 2026-11-12 → 2026-11-06 (-6d) | 2026-11-12 → 2026-11-06 (-6d) | 33d → 36d |
| DH.1300A-EQP-167 | Gallery 1302 - J130/Line-Ups // Set CDU-DH1300- 17 | 2026-11-13 → 2026-11-09 (-4d) | 2026-11-13 → 2026-11-09 (-4d) | 33d → 36d |
| DH.1300A-EQP-169 | Gallery 1302 - J130/Line-Ups // Pull Feeder from SWD to MOD | 2026-11-13 → 2026-11-09 (-4d) | 2026-11-13 → 2026-11-09 (-4d) | 49d → 52d |
| DH.1300A-EQP-170 | Gallery 1302 - J130/Line-Ups // Pull Cable Tray Feed from MOD to CRAHU's | 2026-11-13 → 2026-11-09 (-4d) | 2026-11-19 → 2026-11-16 (-3d) | 39d → 42d |
| DH.1300A-EQP-172 | Gallery 1302 - J130/Line-Ups // Mount Electrial Gear for Chiller Controls | 2026-11-13 → 2026-11-09 (-4d) | 2026-11-27 → 2026-11-23 (-4d) | 33d → 36d |
| DH.1300A-EQP-168 | Gallery 1302 - J130/Line-Ups // Set CDU-DH1300- 18 | 2026-11-16 → 2026-11-10 (-6d) | 2026-11-16 → 2026-11-10 (-6d) | 33d → 36d |
| DH.1300A-EQP-164 | Gallery 1302 - J130/Line-Ups // Condensate connections to Floor Drains | 2026-11-17 → 2026-11-12 (-5d) | 2026-12-01 → 2026-11-25 (-6d) | 33d → 36d |
| DH.1300A-EQP-171 | Gallery 1302 - J130/Line-Ups // Mechanical Connections to CRAHU Units | 2026-11-19 → 2026-11-16 (-3d) | 2026-12-03 → 2026-11-30 (-3d) | 31d → 34d |
| DH.1300A-EQP-177 | Gallery 1302 - J130/Line-Ups // Pull Feeder and Branch circuits to MIsc equipment and Chiller controls | 2026-11-19 → 2026-11-16 (-3d) | 2026-12-03 → 2026-11-30 (-3d) | 33d → 36d |
| DH.1300A-EQP-173 | Gallery 1302 - J130/Line-Ups // Pull Cable Tray Feed from MOD to CRAHU's | 2026-11-20 → 2026-11-17 (-3d) | 2026-11-27 → 2026-11-23 (-4d) | 39d → 42d |
| DH.1300A-EQP-176 | Gallery 1302 - J130/Line-Ups // Terminate CRAHU Electrical Connections | 2026-11-24 → 2026-11-19 (-5d) | 2026-12-01 → 2026-11-25 (-6d) | 39d → 42d |
| DH.1300A-EQP-179 | Gallery 1302 - J130/Line-Ups // Teminate all Misc Equipment and Chiller Controls | 2026-11-25 → 2026-11-20 (-5d) | 2026-12-09 → 2026-12-04 (-5d) | 33d → 36d |
| DH.1300A-EQP-174 | Gallery 1302 - J130/Line-Ups // Condensate connections to Floor Drains | 2026-11-27 → 2026-11-23 (-4d) | 2026-12-10 → 2026-12-07 (-3d) | 31d → 34d |
| DH.1300A-EQP-175 | Gallery 1302 - J130/Line-Ups // Terminate Mod Panels | 2026-11-30 → 2026-11-24 (-6d) | 2026-11-30 → 2026-11-24 (-6d) | 40d → 43d |
| DH.1300A-EQP-180 | Gallery 1302 - J130/Line-Ups // Electrical Gear FOD Inspection Pre-Start Up | 2026-12-10 → 2026-12-07 (-3d) | 2026-12-11 → 2026-12-08 (-3d) | 33d → 36d |
| DH.1300A-EQP-178 | Gallery 1302 - J130/Line-Ups // Mechanical Gear FOD Inspection Pre-Start Up | 2026-12-11 → 2026-12-08 (-3d) | 2026-12-15 → 2026-12-10 (-5d) | 31d → 34d |
| 10 | **K130** | 2026-11-13 → 2026-11-09 (-4d) | 2026-12-16 → 2026-12-11 (-5d) |  |
| DH.1300A-EQP-181 | Gallery 1302 - K130/Line-Ups // Set CRAH-DH1300- 19 | 2026-11-13 → 2026-11-09 (-4d) | 2026-11-13 → 2026-11-09 (-4d) | -8d → -5d |
| DH.1300A-EQP-183 | Gallery 1302 - K130/Line-Ups // Set CRAH-DH1300- 20 | 2026-11-13 → 2026-11-09 (-4d) | 2026-11-13 → 2026-11-09 (-4d) | -8d → -5d |
| DH.1300A-EQP-185 | Gallery 1302 - K130/Line-Ups // Set MOD-K130-01 | 2026-11-13 → 2026-11-09 (-4d) | 2026-11-13 → 2026-11-09 (-4d) | 32d → 35d |
| DH.1300A-EQP-186 | Gallery 1302 - K130/Line-Ups // Set MOD-K130-02 | 2026-11-13 → 2026-11-09 (-4d) | 2026-11-13 → 2026-11-09 (-4d) | 32d → 35d |
| DH.1300A-EQP-187 | Gallery 1302 - K130/Line-Ups // Set CDU-DH1300- 19 | 2026-11-16 → 2026-11-10 (-6d) | 2026-11-16 → 2026-11-10 (-6d) | 32d → 35d |
| DH.1300A-EQP-189 | Gallery 1302 - K130/Line-Ups // Pull Feeder from SWD to MOD | 2026-11-16 → 2026-11-10 (-6d) | 2026-11-16 → 2026-11-10 (-6d) | 48d → 51d |
| DH.1300A-EQP-190 | Gallery 1302 - K130/Line-Ups // Pull Cable Tray Feed from MOD to CRAHU's | 2026-11-16 → 2026-11-10 (-6d) | 2026-11-20 → 2026-11-17 (-3d) | 38d → 41d |
| DH.1300A-EQP-192 | Gallery 1302 - K130/Line-Ups // Mount Electrial Gear for Chiller Controls | 2026-11-16 → 2026-11-10 (-6d) | 2026-11-30 → 2026-11-24 (-6d) | 32d → 35d |
| DH.1300A-EQP-188 | Gallery 1302 - K130/Line-Ups // Set CDU-DH1300- 20 | 2026-11-17 → 2026-11-12 (-5d) | 2026-11-17 → 2026-11-12 (-5d) | 32d → 35d |
| DH.1300A-EQP-184 | Gallery 1302 - K130/Line-Ups // Condensate connections to Floor Drains | 2026-11-18 → 2026-11-13 (-5d) | 2026-12-02 → 2026-11-27 (-5d) | 32d → 35d |
| DH.1300A-EQP-191 | Gallery 1302 - K130/Line-Ups // Mechanical Connections to CRAHU Units | 2026-11-20 → 2026-11-17 (-3d) | 2026-12-04 → 2026-12-01 (-3d) | 30d → 33d |
| DH.1300A-EQP-197 | Gallery 1302 - K130/Line-Ups // Pull Feeder and Branch circuits to MIsc equipment and Chiller controls | 2026-11-20 → 2026-11-17 (-3d) | 2026-12-04 → 2026-12-01 (-3d) | 32d → 35d |
| DH.1300A-EQP-193 | Gallery 1302 - K130/Line-Ups // Pull Cable Tray Feed from MOD to CRAHU's | 2026-11-23 → 2026-11-18 (-5d) | 2026-11-30 → 2026-11-24 (-6d) | 38d → 41d |
| DH.1300A-EQP-196 | Gallery 1302 - K130/Line-Ups // Terminate CRAHU Electrical Connections | 2026-11-25 → 2026-11-20 (-5d) | 2026-12-02 → 2026-11-27 (-5d) | 38d → 41d |
| DH.1300A-EQP-199 | Gallery 1302 - K130/Line-Ups // Teminate all Misc Equipment and Chiller Controls | 2026-11-27 → 2026-11-23 (-4d) | 2026-12-10 → 2026-12-07 (-3d) | 32d → 35d |
| DH.1300A-EQP-194 | Gallery 1302 - K130/Line-Ups // Condensate connections to Floor Drains | 2026-11-30 → 2026-11-24 (-6d) | 2026-12-11 → 2026-12-08 (-3d) | 30d → 33d |
| DH.1300A-EQP-195 | Gallery 1302 - K130/Line-Ups // Terminate Mod Panels | 2026-12-01 → 2026-11-25 (-6d) | 2026-12-01 → 2026-11-25 (-6d) | 39d → 42d |
| DH.1300A-EQP-200 | Gallery 1302 - K130/Line-Ups // Electrical Gear FOD Inspection Pre-Start Up | 2026-12-11 → 2026-12-08 (-3d) | 2026-12-14 → 2026-12-09 (-5d) | 32d → 35d |
| DH.1300A-EQP-198 | Gallery 1302 - K130/Line-Ups // Mechanical Gear FOD Inspection Pre-Start Up | 2026-12-14 → 2026-12-09 (-5d) | 2026-12-16 → 2026-12-11 (-5d) | 30d → 33d |
| 11 | **R130** | 2026-11-13 → 2026-11-09 (-4d) | 2026-12-14 → 2026-12-09 (-5d) |  |
| DH.1300A-EQP-201 | Gallery 1302 - R130/Line-Ups // Set CRAH-DH1300- 21 | 2026-11-13 → 2026-11-09 (-4d) | 2026-11-13 → 2026-11-09 (-4d) | -8d → -5d |
| DH.1300A-EQP-203 | Gallery 1302 - R130/Line-Ups // Set CRAH-DH1300- 22 | 2026-11-13 → 2026-11-09 (-4d) | 2026-11-13 → 2026-11-09 (-4d) | -8d → -5d |
| DH.1300A-EQP-205 | Gallery 1302 - R130/Line-Ups // Set MOD-R130-01 | 2026-11-13 → 2026-11-09 (-4d) | 2026-11-13 → 2026-11-09 (-4d) | -8d → -5d |
| DH.1300A-EQP-206 | Gallery 1302 - R130/Line-Ups // Set MOD-R130-02 | 2026-11-13 → 2026-11-09 (-4d) | 2026-11-13 → 2026-11-09 (-4d) | -8d → -5d |
| DH.1300A-EQP-207 | Gallery 1302 - R130/Line-Ups // Set CDU-DH1300- 21 | 2026-11-16 → 2026-11-10 (-6d) | 2026-11-16 → 2026-11-10 (-6d) | -8d → -5d |
| DH.1300A-EQP-210 | Gallery 1302 - R130/Line-Ups // Pull Cable Tray Feed from MOD to CRAHU's | 2026-11-16 → 2026-11-10 (-6d) | 2026-11-20 → 2026-11-17 (-3d) | -2d → 1d |
| DH.1300A-EQP-211 | Gallery 1302 - R130/Line-Ups // Mechanical Connections to CRAHU Units | 2026-11-16 → 2026-11-10 (-6d) | 2026-11-30 → 2026-11-24 (-6d) | -6d → -3d |
| DH.1300A-EQP-212 | Gallery 1302 - R130/Line-Ups // Mount Electrial Gear for Chiller Controls | 2026-11-16 → 2026-11-10 (-6d) | 2026-11-30 → 2026-11-24 (-6d) | -8d → -5d |
| DH.1300A-EQP-208 | Gallery 1302 - R130/Line-Ups // Set CDU-DH1300- 22 | 2026-11-17 → 2026-11-12 (-5d) | 2026-11-17 → 2026-11-12 (-5d) | -8d → -5d |
| DH.1300A-EQP-204 | Gallery 1302 - R130/Line-Ups // Condensate connections to Floor Drains | 2026-11-18 → 2026-11-13 (-5d) | 2026-12-02 → 2026-11-27 (-5d) | -8d → -5d |
| DH.1300A-EQP-221 | Gallery 1302 - R130/Line-Ups // Set SWD-R130 | 2026-11-18 → 2026-11-13 (-5d) | 2026-11-18 → 2026-11-13 (-5d) | 3d → 7d |
| DH.1300A-EQP-222 | Gallery 1302 - R130/Line-Ups // Set SWD-TIE-R130 | 2026-11-19 → 2026-11-16 (-3d) | 2026-11-19 → 2026-11-16 (-3d) | 3d → 7d |
| DH.1300A-EQP-209 | Gallery 1302 - R130/Line-Ups // Pull Feeder from SWD to MOD | 2026-11-20 → 2026-11-17 (-3d) | 2026-11-20 → 2026-11-17 (-3d) | 3d → 7d |
| DH.1300A-EQP-217 | Gallery 1302 - R130/Line-Ups // Pull Feeder and Branch circuits to MIsc equipment and Chiller controls | 2026-11-20 → 2026-11-17 (-3d) | 2026-12-04 → 2026-12-01 (-3d) | -8d → -5d |
| DH.1300A-EQP-213 | Gallery 1302 - R130/Line-Ups // Pull Cable Tray Feed from MOD to CRAHU's | 2026-11-23 → 2026-11-18 (-5d) | 2026-11-30 → 2026-11-24 (-6d) | -2d → 1d |
| DH.1300A-EQP-214 | Gallery 1302 - R130/Line-Ups // Condensate connections to Floor Drains | 2026-11-25 → 2026-11-20 (-5d) | 2026-12-09 → 2026-12-04 (-5d) | -8d → -5d |
| DH.1300A-EQP-216 | Gallery 1302 - R130/Line-Ups // Terminate CRAHU Electrical Connections | 2026-11-25 → 2026-11-20 (-5d) | 2026-12-02 → 2026-11-27 (-5d) | -2d → 1d |
| DH.1300A-EQP-219 | Gallery 1302 - R130/Line-Ups // Teminate all Misc Equipment and Chiller Controls | 2026-11-27 → 2026-11-23 (-4d) | 2026-12-10 → 2026-12-07 (-3d) | -8d → -5d |

| ID | Task | Start | Finish | Complete | Total float | Predecessors |
| --- | --- | --- | --- | --- | --- | --- |
| DH.1300A-EQP-215 | Gallery 1302 - R130/Line-Ups // Terminate Mod Panels | 2026-12-01 → 2026-11-25 (-6d) | 2026-12-01 → 2026-11-25 (-6d) |  | -1d → 2d |  |
| DH.1300A-EQP-218 | Gallery 1302 - R130/Line-Ups // Mechanical Gear FOD Inspection Pre-Start Up | 2026-12-10 → 2026-12-07 (-3d) | 2026-12-14 → 2026-12-09 (-5d) |  | -8d → -5d |  |
| DH.1300A-EQP-220 | Gallery 1302 - R130/Line-Ups // Electrical Gear FOD Inspection Pre-Start Up | 2026-12-11 → 2026-12-08 (-3d) | 2026-12-14 → 2026-12-09 (-5d) |  | -8d → -5d |  |
| 12 | **Equipment Connections** | 2026-11-23 → 2026-11-18 (-5d) | 2026-12-14 → 2026-12-09 (-5d) |  |  |  |
| 1 | **CRAH** | 2026-11-23 → 2026-11-18 (-5d) | 2026-12-03 → 2026-11-30 (-3d) |  |  |  |
| DH1300.MG.A110.8687 | Gallery 1302 // DH 1300 / Elec Room // CRAH Duct Work Termination | 2026-11-23 → 2026-11-18 (-5d) | 2026-11-24 → 2026-11-19 (-5d) |  | -1d → 2d |  |
| DH1300.MG.A110.8686 | Gallery 1302 // DH 1300 / Elec Room // CRAH Chilled Water | 2026-11-25 → 2026-11-20 (-5d) | 2026-11-27 → 2026-11-23 (-4d) |  | -1d → 2d |  |
| DH1300.MG.A110.8684 | Gallery 1302 // DH 1300 / Elec Room // CRAH Power Connections | 2026-11-30 → 2026-11-24 (-6d) | 2026-12-01 → 2026-11-25 (-6d) |  | -1d → 2d |  |
| DH1300.MG.A110.8685 | Gallery 1302 // DH 1300 / Elec Room // CRAH LV Connections | 2026-12-02 → 2026-11-27 (-5d) | 2026-12-03 → 2026-11-30 (-3d) |  | -1d → 2d |  |
| 2 | **CDU** | 2026-12-11 → 2026-12-08 (-3d) | 2026-12-14 → 2026-12-09 (-5d) |  |  |  |
| DH1300.MG.A110.8688 | Gallery 1302 // DH 1300 /Elec Room // CDU Power Connections | 2026-12-11 → 2026-12-08 (-3d) | 2026-12-14 → 2026-12-09 (-5d) |  | -8d → -5d |  |
| DH1300.MG.A110.8689 | Gallery 1302 // DH 11300 / Elec Room // CDU Controls Connections | 2026-12-11 → 2026-12-08 (-3d) | 2026-12-14 → 2026-12-09 (-5d) |  | -8d → -5d |  |
| DH1300.MG.A110.8690 | Gallery 1302 // DH 1300 / Elec Room // CDU Chilled Water Connections | 2026-12-11 → 2026-12-08 (-3d) | 2026-12-14 → 2026-12-09 (-5d) |  | -8d → -5d |  |
| 3 | **MOD** | 2026-11-23 → 2026-11-25 (+2d) | 2026-11-27 → 2026-12-01 (+4d) |  |  |  |
| DH1300.MG.A110.8691 | Gallery 1302 // DH 1300 / Elec Room // MOD Power Connections | 2026-11-23 → 2026-11-25 (+2d) | 2026-11-24 → 2026-11-27 (+3d) |  | 3d → 1d | DH.1300A-EQP-209 → DH.1300A-EQP-213 |
| DH1300.MG.A110.8692 | Gallery 1302 // DH 1300 / Elec Room // MOD LV Connections | 2026-11-25 → 2026-11-30 (+5d) | 2026-11-27 → 2026-12-01 (+4d) |  | 3d → 1d |  |
| 4 | **Gallery 1303** |  | 2026-12-24 → 2026-12-18 (-6d) |  |  |  |
| 1 | **Architectural** |  | 2026-12-02 → 2026-12-09 (+7d) |  |  |  |
| DH.13001040 | DH 1300/Gallery 1303 // Frame walls |  | 2026-10-07 → 2026-09-28 A (-9d) | 0% → 100% | -8d → none |  |
| F.1000A.1475 | DH 1300/Gallery 1303 // BMS & EPMS Rough-In | 2026-11-04 → 2026-09-24 A (-41d) | 2026-11-05 → 2026-09-25 A (-41d) | 0% → 100% | 52d → none | F.1000A.1281 FF, F.1000A.1281 SS → DH.13001040 |
| DH.13001050 | DH 1300/Gallery 1303 // Install Sheetrock Top Down | 2026-09-30 → 2026-09-29 A (-1d) | 2026-10-07 → 2026-10-21 (+14d) |  | -8d → -1d |  |
| DH.13001090 | DH 1300/Gallery 1303 // Install Balance of Sheetrock on walls | 2026-10-13 → 2026-10-01 A (-12d) | 2026-10-20 → 2026-10-27 (+7d) |  | -8d → -1d | DH.13001030 FF → DH.13001030 FF, DH.13001080 FF |
| DH.13001100 | DH 1300/Gallery 1303 // Tape and finish walls | 2026-10-20 → 2026-10-01 A (-19d) | 2026-10-29 → 2026-10-28 (-1d) |  | -8d → -1d | DH.13001080, DH.13001090 SS+4d → DH.13001090 FF+1d, DH.13001050 FF+1d |
| DH.13001070 | DH 1300/Gallery 1303 // MEP rough in walls | 2026-10-13 → 2026-10-05 A (-8d) | 2026-10-16 → 2026-10-12 A (-4d) | 0% → 100% | -8d → none | DH.13001050, DH.13001090 SS, DH.13001040 → DH.13001040 |
| DH.13001030 | DH 1300/Gallery 1303 // MEPF high overhead install | 2026-10-06 A | 2026-10-20 → 2026-10-27 (+7d) |  | -8d → -1d |  |
| DH.13001060 | DH 1300/Gallery 1303 // Install wall door frames | 2026-10-30 → 2026-10-12 A (-18d) | 2026-11-02 → 2026-10-20 (-13d) |  | -8d → 1d | DH.13001100 → DH.13001100 SS |
| DH.13001080 | DH 1300/Gallery 1303 // In wall inspection | 2026-10-19 → 2026-10-12 A (-7d) | 2026-10-19 → 2026-10-12 A (-7d) | 0% → 100% | -8d → none |  |
| DH.13001110 | DH 1300/Gallery 1303 // Prime and Paint walls | 2026-10-26 → 2026-10-19 (-7d) | 2026-10-29 → 2026-10-22 (-7d) |  | -6d → -1d |  |
| DH.13001120 | DH 1300/Gallery 1303 // Touch up Walls and Fianl Paint | 2026-11-03 → 2026-10-23 (-11d) | 2026-11-09 → 2026-10-29 (-11d) |  | -8d → -1d |  |
| B120001.3151 | DH 1300/Gallery 1303 // Install Overhead Cable Ladder / 36" Cable Tray - TFO | 2026-10-21 → 2026-10-28 (+7d) | 2026-10-27 → 2026-11-03 (+7d) |  | 40d → 35d |  |
| DH.13001130 | DH 1300/Gallery 1303 // Install Trim and Devices | 2026-11-06 → 2026-10-28 (-9d) | 2026-11-09 → 2026-10-29 (-11d) |  | -8d → -1d |  |
| DH.160012146 | DH 1300/Gallery 1303 // Ready to Receive Equipment | 2026-11-09 → 2026-10-29 (-11d) | 2026-11-09 → 2026-10-29 (-11d) |  | -8d → -1d |  |
| B120001.3152 | DH 1300/Gallery 1303 // Install Overhead HAC - TFO | 2026-10-28 → 2026-11-04 (+7d) | 2026-11-03 → 2026-11-10 (+7d) |  | 40d → 35d |  |
| F.1000A.1281 | DH 1300/Gallery 1303 // Rough-In Security | 2026-11-04 → 2026-11-12 (+8d) | 2026-11-05 → 2026-11-13 (+8d) |  | 40d → 35d |  |
| F.1000A.1282 | DH 1300/Gallery 1303 // Pull & Test Security Cable | 2026-11-06 → 2026-11-16 (+10d) | 2026-11-10 → 2026-11-18 (+8d) |  | 40d → 35d |  |
| F.1000A.1283 | DH 1300/Gallery 1303 // Install Security Devices | 2026-11-12 → 2026-11-19 (+7d) | 2026-11-13 → 2026-11-20 (+7d) |  | 40d → 35d |  |
| F.1000A.1284 | DH 1300/Gallery 1303 // Mount & Terminate Security Devices | 2026-11-16 → 2026-11-23 (+7d) | 2026-11-20 → 2026-11-30 (+10d) |  | 40d → 35d |  |
| F.1000A.1285 | DH 1300/Gallery 1303 // Test Security Devices | 2026-11-23 → 2026-12-01 (+8d) | 2026-11-24 → 2026-12-02 (+8d) |  | 40d → 35d |  |
| DH.13001140 | DH 1300/Gallery 1303 // Suffolk Pre Punch | 2026-11-25 → 2026-12-03 (+8d) | 2026-12-02 → 2026-12-09 (+7d) |  | 40d → 35d |  |
| 3 | **Equipment Line-Ups** | 2026-10-01 → 2026-10-14 (+13d) | 2026-12-24 → 2026-12-18 (-6d) |  |  |  |
| 1 | **A130** | 2026-11-10 → 2026-11-04 (-6d) | 2026-12-14 → 2026-12-08 (-6d) |  |  |  |
| DH.1300B-EQP-1 | Gallery 1303 - A130/Line-Ups // Set CRAH-DH1300- 23 | 2026-11-10 → 2026-11-04 (-6d) | 2026-11-10 → 2026-11-04 (-6d) |  | -8d → -4d |  |
| DH.1300B-EQP-4 | Gallery 1303 - A130/Line-Ups // Set CRAH-DH1300- 24 | 2026-11-10 → 2026-11-04 (-6d) | 2026-11-10 → 2026-11-04 (-6d) |  | -8d → -4d |  |
| DH.1300B-EQP-10 | Gallery 1303 - A130/Line-Ups // Mount Electrial Gear for Chiller Controls | 2026-11-12 → 2026-11-05 (-7d) | 2026-11-25 → 2026-11-19 (-6d) |  | 34d → 38d | Gallery 1303 - A130/Line-Ups // Set MOD A140-02 (Does No apply) → DH.1300B-EQP-4 |
| DH.1300B-EQP-14 | Gallery 1303 - A130/Line-Ups // Terminate Electrical Connections - CRAHU | 2026-11-17 → 2026-11-05 (-12d) | 2026-11-19 → 2026-11-09 (-10d) |  | 46d → 53d | Gallery 1303 - A130/Line-Ups // Pull Cable Tray Feed from MOD to CRAHU's → DH.1300B-EQP-1 |
| DH.1300B-EQP-199 | Gallery 1303 - A130/Line-Ups // Set CDU-DH1300-23 | 2026-11-12 → 2026-11-05 (-7d) | 2026-11-12 → 2026-11-05 (-7d) |  | 48d → 41d | Gallery 1303 - A130/Line-Ups // Set MOD A140-02 (Does No apply) → DH.1300B-EQP-4 |
| DH.1300B-EQP-200 | Gallery 1303 - A130/Line-Ups // Set CDU-DH1300-24 | 2026-11-13 → 2026-11-05 (-8d) | 2026-11-13 → 2026-11-05 (-8d) |  | 48d → 41d | DH.1300B-EQP-199 → DH.1300B-EQP-4 |
| DH.1300B-EQP-3 | Gallery 1303 - A130/Line-Ups // Condensate connections to Floor Drains | 2026-11-12 → 2026-11-05 (-7d) | 2026-11-25 → 2026-11-19 (-6d) |  | 36d → 40d |  |
| DH.1300B-EQP-15 | Gallery 1303 - A130/Line-Ups // Pull Feeder and Branch circuits to MIsc equipment and Chiller controls | 2026-11-18 → 2026-11-12 (-6d) | 2026-12-02 → 2026-11-25 (-7d) |  | 34d → 38d | DH.1300B-EQP-10 SS+4d → DH.1300B-EQP-200, DH.1300B-EQP-199, DH.1300B-EQP-10 SS+4d |
| DH.1300B-EQP-9 | Gallery 1303 - A130/Line-Ups // Mechanical Connections to CRAHU Units | 2026-11-18 → 2026-11-12 (-6d) | 2026-11-24 → 2026-11-18 (-6d) |  | 32d → 36d |  |
| DH.1300B-EQP-17 | Gallery 1303 - A130/Line-Ups // Teminate all Misc Equipment and Chiller Controls | 2026-11-24 → 2026-11-18 (-6d) | 2026-12-08 → 2026-12-02 (-6d) |  | 34d → 38d |  |
| DH.1300B-EQP-12 | Gallery 1303 - A130/Line-Ups // Condensate connections to Floor Drains | 2026-11-25 → 2026-11-19 (-6d) | 2026-12-09 → 2026-12-03 (-6d) |  | 32d → 36d |  |
| DH.1300B-EQP-18 | Gallery 1303 - A130/Line-Ups // Electrical Gear FOD Inspection Pre-Start Up | 2026-12-09 → 2026-12-03 (-6d) | 2026-12-10 → 2026-12-04 (-6d) |  | 34d → 38d | Gallery 1303 - A130/Line-Ups // Terminate MOD Panels, DH.1300B-EQP-17, DH.1300B-EQP-14 → DH.1300B-EQP-14, DH.1300B-EQP-17 |
| DH.1300B-EQP-16 | Gallery 1303 - A130/Line-Ups // Mechanical Gear FOD Inspection Pre-Start Up | 2026-12-10 → 2026-12-04 (-6d) | 2026-12-14 → 2026-12-08 (-6d) |  | 32d → 36d |  |
| 2 | **B130** | 2026-11-10 → 2026-11-04 (-6d) | 2026-12-21 → 2026-12-15 (-6d) |  |  |  |
| DH.1300B-EQP-19 | Gallery 1303 - B130/Line-Ups // Set CRAH-DH1300- 25 | 2026-11-10 → 2026-11-04 (-6d) | 2026-11-10 → 2026-11-04 (-6d) |  | -8d → -4d |  |
| DH.1300B-EQP-22 | Gallery 1303 - B130/Line-Ups // Set CRAH-DH1300- 26 | 2026-11-10 → 2026-11-04 (-6d) | 2026-11-10 → 2026-11-04 (-6d) |  | -8d → -4d |  |
| DH.1300B-EQP-201 | Gallery 1303 - B130/Line-Ups // Set CDU-DH1300-25 | 2026-11-12 → 2026-11-05 (-7d) | 2026-11-12 → 2026-11-05 (-7d) |  | 48d → 41d | Gallery 1303 - B130/Line-Ups // Set MOD B140-02 (Does No apply) → DH.1300B-EQP-22 |
| DH.1300B-EQP-202 | Gallery 1303 - B130/Line-Ups // Set CDU-DH1300-26 | 2026-11-13 → 2026-11-05 (-8d) | 2026-11-13 → 2026-11-05 (-8d) |  | 48d → 41d | DH.1300B-EQP-201, DH.1300B-EQP-201 FF → DH.1300B-EQP-22 |
| DH.1300B-EQP-28 | Gallery 1303 - B130/Line-Ups // Mount Electrial Gear for Chiller Controls | 2026-11-12 → 2026-11-05 (-7d) | 2026-11-25 → 2026-11-19 (-6d) |  | 34d → 38d | Gallery 1303 - B130/Line-Ups // Set MOD B140-02 (Does No apply) → DH.1300B-EQP-22 |
| DH.1300B-EQP-32 | Gallery 1303 - B130/Line-Ups // Terminate CRAHU Electrical Connections | 2026-11-23 → 2026-11-05 (-18d) | 2026-11-30 → 2026-11-12 (-18d) |  | 40d → 51d | Gallery 1303 - B130/Line-Ups // Pull Cable Tray Feed from MOD to CRAHU's, Gallery 1303 - B130/Line-Ups // Pull Cable Tray Feed from MOD to CRAHU's SS+2d → DH.1300B-EQP-19 |
| DH.1300B-EQP-20 | Gallery 1303 - B130/Line-Ups // Connect CRAH units | 2026-11-18 → 2026-11-12 (-6d) | 2026-12-02 → 2026-11-25 (-7d) |  | 27d → 31d |  |
| DH.1300B-EQP-27 | Gallery 1303 - B130/Line-Ups // Mechanical Connections to CRAHU Units | 2026-11-18 → 2026-11-12 (-6d) | 2026-12-02 → 2026-11-25 (-7d) |  | 32d → 36d |  |
| DH.1300B-EQP-33 | Gallery 1303 - B130/Line-Ups // Pull Feeder and Branch circuits to MIsc equipment and Chiller controls | 2026-11-18 → 2026-11-12 (-6d) | 2026-12-02 → 2026-11-25 (-7d) |  | 34d → 38d | DH.1300B-EQP-28 SS+4d → DH.1300B-EQP-202, DH.1300B-EQP-201, DH.1300B-EQP-28 SS+4d |
| DH.1300B-EQP-35 | Gallery 1303 - B130/Line-Ups // Teminate all Misc Equipment and Chiller Controls | 2026-11-24 → 2026-11-18 (-6d) | 2026-12-08 → 2026-12-02 (-6d) |  | 34d → 38d |  |
| DH.1300B-EQP-21 | Gallery 1303 - B130/Line-Ups // Condensate connections to Floor Drains | 2026-11-25 → 2026-11-19 (-6d) | 2026-12-09 → 2026-12-03 (-6d) |  | 27d → 31d |  |
| DH.1300B-EQP-30 | Gallery 1303 - B130/Line-Ups // Condensate connections to Floor Drains | 2026-12-03 → 2026-11-27 (-6d) | 2026-12-16 → 2026-12-10 (-6d) |  | 27d → 31d |  |
| DH.1300B-EQP-36 | Gallery 1303 - B130/Line-Ups // Electrical Gear FOD Inspection Pre-Start Up | 2026-12-09 → 2026-12-03 (-6d) | 2026-12-10 → 2026-12-04 (-6d) |  | 34d → 38d | Gallery 1303 - B130/Line-Ups // Terminat Mod Panels, DH.1300B-EQP-35, DH.1300B-EQP-32 → DH.1300B-EQP-32, DH.1300B-EQP-35 |
| DH.1300B-EQP-34 | Gallery 1303 - B130/Line-Ups // Mechanical Gear FOD Inspection Pre-Start Up | 2026-12-17 → 2026-12-11 (-6d) | 2026-12-21 → 2026-12-15 (-6d) |  | 27d → 31d |  |
| 3 | **C130** | 2026-11-10 → 2026-11-04 (-6d) | 2026-12-21 → 2026-12-15 (-6d) |  |  |  |

| ID | Task | Start | Finish | Total float | Predecessors |
| --- | --- | --- | --- | --- | --- |
| DH.1300B-EQP-37 | Gallery 1303 - C130/Line-Ups // Set CRAH-DH1300- 27 | 2026-11-10 → 2026-11-04 (-6d) | 2026-11-10 → 2026-11-04 (-6d) | -8d → -4d |  |
| DH.1300B-EQP-40 | Gallery 1303 - C130/Line-Ups // Set CRAH-DH1300- 28 | 2026-11-10 → 2026-11-04 (-6d) | 2026-11-10 → 2026-11-04 (-6d) | -8d → -4d |  |
| DH.1300B-EQP-203 | Gallery 1303 - C130/Line-Ups // Set CDU-DH1300-27 | 2026-11-12 → 2026-11-05 (-7d) | 2026-11-12 → 2026-11-05 (-7d) | 48d → 41d | Gallery 1303 - C130/Line-Ups // Set MOD C140-02 (Does No apply) → DH.1300B-EQP-40 |
| DH.1300B-EQP-204 | Gallery 1303 - C130/Line-Ups // Set CDU-DH1300-28 | 2026-11-13 → 2026-11-05 (-8d) | 2026-11-13 → 2026-11-05 (-8d) | 48d → 41d | DH.1300B-EQP-203, DH.1300B-EQP-203 FF → DH.1300B-EQP-40 |
| DH.1300B-EQP-46 | Gallery 1303 - C130/Line-Ups // Mount Electrial Gear for Chiller Controls | 2026-11-12 → 2026-11-05 (-7d) | 2026-11-25 → 2026-11-19 (-6d) | 34d → 38d | Gallery 1303 - C130/Line-Ups // Set MOD C140-02 (Does No apply) → DH.1300B-EQP-40 |
| DH.1300B-EQP-50 | Gallery 1303 - C130/Line-Ups // Terminate CRAHU Electrical Connections | 2026-11-23 → 2026-11-05 (-18d) | 2026-11-30 → 2026-11-12 (-18d) | 40d → 51d | Gallery 1303 - C130/Line-Ups // Pull Cable Tray Feed from MOD to CRAHU's, Gallery 1303 - C130/Line-Ups // Pull Cable Tray Feed from MOD to CRAHU's SS+2d → DH.1300B-EQP-37 |
| DH.1300B-EQP-38 | Gallery 1303 - C130/Line-Ups // Connect CRAH units | 2026-11-18 → 2026-11-12 (-6d) | 2026-12-02 → 2026-11-25 (-7d) | 27d → 31d |  |
| DH.1300B-EQP-45 | Gallery 1303 - C130/Line-Ups // Mechanical Connections to CRAHU Units | 2026-11-18 → 2026-11-12 (-6d) | 2026-12-02 → 2026-11-25 (-7d) | 32d → 36d |  |
| DH.1300B-EQP-51 | Gallery 1303 - C130/Line-Ups // Pull Feeder and Branch circuits to MIsc equipment and Chiller controls | 2026-11-18 → 2026-11-12 (-6d) | 2026-12-02 → 2026-11-25 (-7d) | 34d → 38d | DH.1300B-EQP-46 SS+4d → DH.1300B-EQP-203, DH.1300B-EQP-204, DH.1300B-EQP-46 SS+4d |
| DH.1300B-EQP-53 | Gallery 1303 - C130/Line-Ups // Teminate all Misc Equipment and Chiller Controls | 2026-11-24 → 2026-11-18 (-6d) | 2026-12-08 → 2026-12-02 (-6d) | 34d → 38d |  |
| DH.1300B-EQP-39 | Gallery 1303 - C130/Line-Ups // Condensate connections to Floor Drains | 2026-11-25 → 2026-11-19 (-6d) | 2026-12-09 → 2026-12-03 (-6d) | 27d → 31d |  |
| DH.1300B-EQP-48 | Gallery 1303 - C130/Line-Ups // Condensate connections to Floor Drains | 2026-12-03 → 2026-11-27 (-6d) | 2026-12-16 → 2026-12-10 (-6d) | 27d → 31d |  |
| DH.1300B-EQP-54 | Gallery 1303 - C130/Line-Ups // Electrical Gear FOD Inspection Pre-Start Up | 2026-12-09 → 2026-12-03 (-6d) | 2026-12-10 → 2026-12-04 (-6d) | 34d → 38d | Gallery 1303 - C130/Line-Ups // Terminat Mod Panels, DH.1300B-EQP-53, DH.1300B-EQP-50 → DH.1300B-EQP-50, DH.1300B-EQP-53 |
| DH.1300B-EQP-52 | Gallery 1303 - C130/Line-Ups // Mechanical Gear FOD Inspection Pre-Start Up | 2026-12-17 → 2026-12-11 (-6d) | 2026-12-21 → 2026-12-15 (-6d) | 27d → 31d |  |
| 4 | **D130** | 2026-11-12 → 2026-11-05 (-7d) | 2026-12-22 → 2026-12-16 (-6d) |  |  |
| DH.1300B-EQP-55 | Gallery 1303 - D130/Line-Ups // Set CRAH-DH1300- 29 | 2026-11-12 → 2026-11-05 (-7d) | 2026-11-12 → 2026-11-05 (-7d) | -8d → -4d |  |
| DH.1300B-EQP-58 | Gallery 1303 - D130/Line-Ups // Set CRAH-DH1300-30 | 2026-11-12 → 2026-11-05 (-7d) | 2026-11-12 → 2026-11-05 (-7d) | -8d → -4d |  |
| DH.1300B-EQP-205 | Gallery 1303 - D130/Line-Ups // Set CDU-DH1300-29 | 2026-11-13 → 2026-11-06 (-7d) | 2026-11-13 → 2026-11-06 (-7d) | 47d → 40d | Gallery 1303 - D130/Line-Ups // Set MOD D140-02 (Does No apply) → DH.1300B-EQP-58 |
| DH.1300B-EQP-206 | Gallery 1303 - D130/Line-Ups // Set CDU-DH1300-30 | 2026-11-16 → 2026-11-06 (-10d) | 2026-11-16 → 2026-11-06 (-10d) | 47d → 40d | DH.1300B-EQP-205 → DH.1300B-EQP-58 |
| DH.1300B-EQP-64 | Gallery 1303 - D130/Line-Ups // Mount Electrial Gear for Chiller Controls | 2026-11-13 → 2026-11-06 (-7d) | 2026-11-27 → 2026-11-20 (-7d) | 33d → 37d | Gallery 1303 - D130/Line-Ups // Set MOD D140-02 (Does No apply) → DH.1300B-EQP-58 |
| DH.1300B-EQP-68 | Gallery 1303 - D130/Line-Ups // Terminate CRAHU Electrical Connections | 2026-11-24 → 2026-11-06 (-18d) | 2026-12-01 → 2026-11-13 (-18d) | 39d → 50d | Gallery 1303 - D130/Line-Ups // Pull Cable Tray Feed from MOD to CRAHU's, Gallery 1303 - D130/Line-Ups // Pull Cable Tray Feed from MOD to CRAHU's SS+2d → DH.1300B-EQP-55 |
| DH.1300B-EQP-56 | Gallery 1303 - D130/Line-Ups // Connect CRAH units | 2026-11-19 → 2026-11-13 (-6d) | 2026-12-03 → 2026-11-27 (-6d) | 26d → 30d |  |
| DH.1300B-EQP-63 | Gallery 1303 - D130/Line-Ups // Mechanical Connections to CRAHU Units | 2026-11-19 → 2026-11-13 (-6d) | 2026-12-03 → 2026-11-27 (-6d) | 31d → 35d |  |
| DH.1300B-EQP-69 | Gallery 1303 - D130/Line-Ups // Pull Feeder and Branch circuits to MIsc equipment and Chiller controls | 2026-11-19 → 2026-11-13 (-6d) | 2026-12-03 → 2026-11-27 (-6d) | 33d → 37d | DH.1300B-EQP-64 SS+4d → DH.1300B-EQP-205, DH.1300B-EQP-206, DH.1300B-EQP-64 SS+4d |
| DH.1300B-EQP-71 | Gallery 1303 - D130/Line-Ups // Teminate all Misc Equipment and Chiller Controls | 2026-11-25 → 2026-11-19 (-6d) | 2026-12-09 → 2026-12-03 (-6d) | 33d → 37d |  |
| DH.1300B-EQP-57 | Gallery 1303 - D130/Line-Ups // Condensate connections to Floor Drains | 2026-11-27 → 2026-11-20 (-7d) | 2026-12-10 → 2026-12-04 (-6d) | 26d → 30d |  |
| DH.1300B-EQP-66 | Gallery 1303 - D130/Line-Ups // Condensate connections to Floor Drains | 2026-12-04 → 2026-11-30 (-4d) | 2026-12-17 → 2026-12-11 (-6d) | 26d → 30d |  |
| DH.1300B-EQP-72 | Gallery 1303 - D130/Line-Ups // Electrical Gear FOD Inspection Pre-Start Up | 2026-12-10 → 2026-12-04 (-6d) | 2026-12-11 → 2026-12-07 (-4d) | 33d → 37d | Gallery 1303 - D130/Line-Ups // Terminat Mod Panels, DH.1300B-EQP-71, DH.1300B-EQP-68 → DH.1300B-EQP-68, DH.1300B-EQP-71 |
| DH.1300B-EQP-70 | Gallery 1303 - D130/Line-Ups // Mechanical Gear FOD Inspection Pre-Start Up | 2026-12-18 → 2026-12-14 (-4d) | 2026-12-22 → 2026-12-16 (-6d) | 26d → 30d |  |
| 5 | **E130** | 2026-11-12 → 2026-11-05 (-7d) | 2026-12-22 → 2026-12-16 (-6d) |  |  |
| DH.1300B-EQP-73 | Gallery 1303 - E130/Line-Ups // Set CRAH-DH1300- 31 | 2026-11-12 → 2026-11-05 (-7d) | 2026-11-12 → 2026-11-05 (-7d) | -8d → -4d |  |
| DH.1300B-EQP-76 | Gallery 1303 - E130/Line-Ups // Set CRAH-DH1300-32 | 2026-11-12 → 2026-11-05 (-7d) | 2026-11-12 → 2026-11-05 (-7d) | -8d → -4d |  |
| DH.1300B-EQP-207 | Gallery 1303 - E130/Line-Ups // Set CDU-DH1300-31 | 2026-11-13 → 2026-11-06 (-7d) | 2026-11-13 → 2026-11-06 (-7d) | 47d → 40d | Gallery 1303 - E130/Line-Ups // Set MOD E140-02 (Does No apply) → DH.1300B-EQP-76 |
| DH.1300B-EQP-208 | Gallery 1303 - E130/Line-Ups // Set CDU-DH1300-32 | 2026-11-16 → 2026-11-06 (-10d) | 2026-11-16 → 2026-11-06 (-10d) | 47d → 40d | DH.1300B-EQP-207 → DH.1300B-EQP-76 |
| DH.1300B-EQP-82 | Gallery 1303 - E130/Line-Ups // Mount Electrial Gear for Chiller Controls | 2026-11-13 → 2026-11-06 (-7d) | 2026-11-27 → 2026-11-20 (-7d) | 33d → 37d | Gallery 1303 - E130/Line-Ups // Set MOD E140-02 (Does No apply) → DH.1300B-EQP-76 |
| DH.1300B-EQP-86 | Gallery 1303 - E130/Line-Ups // Terminate CRAHU Electrical Connections | 2026-11-24 → 2026-11-06 (-18d) | 2026-12-01 → 2026-11-13 (-18d) | 39d → 50d | Gallery 1303 - E130/Line-Ups // Pull Cable Tray Feed from MOD to CRAHU's, Gallery 1303 - E130/Line-Ups // Pull Cable Tray Feed from MOD to CRAHU's SS+2d → DH.1300B-EQP-73 |
| DH.1300B-EQP-74 | Gallery 1303 - E130/Line-Ups // Connect CRAH units | 2026-11-19 → 2026-11-13 (-6d) | 2026-12-03 → 2026-11-27 (-6d) | 26d → 30d |  |
| DH.1300B-EQP-81 | Gallery 1303 - E130/Line-Ups // Mechanical Connections to CRAHU Units | 2026-11-19 → 2026-11-13 (-6d) | 2026-12-03 → 2026-11-27 (-6d) | 31d → 35d |  |
| DH.1300B-EQP-87 | Gallery 1303 - E130/Line-Ups // Pull Feeder and Branch circuits to MIsc equipment and Chiller controls | 2026-11-19 → 2026-11-13 (-6d) | 2026-12-03 → 2026-11-27 (-6d) | 33d → 37d | DH.1300B-EQP-82 SS+4d → DH.1300B-EQP-208, DH.1300B-EQP-207, DH.1300B-EQP-82 SS+4d |
| DH.1300B-EQP-89 | Gallery 1303 - E130/Line-Ups // Teminate all Misc Equipment and Chiller Controls | 2026-11-25 → 2026-11-19 (-6d) | 2026-12-09 → 2026-12-03 (-6d) | 33d → 37d |  |
| DH.1300B-EQP-75 | Gallery 1303 - E130/Line-Ups // Condensate connections to Floor Drains | 2026-11-27 → 2026-11-20 (-7d) | 2026-12-10 → 2026-12-04 (-6d) | 26d → 30d |  |
| DH.1300B-EQP-84 | Gallery 1303 - E130/Line-Ups // Condensate connections to Floor Drains | 2026-12-04 → 2026-11-30 (-4d) | 2026-12-17 → 2026-12-11 (-6d) | 26d → 30d |  |
| DH.1300B-EQP-90 | Gallery 1303 - E130/Line-Ups // Electrical Gear FOD Inspection Pre-Start Up | 2026-12-10 → 2026-12-04 (-6d) | 2026-12-11 → 2026-12-07 (-4d) | 33d → 37d | Gallery 1303 - E130/Line-Ups // Terminat Mod Panels, DH.1300B-EQP-89, DH.1300B-EQP-86 → DH.1300B-EQP-86, DH.1300B-EQP-89 |
| DH.1300B-EQP-88 | Gallery 1303 - E130/Line-Ups // Mechanical Gear FOD Inspection Pre-Start Up | 2026-12-18 → 2026-12-14 (-4d) | 2026-12-22 → 2026-12-16 (-6d) | 26d → 30d |  |
| 6 | **F130** | 2026-11-12 → 2026-11-05 (-7d) | 2026-12-22 → 2026-12-16 (-6d) |  |  |
| DH.1300B-EQP-91 | Gallery 1303 - F130/Line-Ups // Set CRAH-DH1300-33 | 2026-11-12 → 2026-11-05 (-7d) | 2026-11-12 → 2026-11-05 (-7d) | -8d → -4d |  |
| DH.1300B-EQP-104 | Gallery 1303 - F130/Line-Ups // Terminate CRAHU Electrical Connections | 2026-11-25 → 2026-11-06 (-19d) | 2026-12-02 → 2026-11-13 (-19d) | 38d → 50d | Gallery 1303 - F130/Line-Ups // Pull Cable Tray Feed from MOD to CRAHU's, Gallery 1303 - F130/Line-Ups // Pull Cable Tray Feed from MOD to CRAHU's SS+2d → DH.1300B-EQP-91 |
| DH.1300B-EQP-94 | Gallery 1303 - F130/Line-Ups // Set CRAH-DH1300-34 | 2026-11-13 → 2026-11-06 (-7d) | 2026-11-13 → 2026-11-06 (-7d) | -8d → -4d |  |
| DH.1300B-EQP-100 | Gallery 1303 - F130/Line-Ups // Mount Electrial Gear for Chiller Controls | 2026-11-16 → 2026-11-09 (-7d) | 2026-11-30 → 2026-11-23 (-7d) | 32d → 36d | Gallery 1303 - F130/Line-Ups // Set MOD F140-02 (Does No apply) → DH.1300B-EQP-94 |
| DH.1300B-EQP-209 | Gallery 1303 - F130/Line-Ups // Set CDU-DH1300-33 | 2026-11-16 → 2026-11-09 (-7d) | 2026-11-16 → 2026-11-09 (-7d) | 46d → 39d | Gallery 1303 - F130/Line-Ups // Set MOD F140-02 (Does No apply) → DH.1300B-EQP-94 |
| DH.1300B-EQP-210 | Gallery 1303 - F130/Line-Ups // Set CDU-DH1300-34 | 2026-11-17 → 2026-11-09 (-8d) | 2026-11-17 → 2026-11-09 (-8d) | 46d → 39d | DH.1300B-EQP-209 → DH.1300B-EQP-94 |
| DH.1300B-EQP-92 | Gallery 1303 - F130/Line-Ups // Connect CRAH units | 2026-11-19 → 2026-11-13 (-6d) | 2026-12-03 → 2026-11-27 (-6d) | 26d → 30d |  |
| DH.1300B-EQP-105 | Gallery 1303 - F130/Line-Ups // Pull Feeder and Branch circuits to MIsc equipment and Chiller controls | 2026-11-20 → 2026-11-16 (-4d) | 2026-12-04 → 2026-11-30 (-4d) | 32d → 36d | DH.1300B-EQP-100 SS+4d → DH.1300B-EQP-210, DH.1300B-EQP-209, DH.1300B-EQP-100 SS+4d |
| DH.1300B-EQP-99 | Gallery 1303 - F130/Line-Ups // Mechanical Connections to CRAHU Units | 2026-11-20 → 2026-11-16 (-4d) | 2026-12-04 → 2026-11-30 (-4d) | 30d → 34d |  |
| DH.1300B-EQP-107 | Gallery 1303 - F130/Line-Ups // Teminate all Misc Equipment and Chiller Controls | 2026-11-27 → 2026-11-20 (-7d) | 2026-12-10 → 2026-12-04 (-6d) | 32d → 36d |  |
| DH.1300B-EQP-93 | Gallery 1303 - F130/Line-Ups // Condensate connections to Floor Drains | 2026-11-27 → 2026-11-20 (-7d) | 2026-12-10 → 2026-12-04 (-6d) | 26d → 30d |  |
| DH.1300B-EQP-102 | Gallery 1303 - F130/Line-Ups // Condensate connections to Floor Drains | 2026-12-04 → 2026-11-30 (-4d) | 2026-12-17 → 2026-12-11 (-6d) | 26d → 30d |  |
| DH.1300B-EQP-108 | Gallery 1303 - F130/Line-Ups // Electrical Gear FOD Inspection Pre-Start Up | 2026-12-11 → 2026-12-07 (-4d) | 2026-12-14 → 2026-12-08 (-6d) | 32d → 36d | Gallery 1303 - F130/Line-Ups // Terminat Mod Panels, DH.1300B-EQP-107, DH.1300B-EQP-104 → DH.1300B-EQP-104, DH.1300B-EQP-107 |
| DH.1300B-EQP-106 | Gallery 1303 - F130/Line-Ups // Mechanical Gear FOD Inspection Pre-Start Up | 2026-12-18 → 2026-12-14 (-4d) | 2026-12-22 → 2026-12-16 (-6d) | 26d → 30d |  |
| 7 | **G130** | 2026-11-13 → 2026-11-06 (-7d) | 2026-12-23 → 2026-12-17 (-6d) |  |  |
| DH.1300B-EQP-109 | Gallery 1303 - G130/Line-Ups // Set CRAH-DH1300-35 | 2026-11-13 → 2026-11-06 (-7d) | 2026-11-13 → 2026-11-06 (-7d) | -8d → -4d |  |
| DH.1300B-EQP-112 | Gallery 1303 - G130/Line-Ups // Set CRAH-DH1300-36 | 2026-11-13 → 2026-11-06 (-7d) | 2026-11-13 → 2026-11-06 (-7d) | -8d → -4d |  |
| DH.1300B-EQP-118 | Gallery 1303 - G130/Line-Ups // Mount Electrial Gear for Chiller Controls | 2026-11-16 → 2026-11-09 (-7d) | 2026-11-30 → 2026-11-23 (-7d) | 32d → 36d | Gallery 1303 - G130/Line-Ups // Set MOD G140-02 (Does No apply) → DH.1300B-EQP-112 |
| DH.1300B-EQP-122 | Gallery 1303 - G130/Line-Ups // Terminate CRAHU Electrical Connections | 2026-11-30 → 2026-11-09 (-21d) | 2026-12-04 → 2026-11-16 (-18d) | 36d → 49d | Gallery 1303 - G130/Line-Ups // Pull Cable Tray Feed from MOD to CRAHU's, Gallery 1303 - G130/Line-Ups // Pull Cable Tray Feed from MOD to CRAHU's SS+2d → DH.1300B-EQP-109 |
| DH.1300B-EQP-211 | Gallery 1303 - G130/Line-Ups // Set CDU-DH1300-35 | 2026-11-16 → 2026-11-09 (-7d) | 2026-11-16 → 2026-11-09 (-7d) | 27d → 39d | Gallery 1303 - G130/Line-Ups // Set MOD G140-02 (Does No apply) → DH.1300B-EQP-112 |
| DH.1300B-EQP-212 | Gallery 1303 - G130/Line-Ups // Set CDU-DH1300-36 | 2026-11-17 → 2026-11-09 (-8d) | 2026-11-17 → 2026-11-09 (-8d) | 27d → 39d | DH.1300B-EQP-211 → DH.1300B-EQP-112 |
| DH.1300B-EQP-110 | Gallery 1303 - G130/Line-Ups // Connect CRAH units | 2026-11-20 → 2026-11-16 (-4d) | 2026-12-04 → 2026-11-30 (-4d) | 25d → 29d | DH.1300B-EQP-112, DH.1300B-EQP-109 SS+5d, DH.1300B-EQP-212 → DH.1300B-EQP-109 SS+5d, DH.1300B-EQP-112 |
| DH.1300B-EQP-117 | Gallery 1303 - G130/Line-Ups // Mechanical Connections to CRAHU Units | 2026-11-20 → 2026-11-16 (-4d) | 2026-12-04 → 2026-11-30 (-4d) | 30d → 34d |  |
| DH.1300B-EQP-123 | Gallery 1303 - G130/Line-Ups // Pull Feeder and Branch circuits to MIsc equipment and Chiller controls | 2026-11-20 → 2026-11-16 (-4d) | 2026-12-04 → 2026-11-30 (-4d) | 32d → 36d | DH.1300B-EQP-118 SS+4d → DH.1300B-EQP-211, DH.1300B-EQP-212, DH.1300B-EQP-118 SS+4d |
| DH.1300B-EQP-125 | Gallery 1303 - G130/Line-Ups // Teminate all Misc Equipment and Chiller Controls | 2026-11-27 → 2026-11-20 (-7d) | 2026-12-10 → 2026-12-04 (-6d) | 32d → 36d |  |

| ID | Task | Start | Finish | Total float | Predecessors |
| --- | --- | --- | --- | --- | --- |
| DH.1300B-EQP-111 | Gallery 1303 - G130/Line-Ups // Condensate connections to Floor Drains | 2026-11-30 → 2026-11-23 (-7d) | 2026-12-11 → 2026-12-07 (-4d) | 25d → 29d |  |
| DH.1300B-EQP-120 | Gallery 1303 - G130/Line-Ups // Condensate connections to Floor Drains | 2026-12-07 → 2026-12-01 (-6d) | 2026-12-18 → 2026-12-14 (-4d) | 25d → 29d |  |
| DH.1300B-EQP-126 | Gallery 1303 - G130/Line-Ups // Electrical Gear FOD Inspection Pre-Start Up | 2026-12-11 → 2026-12-07 (-4d) | 2026-12-14 → 2026-12-08 (-6d) | 32d → 36d | Gallery 1303 - G130/Line-Ups // Terminat Mod Panels, DH.1300B-EQP-125, DH.1300B-EQP-122 → DH.1300B-EQP-122, DH.1300B-EQP-125 |
| DH.1300B-EQP-124 | Gallery 1303 - G130/Line-Ups // Mechanical Gear FOD Inspection Pre-Start Up | 2026-12-21 → 2026-12-15 (-6d) | 2026-12-23 → 2026-12-17 (-6d) | 25d → 29d |  |
| 8 | **H130** | 2026-11-13 → 2026-11-06 (-7d) | 2026-12-23 → 2026-12-17 (-6d) |  |  |
| DH.1300B-EQP-127 | Gallery 1303 - H130/Line-Ups // Set CRAH-DH1300-37 | 2026-11-13 → 2026-11-06 (-7d) | 2026-11-13 → 2026-11-06 (-7d) | -8d → -4d |  |
| DH.1300B-EQP-130 | Gallery 1303 - H130/Line-Ups // Set CRAH-DH1300-38 | 2026-11-13 → 2026-11-06 (-7d) | 2026-11-13 → 2026-11-06 (-7d) | -8d → -4d |  |
| DH.1300B-EQP-136 | Gallery 1303 - H130/Line-Ups // Mount Electrial Gear for Chiller Controls | 2026-11-16 → 2026-11-09 (-7d) | 2026-11-30 → 2026-11-23 (-7d) | 32d → 36d | Gallery 1303 - H130/Line-Ups // Set MOD H140-02 → DH.1300B-EQP-130 |
| DH.1300B-EQP-140 | Gallery 1303 - H130/Line-Ups // Terminate CRAHU Electrical Connections | 2026-11-25 → 2026-11-09 (-16d) | 2026-12-02 → 2026-11-16 (-16d) | 38d → 49d | Gallery 1303 - H130/Line-Ups // Pull Cable Tray Feed from MOD to CRAHU's, Gallery 1303 - H130/Line-Ups // Pull Cable Tray Feed from MOD to CRAHU's SS+2d → DH.1300B-EQP-127 |
| DH.1300B-EQP-213 | Gallery 1303 - H130/Line-Ups // Set CDU-DH1300-37 | 2026-11-16 → 2026-11-09 (-7d) | 2026-11-16 → 2026-11-09 (-7d) | 46d → 39d | Gallery 1303 - H130/Line-Ups // Set MOD H140-02 → DH.1300B-EQP-130 |
| DH.1300B-EQP-214 | Gallery 1303 - H130/Line-Ups // Set CDU-DH1300-38 | 2026-11-17 → 2026-11-09 (-8d) | 2026-11-17 → 2026-11-09 (-8d) | 46d → 39d | DH.1300B-EQP-213 → DH.1300B-EQP-130 |
| DH.1300B-EQP-128 | Gallery 1303 - H130/Line-Ups // Connect CRAH units | 2026-11-20 → 2026-11-16 (-4d) | 2026-12-04 → 2026-11-30 (-4d) | 25d → 29d |  |
| DH.1300B-EQP-135 | Gallery 1303 - H130/Line-Ups // Mechanical Connections to CRAHU Units | 2026-11-20 → 2026-11-16 (-4d) | 2026-12-04 → 2026-11-30 (-4d) | 30d → 34d |  |
| DH.1300B-EQP-141 | Gallery 1303 - H130/Line-Ups // Pull Feeder and Branch circuits to MIsc equipment and Chiller controls | 2026-11-20 → 2026-11-16 (-4d) | 2026-12-04 → 2026-11-30 (-4d) | 32d → 36d | DH.1300B-EQP-136 SS+4d → DH.1300B-EQP-214, DH.1300B-EQP-213, DH.1300B-EQP-136 SS+4d |
| DH.1300B-EQP-143 | Gallery 1303 - H130/Line-Ups // Teminate all Misc Equipment and Chiller Controls | 2026-11-27 → 2026-11-20 (-7d) | 2026-12-10 → 2026-12-04 (-6d) | 32d → 36d |  |
| DH.1300B-EQP-129 | Gallery 1303 - H130/Line-Ups // Condensate connections to Floor Drains | 2026-11-30 → 2026-11-23 (-7d) | 2026-12-11 → 2026-12-07 (-4d) | 25d → 29d |  |
| DH.1300B-EQP-138 | Gallery 1303 - H130/Line-Ups // Condensate connections to Floor Drains | 2026-12-07 → 2026-12-01 (-6d) | 2026-12-18 → 2026-12-14 (-4d) | 25d → 29d |  |
| DH.1300B-EQP-144 | Gallery 1303 - H130/Line-Ups // Electrical Gear FOD Inspection Pre-Start Up | 2026-12-11 → 2026-12-07 (-4d) | 2026-12-14 → 2026-12-08 (-6d) | 32d → 36d | Gallery 1303 - H130/Line-Ups // Terminat Mod Panels, DH.1300B-EQP-143, DH.1300B-EQP-140 → DH.1300B-EQP-140, DH.1300B-EQP-143 |
| DH.1300B-EQP-142 | Gallery 1303 - H130/Line-Ups // Mechanical Gear FOD Inspection Pre-Start Up | 2026-12-21 → 2026-12-15 (-6d) | 2026-12-23 → 2026-12-17 (-6d) | 25d → 29d |  |
| 9 | **J130** | 2026-11-13 → 2026-11-06 (-7d) | 2026-12-23 → 2026-12-17 (-6d) |  |  |
| DH.1300B-EQP-145 | Gallery 1303 - J130/Line-Ups // Set CRAH-DH1300-39 | 2026-11-13 → 2026-11-06 (-7d) | 2026-11-13 → 2026-11-06 (-7d) | -8d → -4d |  |
| DH.1300B-EQP-148 | Gallery 1303 - J130/Line-Ups // Set CRAH-DH1300-40 | 2026-11-13 → 2026-11-06 (-7d) | 2026-11-13 → 2026-11-06 (-7d) | -8d → -4d |  |
| DH.1300B-EQP-154 | Gallery 1303 - J130/Line-Ups // Mount Electrial Gear for Chiller Controls | 2026-11-16 → 2026-11-09 (-7d) | 2026-11-30 → 2026-11-23 (-7d) | 32d → 36d | Gallery 1303 - J130/Line-Ups // Set MOD J140-02 → DH.1300B-EQP-148 |
| DH.1300B-EQP-158 | Gallery 1303 - J130/Line-Ups // Terminate CRAHU Electrical Connections | 2026-11-25 → 2026-11-09 (-16d) | 2026-12-02 → 2026-11-16 (-16d) | 38d → 49d | Gallery 1303 - J130/Line-Ups // Pull Cable Tray Feed from MOD to CRAHU's, Gallery 1303 - J130/Line-Ups // Pull Cable Tray Feed from MOD to CRAHU's SS+2d → DH.1300B-EQP-145 |
| DH.1300B-EQP-215 | Gallery 1303 - J130/Line-Ups // Set CDU-DH1300-39 | 2026-11-16 → 2026-11-09 (-7d) | 2026-11-16 → 2026-11-09 (-7d) | 46d → 39d | Gallery 1303 - J130/Line-Ups // Set MOD J140-02 → DH.1300B-EQP-148 |
| DH.1300B-EQP-216 | Gallery 1303 - J130/Line-Ups // Set CDU-DH1300-40 | 2026-11-17 → 2026-11-09 (-8d) | 2026-11-17 → 2026-11-09 (-8d) | 46d → 39d | DH.1300B-EQP-215 → DH.1300B-EQP-148 |
| DH.1300B-EQP-146 | Gallery 1303 - J130/Line-Ups // Connect CRAH units | 2026-11-20 → 2026-11-16 (-4d) | 2026-12-04 → 2026-11-30 (-4d) | 25d → 29d |  |
| DH.1300B-EQP-153 | Gallery 1303 - J130/Line-Ups // Mechanical Connections to CRAHU Units | 2026-11-20 → 2026-11-16 (-4d) | 2026-12-04 → 2026-11-30 (-4d) | 30d → 34d |  |
| DH.1300B-EQP-159 | Gallery 1303 - J130/Line-Ups // Pull Feeder and Branch circuits to MIsc equipment and Chiller controls | 2026-11-20 → 2026-11-16 (-4d) | 2026-12-04 → 2026-11-30 (-4d) | 32d → 36d | DH.1300B-EQP-154 SS+4d → DH.1300B-EQP-215, DH.1300B-EQP-216, DH.1300B-EQP-154 SS+4d |
| DH.1300B-EQP-161 | Gallery 1303 - J130/Line-Ups // Teminate all Misc Equipment and Chiller Controls | 2026-11-27 → 2026-11-20 (-7d) | 2026-12-10 → 2026-12-04 (-6d) | 32d → 36d |  |
| DH.1300B-EQP-147 | Gallery 1303 - J130/Line-Ups // Condensate connections to Floor Drains | 2026-11-30 → 2026-11-23 (-7d) | 2026-12-11 → 2026-12-07 (-4d) | 25d → 29d |  |
| DH.1300B-EQP-156 | Gallery 1303 - J130/Line-Ups // Condensate connections to Floor Drains | 2026-12-07 → 2026-12-01 (-6d) | 2026-12-18 → 2026-12-14 (-4d) | 25d → 29d |  |
| DH.1300B-EQP-162 | Gallery 1303 - J130/Line-Ups // Electrical Gear FOD Inspection Pre-Start Up | 2026-12-11 → 2026-12-07 (-4d) | 2026-12-14 → 2026-12-08 (-6d) | 32d → 36d | Gallery 1303 - J130/Line-Ups // Terminat Mod Panels, DH.1300B-EQP-161, DH.1300B-EQP-158 → DH.1300B-EQP-158, DH.1300B-EQP-161 |
| DH.1300B-EQP-160 | Gallery 1303 - J130/Line-Ups // Mechanical Gear FOD Inspection Pre-Start Up | 2026-12-21 → 2026-12-15 (-6d) | 2026-12-23 → 2026-12-17 (-6d) | 25d → 29d |  |
| 10 | **K130** | 2026-11-16 → 2026-11-09 (-7d) | 2026-12-24 → 2026-12-18 (-6d) |  |  |
| DH.1300B-EQP-163 | Gallery 1303 - K130/Line-Ups // Set CRAH-DH1300-41 | 2026-11-16 → 2026-11-09 (-7d) | 2026-11-16 → 2026-11-09 (-7d) | -8d → -4d |  |
| DH.1300B-EQP-166 | Gallery 1303 - K130/Line-Ups // Set CRAH-DH1300-42 | 2026-11-16 → 2026-11-09 (-7d) | 2026-11-16 → 2026-11-09 (-7d) | -8d → -4d |  |
| DH.1300B-EQP-172 | Gallery 1303 - K130/Line-Ups // Mount Electrial Gear for Chiller Controls | 2026-11-17 → 2026-11-10 (-7d) | 2026-12-01 → 2026-11-24 (-7d) | 31d → 35d | Gallery 1303 - K130/Line-Ups // Set MOD K140-02 (Does No apply) → DH.1300B-EQP-166 |
| DH.1300B-EQP-176 | Gallery 1303 - K130/Line-Ups // Terminate CRAHU Electrical Connections | 2026-11-27 → 2026-11-10 (-17d) | 2026-12-03 → 2026-11-17 (-16d) | 37d → 48d | Gallery 1303 - K130/Line-Ups // Pull Cable Tray Feed from MOD to CRAHU's, Gallery 1303 - K130/Line-Ups // Pull Cable Tray Feed from MOD to CRAHU's SS+2d → DH.1300B-EQP-163 |
| DH.1300B-EQP-164 | Gallery 1303 - K130/Line-Ups // Connect CRAH units | 2026-11-23 → 2026-11-17 (-6d) | 2026-12-07 → 2026-12-01 (-6d) | 24d → 28d |  |
| DH.1300B-EQP-171 | Gallery 1303 - K130/Line-Ups // Mechanical Connections to CRAHU Units | 2026-11-23 → 2026-11-17 (-6d) | 2026-12-07 → 2026-12-01 (-6d) | 29d → 33d |  |
| DH.1300B-EQP-177 | Gallery 1303 - K130/Line-Ups // Pull Feeder and Branch circuits to MIsc equipment and Chiller controls | 2026-11-23 → 2026-11-17 (-6d) | 2026-12-07 → 2026-12-01 (-6d) | 31d → 35d |  |
| DH.1300B-EQP-179 | Gallery 1303 - K130/Line-Ups // Teminate all Misc Equipment and Chiller Controls | 2026-11-30 → 2026-11-23 (-7d) | 2026-12-11 → 2026-12-07 (-4d) | 31d → 35d |  |
| DH.1300B-EQP-165 | Gallery 1303 - K130/Line-Ups // Condensate connections to Floor Drains | 2026-12-01 → 2026-11-24 (-7d) | 2026-12-14 → 2026-12-08 (-6d) | 24d → 28d |  |
| DH.1300B-EQP-174 | Gallery 1303 - K130/Line-Ups // Condensate connections to Floor Drains | 2026-12-08 → 2026-12-02 (-6d) | 2026-12-21 → 2026-12-15 (-6d) | 24d → 28d |  |
| DH.1300B-EQP-180 | Gallery 1303 - K130/Line-Ups // Electrical Gear FOD Inspection Pre-Start Up | 2026-12-14 → 2026-12-08 (-6d) | 2026-12-15 → 2026-12-09 (-6d) | 31d → 35d | Gallery 1303 - K130/Line-Ups // Terminat Mod Panels, DH.1300B-EQP-179, DH.1300B-EQP-176 → DH.1300B-EQP-176, DH.1300B-EQP-179 |
| DH.1300B-EQP-178 | Gallery 1303 - K130/Line-Ups // Mechanical Gear FOD Inspection Pre-Start Up | 2026-12-22 → 2026-12-16 (-6d) | 2026-12-24 → 2026-12-18 (-6d) | 24d → 28d |  |
| 11 | **R130** | 2026-10-01 → 2026-10-14 (+13d) | 2026-12-14 → 2026-12-08 (-6d) |  |  |
| DH.1300B-EQP-192 | Gallery 1303 - R130/Line-Ups // Condensate connections to Floor Drains | 2026-10-01 → 2026-10-14 (+13d) | 2026-10-15 → 2026-10-27 (+12d) | 169d → 180d | Start Deleted → none |
| DH.1300B-EQP-181 | Gallery 1303 - R130/Line-Ups // Set CRAH-DH1300-43 | 2026-11-16 → 2026-11-09 (-7d) | 2026-11-16 → 2026-11-09 (-7d) | -8d → -4d |  |
| DH.1300B-EQP-184 | Gallery 1303 - R130/Line-Ups // Set CRAH-DH1300-44 | 2026-11-16 → 2026-11-09 (-7d) | 2026-11-16 → 2026-11-09 (-7d) | -7d → -3d |  |
| DH.1300B-EQP-190 | Gallery 1303 - R130/Line-Ups // Mount Electrial Gear for Chiller Controls | 2026-11-17 → 2026-11-10 (-7d) | 2026-12-01 → 2026-11-24 (-7d) | -5d → -1d | Gallery 1303 - R130/Line-Ups // Set MOD R140-02 (Does No apply) → DH.1300B-EQP-184 |
| DH.1300B-EQP-194 | Gallery 1303 - R130/Line-Ups // Terminate CRAHU Electrical Connections | 2026-11-27 → 2026-11-10 (-17d) | 2026-12-03 → 2026-11-17 (-16d) | -3d → 8d | Gallery 1303 - R130/Line-Ups // Pull Cable Tray Feed from MOD to CRAHU's, Gallery 1303 - R130/Line-Ups // Pull Cable Tray Feed from MOD to CRAHU's SS+2d → DH.1300B-EQP-181 |
| DH.1300B-EQP-195 | Gallery 1303 - R130/Line-Ups // Pull Feeder and Branch circuits to MIsc equipment and Chiller controls | 2026-11-17 → 2026-11-10 (-7d) | 2026-12-01 → 2026-11-24 (-7d) | -5d → -1d |  |
| DH.1300B-EQP-197 | Gallery 1303 - R130/Line-Ups // Teminate all Misc Equipment and Chiller Controls | 2026-11-17 → 2026-11-10 (-7d) | 2026-12-01 → 2026-11-24 (-7d) | -5d → -1d |  |
| DH.1300B-EQP-182 | Gallery 1303 - R130/Line-Ups // Connect CRAH units | 2026-11-18 → 2026-11-12 (-6d) | 2026-12-02 → 2026-11-25 (-7d) | -8d → -4d |  |
| DH.1300B-EQP-189 | Gallery 1303 - R130/Line-Ups // Mechanical Connections to CRAHU Units | 2026-11-23 → 2026-11-17 (-6d) | 2026-12-07 → 2026-12-01 (-6d) | -6d → -2d |  |
| DH.1300B-EQP-183 | Gallery 1303 - R130/Line-Ups // Condensate connections to Floor Drains | 2026-11-25 → 2026-11-19 (-6d) | 2026-12-09 → 2026-12-03 (-6d) | -8d → -4d |  |
| DH.1300B-EQP-198 | Gallery 1303 - R130/Line-Ups // Electrical Gear FOD Inspection Pre-Start Up | 2026-12-04 → 2026-11-25 (-9d) | 2026-12-07 → 2026-11-27 (-10d) | -3d → 3d | Gallery 1303 - R130/Line-Ups // Terminat Mod Panels, DH.1300B-EQP-197, DH.1300B-EQP-194 → DH.1300B-EQP-194, DH.1300B-EQP-197 |
| DH.1300B-EQP-196 | Gallery 1303 - R130/Line-Ups // Mechanical Gear FOD Inspection Pre-Start Up | 2026-12-10 → 2026-12-04 (-6d) | 2026-12-14 → 2026-12-08 (-6d) | -8d → -4d |  |
| 12 | **Equipment Connections** | 2026-11-18 → 2026-11-10 (-8d) | 2026-12-11 → 2026-12-03 (-8d) |  |  |
| 1 | **CRAH** | 2026-12-02 → 2026-11-10 (-22d) | 2026-12-11 → 2026-11-20 (-21d) |  |  |
| DH1300-004 | Gallery 1303 // DH 1300 / Elec Room // CRAH Duct Work Termination | 2026-12-02 → 2026-11-10 (-22d) | 2026-12-03 → 2026-11-12 (-21d) | -7d → 7d | Gallery 1303 - R130/Line-Ups // Pull Cable Tray Feed from MOD to CRAHU's → DH.1300B-EQP-184 |
| DH1300-003 | Gallery 1303 // DH 1300 / Elec Room // CRAH Chilled Water | 2026-12-04 → 2026-11-13 (-21d) | 2026-12-07 → 2026-11-16 (-21d) | -7d → 7d |  |
| DH1300-001 | Gallery 1303 // DH 1300 / Elec Room // CRAH Power Connections | 2026-12-08 → 2026-11-17 (-21d) | 2026-12-09 → 2026-11-18 (-21d) | -7d → 7d |  |
| DH1300-002 | Gallery 1303 // DH 1300 / Elec Room // CRAH LV Connections | 2026-12-10 → 2026-11-19 (-21d) | 2026-12-11 → 2026-11-20 (-21d) | -7d → 7d |  |
| 2 | **CDU** | 2026-12-02 → 2026-11-25 (-7d) | 2026-12-09 → 2026-12-03 (-6d) |  |  |
| DH1300-007 | Gallery 1303 // DH 1300 / Elec Room // CDU Chilled Water Connections | 2026-12-02 → 2026-11-25 (-7d) | 2026-12-03 → 2026-11-27 (-6d) | -5d → -1d |  |
| DH1300-005 | Gallery 1303 // DH 1300 /Elec Room // CDU Power Connections | 2026-12-04 → 2026-11-30 (-4d) | 2026-12-07 → 2026-12-01 (-6d) | -5d → -1d |  |
| DH1300-006 | Gallery 1303 // DH 1300 / Elec Room // CDU Controls Connections | 2026-12-08 → 2026-12-02 (-6d) | 2026-12-09 → 2026-12-03 (-6d) | -5d → -1d |  |

| ID | Task | Start | Finish | Duration | Complete | Total float | Predecessors |
| --- | --- | --- | --- | --- | --- | --- | --- |
| 3 | **MOD** | 2026-11-18 → 2026-11-23 (+5d) | 2026-11-23 → 2026-11-27 (+4d) |  |  |  |  |
| DH1300-008 | Gallery 1303 // DH 1300 / Elec Room // MOD Power Connections | 2026-11-18 → 2026-11-23 (+5d) | 2026-11-19 → 2026-11-24 (+5d) |  |  | 6d → 3d | Gallery 1303 - R130/Line-Ups // Pull Feeder from SWD to MOD → DH.1300B-EQP-195 FF |
| DH1300-009 | Gallery 1303 // DH 1300 / Elec Room // MOD LV Connections | 2026-11-20 → 2026-11-25 (+5d) | 2026-11-23 → 2026-11-27 (+4d) |  |  | 6d → 3d |  |
| 6 | **Corridors** | 2026-08-05 → 2026-08-06 (+1d) | 2026-12-01 → 2026-12-09 (+8d) |  |  |  |  |
| 1 | **Corridor 1000A** | 2026-08-05 → none | 2026-12-01 → none |  |  |  |  |
| 3 | **Corridor 1000** |  | 2026-12-01 → 2026-12-09 (+8d) |  |  |  |  |
| DH.130012078 | DH 1300/Corridor 1000 // Seal concrete |  |  |  |  |  | DH 1300/Corridor 1000A (No Apply) // Seal concrete → B120001.3046 |
| DH.130012068 | DH 1300/Corridor 1000 // MEPF Overhead Hangers | 2026-08-11 A → 2026-09-08 A (+28d) |  |  |  |  |  |
| DH.130012069 | DH 1300/Corridor 1000 // Frame walls | 2026-09-29 A → 2026-09-18 A (-11d) | 2026-10-02 → 2026-09-22 A (-10d) | 3d → 1d | 0% → 100% | 9d → none | DH 1300/Corridor 1000A (No Apply)// Frame walls → DH.1300.1040 |
| DH.130012071 | DH 1300/Corridor 1000 // MEPF high overhead install |  | 2026-10-02 → 2026-10-16 (+14d) |  |  | 1d → -5d |  |
| DH.130012072 | DH 1300/Corridor 1000 // MEP rough in walls | 2026-10-20 → 2026-10-05 A (-15d) | 2026-10-22 → 2026-10-30 (+8d) |  |  | 1d → -5d | DH.130012071, B120001.3156 → B120001.3156 FF, DH.130012069 |
| B120001.3155 | DH 1300/Corridor 1000 // Install Overhead Cable Ladder / 36" Cable Tray - TFO | 2026-10-05 → 2026-10-19 (+14d) | 2026-10-09 → 2026-10-23 (+14d) |  |  | 1d → -5d |  |
| B120001.3156 | DH 1300/Corridor 1000 // Install Overhead HAC - TFO | 2026-10-13 → 2026-10-26 (+13d) | 2026-10-19 → 2026-10-30 (+11d) |  |  | 1d → -5d |  |
| DH.130012073 | DH 1300/Corridor 1000 // In wall inspection | 2026-10-23 → 2026-11-02 (+10d) | 2026-10-23 → 2026-11-02 (+10d) |  |  | 1d → -5d |  |
| DH.130012070 | DH 1300/Corridor 1000 // Install Top Down Sheetrock | 2026-10-26 → 2026-11-03 (+8d) | 2026-10-28 → 2026-11-05 (+8d) |  |  | 1d → -5d |  |
| DH.130012074 | DH 1300/Corridor 1000 // Install Balance of Sheetrock on Walls | 2026-10-26 → 2026-11-03 (+8d) | 2026-10-30 → 2026-11-09 (+10d) |  |  | 1d → -5d |  |
| DH.130012075 | DH 1300/Corridor 1000 // Tape and finish walls | 2026-11-02 → 2026-11-10 (+8d) | 2026-11-12 → 2026-11-20 (+8d) |  |  | 1d → -5d |  |
| DH.130012076 | DH 1300/Corridor 1000 // Install wall door frames | 2026-11-13 → 2026-11-23 (+10d) | 2026-11-17 → 2026-11-25 (+8d) |  |  | 1d → -5d |  |
| DH.130012077 | DH 1300/Corridor 1000 // Prime and Paint first coat walls | 2026-11-13 → 2026-11-23 (+10d) | 2026-11-17 → 2026-11-25 (+8d) |  |  | 1d → -5d |  |
| DH.130012079 | DH 1300/Corridor 1000 // Install lights and exit signs | 2026-11-18 → 2026-11-27 (+9d) | 2026-11-20 → 2026-12-01 (+11d) |  |  | 1d → -5d |  |
| DH.130012080 | DH 1300/Corridor 1000 // Final Coat Paint & Touchup Walls | 2026-11-23 → 2026-12-02 (+9d) | 2026-11-27 → 2026-12-07 (+10d) |  |  | 1d → -5d |  |
| DH.130012081 | DH 1300/Corridor 1000 // Install MEP Devices and Trim | 2026-11-30 → 2026-12-08 (+8d) | 2026-12-01 → 2026-12-09 (+8d) |  |  | 1d → -5d |  |
| DH.160012148 | DH 1300/Corridor 1000 // Ready To Receive Equipment | 2026-12-01 → 2026-12-09 (+8d) | 2026-12-01 → 2026-12-09 (+8d) |  |  | 1d → -5d |  |
| 2 | **Corridor 1000D** |  | 2026-12-01 → 2026-11-24 (-7d) |  |  |  |  |
| DH.130012092 | DH 1300/Corridor 1000D // Seal concrete |  |  |  |  |  | DH.130012078 → DH.130012078 FF |
| DH.130012082 | DH 1300/Corridor 1000D // MEPF Overhead Hangers | 2026-08-12 A → 2026-09-08 A (+27d) |  |  |  |  |  |
| DH.130012085 | DH 1300/Corridor 1000D // MEPF high overhead install |  | 2026-10-02 → 2026-10-16 (+14d) |  |  | 8d → 6d |  |
| DH.130012083 | DH 1300/Corridor 1000D // Frame walls | 2026-10-05 → 2026-10-08 A (+3d) | 2026-10-07 → 2026-10-16 (+9d) |  |  | 9d → 5d |  |
| DH.130012086 | DH 1300/Corridor 1000D // MEP rough in walls | 2026-10-15 → 2026-10-09 A (-6d) | 2026-10-19 → 2026-10-14 (-5d) |  | 0% → 100% | 1d → 5d | DH.130012085, B120001.3158 → DH.130012083 SS+2d |
| B120001.3157 | DH 1300/Corridor 1000D // Install Overhead Cable Ladder / 36" Cable Tray - TFO | 2026-09-30 → 2026-10-14 (+14d) | 2026-10-06 → 2026-10-20 (+14d) |  |  | 1d → 24d |  |
| DH.130012087 | DH 1300/Corridor 1000D // In wall inspection | 2026-10-20 → 2026-10-14 (-6d) | 2026-10-20 → 2026-10-14 (-6d) |  |  | 1d → 5d |  |
| DH.130012084 | DH 1300/Corridor 1000D // Install Top Down Sheetrock | 2026-10-21 → 2026-10-15 (-6d) | 2026-10-23 → 2026-10-19 (-4d) |  |  | 1d → 5d |  |
| DH.130012088 | DH 1300/Corridor 1000D // Install Balance of Sheetrock on Walls | 2026-10-26 → 2026-10-20 (-6d) | 2026-10-30 → 2026-10-26 (-4d) |  |  | 1d → 5d |  |
| B120001.3158 | DH 1300/Corridor 1000D // Install Overhead HAC - TFO | 2026-10-07 → 2026-10-21 (+14d) | 2026-10-14 → 2026-10-27 (+13d) |  |  | 1d → 24d |  |
| DH.130012089 | DH 1300/Corridor 1000D // Tape and finish walls | 2026-11-02 → 2026-10-27 (-6d) | 2026-11-12 → 2026-11-05 (-7d) |  |  | 1d → 5d |  |
| DH.130012090 | DH 1300/Corridor 1000D // Install wall door frames | 2026-11-13 → 2026-11-06 (-7d) | 2026-11-17 → 2026-11-10 (-7d) |  |  | 1d → 5d |  |
| DH.130012091 | DH 1300/Corridor 1000D // Prime and Paint first coat walls | 2026-11-13 → 2026-11-06 (-7d) | 2026-11-17 → 2026-11-10 (-7d) |  |  | 1d → 5d |  |
| DH.130012093 | DH 1300/Corridor 1000D // Install lights and exit signs | 2026-11-18 → 2026-11-12 (-6d) | 2026-11-20 → 2026-11-16 (-4d) |  |  | 1d → 5d |  |
| DH.130012094 | DH 1300/Corridor 1000D // Final Coat Paint & Touchup Walls | 2026-11-23 → 2026-11-17 (-6d) | 2026-11-27 → 2026-11-20 (-7d) |  |  | 1d → 5d |  |
| DH.130012095 | DH 1300/Corridor 1000D // Install MEP Devices and Trim | 2026-11-30 → 2026-11-23 (-7d) | 2026-12-01 → 2026-11-24 (-7d) |  |  | 1d → 5d |  |
| DH.160012149 | DH 1300/Corridor 1000D // Ready to Receive Equipment | 2026-12-01 → 2026-11-24 (-7d) | 2026-12-01 → 2026-11-24 (-7d) |  |  | 1d → 5d | DH.130012095 FF → B120001.3158, DH.130012095 FF |
| 10 | **Flex 1000D1** |  | 2026-11-13 → 2026-11-20 (+7d) |  |  |  |  |
| DH.1300..1010 | DH 1300/Flex 1000D1 // MEPF Layout of Overhead Supports | 2026-08-19 A → 2026-09-08 A (+20d) |  |  |  |  |  |
| DH.1300..1020 | DH 1300/Flex 1000D1 // MEPF Install High Overhead Systems |  | 2026-10-02 → 2026-10-16 (+14d) |  |  | 22d → 13d |  |
| DH.1300..1040 | DH 1300/Flex 1000D1 // Frame Walls including Backing |  | 2026-10-05 → 2026-09-30 A (-5d) |  | 0% → 100% | 17d → none |  |
| DH.1300..1120 | DH 1300/Flex 1000D1 // Install MEPF Overhead Ceiling Rough |  | 2026-10-02 → 2026-10-16 (+14d) |  |  | 73d → 64d |  |
| DH.1300..1060 | DH 1300/Flex 1000D1 // MEPF Install Rough Wall | 2026-10-06 → 2026-10-05 A (-1d) | 2026-10-07 → 2026-10-15 (+8d) |  |  | 19d → 14d |  |
| DH.1300..1070 | DH 1300/Flex 1000D1 // Install Top Down Sheet Rock | 2026-10-06 → 2026-10-09 A (+3d) | 2026-10-13 → 2026-10-20 (+7d) |  |  | 17d → 12d |  |
| DH.1300..1080 | DH 1300/Flex 1000D1 // Rough Wall Inspspection (Approval to Close up) | 2026-10-08 → 2026-10-19 (+11d) | 2026-10-08 → 2026-10-19 (+11d) |  |  | 19d → 13d |  |
| DH.1300..1090 | DH 1300/Flex 1000D1 // Install Balance of Sheetrock | 2026-10-14 → 2026-10-21 (+7d) | 2026-10-16 → 2026-10-23 (+7d) |  |  | 17d → 12d |  |
| DH.1300..1100 | DH 1300/Flex 1000D1 // Tape and Finish Walls | 2026-10-19 → 2026-10-26 (+7d) | 2026-10-26 → 2026-11-02 (+7d) |  |  | 17d → 12d |  |
| DH.1300..1110 | DH 1300/Flex 1000D1 // Prime and First Coat of Paint | 2026-10-27 → 2026-11-03 (+7d) | 2026-10-28 → 2026-11-04 (+7d) |  |  | 17d → 12d |  |
| DH.1300..1130 | DH 1300/Flex 1000D1 // Install Lighting, Fire Alarm & Fire Protection | 2026-10-29 → 2026-11-05 (+7d) | 2026-10-30 → 2026-11-06 (+7d) |  |  | 56d → 51d |  |
| DH.1300..1140 | DH 1300/Flex 1000D1 // Wall Touch up Final Coat of Paint | 2026-10-29 → 2026-11-05 (+7d) | 2026-11-02 → 2026-11-09 (+7d) |  |  | 17d → 12d |  |
| DH.1300..1050 | DH 1300/Flex 1000D1 // Install Door Frames | 2026-11-03 → 2026-11-10 (+7d) | 2026-11-03 → 2026-11-10 (+7d) |  |  | 54d → 49d |  |
| DH.1300..1150 | DH 1300/Flex 1000D1 // Install Wall Base, Trim, and Devices | 2026-11-03 → 2026-11-10 (+7d) | 2026-11-05 → 2026-11-13 (+8d) |  |  | 17d → 12d |  |
| DH.1300..1161 | DH 1300/Flex 1000D1 // Ready to Receive Equipment | 2026-11-05 → 2026-11-13 (+8d) | 2026-11-05 → 2026-11-13 (+8d) |  |  | 17d → 12d |  |
| DH.1300..1160 | DH 1300/Flex 1000D1 // Suffolk Pre Punch | 2026-11-06 → 2026-11-16 (+10d) | 2026-11-13 → 2026-11-20 (+7d) |  |  | 52d → 47d |  |
| 13 | **Restroom-Dock & Janitor** | 2026-08-12 → 2026-09-14 (+33d) | 2026-11-25 → 2026-12-03 (+8d) |  |  |  |  |
| DH.1300010 | DH 1300/Restroom-Dock & Janitor // RR-Doc-Jan MEPF overhead layout | 2026-08-12 A → 2026-09-14 A (+33d) |  |  |  |  |  |
| DH.1300030 | DH 1300/Restroom-Dock & Janitor // RR-Doc-Jan Frame walls | 2026-09-28 A → 2026-09-15 A (-13d) | 2026-10-06 → 2026-09-21 A (-15d) |  | 0% → 100% | -9d → none |  |
| DH.1300020 | DH 1300/Restroom-Dock & Janitor // RR-Doc-Jan Layout walls | 2026-08-19 A → 2026-09-21 A (+33d) |  |  |  |  |  |
| DH.1300040 | DH 1300/Restroom-Dock & Janitor // RR-Doc-Jan Install wall door frames | 2026-10-07 → 2026-09-30 A (-7d) | 2026-10-09 → 2026-10-02 A (-7d) |  | 0% → 100% | 4d → none |  |
| DH.1300060 | DH 1300/Restroom-Dock & Janitor // RR-Doc-Jan MEP rough in walls | 2026-10-13 → 2026-10-05 A (-8d) | 2026-10-15 → 2026-10-07 A (-8d) |  | 0% → 100% | 4d → none |  |
| DH.1300070 | DH 1300/Restroom-Dock & Janitor // RR-Doc-Jan In wall inspection | 2026-10-16 → 2026-10-07 A (-9d) | 2026-10-16 → 2026-10-07 A (-9d) |  | 0% → 100% | 4d → none |  |
| DH.1300050 | DH 1300/Restroom-Dock & Janitor // RR-Doc-Jan Install Top Down Sheetrock | 2026-10-01 → 2026-10-14 (+13d) | 2026-10-07 → 2026-10-20 (+13d) |  |  | 7d → -1d |  |
| DH.1300080 | DH 1300/Restroom-Dock & Janitor // RR-Doc-Jan MEPF high overhead install | 2026-10-08 → 2026-10-21 (+13d) | 2026-10-13 → 2026-10-23 (+10d) |  |  | 7d → -1d |  |
| DH.1300090 | DH 1300/Restroom-Dock & Janitor // RR-Doc-Jan Install Balance of Sheetrock on Walls | 2026-10-19 → 2026-10-26 (+7d) | 2026-10-23 → 2026-10-30 (+7d) |  |  | 4d → -1d |  |
| DH.1300100 | DH 1300/Restroom-Dock & Janitor // RR-Doc-Jan Tape and finish walls | 2026-10-26 → 2026-11-02 (+7d) | 2026-11-04 → 2026-11-12 (+8d) |  |  | 4d → -1d |  |
| DH.1300000 | DH 1300/Restroom-Dock & Janitor // RR-Doc-Jan Seal concrete | 2026-11-05 → 2026-11-13 (+8d) | 2026-11-12 → 2026-11-19 (+7d) |  |  | 4d → -1d |  |

| ID | Task | Start | Finish | Total float | Predecessors |
| --- | --- | --- | --- | --- | --- |
| DH.1300110 | DH 1300/Restroom-Dock & Janitor // RR-Doc-Jan Prime and Paint first coat walls | 2026-11-05 → 2026-11-13 (+8d) | 2026-11-09 → 2026-11-17 (+8d) | 6d → 1d |  |
| DH.1300120 | DH 1300/Restroom-Dock & Janitor // RR-Doc-Jan Install lights and exit signs | 2026-11-13 → 2026-11-20 (+7d) | 2026-11-17 → 2026-11-24 (+7d) | 4d → -1d |  |
| DH.1300130 | DH 1300/Restroom-Dock & Janitor // RR-Doc-Jan Final Coat Paint & Touchup Walls | 2026-11-18 → 2026-11-25 (+7d) | 2026-11-23 → 2026-12-01 (+8d) | 4d → -1d |  |
| DH.1300140 | DH 1300/Restroom-Dock & Janitor // RR-Doc-Jan Install MEP Devices and Trim | 2026-11-24 → 2026-12-02 (+8d) | 2026-11-25 → 2026-12-03 (+8d) | 4d → -1d |  |
| 4 | **Loading Dock 1030** | 2026-07-30 → 2026-10-19 (+81d) | 2026-11-17 → 2026-12-24 (+37d) |  |  |
| 1 | **NO MAME** | 2026-12-15 → 2026-12-16 (+1d) | 2027-03-18 → 2027-03-19 (+1d) |  |  |
| 1 | **Energization & L3 Prefunctional Testing** | 2026-12-15 → 2026-12-16 (+1d) | 2027-02-12 → 2027-02-16 (+4d) |  |  |
| DH1300.L3CX.59 | DH1300 L3 Start | 2026-12-15 → 2026-12-16 (+1d) | 2026-12-15 → 2026-12-16 (+1d) | -8d → -9d | DH.1300.3067, DH.1300.1180, B120001.3108, DH.1300.1240, DH.1300.1330, DH.1300.1300, DH.1300.1310, DH.1300.3042, B120001.3109, DH.1300.3054, DH.1300.3059, DH.1300.3061, DH.1300.3062, DH.160012144, DH.13000.1110, DH.13000.1712, DH.160012145, DH.1300A-EQP-215, DH.1300A-EQP-220, DH.1300A-EQP-218, DH1300.MG.A110.8685, DH1300.MG.A110.8689, DH1300.MG.A110.8692, DH.160012146, DH.1300B-EQP-198, DH.1300B-EQP-196, DH1300-002, DH1300-006, DH1300-009, DH 1300/Corridor 1000A (No Apply) // Install MEP Devices and Trim, DH 1300/Corridor 1000A (No Apply) // Ready to Receve Equipment, DH.130012081, DH.160012148, DH.130012095, DH.160012149, DH.1300..1161, DH.1300140 → DH.1300140, DH.1300..1161, DH.160012149, DH.130012095, DH.160012148, DH.130012081, DH1300-009, DH1300-006, DH1300-002, DH.1300B-EQP-196, DH.1300B-EQP-198, DH.160012146, DH1300.MG.A110.8692, DH1300.MG.A110.8689, DH1300.MG.A110.8685, DH.1300A-EQP-218, DH.1300A-EQP-220, DH.1300A-EQP-215, DH.160012145, DH.13000.1712, DH.13000.1110, DH.160012144, DH.1300.3062, DH.1300.3061, DH.1300.3059, DH.1300.3054, B120001.3109, DH.1300.3042, DH.1300.1310, DH.1300.1300, DH.1300.1330, DH.1300.1240, B120001.3108, DH.1300.1180, DH.1300.3067 |
| DH1300.L3CX.BMS.21 | DH1300 L3 PTPs & SOOs – BMS | 2026-12-15 → 2026-12-16 (+1d) | 2027-02-11 → 2027-02-12 (+1d) | -8d → -9d |  |
| DH1300.L3CX.ELEC.83 | DH1300 L3 FTEs | 2026-12-15 → 2026-12-16 (+1d) | 2026-12-21 → 2026-12-22 (+1d) | -8d → -9d |  |
| DH1300.L3CX.MECH.63 | DH1300 L3 Startup / Pre-Functional – MECHANICAL | 2026-12-18 → 2026-12-21 (+3d) | 2027-01-19 → 2027-01-20 (+1d) | -1d → -2d |  |
| DH1300.L3CX.ELEC.73 | DH1300 L3 Startup / Pre-Functional – ELECTRICAL | 2026-12-22 → 2026-12-23 (+1d) | 2027-01-13 → 2027-01-14 (+1d) | 2d → 1d |  |
| DH1300.L3CX.MECH.73 | DH1300 L3 TAB (Air, Water and Reports) – MECHANICAL | 2027-01-29 → 2027-02-01 (+3d) | 2027-02-11 → 2027-02-12 (+1d) | -8d → -9d |  |
| DH1300.L3CX.MECH.83 | DH1300 L3 FLS – MECHANICAL | 2027-01-29 → 2027-02-01 (+3d) | 2027-02-11 → 2027-02-12 (+1d) | -8d → -9d |  |
| DH1300.L3CX.49 | DH1300 L3 Cx Complete | 2027-02-12 → 2027-02-16 (+4d) | 2027-02-12 → 2027-02-16 (+4d) | -8d → -9d | DH1300.L3CX.MECH.83 FF, DH1300.L3CX.MECH.73 FF → DH1300.LD.1997 FF, DH1300.L3CX.MECH.73 FF, DH1300.L3CX.MECH.83 FF |
| 2 | **L4 Function Testing** | 2027-01-12 → 2027-01-13 (+1d) | 2027-02-17 → 2027-02-18 (+1d) |  |  |
| DH1300.L4CX.COMM.150 | DH1300 L4 Cx | 2027-01-12 → 2027-01-13 (+1d) | 2027-02-17 → 2027-02-18 (+1d) | 1d → 0d |  |
| 3 | **L5 Integrated System Testing (IST)** | 2027-01-28 → 2027-01-29 (+1d) | 2027-03-18 → 2027-03-19 (+1d) |  |  |
| DH1300.L5CX.COMM.240 | DH1300 L5 Integrated Systems Testing - IST | 2027-01-28 → 2027-01-29 (+1d) | 2027-02-25 → 2027-02-26 (+1d) | 1d → 0d |  |
| DH1300.A2110.CO | DH 1300/L5 Integrated System Testing (IST) // DH1300– Phase Closeout Period O&M / TRAINING/ CLOSEOUT DOCS | 2027-02-26 → 2027-03-01 (+3d) | 2027-03-18 → 2027-03-19 (+1d) | 37d → 53d |  |
| DH1300.L5CX.COMM.250 | DH1300 – IST / L5 Cx Complete | 2027-02-26 → 2027-03-01 (+3d) | 2027-02-26 → 2027-03-01 (+3d) | 1d → 0d |  |
| 2 | **Data Hall 1500** |  | 2027-05-21 → 2027-06-24 (+34d) |  |  |
| 10 | **Exterior Build Out** |  | 2027-01-04 → 2027-01-08 (+4d) |  |  |
| 9 | **Electrical Yard** |  | 2026-12-14 → 2026-12-21 (+7d) |  |  |
| 3 | **Electrical** |  | 2026-12-14 → 2026-12-21 (+7d) |  |  |
| 1 | **Underground** |  | 2026-10-22 → 2026-10-29 (+7d) |  |  |
| 1 | **Column Line 5.0 - 5.9** |  | 2026-10-22 → 2026-10-29 (+7d) |  |  |
| B1200380 | DH1500/Electrical Yard-Underground // Install Raceway from MVG to Transformers | 2026-09-30 → 2026-10-08 A (+8d) | 2026-10-14 → 2026-10-27 (+13d) | 9d → 4d |  |
| B1200381 | DH1500/Electrical Yard-Underground // Backfill Raceways from MVG to Transformers | 2026-10-15 → 2026-10-13 A (-2d) | 2026-10-22 → 2026-10-29 (+7d) | 9d → 4d | B1200380, B1200380 FF → B1200380 FF+2d |
| 2 | **Pads** | 2026-10-23 → 2026-10-30 (+7d) | 2026-11-10 → 2026-11-18 (+8d) |  |  |
| B1200392 | DH1500/Electrical Yard-Pads // Excavate / Form / Rebar /pour-Finish Pads (House Gen & (9) Xfmr) 0.1 to 1.4 Line | 2026-10-23 → 2026-10-30 (+7d) | 2026-10-30 → 2026-11-06 (+7d) | 15.88d → 18d |  |
| B1200393 | DH1500/Electrical Yard-Pads // Pad Strip and Cure (House Gen & (9) Xfmr) 0.1 to 1.4 Line | 2026-11-02 → 2026-11-09 (+7d) | 2026-11-02 → 2026-11-09 (+7d) | 20.88d → 29.88d |  |
| B1200394 | DH1500/Electrical Yard-Pads // Excavate / Form / Rebar /pour-Finish Pads (16 Xfmrs) 1.4 to 1.8 Line | 2026-11-02 → 2026-11-09 (+7d) | 2026-11-09 → 2026-11-17 (+8d) | 15.88d → 18d |  |
| B1200395 | DH1500/Electrical Yard-Pads // Pad Strip and Cure (16 Xfmrs) 1.4 to 1.8 Line | 2026-11-10 → 2026-11-18 (+8d) | 2026-11-10 → 2026-11-18 (+8d) | 15.88d → 24.88d |  |
| 3 | **Equipment** | 2026-11-12 → 2026-11-19 (+7d) | 2026-12-14 → 2026-12-21 (+7d) |  |  |
| 1 | **A150** | 2026-11-12 → 2026-11-19 (+7d) | 2026-11-13 → 2026-11-20 (+7d) |  |  |
| DH.15001 | DH1500/Electrical Yard // Set XFMR - XFMR-A150a | 2026-11-12 → 2026-11-19 (+7d) | 2026-11-12 → 2026-11-19 (+7d) | 15.88d → 24.88d |  |
| DH.15002 | DH1500/Electrical Yard // Set XFMR - XFMR-A150p | 2026-11-13 → 2026-11-20 (+7d) | 2026-11-13 → 2026-11-20 (+7d) | 15.88d → 24.88d |  |
| 2 | **B150** | 2026-11-16 → 2026-11-23 (+7d) | 2026-11-17 → 2026-11-24 (+7d) |  |  |
| DH.15003 | DH1500/Electrical Yard // Set XFMR - XFMR-B150a | 2026-11-16 → 2026-11-23 (+7d) | 2026-11-16 → 2026-11-23 (+7d) | 15.88d → 24.88d |  |
| DH.15004 | DH1500/Electrical Yard // Set XFMR - XFMR-B150p | 2026-11-17 → 2026-11-24 (+7d) | 2026-11-17 → 2026-11-24 (+7d) | 15.88d → 24.88d |  |
| 3 | **C150** | 2026-11-18 → 2026-11-25 (+7d) | 2026-11-19 → 2026-11-27 (+8d) |  |  |
| DH.15005 | DH1500/Electrical Yard // Set XFMR - XFMR-C150a | 2026-11-18 → 2026-11-25 (+7d) | 2026-11-18 → 2026-11-25 (+7d) | 15.88d → 24.88d |  |
| DH.15006 | DH1500/Electrical Yard // Set XFMR - XFMR-C150p | 2026-11-19 → 2026-11-27 (+8d) | 2026-11-19 → 2026-11-27 (+8d) | 15.88d → 24.88d |  |
| 4 | **D150** | 2026-11-20 → 2026-11-30 (+10d) | 2026-11-23 → 2026-12-01 (+8d) |  |  |
| DH.15007 | DH1500/Electrical Yard // Set XFMR - XFMR-D150a | 2026-11-20 → 2026-11-30 (+10d) | 2026-11-20 → 2026-11-30 (+10d) | 15.88d → 24.88d |  |
| DH.15008 | DH1500/Electrical Yard // Set XFMR - XFMR-D150p | 2026-11-23 → 2026-12-01 (+8d) | 2026-11-23 → 2026-12-01 (+8d) | 15.88d → 24.88d |  |
| 5 | **E150** | 2026-11-24 → 2026-12-02 (+8d) | 2026-11-25 → 2026-12-03 (+8d) |  |  |
| DH.15009 | DH1500/Electrical Yard // Set XFMR - XFMR-E150a | 2026-11-24 → 2026-12-02 (+8d) | 2026-11-24 → 2026-12-02 (+8d) | 15.88d → 24.88d |  |
| DH.15000 | DH1500/Electrical Yard // Set XFMR - XFMR-E150p | 2026-11-25 → 2026-12-03 (+8d) | 2026-11-25 → 2026-12-03 (+8d) | 15.88d → 24.88d |  |
| 6 | **F150** | 2026-11-27 → 2026-12-04 (+7d) | 2026-11-30 → 2026-12-07 (+7d) |  |  |
| DH.160012120 | DH1500/Electrical Yard // Set XFMR - XFMR-F150a | 2026-11-27 → 2026-12-04 (+7d) | 2026-11-27 → 2026-12-04 (+7d) | 29.88d → 24.88d |  |
| DH.160012121 | DH1500/Electrical Yard // Set XFMR - XFMR-F150p | 2026-11-30 → 2026-12-07 (+7d) | 2026-11-30 → 2026-12-07 (+7d) | 29.88d → 24.88d |  |
| 7 | **G150** | 2026-12-01 → 2026-12-08 (+7d) | 2026-12-02 → 2026-12-09 (+7d) |  |  |
| DH.160012122 | DH1500/Electrical Yard // Set XFMR - XFMR-G150a | 2026-12-01 → 2026-12-08 (+7d) | 2026-12-01 → 2026-12-08 (+7d) | 29.88d → 24.88d |  |
| DH.160012123 | DH1500/Electrical Yard // Set XFMR - XFMR-G150p | 2026-12-02 → 2026-12-09 (+7d) | 2026-12-02 → 2026-12-09 (+7d) | 29.88d → 24.88d |  |
| 8 | **H150** | 2026-12-03 → 2026-12-10 (+7d) | 2026-12-04 → 2026-12-11 (+7d) |  |  |
| DH.160012124 | DH1500/Electrical Yard // Set XFMR - XFMR-H150a | 2026-12-03 → 2026-12-10 (+7d) | 2026-12-03 → 2026-12-10 (+7d) | 29.88d → 24.88d |  |
| DH.160012125 | DH1500/Electrical Yard // Set XFMR - XFMR-H150p | 2026-12-04 → 2026-12-11 (+7d) | 2026-12-04 → 2026-12-11 (+7d) | 29.88d → 24.88d |  |
| 9 | **J150** | 2026-12-07 → 2026-12-14 (+7d) | 2026-12-08 → 2026-12-15 (+7d) |  |  |
| DH.160012126 | DH1500/Electrical Yard // Set XFMR - XFMR-J150a | 2026-12-07 → 2026-12-14 (+7d) | 2026-12-07 → 2026-12-14 (+7d) | 29.88d → 24.88d |  |
| DH.160012127 | DH1500/Electrical Yard // Set XFMR - XFMR-J150p | 2026-12-08 → 2026-12-15 (+7d) | 2026-12-08 → 2026-12-15 (+7d) | 29.88d → 24.88d |  |
| 10 | **K150** | 2026-12-09 → 2026-12-16 (+7d) | 2026-12-10 → 2026-12-17 (+7d) |  |  |
| DH.160012128 | DH1500/Electrical Yard // Set XFMR - XFMR-K150a | 2026-12-09 → 2026-12-16 (+7d) | 2026-12-09 → 2026-12-16 (+7d) | 29.88d → 24.88d |  |
| DH.160012129 | DH1500/Electrical Yard // Set XFMR - XFMR-K150p | 2026-12-10 → 2026-12-17 (+7d) | 2026-12-10 → 2026-12-17 (+7d) | 29.88d → 24.88d |  |
| 11 | **R150** | 2026-12-11 → 2026-12-18 (+7d) | 2026-12-14 → 2026-12-21 (+7d) |  |  |
| DH.160012130 | DH1500/Electrical Yard // Set XFMR - XFMR-R150a | 2026-12-11 → 2026-12-18 (+7d) | 2026-12-11 → 2026-12-18 (+7d) | 29.88d → 24.88d |  |
| DH.160012131 | DH1500/Electrical Yard // Set XFMR - XFMR-R150p | 2026-12-14 → 2026-12-21 (+7d) | 2026-12-14 → 2026-12-21 (+7d) | 29.88d → 24.88d |  |
| 1 | **Mechanical Yard** |  | 2027-01-04 → 2027-01-08 (+4d) |  |  |
| 5 | **Equipment** | 2026-11-27 → 2026-12-16 (+19d) | 2027-01-04 → 2027-01-08 (+4d) |  |  |

| ID | Task | Start | Finish | Total float | Predecessors |
| --- | --- | --- | --- | --- | --- |
| 1 | **A150** | 2026-11-27 → 2026-12-16 (+19d) | 2026-12-03 → 2026-12-22 (+19d) |  |  |
| DH.150012001 | DH1500/Mechanical Yard-A150 // Set Chiller - CHLR-1CY40-A150 | 2026-11-27 → 2026-12-16 (+19d) | 2026-11-27 → 2026-12-16 (+19d) | 15.88d → 11.88d | STRUCTURE.6980, FDN.1248, DH.15000 → A5910, FDN.1248, STRUCTURE.6980 |
| DH.150012002 | DH1500/Mechanical Yard-A150 // Set TES tank - TES-1CY40-A150 | 2026-11-30 → 2026-12-17 (+17d) | 2026-11-30 → 2026-12-17 (+17d) | 67.88d → 54.88d |  |
| DH.150012023 | DH1500/Mechanical Yard-A150 // Install CHWP | 2026-12-01 → 2026-12-18 (+17d) | 2026-12-01 → 2026-12-18 (+17d) | 67.88d → 54.88d |  |
| DH.150012024 | DH1500/Mechanical Yard-A150 // Install Mechanical Piping Mains (Building -to Line) | 2026-12-02 → 2026-12-21 (+19d) | 2026-12-02 → 2026-12-21 (+19d) | 67.88d → 54.88d |  |
| DH.150012025 | DH1500/Mechanical Yard-A150 // Install Mechanical Chiller to Mains | 2026-12-03 → 2026-12-22 (+19d) | 2026-12-03 → 2026-12-22 (+19d) | 67.88d → 54.88d |  |
| 2 | **B150** | 2026-11-30 → 2026-12-16 (+16d) | 2026-12-04 → 2026-12-22 (+18d) |  |  |
| DH.150012003 | DH1500/Mechanical Yard-B150 // Set Chiller - CHLR-1CY40-B150 | 2026-11-30 → 2026-12-16 (+16d) | 2026-11-30 → 2026-12-16 (+16d) | 15.88d → 11.88d | DH.150012001 → A5910, DH.150012001 SS |
| DH.150012004 | DH1500/Mechanical Yard-B150 // Set TES tank - TES-1CY40-B150 | 2026-12-01 → 2026-12-17 (+16d) | 2026-12-01 → 2026-12-17 (+16d) | 66.88d → 54.88d |  |
| DH.150012026 | DH1500/Mechanical Yard-B150 // Install CHWP | 2026-12-02 → 2026-12-18 (+16d) | 2026-12-02 → 2026-12-18 (+16d) | 66.88d → 54.88d |  |
| DH.150012027 | DH1500/Mechanical Yard-B150 // Install Mechanical Piping Mains (Building -to Line) | 2026-12-03 → 2026-12-21 (+18d) | 2026-12-03 → 2026-12-21 (+18d) | 66.88d → 54.88d |  |
| DH.150012028 | DH1500/Mechanical Yard-B150 // Install Mechanical Chiller to Mains | 2026-12-04 → 2026-12-22 (+18d) | 2026-12-04 → 2026-12-22 (+18d) | 66.88d → 54.88d |  |
| 3 | **C150** | 2026-12-01 → 2026-12-16 (+15d) | 2026-12-07 → 2026-12-22 (+15d) |  |  |
| DH.150012005 | DH1500/Mechanical Yard-C150 // Set Chiller - CHLR-1CY40-C150 | 2026-12-01 → 2026-12-16 (+15d) | 2026-12-01 → 2026-12-16 (+15d) | 15.88d → 11.88d | DH.150012003 → A5910, DH.150012003 SS |
| DH.150012006 | DH1500/Mechanical Yard-C150 // Set TES tank - TES-1CY40-C150 | 2026-12-02 → 2026-12-17 (+15d) | 2026-12-02 → 2026-12-17 (+15d) | 65.88d → 54.88d |  |
| DH.150012029 | DH1500/Mechanical Yard-C150 // Install CHWP | 2026-12-03 → 2026-12-18 (+15d) | 2026-12-03 → 2026-12-18 (+15d) | 65.88d → 54.88d |  |
| DH.150012030 | DH1500/Mechanical Yard-C150 // Install Mechanical Piping Mains (Building -to Line) | 2026-12-04 → 2026-12-21 (+17d) | 2026-12-04 → 2026-12-21 (+17d) | 65.88d → 54.88d |  |
| DH.150012031 | DH1500/Mechanical Yard-C150 // Install Mechanical Chiller to Mains | 2026-12-07 → 2026-12-22 (+15d) | 2026-12-07 → 2026-12-22 (+15d) | 65.88d → 54.88d |  |
| 4 | **D150** | 2026-12-02 → 2026-12-16 (+14d) | 2026-12-08 → 2026-12-22 (+14d) |  |  |
| DH.150012007 | DH1500/Mechanical Yard-D150 // Set Chiller - CHLR-1CY40-D150 | 2026-12-02 → 2026-12-16 (+14d) | 2026-12-02 → 2026-12-16 (+14d) | 15.88d → 11.88d | DH.150012005 → A5910, DH.150012005 SS |
| DH.150012008 | DH1500/Mechanical Yard-D150 // Set TES tank - TES-1CY40-D150 | 2026-12-03 → 2026-12-17 (+14d) | 2026-12-03 → 2026-12-17 (+14d) | 64.88d → 54.88d |  |
| DH.150012032 | DH1500/Mechanical Yard-D150 // Install CHWP | 2026-12-04 → 2026-12-18 (+14d) | 2026-12-04 → 2026-12-18 (+14d) | 64.88d → 54.88d |  |
| DH.150012033 | DH1500/Mechanical Yard-D150 // Install Mechanical Piping Mains (Building -to Line) | 2026-12-07 → 2026-12-21 (+14d) | 2026-12-07 → 2026-12-21 (+14d) | 64.88d → 54.88d |  |
| DH.150012034 | DH1500/Mechanical Yard-D150 // Install Mechanical Chiller to Mains | 2026-12-08 → 2026-12-22 (+14d) | 2026-12-08 → 2026-12-22 (+14d) | 64.88d → 54.88d |  |
| 5 | **E150** | 2026-12-03 → 2026-12-16 (+13d) | 2026-12-09 → 2026-12-22 (+13d) |  |  |
| DH.150012009 | DH1500/Mechanical Yard-E150 // Set Chiller - CHLR-1CY40-E150 | 2026-12-03 → 2026-12-16 (+13d) | 2026-12-03 → 2026-12-16 (+13d) | 15.88d → 11.88d | DH.150012007 → A5910, DH.150012007 SS |
| DH.150012010 | DH1500/Mechanical Yard-E150 // Set TES tank - TES-1CY40-E150 | 2026-12-04 → 2026-12-17 (+13d) | 2026-12-04 → 2026-12-17 (+13d) | 63.88d → 54.88d |  |
| DH.150012035 | DH1500/Mechanical Yard-E150 // Install CHWP | 2026-12-07 → 2026-12-18 (+11d) | 2026-12-07 → 2026-12-18 (+11d) | 63.88d → 54.88d |  |
| DH.150012036 | DH1500/Mechanical Yard-E150 // Install Mechanical Piping Mains (Building -to Line) | 2026-12-08 → 2026-12-21 (+13d) | 2026-12-08 → 2026-12-21 (+13d) | 63.88d → 54.88d |  |
| DH.150012037 | DH1500/Mechanical Yard-E150 // Install Mechanical Chiller to Mains | 2026-12-09 → 2026-12-22 (+13d) | 2026-12-09 → 2026-12-22 (+13d) | 63.88d → 54.88d |  |
| 6 | **F150** | 2026-12-04 → 2026-12-16 (+12d) | 2026-12-10 → 2026-12-22 (+12d) |  |  |
| DH.150012011 | DH1500/Mechanical Yard-F150 // Set Chiller - CHLR-1CY40-F150 | 2026-12-04 → 2026-12-16 (+12d) | 2026-12-04 → 2026-12-16 (+12d) | 15.88d → 11.88d | DH.150012009 → A5910, DH.150012009 SS |
| DH.150012012 | DH1500/Mechanical Yard-F150 // Set TES tank - TES-1CY40-F150 | 2026-12-07 → 2026-12-17 (+10d) | 2026-12-07 → 2026-12-17 (+10d) | 62.88d → 54.88d |  |
| DH.150012038 | DH1500/Mechanical Yard-F150 // Install CHWP | 2026-12-08 → 2026-12-18 (+10d) | 2026-12-08 → 2026-12-18 (+10d) | 62.88d → 54.88d |  |
| DH.150012039 | DH1500/Mechanical Yard-F150 // Install Mechanical Piping Mains (Building -to Line) | 2026-12-09 → 2026-12-21 (+12d) | 2026-12-09 → 2026-12-21 (+12d) | 62.88d → 54.88d |  |
| DH.150012040 | DH1500/Mechanical Yard-F150 // Install Mechanical Chiller to Mains | 2026-12-10 → 2026-12-22 (+12d) | 2026-12-10 → 2026-12-22 (+12d) | 62.88d → 54.88d |  |
| 7 | **G150** | 2026-12-07 → 2026-12-17 (+10d) | 2026-12-11 → 2026-12-23 (+12d) |  |  |
| DH.150012013 | DH1500/Mechanical Yard-G150 // Set Chiller - CHLR-1CY40-G150 | 2026-12-07 → 2026-12-17 (+10d) | 2026-12-07 → 2026-12-17 (+10d) | 15.88d → 11.88d |  |
| DH.150012014 | DH1500/Mechanical Yard-G150 // Set TES tank - TES-1CY40-G150 | 2026-12-08 → 2026-12-18 (+10d) | 2026-12-08 → 2026-12-18 (+10d) | 61.88d → 53.88d |  |
| DH.150012041 | DH1500/Mechanical Yard-G150 // Install CHWP | 2026-12-09 → 2026-12-21 (+12d) | 2026-12-09 → 2026-12-21 (+12d) | 61.88d → 53.88d |  |
| DH.150012042 | DH1500/Mechanical Yard-G150 // Install Mechanical Piping Mains (Building -to Line) | 2026-12-10 → 2026-12-22 (+12d) | 2026-12-10 → 2026-12-22 (+12d) | 61.88d → 53.88d |  |
| DH.150012043 | DH1500/Mechanical Yard-G150 // Install Mechanical Chiller to Mains | 2026-12-11 → 2026-12-23 (+12d) | 2026-12-11 → 2026-12-23 (+12d) | 61.88d → 53.88d |  |
| 8 | **H150** | 2026-12-08 → 2026-12-17 (+9d) | 2026-12-14 → 2026-12-23 (+9d) |  |  |
| DH.150012015 | DH1500/Mechanical Yard-H150 // Set Chiller - CHLR-1CY40-H150 | 2026-12-08 → 2026-12-17 (+9d) | 2026-12-08 → 2026-12-17 (+9d) | 15.88d → 11.88d | DH.150012013 → DH.150012013 SS |
| DH.150012016 | DH1500/Mechanical Yard-H150 // Set TES tank - TES-1CY40-H150 | 2026-12-09 → 2026-12-18 (+9d) | 2026-12-09 → 2026-12-18 (+9d) | 60.88d → 53.88d |  |
| DH.150012044 | DH1500/Mechanical Yard-H150 // Install CHWP | 2026-12-10 → 2026-12-21 (+11d) | 2026-12-10 → 2026-12-21 (+11d) | 60.88d → 53.88d |  |
| DH.150012045 | DH1500/Mechanical Yard-H150 // Install Mechanical Piping Mains (Building -to Line) | 2026-12-11 → 2026-12-22 (+11d) | 2026-12-11 → 2026-12-22 (+11d) | 60.88d → 53.88d |  |
| DH.150012046 | DH1500/Mechanical Yard-H150 // Install Mechanical Chiller to Mains | 2026-12-14 → 2026-12-23 (+9d) | 2026-12-14 → 2026-12-23 (+9d) | 60.88d → 53.88d |  |
| 9 | **J150** | 2026-12-09 → 2026-12-17 (+8d) | 2026-12-15 → 2026-12-23 (+8d) |  |  |
| DH.150012017 | DH1500/Mechanical Yard-J150 // Set Chiller - CHLR-1CY40-J150 | 2026-12-09 → 2026-12-17 (+8d) | 2026-12-09 → 2026-12-17 (+8d) | 15.88d → 11.88d | DH.150012015 → DH.150012015 SS |
| DH.150012018 | DH1500/Mechanical Yard-J150 // Set TES tank - TES-1CY40-J150 | 2026-12-10 → 2026-12-18 (+8d) | 2026-12-10 → 2026-12-18 (+8d) | 59.88d → 53.88d |  |
| DH.150012047 | DH1500/Mechanical Yard-J150 // Install CHWP | 2026-12-11 → 2026-12-21 (+10d) | 2026-12-11 → 2026-12-21 (+10d) | 59.88d → 53.88d |  |
| DH.150012048 | DH1500/Mechanical Yard-J150 // Install Mechanical Piping Mains (Building -to Line) | 2026-12-14 → 2026-12-22 (+8d) | 2026-12-14 → 2026-12-22 (+8d) | 59.88d → 53.88d |  |
| DH.150012049 | DH1500/Mechanical Yard-J150 // Install Mechanical Chiller to Mains | 2026-12-15 → 2026-12-23 (+8d) | 2026-12-15 → 2026-12-23 (+8d) | 59.88d → 53.88d |  |
| 10 | **K150** | 2026-12-10 → 2026-12-17 (+7d) | 2026-12-16 → 2026-12-23 (+7d) |  |  |
| DH.150012019 | DH1500/Mechanical Yard-K150 // Set Chiller - CHLR-1CY40-K150 | 2026-12-10 → 2026-12-17 (+7d) | 2026-12-10 → 2026-12-17 (+7d) | 15.88d → 11.88d | DH.150012017 → DH.150012017 SS |
| DH.150012020 | DH1500/Mechanical Yard-K150 // Set TES tank - TES-1CY40-K150 | 2026-12-11 → 2026-12-18 (+7d) | 2026-12-11 → 2026-12-18 (+7d) | 58.88d → 53.88d |  |
| DH.150012050 | DH1500/Mechanical Yard-K150 // Install CHWP | 2026-12-14 → 2026-12-21 (+7d) | 2026-12-14 → 2026-12-21 (+7d) | 58.88d → 53.88d |  |
| DH.150012051 | DH1500/Mechanical Yard-K150 // Install Mechanical Piping Mains (Building -to Line) | 2026-12-15 → 2026-12-22 (+7d) | 2026-12-15 → 2026-12-22 (+7d) | 58.88d → 53.88d |  |
| DH.150012052 | DH1500/Mechanical Yard-K150 // Install Mechanical Chiller to Mains | 2026-12-16 → 2026-12-23 (+7d) | 2026-12-16 → 2026-12-23 (+7d) | 58.88d → 53.88d |  |
| 11 | **R150** | 2026-12-11 → 2026-12-17 (+6d) | 2026-12-17 → 2026-12-23 (+6d) |  |  |
| DH.150012021 | DH1500/Mechanical Yard-R150 // Set Chiller - CHLR-1CY40-R150 | 2026-12-11 → 2026-12-17 (+6d) | 2026-12-11 → 2026-12-17 (+6d) | 15.88d → 11.88d | DH.150012019 → DH.150012019 SS |
| DH.150012022 | DH1500/Mechanical Yard-R150 // Set TES tank - TES-1CY40-R150 | 2026-12-14 → 2026-12-18 (+4d) | 2026-12-14 → 2026-12-18 (+4d) | 15.88d → 11.88d |  |
| DH.150012053 | DH1500/Mechanical Yard-R150 // Install CHWP | 2026-12-15 → 2026-12-21 (+6d) | 2026-12-15 → 2026-12-21 (+6d) | 15.88d → 11.88d |  |
| DH.150012054 | DH1500/Mechanical Yard-R150 // Install Mechanical Piping Mains (Building -to Line) | 2026-12-16 → 2026-12-22 (+6d) | 2026-12-16 → 2026-12-22 (+6d) | 15.88d → 11.88d |  |
| DH.150012055 | DH1500/Mechanical Yard-R150 // Install Mechanical Chiller to Mains | 2026-12-17 → 2026-12-23 (+6d) | 2026-12-17 → 2026-12-23 (+6d) | 15.88d → 11.88d |  |
| 12 | **Test & Flushing** | 2026-12-18 → 2026-12-24 (+6d) | 2027-01-04 → 2027-01-08 (+4d) |  |  |
| A5742 | DH1500/Mechanical Yard-Test & Flushing // Line Test & Checking | 2026-12-18 → 2026-12-24 (+6d) | 2026-12-21 → 2026-12-28 (+7d) | 60.88d → 56.88d |  |
| A5744 | DH1500/Mechanical Yard-Test & Flushing // Electrical & Controls Testing / Checking | 2026-12-22 → 2026-12-29 (+7d) | 2026-12-24 → 2026-12-31 (+7d) | 60.88d → 56.88d |  |
| A5743 | DH1500/Mechanical Yard-Test & Flushing // Fill, Flush & Purge | 2026-12-28 → 2027-01-04 (+7d) | 2027-01-04 → 2027-01-08 (+4d) | 60.88d → 56.88d |  |

| ID | Task | Start | Finish | Complete | Total float | Predecessors |
| --- | --- | --- | --- | --- | --- | --- |
| 2 | **Electrical & Controls** |  | 2026-11-13 → 2026-11-27 (+14d) |  |  |  |
| A5802 | DH1500/Electrical & Controls // Excavate Raceways from Building to Chiller Pad |  | 2026-10-02 → 2026-10-16 (+14d) |  | 93.88d → 84.88d |  |
| A5803 | DH1500/Electrical & Controls // Install Raceway from Building To Chiller Pad |  | 2026-10-05 → 2026-10-19 (+14d) |  | 93.88d → 84.88d |  |
| A5804 | DH1500/Electrical & Controls // Backfill Chiller Raceways from Building to Chiller Pad | 2026-10-05 → 2026-10-19 (+14d) | 2026-10-15 → 2026-10-28 (+13d) |  | 94.88d → 85.88d |  |
| A5807 | DH1500/Electrical & Controls // Raceway connections to Chiller units | 2026-10-06 → 2026-10-20 (+14d) | 2026-10-14 → 2026-10-27 (+13d) |  | 93.88d → 84.88d |  |
| A5809 | DH1500/Electrical & Controls // Install Panels and Raceways to CHWP | 2026-10-06 → 2026-10-20 (+14d) | 2026-10-20 → 2026-11-02 (+13d) |  | 93.88d → 84.88d |  |
| A5810 | DH1500/Electrical & Controls // Install Controls conduits and wire to Chiller units | 2026-10-06 → 2026-10-20 (+14d) | 2026-10-22 → 2026-11-04 (+13d) |  | 93.88d → 84.88d |  |
| A5813 | DH1500/Electrical & Controls // Pull and Terminate Feeders to Chiller units | 2026-10-15 → 2026-10-28 (+13d) | 2026-10-22 → 2026-11-04 (+13d) |  | 97.88d → 88.88d |  |
| A5815 | DH1500/Electrical & Controls // Mechanical CWP Support Caisson Footings | 2026-10-23 → 2026-11-05 (+13d) | 2026-11-05 → 2026-11-19 (+14d) |  | 93.88d → 84.88d |  |
| A5816 | DH1500/Electrical & Controls // Chiller units Ready to Energize | 2026-10-23 → 2026-11-05 (+13d) | 2026-10-30 → 2026-11-13 (+14d) |  | 97.88d → 88.88d |  |
| A5817 | DH1500/Electrical & Controls // Fine Grade Install Landscape Fabric & Install Rock | 2026-11-06 → 2026-11-20 (+14d) | 2026-11-13 → 2026-11-27 (+14d) |  | 93.88d → 84.88d |  |
| 2 | **Roof - RTUs** |  | 2026-10-21 → 2026-11-03 (+13d) |  |  |  |
| 1 | **Column Lines 1.2 thru 2.0** |  | 2026-10-21 → 2026-11-03 (+13d) |  |  |  |
| DH.150012056 | DH1500/Roof - RTUs // Install heat trace system | 2026-09-30 → 2026-10-14 (+14d) | 2026-10-21 → 2026-11-03 (+13d) |  | 109.88d → 100.88d |  |
| DH.15007841 | DH1500/Roof - RTUs // Install Electrical Conduit and Controls Piping | 2026-09-30 → 2026-10-14 (+14d) | 2026-10-21 → 2026-11-03 (+13d) |  | 96.88d → 87.88d |  |
| 1 | **Interior Build Out** | 2026-09-30 → 2026-09-29 (-1d) | 2027-05-21 → 2027-06-24 (+34d) |  |  |  |
| 9 | **Flex 1000E10** | 2026-09-30 → 2026-10-01 (+1d) | 2026-12-18 → 2026-12-30 (+12d) |  |  |  |
| DH.1500.1000 | DH1500/Flex 1000E10 // Seal Concrete | 2026-09-30 → 2026-10-01 A (+1d) | 2026-10-01 → 2026-10-02 A (+1d) | 0% → 100% | 12.88d → none |  |
| DH.1500.1040 | DH1500/Flex 1000E10 // Frame Walls including Backing | 2026-10-06 → 2026-10-13 A (+7d) | 2026-10-09 → 2026-10-19 (+10d) |  | 44.88d → 39.88d | DH.1500.1010 → DH.1500.1000 |
| DH.1500.1010 | DH1500/Flex 1000E10 // MEPF Layout of Overhead Supports | 2026-10-02 → 2026-10-14 (+12d) | 2026-10-05 → 2026-10-15 (+10d) |  | 12.88d → 25.88d |  |
| B120001.3179 | DH1500/Flex 1000E10 // Install Overhead Cable Ladder / 36" Cable Tray - TFO | 2026-10-06 → 2026-10-16 (+10d) | 2026-10-13 → 2026-10-22 (+9d) |  | 32.88d → 25.88d |  |
| B120001.3180 | DH1500/Flex 1000E10 // Install Overhead HAC - TFO | 2026-10-14 → 2026-10-23 (+9d) | 2026-10-20 → 2026-10-29 (+9d) |  | 32.88d → 25.88d |  |
| DH.1500.1020 | DH1500/Flex 1000E10 // MEPF Install High Overhead Systems | 2026-10-21 → 2026-10-30 (+9d) | 2026-10-28 → 2026-11-06 (+9d) |  | 32.88d → 25.88d |  |
| DH.1500.1060 | DH1500/Flex 1000E10 // MEPF Install Rough Wall | 2026-10-29 → 2026-11-09 (+11d) | 2026-10-30 → 2026-11-10 (+11d) |  | 32.88d → 25.88d |  |
| DH.1500.1080 | DH1500/Flex 1000E10 // Rough Wall Inspspection (Approval to Close up) | 2026-11-02 → 2026-11-12 (+10d) | 2026-11-02 → 2026-11-12 (+10d) |  | 32.88d → 25.88d |  |
| DH.1500.1070 | DH1500/Flex 1000E10 // Install Top Down Sheet Rock | 2026-11-03 → 2026-11-13 (+10d) | 2026-11-09 → 2026-11-19 (+10d) |  | 32.88d → 25.88d |  |
| DH.1500.1090 | DH1500/Flex 1000E10 // Install Balance of Sheetrock | 2026-11-10 → 2026-11-20 (+10d) | 2026-11-13 → 2026-11-24 (+11d) |  | 32.88d → 25.88d |  |
| DH.1500.1100 | DH1500/Flex 1000E10 // Tape and Finish Walls | 2026-11-16 → 2026-11-25 (+9d) | 2026-11-23 → 2026-12-03 (+10d) |  | 32.88d → 25.88d |  |
| DH.1500.1110 | DH1500/Flex 1000E10 // Prime and First Coat of Paint | 2026-11-24 → 2026-12-04 (+10d) | 2026-11-25 → 2026-12-07 (+12d) |  | 32.88d → 25.88d |  |
| DH.1500.1120 | DH1500/Flex 1000E10 // Install MEPF Overhead Ceiling Rough | 2026-11-27 → 2026-12-08 (+11d) | 2026-12-01 → 2026-12-10 (+9d) |  | 32.88d → 25.88d |  |
| DH.1500.1130 | DH1500/Flex 1000E10 // Install Lighting, Fire Alarm & Fire Protection | 2026-12-02 → 2026-12-11 (+9d) | 2026-12-03 → 2026-12-14 (+11d) |  | 32.88d → 25.88d |  |
| DH.1500.1140 | DH1500/Flex 1000E10 // Wall Touch up Final Coat of Paint | 2026-12-04 → 2026-12-15 (+11d) | 2026-12-08 → 2026-12-17 (+9d) |  | 32.88d → 25.88d |  |
| DH.1500.1050 | DH1500/Flex 1000E10 // Install Door Frames | 2026-12-09 → 2026-12-18 (+9d) | 2026-12-09 → 2026-12-18 (+9d) |  | 71.88d → 64.88d |  |
| DH.1500.1150 | DH1500/Flex 1000E10 // Install Wall Base, Trim, and Devices | 2026-12-09 → 2026-12-18 (+9d) | 2026-12-11 → 2026-12-22 (+11d) |  | 32.88d → 25.88d |  |
| DH.1500.3057 | DH1500/Flex 1000E10 // Ready to Receive Equipment | 2026-12-11 → 2026-12-22 (+11d) | 2026-12-11 → 2026-12-22 (+11d) |  | 32.88d → 25.88d |  |
| DH.1500.1160 | DH1500/Flex 1000E10 // Suffolk Pre Punch | 2026-12-14 → 2026-12-23 (+9d) | 2026-12-18 → 2026-12-30 (+12d) |  | 69.88d → 62.88d |  |
| 7 | **Electrical Room #5501** | 2026-10-06 → 2026-10-01 (-5d) | 2027-02-11 → 2027-03-04 (+21d) |  |  |  |
| B120001.3057 | DH1500/Electrical Room #5501 // MEPF Layout of Overhead Supports | 2026-10-06 → 2026-10-01 A (-5d) | 2026-10-07 → 2026-10-02 A (-5d) | 0% → 100% | 12.88d → none | DH.1500.1010 → B120001.3048 |
| B120001.3060 | DH1500/Electrical Room #5501 // MEPF Install High Overhead Systems | 2026-10-08 → 2026-10-05 A (-3d) | 2026-10-16 → 2026-10-21 (+5d) |  | 32.88d → 31.88d |  |
| B120001.3058 | DH1500/Electrical Room #5501 // Frame Walls including Backing | 2026-10-28 → 2026-10-13 A (-15d) | 2026-11-02 → 2026-10-19 (-14d) |  | 23.88d → 35.88d | B120001.3057, DH.1400.3037 → B120001.3057 |
| B120001.3181 | DH1500/Electrical Room #5501 // Install Overhead Cable Ladder / 36" Cable Tray - TFO | 2026-10-08 → 2026-10-14 (+6d) | 2026-10-15 → 2026-10-20 (+5d) |  | 23.88d → 27.88d |  |
| DH.1400.3036 | DH1500/Electrical Room #5501 // Install Overhead Buss duct | 2026-10-08 → 2026-10-14 (+6d) | 2026-10-09 → 2026-10-15 (+6d) |  | 31.88d → 35.88d |  |
| B120001.3061 | DH1500/Electrical Room #5501 // MEPF Install Rough Wall | 2026-11-03 → 2026-10-20 (-14d) | 2026-11-04 → 2026-10-21 (-14d) |  | 25.88d → 37.88d |  |
| B120001.3062 | DH1500/Electrical Room #5501 // Install Top Down Sheet Rock | 2026-11-03 → 2026-10-20 (-14d) | 2026-11-09 → 2026-10-26 (-14d) |  | 23.88d → 35.88d |  |
| B120001.3182 | DH1500/Electrical Room #5501 // Install Overhead HAC - TFO | 2026-10-16 → 2026-10-21 (+5d) | 2026-10-22 → 2026-10-27 (+5d) |  | 23.88d → 27.88d |  |
| B120001.3063 | DH1500/Electrical Room #5501 // Rough Wall Inspspection (Approval to Close up) | 2026-11-05 → 2026-10-22 (-14d) | 2026-11-05 → 2026-10-22 (-14d) |  | 25.88d → 37.88d |  |
| DH.1300.3040 | DH1500/Electrical Room #5501 // Install Cable Tray | 2026-10-19 → 2026-10-22 (+3d) | 2026-10-21 → 2026-10-26 (+5d) |  | 32.88d → 31.88d |  |
| F.1000A.1246 | DH1500/Electrical Room #5501 // Rough-In Security | 2026-10-19 → 2026-10-22 (+3d) | 2026-10-20 → 2026-10-23 (+3d) |  | 98.88d → 117d |  |
| F.1000A.1535 | DH1500/Electrical Room #5501 // BMS & EPMS Rough-In | 2026-10-19 → 2026-10-22 (+3d) | 2026-10-20 → 2026-10-23 (+3d) |  | 110.88d → 129d |  |
| F.1000A.1247 | DH1500/Electrical Room #5501 // Pull & Test Security Cable | 2026-10-21 → 2026-10-26 (+5d) | 2026-10-23 → 2026-10-28 (+5d) |  | 98.88d → 117d |  |
| B120001.3064 | DH1500/Electrical Room #5501 // Install Balance of Sheetrock | 2026-11-10 → 2026-10-27 (-14d) | 2026-11-13 → 2026-10-29 (-15d) |  | 23.88d → 35.88d |  |
| DH.1400.3037 | DH1500/Electrical Room #5501 // Install Cable Tray | 2026-10-23 → 2026-10-28 (+5d) | 2026-10-27 → 2026-10-30 (+3d) |  | 23.88d → 27.88d |  |
| F.1000A.1248 | DH1500/Electrical Room #5501 // Install Security Devices | 2026-10-26 → 2026-10-29 (+3d) | 2026-10-27 → 2026-10-30 (+3d) |  | 98.88d → 117d |  |
| DH.1400.3039 | DH1500/Electrical Room #5501 // Install Cable Buss From Exterior | 2026-10-28 → 2026-11-02 (+5d) | 2026-10-30 → 2026-11-04 (+5d) |  | 28.88d → 27.88d |  |
| DH.1500.1170 | DH1500/Electrical Room #5501 // Install Overhead Buss duct | 2026-11-02 → 2026-11-05 (+3d) | 2026-11-03 → 2026-11-06 (+3d) |  | 28.88d → 27.88d |  |
| DH.1500.1180 | DH1500/Electrical Room #5501 // Install Cable Tray | 2026-11-03 → 2026-11-06 (+3d) | 2026-11-05 → 2026-11-10 (+5d) |  | 28.88d → 27.88d |  |
| ER.5101.3108 | DH1500/Electrical Room #5501 // Room Ready to Receive Equipment | 2026-11-13 → 2026-11-06 (-7d) | 2026-11-13 → 2026-11-06 (-7d) |  | 23.88d → 29.88d |  |
| DH.1500.1220 | DH1500/Electrical Room #5501 // Pull Cable Tray Feeders (CRAHU/CDU) | 2026-11-16 → 2026-11-12 (-4d) | 2026-11-30 → 2026-11-25 (-5d) |  | 29.88d → 31.88d |  |
| DH.1500.1290 | DH1500/Electrical Room #5501 // Pull Misc Feeder and Branch Circuits | 2026-11-16 → 2026-11-12 (-4d) | 2026-11-30 → 2026-11-25 (-5d) |  | 29.88d → 31.88d |  |
| DH.1500.1250 | DH1500/Electrical Room #5501 // Set CRAH-ER5501- 01 | 2027-01-07 → 2026-11-23 (-45d) | 2027-01-07 → 2026-11-23 (-45d) |  | -8.12d → 21.88d | DH.1400.3039, ER.5101.3079 → ER.5101.3132 |
| DH.1500.3031 | DH1500/Electrical Room #5501 // Set CRAH-ER5501- 02 | 2027-01-07 → 2026-11-23 (-45d) | 2027-01-07 → 2026-11-23 (-45d) |  | -8.12d → 21.88d | DH.1500.1250 SS → ER.5101.3132, DH.1500.1250 SS |
| DH.1500.3032 | DH1500/Electrical Room #5501 // Set CRAH-ER5501- 03 | 2027-01-07 → 2026-11-23 (-45d) | 2027-01-07 → 2026-11-23 (-45d) |  | -8.12d → 21.88d | DH.1500.3031 SS → ER.5101.3132, DH.1500.3031 SS |
| DH.1500.3033 | DH1500/Electrical Room #5501 // Set CRAH-ER5501- 04 | 2027-01-08 → 2026-11-24 (-45d) | 2027-01-08 → 2026-11-24 (-45d) |  | -8.12d → 21.88d | DH.1500.3032 → ER.5101.3132, DH.1500.3032 |
| DH.1500.3034 | DH1500/Electrical Room #5501 // Set CRAH-ER5501- 05 | 2027-01-08 → 2026-11-24 (-45d) | 2027-01-08 → 2026-11-24 (-45d) |  | -8.12d → 21.88d | DH.1500.3033 SS → ER.5101.3132, DH.1500.3033 SS |
| DH.1500.3035 | DH1500/Electrical Room #5501 // Set CRAH-ER5501- 06 | 2027-01-08 → 2026-11-24 (-45d) | 2027-01-08 → 2026-11-24 (-45d) |  | -8.12d → 21.88d | DH.1500.3034 SS → ER.5101.3132, DH.1500.3034 SS |
| ER.5101.3099 | DH1500/Electrical Room #5501 // Set PDU - PDU-R150-01 | 2027-01-11 → 2026-11-25 (-47d) | 2027-01-11 → 2026-11-25 (-47d) |  | -8.12d → 21.88d |  |
| DH.1500.1300 | DH1500/Electrical Room #5501 // Land and Terminate Misc Feeder and Branch Circuits | 2026-12-01 → 2026-11-27 (-4d) | 2026-12-14 → 2026-12-10 (-4d) |  | 29.88d → 31.88d |  |
| ER.5101.3105 | DH1500/Electrical Room #5501 // Set UPS - UPS-R150 | 2027-01-12 → 2026-11-27 (-46d) | 2027-01-12 → 2026-11-27 (-46d) |  | -8.12d → 21.88d |  |
| DH.1500.1260 | DH1500/Electrical Room #5501 // Mechanical Connections to CRAHU | 2027-01-13 → 2026-11-30 (-44d) | 2027-01-20 → 2026-12-04 (-47d) |  | -8.12d → 21.88d |  |
| DH.1500.1270 | DH1500/Electrical Room #5501 // Install Condensate lines from CRAHU's | 2027-01-21 → 2026-12-07 (-45d) | 2027-01-22 → 2026-12-08 (-45d) |  | 3.88d → 33.88d |  |

| ID | Task | Start | Finish | Complete | Total float | Predecessors |
| --- | --- | --- | --- | --- | --- | --- |
| DH.1500.1280 | DH1500/Electrical Room #5501 // Install Elec Feeders to CRAHU's | 2027-01-21 → 2026-12-07 (-45d) | 2027-01-25 → 2026-12-09 (-47d) |  | -8.12d → 21.88d |  |
| B120001.3059 | DH1500/Electrical Room #5501 // Install Door Frames | 2027-01-26 → 2026-12-10 (-47d) | 2027-01-26 → 2026-12-10 (-47d) |  | -8.12d → 21.88d |  |
| DH.1500.1240 | DH1500/Electrical Room #5501 // Land and Terminate Cabel Tray Feeders In Gear | 2027-01-27 → 2026-12-11 (-47d) | 2027-02-09 → 2026-12-24 (-47d) |  | -8.12d → 21.88d |  |
| F.1000A.1249 | DH1500/Electrical Room #5501 // Mount & Terminate Security Devices | 2027-01-27 → 2026-12-11 (-47d) | 2027-02-02 → 2026-12-17 (-47d) |  | 38.88d → 90d |  |
| F.1000A.1250 | DH1500/Electrical Room #5501 // Test Security Devices | 2027-02-03 → 2026-12-18 (-47d) | 2027-02-04 → 2026-12-21 (-45d) |  | 38.88d → 90d |  |
| DH.1500.1330 | DH1500/Electrical Room #5501 // Mechanical Equipment Pre-Start up | 2027-02-10 → 2026-12-28 (-44d) | 2027-02-11 → 2026-12-29 (-44d) |  | -8.12d → 21.88d |  |
| ER.5101.3076 | DH1500/Electrical Room #5501 // Set Skid - SKID-B150 |  |  |  | -8.12d → -6.12d | ER.5101.3075 SS → ER.5101.3110, ER.5101.3075 SS |
| ER.5101.3077 | DH1500/Electrical Room #5501 // Set Skid - SKID-C150 | 2027-01-05 → 2027-01-04 (-1d) | 2027-01-05 → 2027-01-04 (-1d) |  | -8.12d → -6.12d | ER.5101.3076 → ER.5101.3110, ER.5101.3076 SS |
| ER.5101.3078 | DH1500/Electrical Room #5501 // Set Skid - SKID-D150 | 2027-01-06 → 2027-02-11 (+36d) | 2027-01-06 → 2027-02-11 (+36d) |  | -8.12d → -32.12d | ER.5101.3077 → ER.5101.3122, ER.5101.3077 |
| ER.5101.3079 | DH1500/Electrical Room #5501 // Set Skid - SKID-E150 | 2027-01-06 → 2027-02-11 (+36d) | 2027-01-06 → 2027-02-11 (+36d) |  | -8.12d → -32.12d | ER.5101.3078 SS → ER.5101.3122, ER.5101.3078 SS |
| DH.1500.1200 | DH1500/Electrical Room #5501 // Install Cable Buss From Exterior | 2027-01-07 → 2027-02-12 (+36d) | 2027-01-11 → 2027-02-17 (+37d) |  | 2.88d → -22.12d |  |
| DH.1500.1320 | DH1500/Electrical Room #5501 // Buss Duct Tie In to Elect Gear | 2027-01-07 → 2027-02-12 (+36d) | 2027-01-11 → 2027-02-17 (+37d) |  | 11.88d → -13.12d |  |
| DH.1500.1210 | DH1500/Electrical Room #5501 // Pull Cable Buss Feeders | 2027-01-12 → 2027-02-18 (+37d) | 2027-01-20 → 2027-02-25 (+36d) |  | 2.88d → -22.12d |  |
| DH.1500.1230 | DH1500/Electrical Room #5501 // Terminate Cable Buss Feeders | 2027-01-21 → 2027-02-26 (+36d) | 2027-01-25 → 2027-03-02 (+36d) |  | 2.88d → -22.12d |  |
| DH.1500.1310 | DH1500/Electrical Room #5501 // Final FOD Check of all Panels | 2027-02-10 → 2027-03-03 (+21d) | 2027-02-11 → 2027-03-04 (+21d) |  | -8.12d → -22.12d |  |
| 2 | **Electrcal Room #5504** | 2026-10-08 → 2026-10-01 (-7d) | 2027-02-16 → 2027-03-18 (+30d) |  |  |  |
| B120001.3092 | DH1500/Electrical Room #5504 // MEPF Layout of Overhead Supports | 2026-10-08 → 2026-10-01 A (-7d) | 2026-10-09 → 2026-10-02 A (-7d) | 0% → 100% | 22.88d → none | B120001.3057 → B120001.3057 FF |
| B120001.3094 | DH1500/Electrical Room #5504 // MEPF Install High Overhead Systems | 2026-10-13 → 2026-10-05 A (-8d) | 2026-10-20 → 2026-10-21 (+1d) |  | 42.88d → 41.88d |  |
| B120001.3093 | DH1500/Electrical Room #5504 // Frame Walls including Backing | 2026-10-30 → 2026-10-13 A (-17d) | 2026-11-04 → 2026-10-19 (-16d) |  | 22.88d → 34.88d | B120001.3092, DH.1400.3065 → B120001.3092 |
| B120001.3183 | DH1500/Electrical Room #5504 // Install Overhead Cable Ladder / 36" Cable Tray - TFO | 2026-10-13 → 2026-10-14 (+1d) | 2026-10-19 → 2026-10-20 (+1d) |  | 22.88d → 37.88d |  |
| DH.1400.3064 | DH1500/Electrical Room #5504 // Install Overhead Buss duct | 2026-10-13 → 2026-10-14 (+1d) | 2026-10-14 → 2026-10-15 (+1d) |  | 31.88d → 46.88d |  |
| B120001.3095 | DH1500/Electrical Room #5504 // MEPF Install Rough Wall | 2026-11-05 → 2026-10-20 (-16d) | 2026-11-06 → 2026-10-21 (-16d) |  | 22.88d → 34.88d |  |
| B120001.3184 | DH1500/Electrical Room #5504 // Install Overhead HAC - TFO | 2026-10-20 → 2026-10-21 (+1d) | 2026-10-26 → 2026-10-27 (+1d) |  | 22.88d → 37.88d |  |
| B120001.3097 | DH1500/Electrical Room #5504 // Rough Wall Inspspection (Approval to Close up) | 2026-11-09 → 2026-10-22 (-18d) | 2026-11-09 → 2026-10-22 (-18d) |  | 22.88d → 34.88d |  |
| DH.1300.3066 | DH1500/Electrical Room #5504 // Install Cable Tray | 2026-10-21 → 2026-10-22 (+1d) | 2026-10-23 → 2026-10-26 (+3d) |  | 42.88d → 41.88d |  |
| F.1000A.1251 | DH1500/Electrical Room #5504 // Rough-In Security | 2026-10-21 → 2026-10-22 (+1d) | 2026-10-22 → 2026-10-23 (+1d) |  | 96.88d → 117d |  |
| F.1000A.1545 | DH1500/Electrical Room #5504 // BMS & EPMS Rough-In | 2026-10-21 → 2026-10-22 (+1d) | 2026-10-22 → 2026-10-23 (+1d) |  | 108.88d → 129d |  |
| B120001.3096 | DH1500/Electrical Room #5504 // Install Top Down Sheet Rock | 2026-11-10 → 2026-10-23 (-18d) | 2026-11-17 → 2026-10-29 (-19d) |  | 22.88d → 34.88d |  |
| F.1000A.1252 | DH1500/Electrical Room #5504 // Pull & Test Security Cable | 2026-10-23 → 2026-10-26 (+3d) | 2026-10-27 → 2026-10-28 (+1d) |  | 96.88d → 117d |  |
| DH.1400.3065 | DH1500/Electrical Room #5504 // Install Cable Tray | 2026-10-27 → 2026-10-28 (+1d) | 2026-10-29 → 2026-10-30 (+1d) |  | 22.88d → 37.88d |  |
| B120001.3098 | DH1500/Electrical Room #5504 // Install Balance of Sheetrock | 2026-11-18 → 2026-10-30 (-19d) | 2026-11-20 → 2026-11-03 (-17d) |  | 22.88d → 34.88d |  |
| DH.1400.3071 | DH1500/Electrical Room #5504 // Room Ready to Receive Equipment | 2026-11-20 → 2026-11-03 (-17d) | 2026-11-20 → 2026-11-03 (-17d) |  | 22.88d → 34.88d |  |
| DH.1500.3036 | DH1500/Electrical Room #5504 // Set CRAH-ER5504- 01 | 2027-01-15 → 2026-11-24 (-52d) | 2027-01-15 → 2026-11-24 (-52d) |  | -9.12d → 25.88d | DH.1400.3066, ER.5101.3084 → ER.5101.3132 FS+1d |
| DH.1500.3038 | DH1500/Electrical Room #5504 // Set CRAH-ER5504- 02 | 2027-01-19 → 2026-11-25 (-55d) | 2027-01-19 → 2026-11-25 (-55d) |  | -9.12d → 25.88d | DH.1500.3036 → ER.5101.3132 FS+1d, DH.1500.3036 |
| DH.1500.3039 | DH1500/Electrical Room #5504 // Set CRAH-ER5504- 03 | 2027-01-19 → 2026-11-25 (-55d) | 2027-01-19 → 2026-11-25 (-55d) |  | -9.12d → 25.88d | DH.1500.3038 FF → ER.5101.3132 FS+1d, DH.1500.3038 FF |
| DH.1500.3041 | DH1500/Electrical Room #5504 // Set CRAH-ER5504- 04 | 2027-01-19 → 2026-11-25 (-55d) | 2027-01-19 → 2026-11-25 (-55d) |  | -9.12d → 25.88d | DH.1500.3039 FF → ER.5101.3132 FS+1d, DH.1500.3039 FF |
| DH.1500.3042 | DH1500/Electrical Room #5504 // Set CRAH-ER5504- 05 | 2027-01-20 → 2026-11-27 (-54d) | 2027-01-20 → 2026-11-27 (-54d) |  | -9.12d → 25.88d | DH.1500.3041 → ER.5101.3132 FS+1d, DH.1500.3041 |
| DH.1500.3043 | DH1500/Electrical Room #5504 // Set CRAH-ER5504- 06 | 2027-01-20 → 2026-11-27 (-54d) | 2027-01-20 → 2026-11-27 (-54d) |  | -9.12d → 25.88d | DH.1500.3042 FF → ER.5101.3132 FS+1d, DH.1500.3042 FF |
| DH.1500.3044 | DH1500/Electrical Room #5504 // Mechanical Connections to CRAHU | 2027-01-21 → 2026-11-30 (-52d) | 2027-01-27 → 2026-12-04 (-54d) |  | -2.12d → 32.88d |  |
| DH.1500.3045 | DH1500/Electrical Room #5504 // Install Condensate lines from CRAHU's | 2027-01-28 → 2026-12-07 (-52d) | 2027-01-29 → 2026-12-08 (-52d) |  | -1.12d → 33.88d |  |
| ER.5101.3080 | DH1500/Electrical Room #5504 // Set Skid - SKID-F150 | 2027-01-11 → 2027-02-11 (+31d) | 2027-01-11 → 2027-02-11 (+31d) |  | -9.12d → -32.12d | ER.5101.3079, ER.5101.3112 → ER.5101.3122, ER.5101.3079 SS |
| ER.5101.3081 | DH1500/Electrical Room #5504 // Set Skid - SKID-G150 | 2027-01-11 → 2027-02-11 (+31d) | 2027-01-11 → 2027-02-11 (+31d) |  | -9.12d → -32.12d | ER.5101.3080 SS → ER.5101.3122, ER.5101.3080 SS |
| ER.5101.3082 | DH1500/Electrical Room #5504 // Set Skid - SKID-H150 | 2027-01-11 → 2027-02-12 (+32d) | 2027-01-11 → 2027-02-12 (+32d) |  | -9.12d → -32.12d | ER.5101.3081 SS → ER.5101.3112, ER.5101.3081 |
| ER.5101.3083 | DH1500/Electrical Room #5504 // Set Skid - SKID-J150 | 2027-01-11 → 2027-02-12 (+32d) | 2027-01-11 → 2027-02-12 (+32d) |  | -9.12d → -32.12d | ER.5101.3082 SS → ER.5101.3112, ER.5101.3082 SS |
| ER.5101.3084 | DH1500/Electrical Room #5504 // Set Skid - SKID-K150 | 2027-01-11 → 2027-02-12 (+32d) | 2027-01-11 → 2027-02-12 (+32d) |  | -9.12d → -32.12d | ER.5101.3083 SS → ER.5101.3112, ER.5101.3083 SS |
| DH.1400.3066 | DH1500/Electrical Room #5504 // Install Cable Buss From Exterior | 2027-01-12 → 2027-02-16 (+35d) | 2027-01-14 → 2027-02-18 (+35d) |  | -9.12d → -32.12d |  |
| DH.1500.3037 | DH1500/Electrical Room #5504 // Install Overhead Buss duct | 2027-01-15 → 2027-02-19 (+35d) | 2027-01-19 → 2027-02-22 (+34d) |  | -9.12d → -32.12d |  |
| DH.1500.3040 | DH1500/Electrical Room #5504 // Install Cable Tray | 2027-01-15 → 2027-02-19 (+35d) | 2027-01-20 → 2027-02-23 (+34d) |  | -9.12d → -32.12d |  |
| DH.1500.3046 | DH1500/Electrical Room #5504 // Install Elec Feeders to CRAHU's | 2027-01-28 → 2027-02-24 (+27d) | 2027-02-01 → 2027-02-26 (+25d) |  | -2.12d → -20.12d |  |
| DH.1500.3047 | DH1500/Electrical Room #5504 // Install Cable Buss From Exterior | 2027-01-21 → 2027-02-24 (+34d) | 2027-01-25 → 2027-02-26 (+32d) |  | -6.12d → -29.12d |  |
| DH.1500.3048 | DH1500/Electrical Room #5504 // Buss Duct Tie In to Elect Gear | 2027-01-21 → 2027-02-24 (+34d) | 2027-01-25 → 2027-02-26 (+32d) |  | 2.88d → -20.12d |  |
| DH.1500.3050 | DH1500/Electrical Room #5504 // Pull Cable Tray Feeders (CRAHU/CDU) | 2027-01-21 → 2027-02-24 (+34d) | 2027-02-03 → 2027-03-09 (+34d) |  | -9.12d → -32.12d |  |
| DH.1500.3051 | DH1500/Electrical Room #5504 // Pull Misc Feeder and Branch Circuits | 2027-01-21 → 2027-02-24 (+34d) | 2027-02-03 → 2027-03-09 (+34d) |  | -9.12d → -32.12d |  |
| B120001.3099 | DH1500/Electrical Room #5504 // Install Door Frames | 2027-02-02 → 2027-03-01 (+27d) | 2027-02-02 → 2027-03-01 (+27d) |  | 31.88d → 35d |  |
| DH.1500.3049 | DH1500/Electrical Room #5504 // Pull Cable Buss Feeders | 2027-01-26 → 2027-03-01 (+34d) | 2027-02-02 → 2027-03-08 (+34d) |  | -6.12d → -29.12d |  |
| F.1000A.1253 | DH1500/Electrical Room #5504 // Install Security Devices | 2027-02-03 → 2027-03-02 (+27d) | 2027-02-04 → 2027-03-03 (+27d) |  | 31.88d → 35d |  |
| DH.1500.3053 | DH1500/Electrical Room #5504 // Land and Terminate Cabel Tray Feeders In Gear | 2027-01-28 → 2027-03-03 (+34d) | 2027-02-10 → 2027-03-16 (+34d) |  | -9.12d → -32.12d |  |
| DH.1500.3054 | DH1500/Electrical Room #5504 // Land and Terminate Misc Feeder and Branch Circuits | 2027-01-28 → 2027-03-03 (+34d) | 2027-02-10 → 2027-03-16 (+34d) |  | -9.12d → -32.12d |  |
| F.1000A.1254 | DH1500/Electrical Room #5504 // Mount & Terminate Security Devices | 2027-02-05 → 2027-03-04 (+27d) | 2027-02-11 → 2027-03-10 (+27d) |  | 31.88d → 35d |  |
| DH.1500.3052 | DH1500/Electrical Room #5504 // Terminate Cable Buss Feeders | 2027-02-03 → 2027-03-09 (+34d) | 2027-02-05 → 2027-03-11 (+34d) |  | -6.12d → -29.12d |  |
| DH.1500.3055 | DH1500/Electrical Room #5504 // Final FOD Check of all Panels | 2027-02-11 → 2027-03-17 (+34d) | 2027-02-12 → 2027-03-18 (+34d) |  | -9.12d → -32.12d |  |
| DH.1500.3056 | DH1500/Electrical Room #5504 // Mechanical Equipment Pre-Start up | 2027-02-11 → 2027-03-17 (+34d) | 2027-02-12 → 2027-03-18 (+34d) |  | -9.12d → -32.12d |  |
| F.1000A.1255 | DH1500/Electrical Room #5504 // Test Security Devices | 2027-02-12 → 2027-03-17 (+33d) | 2027-02-16 → 2027-03-18 (+30d) |  | 31.88d → 31d |  |
| 3 | **Data Hall 1500** |  | 2027-01-07 → 2027-01-12 (+5d) |  |  |  |
| DH.15006300 | DH 1500 // Frame walls | 2026-10-08 A | 2026-10-22 → 2026-10-27 (+5d) |  | 12.88d → 9.88d | DH.15006270 SS → DH.16006300 FF |
| DH.15006270 | DH 1500 // MEPF overhead layout | 2026-10-08 → 2026-10-14 (+6d) | 2026-10-13 → 2026-10-16 (+3d) |  | 12.88d → 19.88d |  |
| B120001.3185 | DH 1500 // Install Overhead Cable Ladder / 36" Cable Tray - TFO | 2026-10-14 → 2026-10-19 (+5d) | 2026-10-20 → 2026-10-23 (+3d) |  | 22.88d → 19.88d |  |
| B120001.3186 | DH 1500 // Install Overhead HAC - TFO | 2026-10-21 → 2026-10-26 (+5d) | 2026-10-27 → 2026-10-30 (+3d) |  | 22.88d → 19.88d |  |
| DH.15006320 | DH 1500 // MEP rough in walls | 2026-10-23 → 2026-10-28 (+5d) | 2026-10-29 → 2026-11-03 (+5d) |  | 12.88d → 9.88d |  |
| DH.15006290 | DH 1500 // MEPF high overhead install | 2026-10-28 → 2026-11-02 (+5d) | 2026-11-10 → 2026-11-16 (+6d) |  | 22.88d → 19.88d |  |

| ID | Task | Start | Finish | Complete | Total float | Predecessors |
| --- | --- | --- | --- | --- | --- | --- |
| DH.150012067 | DH 1500 // Install 1-Side Sheet Rock (DH-Side) | 2026-10-30 → 2026-11-04 (+5d) | 2026-11-03 → 2026-11-06 (+3d) |  | 12.88d → 9.88d |  |
| DH.15006360 | DH 1500 // Tape and finish walls | 2026-11-04 → 2026-11-09 (+5d) | 2026-11-25 → 2026-12-01 (+6d) |  | 12.88d → 9.88d |  |
| DH.15007800 | DH 1500 // Install Ceiling supports (rods/wires) no grid | 2026-11-12 → 2026-11-17 (+5d) | 2026-11-18 → 2026-11-23 (+5d) |  | 22.88d → 19.88d |  |
| F.1000A.1256 | DH 1500 // Rough-In Security | 2026-11-12 → 2026-11-17 (+5d) | 2026-11-13 → 2026-11-18 (+5d) |  | 81.88d → 95d |  |
| F.1000A.1555 | DH 1500 // BMS & EPMS Rough-In | 2026-11-12 → 2026-11-17 (+5d) | 2026-11-13 → 2026-11-18 (+5d) |  | 93.88d → 107d |  |
| F.1000A.1257 | DH 1500 // Pull & Test Security Cable | 2026-11-16 → 2026-11-19 (+3d) | 2026-11-18 → 2026-11-23 (+5d) |  | 81.88d → 95d |  |
| DH.15006220 | DH 1500 // Install ceiling grid system | 2026-11-19 → 2026-11-24 (+5d) | 2026-12-01 → 2026-12-04 (+3d) |  | 22.88d → 19.88d |  |
| DH.15006260 | DH 1500 // Polish concrete | 2026-11-27 → 2026-12-02 (+5d) | 2026-12-03 → 2026-12-08 (+5d) |  | 28.88d → 25.88d |  |
| DH.15006410 | DH 1500 // Prime and 1st coat of Paint | 2026-11-27 → 2026-12-02 (+5d) | 2026-12-03 → 2026-12-08 (+5d) |  | 28.88d → 25.88d |  |
| DH.15006250 | DH 1500 // Install overhead MEP and lighting | 2026-12-02 → 2026-12-07 (+5d) | 2026-12-08 → 2026-12-11 (+3d) |  | 22.88d → 19.88d |  |
| DH.15006310 | DH 1500 // Install wall door frames | 2026-12-04 → 2026-12-09 (+5d) | 2026-12-08 → 2026-12-11 (+3d) |  | 30.88d → 27.88d |  |
| DH.15006240 | DH 1500 // Install ceiling grid tiles | 2026-12-09 → 2026-12-14 (+5d) | 2026-12-11 → 2026-12-16 (+5d) |  | 22.88d → 19.88d |  |
| F.1000A.1258 | DH 1500 // Install Security Devices | 2026-12-09 → 2026-12-14 (+5d) | 2026-12-10 → 2026-12-15 (+5d) |  | 68.88d → 82d |  |
| F.1000A.1259 | DH 1500 // Mount & Terminate Security Devices | 2026-12-11 → 2026-12-16 (+5d) | 2026-12-17 → 2026-12-22 (+5d) |  | 68.88d → 82d |  |
| DH.15007790 | DH 1500 // Final Paint & Touch up walls | 2026-12-14 → 2026-12-17 (+3d) | 2026-12-18 → 2026-12-23 (+5d) |  | 22.88d → 19.88d |  |
| DH.15007810 | DH 1500 // Install MEPF Trim and Finishes | 2026-12-21 → 2026-12-24 (+3d) | 2026-12-28 → 2026-12-31 (+3d) |  | 22.88d → 19.88d |  |
| DH.160012156 | DH 1500 // Room Ready to Receive Equipment | 2026-12-28 → 2026-12-31 (+3d) | 2026-12-28 → 2026-12-31 (+3d) |  | 22.88d → 19.88d |  |
| F.1000A.1260 | DH 1500 // Test Security Devices | 2026-12-29 → 2027-01-04 (+6d) | 2026-12-30 → 2027-01-05 (+6d) |  | 62.88d → 76d |  |
| DH.15007820 | DH 1500 // Data Hall 1500 Suffolk Pre Punch | 2026-12-31 → 2027-01-06 (+6d) | 2027-01-07 → 2027-01-12 (+5d) |  | 79d → 76d |  |
| 15 | **PDU Gallery** | 2026-09-30 → 2026-10-01 (+1d) | 2026-12-02 → 2026-12-07 (+5d) |  |  |  |
| DH.15000.1000 | DH1500/PDU Gallery // Seal concrete | 2026-09-30 → 2026-10-01 A (+1d) | 2026-10-01 → 2026-10-02 A (+1d) | 0% → 100% | 13.88d → none |  |
| DH.15000.1040 | DH1500/PDU Gallery // Frame walls | 2026-10-21 → 2026-10-13 A (-8d) | 2026-10-27 → 2026-10-21 (-6d) |  | 47.88d → 51.88d | DH.15000.1010 → DH.15006300 SS+4d |
| DH.15000.1010 | DH1500/PDU Gallery // MEPF overhead layout | 2026-10-14 → 2026-10-19 (+5d) | 2026-10-20 → 2026-10-23 (+3d) |  | 39.88d → 36.88d |  |
| B120001.3207 | DH1500/PDU Gallery // Install Overhead Cable Ladder / 36" Cable Tray - TFO | 2026-10-21 → 2026-10-26 (+5d) | 2026-10-27 → 2026-10-30 (+3d) |  | 39.88d → 36.88d |  |
| B120001.3208 | DH1500/PDU Gallery // Install Overhead HAC - TFO | 2026-10-28 → 2026-11-02 (+5d) | 2026-11-03 → 2026-11-06 (+3d) |  | 39.88d → 36.88d |  |
| DH.15000.1030 | DH1500/PDU Gallery // MEPF high overhead install | 2026-11-04 → 2026-11-09 (+5d) | 2026-11-06 → 2026-11-12 (+6d) |  | 39.88d → 36.88d |  |
| DH.15000.1711 | DH1500/PDU Gallery // MEP rough in walls | 2026-11-09 → 2026-11-13 (+4d) | 2026-11-12 → 2026-11-17 (+5d) |  | 39.88d → 36.88d |  |
| DH.15000.1070 | DH1500/PDU Gallery // In wall inspection | 2026-11-13 → 2026-11-18 (+5d) | 2026-11-13 → 2026-11-18 (+5d) |  | 39.88d → 36.88d |  |
| DH.15000.1060 | DH1500/PDU Gallery // Install Sheetrock Top Down | 2026-11-16 → 2026-11-19 (+3d) | 2026-11-18 → 2026-11-23 (+5d) |  | 39.88d → 36.88d |  |
| DH.15000.1080 | DH1500/PDU Gallery // Install sheetrock on walls (Balance) | 2026-11-19 → 2026-11-24 (+5d) | 2026-11-25 → 2026-12-01 (+6d) |  | 39.88d → 36.88d |  |
| DH.15000.1090 | DH1500/PDU Gallery // Tape and finish walls | 2026-11-27 → 2026-12-02 (+5d) | 2026-11-27 → 2026-12-02 (+5d) |  | 39.88d → 36.88d |  |
| DH.15000.1050 | DH1500/PDU Gallery // Install wall door frames | 2026-11-30 → 2026-12-03 (+3d) | 2026-11-30 → 2026-12-03 (+3d) |  | 39.88d → 36.88d |  |
| DH.15000.1110 | DH1500/PDU Gallery // Install Cable Tray (From Elec Rm 5501 to CRAHU Gallery) | 2026-11-30 → 2026-12-03 (+3d) | 2026-12-01 → 2026-12-04 (+3d) |  | 40.88d → 37.88d |  |
| DH.15000.1100 | DH1500/PDU Gallery // Paint walls | 2026-12-01 → 2026-12-04 (+3d) | 2026-12-02 → 2026-12-07 (+5d) |  | 39.88d → 36.88d |  |
| DH.15000.1712 | DH1500/PDU Gallery // Ready to Receive Equipment | 2026-12-02 → 2026-12-07 (+5d) | 2026-12-02 → 2026-12-07 (+5d) |  | 39.88d → 36.88d |  |
| 14 | **CRAH/CDU Galleries** | 2026-09-30 → 2026-10-01 (+1d) | 2027-02-05 → 2027-02-17 (+12d) |  |  |  |
| 2 | **Gallery 1502** | 2026-09-30 → 2026-10-01 (+1d) | 2027-01-25 → 2027-02-05 (+11d) |  |  |  |
| 4 | **Architectural** | 2026-09-30 → 2026-10-01 (+1d) | 2026-12-22 → 2027-01-06 (+15d) |  |  |  |
| DH.1500660 | DH 1500/Gallery 1502 // Seal concrete | 2026-10-02 → 2026-10-01 A (-1d) | 2026-10-05 → 2026-10-02 A (-3d) | 0% → 100% | 16.88d → none |  |
| DH.1500670 | DH 1500/Gallery 1502 // MEPF overhead layout | 2026-09-30 → 2026-10-14 (+14d) | 2026-10-06 → 2026-10-20 (+14d) |  | -1.12d → -10.12d |  |
| B120001.3209 | DH 1500/Gallery 1502 // Install Overhead Cable Ladder / 36" Cable Tray - TFO | 2026-10-07 → 2026-10-21 (+14d) | 2026-10-14 → 2026-10-27 (+13d) |  | 6.88d → -2.12d |  |
| DH.1500700 | DH 1500/Gallery 1502 // Frame walls | 2026-10-07 → 2026-10-21 (+14d) | 2026-10-15 → 2026-10-28 (+13d) |  | -1.12d → -10.12d |  |
| B120001.3210 | DH 1500/Gallery 1502 // Install Overhead HAC - TFO | 2026-10-15 → 2026-10-28 (+13d) | 2026-10-21 → 2026-11-03 (+13d) |  | 6.88d → -2.12d |  |
| DH.1500730 | DH 1500/Gallery 1502 // MEP rough in walls | 2026-10-16 → 2026-10-29 (+13d) | 2026-10-21 → 2026-11-03 (+13d) |  | 9.88d → 0.88d |  |
| DH.1500690 | DH 1500/Gallery 1502 // MEPF high overhead install | 2026-10-22 → 2026-11-04 (+13d) | 2026-11-04 → 2026-11-18 (+14d) |  | 6.88d → -2.12d |  |
| DH.1500740 | DH 1500/Gallery 1502 // In wall inspection | 2026-10-22 → 2026-11-04 (+13d) | 2026-10-22 → 2026-11-04 (+13d) |  | 9.88d → 0.88d |  |
| DH.1500720 | DH 1500/Gallery 1502 // Install Sheetrock Top Down | 2026-10-23 → 2026-11-05 (+13d) | 2026-10-30 → 2026-11-13 (+14d) |  | 9.88d → 0.88d |  |
| DH.1500750 | DH 1500/Gallery 1502 // Install Balance of Sheetrock on walls | 2026-11-05 → 2026-11-19 (+14d) | 2026-11-13 → 2026-11-27 (+14d) |  | 6.88d → -2.12d |  |
| F.1000A.1296 | DH 1500/Gallery 1502 // Rough-In Security | 2026-11-05 → 2026-11-19 (+14d) | 2026-11-06 → 2026-11-20 (+14d) |  | 80.88d → 71.88d |  |
| F.1000A.1565 | DH 1500/Gallery 1502 // BMS & EPMS Rough-In | 2026-11-05 → 2026-11-19 (+14d) | 2026-11-06 → 2026-11-20 (+14d) |  | 92.88d → 83.88d |  |
| F.1000A.1297 | DH 1500/Gallery 1502 // Pull & Test Security Cable | 2026-11-09 → 2026-11-23 (+14d) | 2026-11-12 → 2026-11-25 (+13d) |  | 80.88d → 71.88d |  |
| DH.1500770 | DH 1500/Gallery 1502 // Tape and finish walls | 2026-11-16 → 2026-11-30 (+14d) | 2026-11-25 → 2026-12-09 (+14d) |  | 6.88d → -2.12d |  |
| DH.1500710 | DH 1500/Gallery 1502 // Install wall door frames | 2026-11-27 → 2026-12-10 (+13d) | 2026-11-27 → 2026-12-10 (+13d) |  | 9.88d → 0.88d |  |
| DH.1500790 | DH 1500/Gallery 1502 // Prime and Paint walls | 2026-11-27 → 2026-12-10 (+13d) | 2026-12-02 → 2026-12-15 (+13d) |  | 6.88d → -2.12d |  |
| F.1000A.1298 | DH 1500/Gallery 1502 // Install Security Devices | 2026-11-30 → 2026-12-11 (+11d) | 2026-12-01 → 2026-12-14 (+13d) |  | 70.88d → 61.88d |  |
| DH.1500800 | DH 1500/Gallery 1502 // Touch up Walls and Fianl Paint | 2026-12-03 → 2026-12-16 (+13d) | 2026-12-09 → 2026-12-22 (+13d) |  | 6.88d → -2.12d |  |
| F.1000A.1299 | DH 1500/Gallery 1502 // Mount & Terminate Security Devices | 2026-12-03 → 2026-12-16 (+13d) | 2026-12-09 → 2026-12-22 (+13d) |  | 69.88d → 60.88d |  |
| DH.1500810 | DH 1500/Gallery 1502 // Install Trim and Devices | 2026-12-10 → 2026-12-23 (+13d) | 2026-12-11 → 2026-12-24 (+13d) |  | 6.88d → -2.12d |  |
| DH.160012157 | DH 1500/Gallery 1502 // Ready to Receive Equipment | 2026-12-11 → 2026-12-24 (+13d) | 2026-12-11 → 2026-12-24 (+13d) |  | 6.88d → -2.12d |  |
| F.1000A.1300 | DH 1500/Gallery 1502 // Test Security Devices | 2026-12-14 → 2026-12-28 (+14d) | 2026-12-15 → 2026-12-29 (+14d) |  | 67.88d → 58.88d |  |
| DH.1500820 | DH 1500/Gallery 1502 // Suffolk Pre Punch | 2026-12-16 → 2026-12-30 (+14d) | 2026-12-22 → 2027-01-06 (+15d) |  | 67.88d → 58.88d |  |
| 3 | **Equipment Line-Ups** | 2026-12-14 → 2026-12-28 (+14d) | 2027-01-25 → 2027-02-05 (+11d) |  |  |  |
| 1 | **A150** | 2026-12-14 → 2026-12-28 (+14d) | 2027-01-15 → 2027-01-29 (+14d) |  |  |  |
| DH.1500A-EQP-1 | Gallery 1502 - A150/Line-Ups // Set CRAH-DH1500- 01 | 2026-12-14 → 2026-12-28 (+14d) | 2026-12-14 → 2026-12-28 (+14d) |  | 6.88d → -2.12d |  |
| DH.1500A-EQP-3 | Gallery 1502 - A150/Line-Ups // Set CRAH-DH1500- 02 | 2026-12-14 → 2026-12-28 (+14d) | 2026-12-14 → 2026-12-28 (+14d) |  | 6.88d → -2.12d |  |
| DH.1500A-EQP-5 | Gallery 1502 - A150/Line-Ups // Set MOD-A150-01 | 2026-12-14 → 2026-12-28 (+14d) | 2026-12-14 → 2026-12-28 (+14d) |  | 53.88d → 44.88d |  |
| DH.1500A-EQP-6 | Gallery 1502 - A150/Line-Ups // Set MOD-A150-02 | 2026-12-14 → 2026-12-28 (+14d) | 2026-12-14 → 2026-12-28 (+14d) |  | 53.88d → 44.88d |  |
| DH.1500A-EQP-10 | Gallery 1502 - A150/Line-Ups // Pull Cable Tray Feed from MOD to CRAHU's | 2026-12-15 → 2026-12-29 (+14d) | 2026-12-21 → 2027-01-05 (+15d) |  | 59.88d → 50.88d |  |
| DH.1500A-EQP-12 | Gallery 1502 - A150/Line-Ups // Mount Electrial Gear for Chiller Controls | 2026-12-15 → 2026-12-29 (+14d) | 2026-12-29 → 2027-01-12 (+14d) |  | 53.88d → 44.88d |  |
| DH.1500A-EQP-7 | Gallery 1502 - A150/Line-Ups // Set CDU-DH1500- 01 | 2026-12-15 → 2026-12-29 (+14d) | 2026-12-15 → 2026-12-29 (+14d) |  | 53.88d → 44.88d |  |

| ID | Task | Start | Finish | Total float |
| --- | --- | --- | --- | --- |
| DH.1500A-EQP-9 | Gallery 1502 - A150/Line-Ups // Pull Feeder from SWD to MOD | 2026-12-15 → 2026-12-29 (+14d) | 2026-12-15 → 2026-12-29 (+14d) | 69.88d → 60.88d |
| DH.1500A-EQP-8 | Gallery 1502 - A150/Line-Ups // Set CDU-DH1500- 02 | 2026-12-16 → 2026-12-30 (+14d) | 2026-12-16 → 2026-12-30 (+14d) | 53.88d → 44.88d |
| DH.1500A-EQP-4 | Gallery 1502 - A150/Line-Ups // Condensate connections to Floor Drains | 2026-12-17 → 2026-12-31 (+14d) | 2026-12-31 → 2027-01-14 (+14d) | 53.88d → 44.88d |
| DH.1500A-EQP-11 | Gallery 1502 - A150/Line-Ups // Mechanical Connections to CRAHU Units | 2026-12-21 → 2027-01-05 (+15d) | 2027-01-05 → 2027-01-19 (+14d) | 51.88d → 42.88d |
| DH.1500A-EQP-17 | Gallery 1502 - A150/Line-Ups // Pull Feeder and Branch circuits to MIsc equipment and Chiller controls | 2026-12-21 → 2027-01-05 (+15d) | 2027-01-05 → 2027-01-19 (+14d) | 53.88d → 44.88d |
| DH.1500A-EQP-13 | Gallery 1502 - A150/Line-Ups // Pull Cable Tray Feed from MOD to CRAHU's | 2026-12-22 → 2027-01-06 (+15d) | 2026-12-29 → 2027-01-12 (+14d) | 59.88d → 50.88d |
| DH.1500A-EQP-16 | Gallery 1502 - A150/Line-Ups // Terminate CRAHU Electrical Connections | 2026-12-24 → 2027-01-08 (+15d) | 2026-12-31 → 2027-01-14 (+14d) | 59.88d → 50.88d |
| DH.1500A-EQP-19 | Gallery 1502 - A150/Line-Ups // Teminate all Misc Equipment and Chiller Controls | 2026-12-28 → 2027-01-11 (+14d) | 2027-01-11 → 2027-01-25 (+14d) | 53.88d → 44.88d |
| DH.1500A-EQP-14 | Gallery 1502 - A150/Line-Ups // Condensate connections to Floor Drains | 2026-12-29 → 2027-01-12 (+14d) | 2027-01-12 → 2027-01-26 (+14d) | 51.88d → 42.88d |
| DH.1500A-EQP-15 | Gallery 1502 - A150/Line-Ups // Terminate Mod Panels | 2026-12-30 → 2027-01-13 (+14d) | 2026-12-30 → 2027-01-13 (+14d) | 60.88d → 51.88d |
| DH.1500A-EQP-20 | Gallery 1502 - A150/Line-Ups // Electrical Gear FOD Inspection Pre-Start Up | 2027-01-12 → 2027-01-26 (+14d) | 2027-01-13 → 2027-01-27 (+14d) | 53.88d → 44.88d |
| DH.1500A-EQP-18 | Gallery 1502 - A150/Line-Ups // Mechanical Gear FOD Inspection Pre-Start Up | 2027-01-13 → 2027-01-27 (+14d) | 2027-01-15 → 2027-01-29 (+14d) | 51.88d → 42.88d |
| 2 | **B150** | 2026-12-14 → 2026-12-28 (+14d) | 2027-01-15 → 2027-01-29 (+14d) |  |
| DH.1500A-EQP-21 | Gallery 1502 - B150/Line-Ups // Set CRAH-DH1500- 03 | 2026-12-14 → 2026-12-28 (+14d) | 2026-12-14 → 2026-12-28 (+14d) | 6.88d → -2.12d |
| DH.1500A-EQP-23 | Gallery 1502 - B150/Line-Ups // Set CRAH-DH1500- 04 | 2026-12-14 → 2026-12-28 (+14d) | 2026-12-14 → 2026-12-28 (+14d) | 6.88d → -2.12d |
| DH.1500A-EQP-25 | Gallery 1502 - B150/Line-Ups // Set MOD-B150-01 | 2026-12-14 → 2026-12-28 (+14d) | 2026-12-14 → 2026-12-28 (+14d) | 53.88d → 44.88d |
| DH.1500A-EQP-26 | Gallery 1502 - B150/Line-Ups // Set MOD-B150-02 | 2026-12-14 → 2026-12-28 (+14d) | 2026-12-14 → 2026-12-28 (+14d) | 53.88d → 44.88d |
| DH.1500A-EQP-27 | Gallery 1502 - B150/Line-Ups // Set CDU-DH1500- 03 | 2026-12-15 → 2026-12-29 (+14d) | 2026-12-15 → 2026-12-29 (+14d) | 53.88d → 44.88d |
| DH.1500A-EQP-29 | Gallery 1502 - B150/Line-Ups // Pull Feeder from SWD to MOD | 2026-12-15 → 2026-12-29 (+14d) | 2026-12-15 → 2026-12-29 (+14d) | 69.88d → 60.88d |
| DH.1500A-EQP-30 | Gallery 1502 - B150/Line-Ups // Pull Cable Tray Feed from MOD to CRAHU's | 2026-12-15 → 2026-12-29 (+14d) | 2026-12-21 → 2027-01-05 (+15d) | 59.88d → 50.88d |
| DH.1500A-EQP-32 | Gallery 1502 - B150/Line-Ups // Mount Electrial Gear for Chiller Controls | 2026-12-15 → 2026-12-29 (+14d) | 2026-12-29 → 2027-01-12 (+14d) | 53.88d → 44.88d |
| DH.1500A-EQP-28 | Gallery 1502 - B150/Line-Ups // Set CDU-DH1500- 04 | 2026-12-16 → 2026-12-30 (+14d) | 2026-12-16 → 2026-12-30 (+14d) | 53.88d → 44.88d |
| DH.1500A-EQP-24 | Gallery 1502 - B150/Line-Ups // Condensate connections to Floor Drains | 2026-12-17 → 2026-12-31 (+14d) | 2026-12-31 → 2027-01-14 (+14d) | 53.88d → 44.88d |
| DH.1500A-EQP-31 | Gallery 1502 - B150/Line-Ups // Mechanical Connections to CRAHU Units | 2026-12-21 → 2027-01-05 (+15d) | 2027-01-05 → 2027-01-19 (+14d) | 51.88d → 42.88d |
| DH.1500A-EQP-37 | Gallery 1502 - B150/Line-Ups // Pull Feeder and Branch circuits to MIsc equipment and Chiller controls | 2026-12-21 → 2027-01-05 (+15d) | 2027-01-05 → 2027-01-19 (+14d) | 53.88d → 44.88d |
| DH.1500A-EQP-33 | Gallery 1502 - B150/Line-Ups // Pull Cable Tray Feed from MOD to CRAHU's | 2026-12-22 → 2027-01-06 (+15d) | 2026-12-29 → 2027-01-12 (+14d) | 59.88d → 50.88d |
| DH.1500A-EQP-36 | Gallery 1502 - B150/Line-Ups // Terminate CRAHU Electrical Connections | 2026-12-24 → 2027-01-08 (+15d) | 2026-12-31 → 2027-01-14 (+14d) | 59.88d → 50.88d |
| DH.1500A-EQP-39 | Gallery 1502 - B150/Line-Ups // Teminate all Misc Equipment and Chiller Controls | 2026-12-28 → 2027-01-11 (+14d) | 2027-01-11 → 2027-01-25 (+14d) | 53.88d → 44.88d |
| DH.1500A-EQP-34 | Gallery 1502 - B150/Line-Ups // Condensate connections to Floor Drains | 2026-12-29 → 2027-01-12 (+14d) | 2027-01-12 → 2027-01-26 (+14d) | 51.88d → 42.88d |
| DH.1500A-EQP-35 | Gallery 1502 - B150/Line-Ups // Terminate Mod Panels | 2026-12-30 → 2027-01-13 (+14d) | 2026-12-30 → 2027-01-13 (+14d) | 60.88d → 51.88d |
| DH.1500A-EQP-40 | Gallery 1502 - B150/Line-Ups // Electrical Gear FOD Inspection Pre-Start Up | 2027-01-12 → 2027-01-26 (+14d) | 2027-01-13 → 2027-01-27 (+14d) | 53.88d → 44.88d |
| DH.1500A-EQP-38 | Gallery 1502 - B150/Line-Ups // Mechanical Gear FOD Inspection Pre-Start Up | 2027-01-13 → 2027-01-27 (+14d) | 2027-01-15 → 2027-01-29 (+14d) | 51.88d → 42.88d |
| 3 | **C150** | 2026-12-14 → 2026-12-28 (+14d) | 2027-01-15 → 2027-01-29 (+14d) |  |
| DH.1500A-EQP-41 | Gallery 1502 - C150/Line-Ups // Set CRAH-DH1500- 05 | 2026-12-14 → 2026-12-28 (+14d) | 2026-12-14 → 2026-12-28 (+14d) | 6.88d → -2.12d |
| DH.1500A-EQP-43 | Gallery 1502 - C150/Line-Ups // Set CRAH-DH1500- 06 | 2026-12-14 → 2026-12-28 (+14d) | 2026-12-14 → 2026-12-28 (+14d) | 6.88d → -2.12d |
| DH.1500A-EQP-45 | Gallery 1502 - C150/Line-Ups // Set MOD-C150-01 | 2026-12-14 → 2026-12-28 (+14d) | 2026-12-14 → 2026-12-28 (+14d) | 53.88d → 44.88d |
| DH.1500A-EQP-46 | Gallery 1502 - C150/Line-Ups // Set MOD-C150-02 | 2026-12-14 → 2026-12-28 (+14d) | 2026-12-14 → 2026-12-28 (+14d) | 53.88d → 44.88d |
| DH.1500A-EQP-47 | Gallery 1502 - C150/Line-Ups // Set CDU-DH1500- 05 | 2026-12-15 → 2026-12-29 (+14d) | 2026-12-15 → 2026-12-29 (+14d) | 53.88d → 44.88d |
| DH.1500A-EQP-49 | Gallery 1502 - C150/Line-Ups // Pull Feeder from SWD to MOD | 2026-12-15 → 2026-12-29 (+14d) | 2026-12-15 → 2026-12-29 (+14d) | 69.88d → 60.88d |
| DH.1500A-EQP-50 | Gallery 1502 - C150/Line-Ups // Pull Cable Tray Feed from MOD to CRAHU's | 2026-12-15 → 2026-12-29 (+14d) | 2026-12-21 → 2027-01-05 (+15d) | 59.88d → 50.88d |
| DH.1500A-EQP-52 | Gallery 1502 - C150/Line-Ups // Mount Electrial Gear for Chiller Controls | 2026-12-15 → 2026-12-29 (+14d) | 2026-12-29 → 2027-01-12 (+14d) | 53.88d → 44.88d |
| DH.1500A-EQP-48 | Gallery 1502 - C150/Line-Ups // Set CDU-DH1500- 06 | 2026-12-16 → 2026-12-30 (+14d) | 2026-12-16 → 2026-12-30 (+14d) | 53.88d → 44.88d |
| DH.1500A-EQP-44 | Gallery 1502 - C150/Line-Ups // Condensate connections to Floor Drains | 2026-12-17 → 2026-12-31 (+14d) | 2026-12-31 → 2027-01-14 (+14d) | 53.88d → 44.88d |
| DH.1500A-EQP-51 | Gallery 1502 - C150/Line-Ups // Mechanical Connections to CRAHU Units | 2026-12-21 → 2027-01-05 (+15d) | 2027-01-05 → 2027-01-19 (+14d) | 51.88d → 42.88d |
| DH.1500A-EQP-57 | Gallery 1502 - C150/Line-Ups // Pull Feeder and Branch circuits to MIsc equipment and Chiller controls | 2026-12-21 → 2027-01-05 (+15d) | 2027-01-05 → 2027-01-19 (+14d) | 53.88d → 44.88d |
| DH.1500A-EQP-53 | Gallery 1502 - C150/Line-Ups // Pull Cable Tray Feed from MOD to CRAHU's | 2026-12-22 → 2027-01-06 (+15d) | 2026-12-29 → 2027-01-12 (+14d) | 59.88d → 50.88d |
| DH.1500A-EQP-56 | Gallery 1502 - C150/Line-Ups // Terminate CRAHU Electrical Connections | 2026-12-24 → 2027-01-08 (+15d) | 2026-12-31 → 2027-01-14 (+14d) | 59.88d → 50.88d |
| DH.1500A-EQP-59 | Gallery 1502 - C150/Line-Ups // Teminate all Misc Equipment and Chiller Controls | 2026-12-28 → 2027-01-11 (+14d) | 2027-01-11 → 2027-01-25 (+14d) | 53.88d → 44.88d |
| DH.1500A-EQP-54 | Gallery 1502 - C150/Line-Ups // Condensate connections to Floor Drains | 2026-12-29 → 2027-01-12 (+14d) | 2027-01-12 → 2027-01-26 (+14d) | 51.88d → 42.88d |
| DH.1500A-EQP-55 | Gallery 1502 - C150/Line-Ups // Terminate Mod Panels | 2026-12-30 → 2027-01-13 (+14d) | 2026-12-30 → 2027-01-13 (+14d) | 60.88d → 51.88d |
| DH.1500A-EQP-60 | Gallery 1502 - C150/Line-Ups // Electrical Gear FOD Inspection Pre-Start Up | 2027-01-12 → 2027-01-26 (+14d) | 2027-01-13 → 2027-01-27 (+14d) | 53.88d → 44.88d |
| DH.1500A-EQP-58 | Gallery 1502 - C150/Line-Ups // Mechanical Gear FOD Inspection Pre-Start Up | 2027-01-13 → 2027-01-27 (+14d) | 2027-01-15 → 2027-01-29 (+14d) | 51.88d → 42.88d |
| 4 | **D150** | 2026-12-15 → 2026-12-29 (+14d) | 2027-01-25 → 2027-02-05 (+11d) |  |
| DH.1500A-EQP-61 | Gallery 1502 - D150/Line-Ups // Set CRAH-DH1500- 07 | 2026-12-15 → 2026-12-29 (+14d) | 2026-12-15 → 2026-12-29 (+14d) | 6.88d → -2.12d |
| DH.1500A-EQP-63 | Gallery 1502 - D150/Line-Ups // Set CRAH-DH1500- 08 | 2026-12-15 → 2026-12-29 (+14d) | 2026-12-15 → 2026-12-29 (+14d) | 6.88d → -2.12d |
| DH.1500A-EQP-65 | Gallery 1502 - D150/Line-Ups // Set MOD-D150-01 | 2026-12-15 → 2026-12-29 (+14d) | 2026-12-15 → 2026-12-29 (+14d) | 52.88d → 43.88d |
| DH.1500A-EQP-66 | Gallery 1502 - D150/Line-Ups // Set MOD-D150-02 | 2026-12-15 → 2026-12-29 (+14d) | 2026-12-15 → 2026-12-29 (+14d) | 52.88d → 43.88d |
| DH.1500A-EQP-67 | Gallery 1502 - D150/Line-Ups // Set CDU-DH1500- 07 | 2026-12-16 → 2026-12-30 (+14d) | 2026-12-16 → 2026-12-30 (+14d) | 57.88d → 48.88d |
| DH.1500A-EQP-69 | Gallery 1502 - D150/Line-Ups // Pull Feeder from SWD to MOD | 2026-12-16 → 2026-12-30 (+14d) | 2026-12-16 → 2026-12-30 (+14d) | 68.88d → 59.88d |
| DH.1500A-EQP-70 | Gallery 1502 - D150/Line-Ups // Pull Cable Tray Feed from MOD to CRAHU's | 2026-12-16 → 2026-12-30 (+14d) | 2026-12-22 → 2027-01-06 (+15d) | 58.88d → 49.88d |
| DH.1500A-EQP-72 | Gallery 1502 - D150/Line-Ups // Mount Electrial Gear for Chiller Controls | 2026-12-16 → 2026-12-30 (+14d) | 2026-12-30 → 2027-01-13 (+14d) | 52.88d → 43.88d |
| DH.1500A-EQP-68 | Gallery 1502 - D150/Line-Ups // Set CDU-DH1500- 08 | 2026-12-17 → 2026-12-31 (+14d) | 2026-12-17 → 2026-12-31 (+14d) | 57.88d → 48.88d |
| DH.1500A-EQP-71 | Gallery 1502 - D150/Line-Ups // Mechanical Connections to CRAHU Units | 2026-12-22 → 2027-01-06 (+15d) | 2027-01-06 → 2027-01-20 (+14d) | 46.88d → 37.88d |
| DH.1500A-EQP-77 | Gallery 1502 - D150/Line-Ups // Pull Feeder and Branch circuits to MIsc equipment and Chiller controls | 2026-12-22 → 2027-01-06 (+15d) | 2027-01-06 → 2027-01-20 (+14d) | 52.88d → 43.88d |
| DH.1500A-EQP-73 | Gallery 1502 - D150/Line-Ups // Pull Cable Tray Feed from MOD to CRAHU's | 2026-12-23 → 2027-01-07 (+15d) | 2026-12-30 → 2027-01-13 (+14d) | 58.88d → 49.88d |
| DH.1500A-EQP-76 | Gallery 1502 - D150/Line-Ups // Terminate CRAHU Electrical Connections | 2026-12-28 → 2027-01-11 (+14d) | 2027-01-04 → 2027-01-15 (+11d) | 58.88d → 49.88d |
| DH.1500A-EQP-74 | Gallery 1502 - D150/Line-Ups // Condensate connections to Floor Drains | 2026-12-30 → 2027-01-13 (+14d) | 2027-01-13 → 2027-01-27 (+14d) | 50.88d → 41.88d |
| DH.1500A-EQP-75 | Gallery 1502 - D150/Line-Ups // Terminate Mod Panels | 2026-12-31 → 2027-01-14 (+14d) | 2026-12-31 → 2027-01-14 (+14d) | 59.88d → 50.88d |
| DH.1500A-EQP-79 | Gallery 1502 - D150/Line-Ups // Teminate all Misc Equipment and Chiller Controls | 2027-01-07 → 2027-01-21 (+14d) | 2027-01-21 → 2027-02-03 (+13d) | 46.88d → 37.88d |
| DH.1500A-EQP-78 | Gallery 1502 - D150/Line-Ups // Mechanical Gear FOD Inspection Pre-Start Up | 2027-01-14 → 2027-01-28 (+14d) | 2027-01-19 → 2027-02-01 (+13d) | 50.88d → 41.88d |

| ID | Task | Start | Finish | Total float |
| --- | --- | --- | --- | --- |
| DH.1500A-EQP-80 | Gallery 1502 - D150/Line-Ups // Electrical Gear FOD Inspection Pre-Start Up | 2027-01-22 → 2027-02-04 (+13d) | 2027-01-25 → 2027-02-05 (+11d) | 46.88d → 37.88d |
| 5 | **E150** | 2026-12-15 → 2026-12-29 (+14d) | 2027-01-19 → 2027-02-01 (+13d) |  |
| DH.1500A-EQP-81 | Gallery 1502 - E150/Line-Ups // Set CRAH-DH1500- 09 | 2026-12-15 → 2026-12-29 (+14d) | 2026-12-15 → 2026-12-29 (+14d) | 6.88d → -2.12d |
| DH.1500A-EQP-83 | Gallery 1502 - E150/Line-Ups // Set CRAH-DH1500- 10 | 2026-12-15 → 2026-12-29 (+14d) | 2026-12-15 → 2026-12-29 (+14d) | 6.88d → -2.12d |
| DH.1500A-EQP-85 | Gallery 1502 - E150/Line-Ups // Set MOD-E150-01 | 2026-12-15 → 2026-12-29 (+14d) | 2026-12-15 → 2026-12-29 (+14d) | 52.88d → 43.88d |
| DH.1500A-EQP-86 | Gallery 1502 - E150/Line-Ups // Set MOD-E150-02 | 2026-12-15 → 2026-12-29 (+14d) | 2026-12-15 → 2026-12-29 (+14d) | 52.88d → 43.88d |
| DH.1500A-EQP-87 | Gallery 1502 - E150/Line-Ups // Set CDU-DH1500- 09 | 2026-12-16 → 2026-12-30 (+14d) | 2026-12-16 → 2026-12-30 (+14d) | 52.88d → 43.88d |
| DH.1500A-EQP-89 | Gallery 1502 - E150/Line-Ups // Pull Feeder from SWD to MOD | 2026-12-16 → 2026-12-30 (+14d) | 2026-12-16 → 2026-12-30 (+14d) | 68.88d → 59.88d |
| DH.1500A-EQP-90 | Gallery 1502 - E150/Line-Ups // Pull Cable Tray Feed from MOD to CRAHU's | 2026-12-16 → 2026-12-30 (+14d) | 2026-12-22 → 2027-01-06 (+15d) | 58.88d → 49.88d |
| DH.1500A-EQP-92 | Gallery 1502 - E150/Line-Ups // Mount Electrial Gear for Chiller Controls | 2026-12-16 → 2026-12-30 (+14d) | 2026-12-30 → 2027-01-13 (+14d) | 52.88d → 43.88d |
| DH.1500A-EQP-88 | Gallery 1502 - E150/Line-Ups // Set CDU-DH1500- 10 | 2026-12-17 → 2026-12-31 (+14d) | 2026-12-17 → 2026-12-31 (+14d) | 52.88d → 43.88d |
| DH.1500A-EQP-84 | Gallery 1502 - E150/Line-Ups // Condensate connections to Floor Drains | 2026-12-18 → 2027-01-04 (+17d) | 2027-01-04 → 2027-01-15 (+11d) | 52.88d → 43.88d |
| DH.1500A-EQP-91 | Gallery 1502 - E150/Line-Ups // Mechanical Connections to CRAHU Units | 2026-12-22 → 2027-01-06 (+15d) | 2027-01-06 → 2027-01-20 (+14d) | 50.88d → 41.88d |
| DH.1500A-EQP-97 | Gallery 1502 - E150/Line-Ups // Pull Feeder and Branch circuits to MIsc equipment and Chiller controls | 2026-12-22 → 2027-01-06 (+15d) | 2027-01-06 → 2027-01-20 (+14d) | 52.88d → 43.88d |
| DH.1500A-EQP-93 | Gallery 1502 - E150/Line-Ups // Pull Cable Tray Feed from MOD to CRAHU's | 2026-12-23 → 2027-01-07 (+15d) | 2026-12-30 → 2027-01-13 (+14d) | 58.88d → 49.88d |
| DH.1500A-EQP-96 | Gallery 1502 - E150/Line-Ups // Terminate CRAHU Electrical Connections | 2026-12-28 → 2027-01-11 (+14d) | 2027-01-04 → 2027-01-15 (+11d) | 58.88d → 49.88d |
| DH.1500A-EQP-99 | Gallery 1502 - E150/Line-Ups // Teminate all Misc Equipment and Chiller Controls | 2026-12-29 → 2027-01-12 (+14d) | 2027-01-12 → 2027-01-26 (+14d) | 52.88d → 43.88d |
| DH.1500A-EQP-94 | Gallery 1502 - E150/Line-Ups // Condensate connections to Floor Drains | 2026-12-30 → 2027-01-13 (+14d) | 2027-01-13 → 2027-01-27 (+14d) | 50.88d → 41.88d |
| DH.1500A-EQP-95 | Gallery 1502 - E150/Line-Ups // Terminate Mod Panels | 2026-12-31 → 2027-01-14 (+14d) | 2026-12-31 → 2027-01-14 (+14d) | 59.88d → 50.88d |
| DH.1500A-EQP-100 | Gallery 1502 - E150/Line-Ups // Electrical Gear FOD Inspection Pre-Start Up | 2027-01-13 → 2027-01-27 (+14d) | 2027-01-14 → 2027-01-28 (+14d) | 52.88d → 43.88d |
| DH.1500A-EQP-98 | Gallery 1502 - E150/Line-Ups // Mechanical Gear FOD Inspection Pre-Start Up | 2027-01-14 → 2027-01-28 (+14d) | 2027-01-19 → 2027-02-01 (+13d) | 50.88d → 41.88d |
| 6 | **F150** | 2026-12-15 → 2026-12-29 (+14d) | 2027-01-19 → 2027-02-01 (+13d) |  |
| DH.1500A-EQP-101 | Gallery 1502 - F150/Line-Ups // Set CRAH-DH1500- 11 | 2026-12-15 → 2026-12-29 (+14d) | 2026-12-15 → 2026-12-29 (+14d) | 6.88d → -2.12d |
| DH.1500A-EQP-103 | Gallery 1502 - F150/Line-Ups // Set CRAH-DH1500- 12 | 2026-12-15 → 2026-12-29 (+14d) | 2026-12-15 → 2026-12-29 (+14d) | 6.88d → -2.12d |
| DH.1500A-EQP-105 | Gallery 1502 - F150/Line-Ups // Set MOD-F150-01 | 2026-12-15 → 2026-12-29 (+14d) | 2026-12-15 → 2026-12-29 (+14d) | 52.88d → 43.88d |
| DH.1500A-EQP-106 | Gallery 1502 - F150/Line-Ups // Set MOD-F150-02 | 2026-12-15 → 2026-12-29 (+14d) | 2026-12-15 → 2026-12-29 (+14d) | 52.88d → 43.88d |
| DH.1500A-EQP-107 | Gallery 1502 - F150/Line-Ups // Set CDU-DH1500- 11 | 2026-12-16 → 2026-12-30 (+14d) | 2026-12-16 → 2026-12-30 (+14d) | 52.88d → 43.88d |
| DH.1500A-EQP-109 | Gallery 1502 - F150/Line-Ups // Pull Feeder from SWD to MOD | 2026-12-16 → 2026-12-30 (+14d) | 2026-12-16 → 2026-12-30 (+14d) | 68.88d → 59.88d |
| DH.1500A-EQP-110 | Gallery 1502 - F150/Line-Ups // Pull Cable Tray Feed from MOD to CRAHU's | 2026-12-16 → 2026-12-30 (+14d) | 2026-12-22 → 2027-01-06 (+15d) | 58.88d → 49.88d |
| DH.1500A-EQP-112 | Gallery 1502 - F150/Line-Ups // Mount Electrial Gear for Chiller Controls | 2026-12-16 → 2026-12-30 (+14d) | 2026-12-30 → 2027-01-13 (+14d) | 52.88d → 43.88d |
| DH.1500A-EQP-108 | Gallery 1502 - F150/Line-Ups // Set CDU-DH1500- 12 | 2026-12-17 → 2026-12-31 (+14d) | 2026-12-17 → 2026-12-31 (+14d) | 52.88d → 43.88d |
| DH.1500A-EQP-104 | Gallery 1502 - F150/Line-Ups // Condensate connections to Floor Drains | 2026-12-18 → 2027-01-04 (+17d) | 2027-01-04 → 2027-01-15 (+11d) | 52.88d → 43.88d |
| DH.1500A-EQP-111 | Gallery 1502 - F150/Line-Ups // Mechanical Connections to CRAHU Units | 2026-12-22 → 2027-01-06 (+15d) | 2027-01-06 → 2027-01-20 (+14d) | 50.88d → 41.88d |
| DH.1500A-EQP-117 | Gallery 1502 - F150/Line-Ups // Pull Feeder and Branch circuits to MIsc equipment and Chiller controls | 2026-12-22 → 2027-01-06 (+15d) | 2027-01-06 → 2027-01-20 (+14d) | 52.88d → 43.88d |
| DH.1500A-EQP-113 | Gallery 1502 - F150/Line-Ups // Pull Cable Tray Feed from MOD to CRAHU's | 2026-12-23 → 2027-01-07 (+15d) | 2026-12-30 → 2027-01-13 (+14d) | 58.88d → 49.88d |
| DH.1500A-EQP-116 | Gallery 1502 - F150/Line-Ups // Terminate CRAHU Electrical Connections | 2026-12-28 → 2027-01-11 (+14d) | 2027-01-04 → 2027-01-15 (+11d) | 58.88d → 49.88d |
| DH.1500A-EQP-119 | Gallery 1502 - F150/Line-Ups // Teminate all Misc Equipment and Chiller Controls | 2026-12-29 → 2027-01-12 (+14d) | 2027-01-12 → 2027-01-26 (+14d) | 52.88d → 43.88d |
| DH.1500A-EQP-114 | Gallery 1502 - F150/Line-Ups // Condensate connections to Floor Drains | 2026-12-30 → 2027-01-13 (+14d) | 2027-01-13 → 2027-01-27 (+14d) | 50.88d → 41.88d |
| DH.1500A-EQP-115 | Gallery 1502 - F150/Line-Ups // Terminate Mod Panels | 2026-12-31 → 2027-01-14 (+14d) | 2026-12-31 → 2027-01-14 (+14d) | 59.88d → 50.88d |
| DH.1500A-EQP-120 | Gallery 1502 - F150/Line-Ups // Electrical Gear FOD Inspection Pre-Start Up | 2027-01-13 → 2027-01-27 (+14d) | 2027-01-14 → 2027-01-28 (+14d) | 52.88d → 43.88d |
| DH.1500A-EQP-118 | Gallery 1502 - F150/Line-Ups // Mechanical Gear FOD Inspection Pre-Start Up | 2027-01-14 → 2027-01-28 (+14d) | 2027-01-19 → 2027-02-01 (+13d) | 50.88d → 41.88d |
| 7 | **G150** | 2026-12-16 → 2026-12-30 (+14d) | 2027-01-20 → 2027-02-02 (+13d) |  |
| DH.1500A-EQP-121 | Gallery 1502 - G150/Line-Ups // Set CRAH-DH1500- 13 | 2026-12-16 → 2026-12-30 (+14d) | 2026-12-16 → 2026-12-30 (+14d) | 6.88d → -2.12d |
| DH.1500A-EQP-123 | Gallery 1502 - G150/Line-Ups // Set CRAH-DH1500- 14 | 2026-12-16 → 2026-12-30 (+14d) | 2026-12-16 → 2026-12-30 (+14d) | 6.88d → -2.12d |
| DH.1500A-EQP-125 | Gallery 1502 - G150/Line-Ups // Set MOD-G150-01 | 2026-12-16 → 2026-12-30 (+14d) | 2026-12-16 → 2026-12-30 (+14d) | 51.88d → 42.88d |
| DH.1500A-EQP-126 | Gallery 1502 - G150/Line-Ups // Set MOD-G150-02 | 2026-12-16 → 2026-12-30 (+14d) | 2026-12-16 → 2026-12-30 (+14d) | 51.88d → 42.88d |
| DH.1500A-EQP-127 | Gallery 1502 - G150/Line-Ups // Set CDU-DH1500- 13 | 2026-12-17 → 2026-12-31 (+14d) | 2026-12-17 → 2026-12-31 (+14d) | 51.88d → 42.88d |
| DH.1500A-EQP-129 | Gallery 1502 - G150/Line-Ups // Pull Feeder from SWD to MOD | 2026-12-17 → 2026-12-31 (+14d) | 2026-12-17 → 2026-12-31 (+14d) | 67.88d → 58.88d |
| DH.1500A-EQP-130 | Gallery 1502 - G150/Line-Ups // Pull Cable Tray Feed from MOD to CRAHU's | 2026-12-17 → 2026-12-31 (+14d) | 2026-12-23 → 2027-01-07 (+15d) | 57.88d → 48.88d |
| DH.1500A-EQP-132 | Gallery 1502 - G150/Line-Ups // Mount Electrial Gear for Chiller Controls | 2026-12-17 → 2026-12-31 (+14d) | 2026-12-31 → 2027-01-14 (+14d) | 51.88d → 42.88d |
| DH.1500A-EQP-128 | Gallery 1502 - G150/Line-Ups // Set CDU-DH1500- 14 | 2026-12-18 → 2027-01-04 (+17d) | 2026-12-18 → 2027-01-04 (+17d) | 51.88d → 42.88d |
| DH.1500A-EQP-124 | Gallery 1502 - G150/Line-Ups // Condensate connections to Floor Drains | 2026-12-21 → 2027-01-05 (+15d) | 2027-01-05 → 2027-01-19 (+14d) | 51.88d → 42.88d |
| DH.1500A-EQP-131 | Gallery 1502 - G150/Line-Ups // Mechanical Connections to CRAHU Units | 2026-12-23 → 2027-01-07 (+15d) | 2027-01-07 → 2027-01-21 (+14d) | 49.88d → 40.88d |
| DH.1500A-EQP-137 | Gallery 1502 - G150/Line-Ups // Pull Feeder and Branch circuits to MIsc equipment and Chiller controls | 2026-12-23 → 2027-01-07 (+15d) | 2027-01-07 → 2027-01-21 (+14d) | 51.88d → 42.88d |
| DH.1500A-EQP-133 | Gallery 1502 - G150/Line-Ups // Pull Cable Tray Feed from MOD to CRAHU's | 2026-12-24 → 2027-01-08 (+15d) | 2026-12-31 → 2027-01-14 (+14d) | 57.88d → 48.88d |
| DH.1500A-EQP-136 | Gallery 1502 - G150/Line-Ups // Terminate CRAHU Electrical Connections | 2026-12-29 → 2027-01-12 (+14d) | 2027-01-05 → 2027-01-19 (+14d) | 57.88d → 48.88d |
| DH.1500A-EQP-139 | Gallery 1502 - G150/Line-Ups // Teminate all Misc Equipment and Chiller Controls | 2026-12-30 → 2027-01-13 (+14d) | 2027-01-13 → 2027-01-27 (+14d) | 51.88d → 42.88d |
| DH.1500A-EQP-134 | Gallery 1502 - G150/Line-Ups // Condensate connections to Floor Drains | 2026-12-31 → 2027-01-14 (+14d) | 2027-01-14 → 2027-01-28 (+14d) | 49.88d → 40.88d |
| DH.1500A-EQP-135 | Gallery 1502 - G150/Line-Ups // Terminate Mod Panels | 2027-01-04 → 2027-01-15 (+11d) | 2027-01-04 → 2027-01-15 (+11d) | 58.88d → 49.88d |
| DH.1500A-EQP-140 | Gallery 1502 - G150/Line-Ups // Electrical Gear FOD Inspection Pre-Start Up | 2027-01-14 → 2027-01-28 (+14d) | 2027-01-15 → 2027-01-29 (+14d) | 51.88d → 42.88d |
| DH.1500A-EQP-138 | Gallery 1502 - G150/Line-Ups // Mechanical Gear FOD Inspection Pre-Start Up | 2027-01-15 → 2027-01-29 (+14d) | 2027-01-20 → 2027-02-02 (+13d) | 49.88d → 40.88d |
| 8 | **H150** | 2026-12-16 → 2026-12-30 (+14d) | 2027-01-20 → 2027-02-02 (+13d) |  |
| DH.1500A-EQP-141 | Gallery 1502 - H150/Line-Ups // Set CRAH-DH1500- 15 | 2026-12-16 → 2026-12-30 (+14d) | 2026-12-16 → 2026-12-30 (+14d) | 6.88d → -2.12d |
| DH.1500A-EQP-143 | Gallery 1502 - H150/Line-Ups // Set CRAH-DH1500- 16 | 2026-12-16 → 2026-12-30 (+14d) | 2026-12-16 → 2026-12-30 (+14d) | 6.88d → -2.12d |
| DH.1500A-EQP-145 | Gallery 1502 - H150/Line-Ups // Set MOD-H150-01 | 2026-12-16 → 2026-12-30 (+14d) | 2026-12-16 → 2026-12-30 (+14d) | 51.88d → 42.88d |
| DH.1500A-EQP-146 | Gallery 1502 - H150/Line-Ups // Set MOD-H150-02 | 2026-12-16 → 2026-12-30 (+14d) | 2026-12-16 → 2026-12-30 (+14d) | 51.88d → 42.88d |
| DH.1500A-EQP-147 | Gallery 1502 - H150/Line-Ups // Set CDU-DH1500- 15 | 2026-12-17 → 2026-12-31 (+14d) | 2026-12-17 → 2026-12-31 (+14d) | 51.88d → 42.88d |
| DH.1500A-EQP-149 | Gallery 1502 - H150/Line-Ups // Pull Feeder from SWD to MOD | 2026-12-17 → 2026-12-31 (+14d) | 2026-12-17 → 2026-12-31 (+14d) | 67.88d → 58.88d |
| DH.1500A-EQP-150 | Gallery 1502 - H150/Line-Ups // Pull Cable Tray Feed from MOD to CRAHU's | 2026-12-17 → 2026-12-31 (+14d) | 2026-12-23 → 2027-01-07 (+15d) | 57.88d → 48.88d |
| DH.1500A-EQP-152 | Gallery 1502 - H150/Line-Ups // Mount Electrial Gear for Chiller Controls | 2026-12-17 → 2026-12-31 (+14d) | 2026-12-31 → 2027-01-14 (+14d) | 51.88d → 42.88d |

| ID | Task | Start | Finish | Total float |
| --- | --- | --- | --- | --- |
| DH.1500A-EQP-148 | Gallery 1502 - H150/Line-Ups // Set CDU-DH1500- 16 | 2026-12-18 → 2027-01-04 (+17d) | 2026-12-18 → 2027-01-04 (+17d) | 51.88d → 42.88d |
| DH.1500A-EQP-144 | Gallery 1502 - H150/Line-Ups // Condensate connections to Floor Drains | 2026-12-21 → 2027-01-05 (+15d) | 2027-01-05 → 2027-01-19 (+14d) | 51.88d → 42.88d |
| DH.1500A-EQP-151 | Gallery 1502 - H150/Line-Ups // Mechanical Connections to CRAHU Units | 2026-12-23 → 2027-01-07 (+15d) | 2027-01-07 → 2027-01-21 (+14d) | 49.88d → 40.88d |
| DH.1500A-EQP-157 | Gallery 1502 - H150/Line-Ups // Pull Feeder and Branch circuits to MIsc equipment and Chiller controls | 2026-12-23 → 2027-01-07 (+15d) | 2027-01-07 → 2027-01-21 (+14d) | 51.88d → 42.88d |
| DH.1500A-EQP-153 | Gallery 1502 - H150/Line-Ups // Pull Cable Tray Feed from MOD to CRAHU's | 2026-12-24 → 2027-01-08 (+15d) | 2026-12-31 → 2027-01-14 (+14d) | 57.88d → 48.88d |
| DH.1500A-EQP-156 | Gallery 1502 - H150/Line-Ups // Terminate CRAHU Electrical Connections | 2026-12-29 → 2027-01-12 (+14d) | 2027-01-05 → 2027-01-19 (+14d) | 57.88d → 48.88d |
| DH.1500A-EQP-159 | Gallery 1502 - H150/Line-Ups // Teminate all Misc Equipment and Chiller Controls | 2026-12-30 → 2027-01-13 (+14d) | 2027-01-13 → 2027-01-27 (+14d) | 51.88d → 42.88d |
| DH.1500A-EQP-154 | Gallery 1502 - H150/Line-Ups // Condensate connections to Floor Drains | 2026-12-31 → 2027-01-14 (+14d) | 2027-01-14 → 2027-01-28 (+14d) | 49.88d → 40.88d |
| DH.1500A-EQP-155 | Gallery 1502 - H150/Line-Ups // Terminate Mod Panels | 2027-01-04 → 2027-01-15 (+11d) | 2027-01-04 → 2027-01-15 (+11d) | 58.88d → 49.88d |
| DH.1500A-EQP-160 | Gallery 1502 - H150/Line-Ups // Electrical Gear FOD Inspection Pre-Start Up | 2027-01-14 → 2027-01-28 (+14d) | 2027-01-15 → 2027-01-29 (+14d) | 51.88d → 42.88d |
| DH.1500A-EQP-158 | Gallery 1502 - H150/Line-Ups // Mechanical Gear FOD Inspection Pre-Start Up | 2027-01-15 → 2027-01-29 (+14d) | 2027-01-20 → 2027-02-02 (+13d) | 49.88d → 40.88d |
| 9 | **J150** | 2026-12-16 → 2026-12-30 (+14d) | 2027-01-20 → 2027-02-02 (+13d) |  |
| DH.1500A-EQP-161 | Gallery 1502 - J150/Line-Ups // Set CRAH-DH1500- 17 | 2026-12-16 → 2026-12-30 (+14d) | 2026-12-16 → 2026-12-30 (+14d) | 6.88d → -2.12d |
| DH.1500A-EQP-163 | Gallery 1502 - J150/Line-Ups // Set CRAH-DH1500- 18 | 2026-12-16 → 2026-12-30 (+14d) | 2026-12-16 → 2026-12-30 (+14d) | 6.88d → -2.12d |
| DH.1500A-EQP-165 | Gallery 1502 - J150/Line-Ups // Set MOD-J150-01 | 2026-12-16 → 2026-12-30 (+14d) | 2026-12-16 → 2026-12-30 (+14d) | 51.88d → 42.88d |
| DH.1500A-EQP-166 | Gallery 1502 - J150/Line-Ups // Set MOD-J150-02 | 2026-12-16 → 2026-12-30 (+14d) | 2026-12-16 → 2026-12-30 (+14d) | 51.88d → 42.88d |
| DH.1500A-EQP-167 | Gallery 1502 - J150/Line-Ups // Set CDU-DH1500- 17 | 2026-12-17 → 2026-12-31 (+14d) | 2026-12-17 → 2026-12-31 (+14d) | 51.88d → 42.88d |
| DH.1500A-EQP-169 | Gallery 1502 - J150/Line-Ups // Pull Feeder from SWD to MOD | 2026-12-17 → 2026-12-31 (+14d) | 2026-12-17 → 2026-12-31 (+14d) | 67.88d → 58.88d |
| DH.1500A-EQP-170 | Gallery 1502 - J150/Line-Ups // Pull Cable Tray Feed from MOD to CRAHU's | 2026-12-17 → 2026-12-31 (+14d) | 2026-12-23 → 2027-01-07 (+15d) | 57.88d → 48.88d |
| DH.1500A-EQP-172 | Gallery 1502 - J150/Line-Ups // Mount Electrial Gear for Chiller Controls | 2026-12-17 → 2026-12-31 (+14d) | 2026-12-31 → 2027-01-14 (+14d) | 51.88d → 42.88d |
| DH.1500A-EQP-168 | Gallery 1502 - J150/Line-Ups // Set CDU-DH1500- 18 | 2026-12-18 → 2027-01-04 (+17d) | 2026-12-18 → 2027-01-04 (+17d) | 51.88d → 42.88d |
| DH.1500A-EQP-164 | Gallery 1502 - J150/Line-Ups // Condensate connections to Floor Drains | 2026-12-21 → 2027-01-05 (+15d) | 2027-01-05 → 2027-01-19 (+14d) | 51.88d → 42.88d |
| DH.1500A-EQP-171 | Gallery 1502 - J150/Line-Ups // Mechanical Connections to CRAHU Units | 2026-12-23 → 2027-01-07 (+15d) | 2027-01-07 → 2027-01-21 (+14d) | 49.88d → 40.88d |
| DH.1500A-EQP-177 | Gallery 1502 - J150/Line-Ups // Pull Feeder and Branch circuits to MIsc equipment and Chiller controls | 2026-12-23 → 2027-01-07 (+15d) | 2027-01-07 → 2027-01-21 (+14d) | 51.88d → 42.88d |
| DH.1500A-EQP-173 | Gallery 1502 - J150/Line-Ups // Pull Cable Tray Feed from MOD to CRAHU's | 2026-12-24 → 2027-01-08 (+15d) | 2026-12-31 → 2027-01-14 (+14d) | 57.88d → 48.88d |
| DH.1500A-EQP-176 | Gallery 1502 - J150/Line-Ups // Terminate CRAHU Electrical Connections | 2026-12-29 → 2027-01-12 (+14d) | 2027-01-05 → 2027-01-19 (+14d) | 57.88d → 48.88d |
| DH.1500A-EQP-179 | Gallery 1502 - J150/Line-Ups // Teminate all Misc Equipment and Chiller Controls | 2026-12-30 → 2027-01-13 (+14d) | 2027-01-13 → 2027-01-27 (+14d) | 51.88d → 42.88d |
| DH.1500A-EQP-174 | Gallery 1502 - J150/Line-Ups // Condensate connections to Floor Drains | 2026-12-31 → 2027-01-14 (+14d) | 2027-01-14 → 2027-01-28 (+14d) | 49.88d → 40.88d |
| DH.1500A-EQP-175 | Gallery 1502 - J150/Line-Ups // Terminate Mod Panels | 2027-01-04 → 2027-01-15 (+11d) | 2027-01-04 → 2027-01-15 (+11d) | 58.88d → 49.88d |
| DH.1500A-EQP-180 | Gallery 1502 - J150/Line-Ups // Electrical Gear FOD Inspection Pre-Start Up | 2027-01-14 → 2027-01-28 (+14d) | 2027-01-15 → 2027-01-29 (+14d) | 51.88d → 42.88d |
| DH.1500A-EQP-178 | Gallery 1502 - J150/Line-Ups // Mechanical Gear FOD Inspection Pre-Start Up | 2027-01-15 → 2027-01-29 (+14d) | 2027-01-20 → 2027-02-02 (+13d) | 49.88d → 40.88d |
| 10 | **K150** | 2026-12-17 → 2026-12-31 (+14d) | 2027-01-21 → 2027-02-03 (+13d) |  |
| DH.1500A-EQP-181 | Gallery 1502 - K150/Line-Ups // Set CRAH-DH1500- 19 | 2026-12-17 → 2026-12-31 (+14d) | 2026-12-17 → 2026-12-31 (+14d) | 6.88d → -2.12d |
| DH.1500A-EQP-183 | Gallery 1502 - K150/Line-Ups // Set CRAH-DH1500- 20 | 2026-12-17 → 2026-12-31 (+14d) | 2026-12-17 → 2026-12-31 (+14d) | 6.88d → -2.12d |
| DH.1500A-EQP-185 | Gallery 1502 - K150/Line-Ups // Set MOD-K150-01 | 2026-12-17 → 2026-12-31 (+14d) | 2026-12-17 → 2026-12-31 (+14d) | 50.88d → 41.88d |
| DH.1500A-EQP-186 | Gallery 1502 - K150/Line-Ups // Set MOD-K150-02 | 2026-12-17 → 2026-12-31 (+14d) | 2026-12-17 → 2026-12-31 (+14d) | 50.88d → 41.88d |
| DH.1500A-EQP-187 | Gallery 1502 - K150/Line-Ups // Set CDU-DH1500- 19 | 2026-12-18 → 2027-01-04 (+17d) | 2026-12-18 → 2027-01-04 (+17d) | 55.88d → 46.88d |
| DH.1500A-EQP-189 | Gallery 1502 - K150/Line-Ups // Pull Feeder from SWD to MOD | 2026-12-18 → 2027-01-04 (+17d) | 2026-12-18 → 2027-01-04 (+17d) | 66.88d → 57.88d |
| DH.1500A-EQP-190 | Gallery 1502 - K150/Line-Ups // Pull Cable Tray Feed from MOD to CRAHU's | 2026-12-18 → 2027-01-04 (+17d) | 2026-12-24 → 2027-01-08 (+15d) | 56.88d → 47.88d |
| DH.1500A-EQP-192 | Gallery 1502 - K150/Line-Ups // Mount Electrial Gear for Chiller Controls | 2026-12-18 → 2027-01-04 (+17d) | 2027-01-04 → 2027-01-15 (+11d) | 50.88d → 41.88d |
| DH.1500A-EQP-188 | Gallery 1502 - K150/Line-Ups // Set CDU-DH1500- 20 | 2026-12-21 → 2027-01-05 (+15d) | 2026-12-21 → 2027-01-05 (+15d) | 55.88d → 46.88d |
| DH.1500A-EQP-191 | Gallery 1502 - K150/Line-Ups // Mechanical Connections to CRAHU Units | 2026-12-24 → 2027-01-08 (+15d) | 2027-01-08 → 2027-01-22 (+14d) | 48.88d → 39.88d |
| DH.1500A-EQP-197 | Gallery 1502 - K150/Line-Ups // Pull Feeder and Branch circuits to MIsc equipment and Chiller controls | 2026-12-24 → 2027-01-08 (+15d) | 2027-01-08 → 2027-01-22 (+14d) | 50.88d → 41.88d |
| DH.1500A-EQP-193 | Gallery 1502 - K150/Line-Ups // Pull Cable Tray Feed from MOD to CRAHU's | 2026-12-28 → 2027-01-11 (+14d) | 2027-01-04 → 2027-01-15 (+11d) | 56.88d → 47.88d |
| DH.1500A-EQP-196 | Gallery 1502 - K150/Line-Ups // Terminate CRAHU Electrical Connections | 2026-12-30 → 2027-01-13 (+14d) | 2027-01-06 → 2027-01-20 (+14d) | 56.88d → 47.88d |
| DH.1500A-EQP-199 | Gallery 1502 - K150/Line-Ups // Teminate all Misc Equipment and Chiller Controls | 2026-12-31 → 2027-01-14 (+14d) | 2027-01-14 → 2027-01-28 (+14d) | 50.88d → 41.88d |
| DH.1500A-EQP-194 | Gallery 1502 - K150/Line-Ups // Condensate connections to Floor Drains | 2027-01-04 → 2027-01-15 (+11d) | 2027-01-15 → 2027-01-29 (+14d) | 48.88d → 39.88d |
| DH.1500A-EQP-195 | Gallery 1502 - K150/Line-Ups // Terminate Mod Panels | 2027-01-05 → 2027-01-19 (+14d) | 2027-01-05 → 2027-01-19 (+14d) | 57.88d → 48.88d |
| DH.1500A-EQP-200 | Gallery 1502 - K150/Line-Ups // Electrical Gear FOD Inspection Pre-Start Up | 2027-01-15 → 2027-01-29 (+14d) | 2027-01-19 → 2027-02-01 (+13d) | 50.88d → 41.88d |
| DH.1500A-EQP-198 | Gallery 1502 - K150/Line-Ups // Mechanical Gear FOD Inspection Pre-Start Up | 2027-01-19 → 2027-02-01 (+13d) | 2027-01-21 → 2027-02-03 (+13d) | 48.88d → 39.88d |
| 11 | **R150** | 2026-12-17 → 2026-12-31 (+14d) | 2027-01-21 → 2027-02-03 (+13d) |  |
| DH.1500A-EQP-201 | Gallery 1502 - R150/Line-Ups // Set CRAH-DH1500- 21 | 2026-12-17 → 2026-12-31 (+14d) | 2026-12-17 → 2026-12-31 (+14d) | 6.88d → -2.12d |
| DH.1500A-EQP-203 | Gallery 1502 - R150/Line-Ups // Set CRAH-DH1500- 22 | 2026-12-17 → 2026-12-31 (+14d) | 2026-12-17 → 2026-12-31 (+14d) | 6.88d → -2.12d |
| DH.1500A-EQP-205 | Gallery 1502 - R150/Line-Ups // Set MOD-R150-01 | 2026-12-17 → 2026-12-31 (+14d) | 2026-12-17 → 2026-12-31 (+14d) | 8.88d → -0.12d |
| DH.1500A-EQP-206 | Gallery 1502 - R150/Line-Ups // Set MOD-R150-02 | 2026-12-17 → 2026-12-31 (+14d) | 2026-12-17 → 2026-12-31 (+14d) | 8.88d → -0.12d |
| DH.1500A-EQP-207 | Gallery 1502 - R150/Line-Ups // Set CDU-DH1500- 21 | 2026-12-18 → 2027-01-04 (+17d) | 2026-12-18 → 2027-01-04 (+17d) | 13.88d → 4.88d |
| DH.1500A-EQP-210 | Gallery 1502 - R150/Line-Ups // Pull Cable Tray Feed from MOD to CRAHU's | 2026-12-18 → 2027-01-04 (+17d) | 2026-12-24 → 2027-01-08 (+15d) | 10.88d → 1.88d |
| DH.1500A-EQP-212 | Gallery 1502 - R150/Line-Ups // Mount Electrial Gear for Chiller Controls | 2026-12-18 → 2027-01-04 (+17d) | 2027-01-04 → 2027-01-15 (+11d) | 8.88d → -0.12d |
| DH.1500A-EQP-208 | Gallery 1502 - R150/Line-Ups // Set CDU-DH1500- 22 | 2026-12-21 → 2027-01-05 (+15d) | 2026-12-21 → 2027-01-05 (+15d) | 13.88d → 4.88d |
| DH.1500A-EQP-221 | Gallery 1502 - R150/Line-Ups // Set SWD-R150 | 2026-12-22 → 2027-01-06 (+15d) | 2026-12-22 → 2027-01-06 (+15d) | 20.88d → 11.88d |
| DH.1500A-EQP-222 | Gallery 1502 - R150/Line-Ups // Set SWD-TIE-R150 | 2026-12-23 → 2027-01-07 (+15d) | 2026-12-23 → 2027-01-07 (+15d) | 20.88d → 11.88d |
| DH.1500A-EQP-209 | Gallery 1502 - R150/Line-Ups // Pull Feeder from SWD to MOD | 2026-12-24 → 2027-01-08 (+15d) | 2026-12-24 → 2027-01-08 (+15d) | 20.88d → 11.88d |
| DH.1500A-EQP-211 | Gallery 1502 - R150/Line-Ups // Mechanical Connections to CRAHU Units | 2026-12-24 → 2027-01-08 (+15d) | 2027-01-08 → 2027-01-22 (+14d) | 6.88d → -2.12d |
| DH.1500A-EQP-217 | Gallery 1502 - R150/Line-Ups // Pull Feeder and Branch circuits to MIsc equipment and Chiller controls | 2026-12-24 → 2027-01-08 (+15d) | 2027-01-08 → 2027-01-22 (+14d) | 8.88d → -0.12d |
| DH.1500A-EQP-213 | Gallery 1502 - R150/Line-Ups // Pull Cable Tray Feed from MOD to CRAHU's | 2026-12-28 → 2027-01-11 (+14d) | 2027-01-04 → 2027-01-15 (+11d) | 10.88d → 1.88d |
| DH.1500A-EQP-216 | Gallery 1502 - R150/Line-Ups // Terminate CRAHU Electrical Connections | 2026-12-30 → 2027-01-13 (+14d) | 2027-01-06 → 2027-01-20 (+14d) | 14.88d → 5.88d |
| DH.1500A-EQP-219 | Gallery 1502 - R150/Line-Ups // Teminate all Misc Equipment and Chiller Controls | 2026-12-31 → 2027-01-14 (+14d) | 2027-01-14 → 2027-01-28 (+14d) | 8.88d → -0.12d |
| DH.1500A-EQP-214 | Gallery 1502 - R150/Line-Ups // Condensate connections to Floor Drains | 2027-01-04 → 2027-01-15 (+11d) | 2027-01-15 → 2027-01-29 (+14d) | 6.88d → -2.12d |
| DH.1500A-EQP-215 | Gallery 1502 - R150/Line-Ups // Terminate Mod Panels | 2027-01-05 → 2027-01-19 (+14d) | 2027-01-05 → 2027-01-19 (+14d) | 15.88d → 6.88d |
| DH.1500A-EQP-220 | Gallery 1502 - R150/Line-Ups // Electrical Gear FOD Inspection Pre-Start Up | 2027-01-15 → 2027-01-29 (+14d) | 2027-01-19 → 2027-02-01 (+13d) | 8.88d → -0.12d |

| ID | Task | Start | Finish | Total float | Predecessors |
| --- | --- | --- | --- | --- | --- |
| DH.1500A-EQP-218 | Gallery 1502 - R150/Line-Ups // Mechanical Gear FOD Inspection Pre-Start Up | 2027-01-19 → 2027-02-01 (+13d) | 2027-01-21 → 2027-02-03 (+13d) | 6.88d → -2.12d |  |
| 12 | **Equipment Connections** | 2027-01-05 → 2027-01-19 (+14d) | 2027-01-14 → 2027-01-28 (+14d) |  |  |
| 1 | **CRAH** | 2027-01-05 → 2027-01-19 (+14d) | 2027-01-14 → 2027-01-28 (+14d) |  |  |
| DH1500.MG.A110.8687 | Gallery 1502 // DH 1500 / Elec Room // CRAH Duct Work Termination | 2027-01-05 → 2027-01-19 (+14d) | 2027-01-06 → 2027-01-20 (+14d) | 10.88d → 1.88d |  |
| DH1500.MG.A110.8686 | Gallery 1502 // DH 1500 / Elec Room // CRAH Chilled Water | 2027-01-07 → 2027-01-21 (+14d) | 2027-01-08 → 2027-01-22 (+14d) | 10.88d → 1.88d |  |
| DH1500.MG.A110.8684 | Gallery 1502 // DH 1500 / Elec Room // CRAH Power Connections | 2027-01-11 → 2027-01-25 (+14d) | 2027-01-12 → 2027-01-26 (+14d) | 10.88d → 1.88d |  |
| DH1500.MG.A110.8685 | Gallery 1502 // DH 1500 / Elec Room // CRAH LV Connections | 2027-01-13 → 2027-01-27 (+14d) | 2027-01-14 → 2027-01-28 (+14d) | 10.88d → 1.88d |  |
| 2 | **CDU** | 2027-01-05 → 2027-01-19 (+14d) | 2027-01-12 → 2027-01-26 (+14d) |  |  |
| DH1500.MG.A110.8690 | Gallery 1502 // DH 1500 / Elec Room // CDU Chilled Water Connections | 2027-01-05 → 2027-01-19 (+14d) | 2027-01-06 → 2027-01-20 (+14d) | 12.88d → 3.88d |  |
| DH1500.MG.A110.8688 | Gallery 1502 // DH 1500 /Elec Room // CDU Power Connections | 2027-01-07 → 2027-01-21 (+14d) | 2027-01-08 → 2027-01-22 (+14d) | 12.88d → 3.88d |  |
| DH1500.MG.A110.8689 | Gallery 1502 // DH 1500 / Elec Room // CDU Controls Connections | 2027-01-11 → 2027-01-25 (+14d) | 2027-01-12 → 2027-01-26 (+14d) | 12.88d → 3.88d |  |
| 3 | **MOD** | 2027-01-11 → 2027-01-25 (+14d) | 2027-01-14 → 2027-01-28 (+14d) |  |  |
| DH1500.MG.A110.8691 | Gallery 1502 // DH 1500 / Elec Room // MOD Power Connections | 2027-01-11 → 2027-01-25 (+14d) | 2027-01-12 → 2027-01-26 (+14d) | 10.88d → 1.88d |  |
| DH1500.MG.A110.8692 | Gallery 1502 // DH 1500 / Elec Room // MOD LV Connections | 2027-01-13 → 2027-01-27 (+14d) | 2027-01-14 → 2027-01-28 (+14d) | 10.88d → 1.88d |  |
| 4 | **Gallery 1503** | 2026-09-30 → 2026-10-14 (+14d) | 2027-02-05 → 2027-02-17 (+12d) |  |  |
| 1 | **Architectural** | 2026-09-30 → 2026-10-14 (+14d) | 2027-01-04 → 2027-01-13 (+9d) |  |  |
| DH.15001000 | DH 1500/Gallery 1503 // Seal concrete | 2026-10-02 → 2026-10-14 (+12d) | 2026-10-08 → 2026-10-20 (+12d) | 13.88d → 6.88d |  |
| DH.15001010 | DH 1500/Gallery 1503 // MEPF overhead layout | 2026-09-30 → 2026-10-14 (+14d) | 2026-10-06 → 2026-10-20 (+14d) | -4.12d → -11.12d |  |
| B120001.3211 | DH 1500/Gallery 1503 // Install Overhead Cable Ladder / 36" Cable Tray - TFO | 2026-10-07 → 2026-10-21 (+14d) | 2026-10-14 → 2026-10-27 (+13d) | -4.12d → -11.12d |  |
| B120001.3212 | DH 1500/Gallery 1503 // Install Overhead HAC - TFO | 2026-10-07 → 2026-10-21 (+14d) | 2026-10-14 → 2026-10-27 (+13d) | -4.12d → -11.12d |  |
| DH.15001030 | DH 1500/Gallery 1503 // MEPF high overhead install | 2026-10-15 → 2026-10-28 (+13d) | 2026-10-28 → 2026-11-10 (+13d) | -4.12d → -11.12d |  |
| DH.15001040 | DH 1500/Gallery 1503 // Frame walls | 2026-10-16 → 2026-10-29 (+13d) | 2026-10-23 → 2026-11-05 (+13d) | -1.12d → -10.12d |  |
| DH.15001070 | DH 1500/Gallery 1503 // MEP rough in walls | 2026-10-26 → 2026-11-06 (+11d) | 2026-10-29 → 2026-11-12 (+14d) | -1.12d → -10.12d |  |
| F.1000A.1301 | DH 1500/Gallery 1503 // Rough-In Security | 2026-10-29 → 2026-11-09 (+11d) | 2026-10-30 → 2026-11-10 (+11d) | -4.12d → -11.12d | DH.15001030 → DH.15001030 FF |
| F.1000A.1575 | DH 1500/Gallery 1503 // BMS & EPMS Rough-In | 2026-10-29 → 2026-11-09 (+11d) | 2026-10-30 → 2026-11-10 (+11d) | 97.88d → 90.88d |  |
| F.1000A.1302 | DH 1500/Gallery 1503 // Pull & Test Security Cable | 2026-11-02 → 2026-11-12 (+10d) | 2026-11-04 → 2026-11-16 (+12d) | -4.12d → -11.12d |  |
| DH.15001080 | DH 1500/Gallery 1503 // In wall inspection | 2026-10-30 → 2026-11-13 (+14d) | 2026-10-30 → 2026-11-13 (+14d) | -1.12d → -10.12d |  |
| DH.15001050 | DH 1500/Gallery 1503 // Install Sheetrock Top Down | 2026-11-05 → 2026-11-17 (+12d) | 2026-11-13 → 2026-11-24 (+11d) | -4.12d → -11.12d |  |
| DH.15001090 | DH 1500/Gallery 1503 // Install Balance of Sheetrock on walls | 2026-11-16 → 2026-11-25 (+9d) | 2026-11-23 → 2026-12-03 (+10d) | -4.12d → -11.12d |  |
| DH.15001100 | DH 1500/Gallery 1503 // Tape and finish walls | 2026-11-24 → 2026-12-04 (+10d) | 2026-12-04 → 2026-12-15 (+11d) | -4.12d → -11.12d |  |
| DH.15001060 | DH 1500/Gallery 1503 // Install wall door frames | 2026-12-07 → 2026-12-16 (+9d) | 2026-12-08 → 2026-12-17 (+9d) | -2.12d → -9.12d |  |
| DH.15001110 | DH 1500/Gallery 1503 // Prime and Paint walls | 2026-12-07 → 2026-12-16 (+9d) | 2026-12-10 → 2026-12-21 (+11d) | -4.12d → -11.12d |  |
| F.1000A.1303 | DH 1500/Gallery 1503 // Install Security Devices | 2026-12-09 → 2026-12-18 (+9d) | 2026-12-10 → 2026-12-21 (+11d) | 63.88d → 56.88d |  |
| DH.15001120 | DH 1500/Gallery 1503 // Touch up Walls and Fianl Paint | 2026-12-11 → 2026-12-22 (+11d) | 2026-12-17 → 2026-12-29 (+12d) | -4.12d → -11.12d |  |
| F.1000A.1304 | DH 1500/Gallery 1503 // Mount & Terminate Security Devices | 2026-12-11 → 2026-12-22 (+11d) | 2026-12-17 → 2026-12-29 (+12d) | 63.88d → 56.88d |  |
| DH.15001130 | DH 1500/Gallery 1503 // Install Trim and Devices | 2026-12-18 → 2026-12-30 (+12d) | 2026-12-21 → 2026-12-31 (+10d) | -4.12d → -11.12d |  |
| DH.160012158 | DH 1500/Gallery 1503 // Ready to Receive Equipment | 2026-12-21 → 2026-12-31 (+10d) | 2026-12-21 → 2026-12-31 (+10d) | -4.12d → -11.12d |  |
| F.1000A.1305 | DH 1500/Gallery 1503 // Test Security Devices | 2026-12-23 → 2027-01-05 (+13d) | 2026-12-24 → 2027-01-06 (+13d) | 60.88d → 53.88d |  |
| DH.15001140 | DH 1500/Gallery 1503 // Suffolk Pre Punch | 2026-12-28 → 2027-01-07 (+10d) | 2027-01-04 → 2027-01-13 (+9d) | 60.88d → 53.88d |  |
| 3 | **Equipment Line-Ups** | 2026-12-22 → 2027-01-04 (+13d) | 2027-02-05 → 2027-02-17 (+12d) |  |  |
| 1 | **A150** | 2026-12-22 → 2027-01-04 (+13d) | 2027-01-26 → 2027-02-04 (+9d) |  |  |
| DH.1500B-EQP-1 | Gallery 1503 - A150/Line-Ups // Set CRAH-DH1500- 23 | 2026-12-22 → 2027-01-04 (+13d) | 2026-12-22 → 2027-01-04 (+13d) | -4.12d → -11.12d |  |
| DH.1500B-EQP-4 | Gallery 1503 - A150/Line-Ups // Set CRAH-DH1500- 24 | 2026-12-22 → 2027-01-04 (+13d) | 2026-12-22 → 2027-01-04 (+13d) | -4.12d → -11.12d |  |
| DH.1500B-EQP-10 | Gallery 1503 - A150/Line-Ups // Mount Electrial Gear for Chiller Controls | 2026-12-23 → 2027-01-05 (+13d) | 2027-01-07 → 2027-01-19 (+12d) | 47.88d → 40.88d | Gallery 1503 - A150/Line-Ups // Set MOD A140-02 (Does No apply) → DH.1500B-EQP-4 |
| DH.1500B-EQP-14 | Gallery 1503 - A150/Line-Ups // Terminate Electrical Connections - CRAHU | 2026-12-29 → 2027-01-05 (+7d) | 2026-12-31 → 2027-01-07 (+7d) | 59.88d → 55.88d | Gallery 1503 - A150/Line-Ups // Pull Cable Tray Feed from MOD to CRAHU's → DH.1500B-EQP-1 |
| DH.1500B-EQP-199 | Gallery 1503 - A150/Line-Ups // Set CDU-DH1500-23 | 2026-12-23 → 2027-01-05 (+13d) | 2026-12-23 → 2027-01-05 (+13d) | 61.88d → 43.88d | Gallery 1503 - A150/Line-Ups // Set MOD A140-02 (Does No apply) → DH.1500B-EQP-4 |
| DH.1500B-EQP-200 | Gallery 1503 - A150/Line-Ups // Set CDU-DH1500-24 | 2026-12-24 → 2027-01-05 (+12d) | 2026-12-24 → 2027-01-05 (+12d) | 61.88d → 43.88d | DH.1500B-EQP-199 → DH.1500B-EQP-4 |
| DH.1500B-EQP-3 | Gallery 1503 - A150/Line-Ups // Condensate connections to Floor Drains | 2026-12-23 → 2027-01-05 (+13d) | 2027-01-07 → 2027-01-19 (+12d) | 49.88d → 42.88d |  |
| DH.1500B-EQP-15 | Gallery 1503 - A150/Line-Ups // Pull Feeder and Branch circuits to MIsc equipment and Chiller controls | 2026-12-30 → 2027-01-11 (+12d) | 2027-01-13 → 2027-01-25 (+12d) | 47.88d → 40.88d | DH.1500B-EQP-10 SS+4d → DH.1500B-EQP-199, DH.1500B-EQP-200, DH.1500B-EQP-10 SS+4d |
| DH.1500B-EQP-9 | Gallery 1503 - A150/Line-Ups // Mechanical Connections to CRAHU Units | 2026-12-30 → 2027-01-11 (+12d) | 2027-01-06 → 2027-01-15 (+9d) | 45.88d → 38.88d |  |
| DH.1500B-EQP-17 | Gallery 1503 - A150/Line-Ups // Teminate all Misc Equipment and Chiller Controls | 2027-01-06 → 2027-01-15 (+9d) | 2027-01-20 → 2027-01-29 (+9d) | 47.88d → 40.88d |  |
| DH.1500B-EQP-12 | Gallery 1503 - A150/Line-Ups // Condensate connections to Floor Drains | 2027-01-07 → 2027-01-19 (+12d) | 2027-01-21 → 2027-02-01 (+11d) | 45.88d → 38.88d |  |
| DH.1500B-EQP-18 | Gallery 1503 - A150/Line-Ups // Electrical Gear FOD Inspection Pre-Start Up | 2027-01-21 → 2027-02-01 (+11d) | 2027-01-22 → 2027-02-02 (+11d) | 47.88d → 40.88d | Gallery 1503 - A150/Line-Ups // Terminate MOD Panels, DH.1500B-EQP-17, DH.1500B-EQP-14 → DH.1500B-EQP-14, DH.1500B-EQP-17 |
| DH.1500B-EQP-16 | Gallery 1503 - A150/Line-Ups // Mechanical Gear FOD Inspection Pre-Start Up | 2027-01-22 → 2027-02-02 (+11d) | 2027-01-26 → 2027-02-04 (+9d) | 45.88d → 38.88d |  |
| 2 | **B150** | 2026-12-22 → 2027-01-04 (+13d) | 2027-02-02 → 2027-02-11 (+9d) |  |  |
| DH.1500B-EQP-19 | Gallery 1503 - B150/Line-Ups // Set CRAH-DH1500- 25 | 2026-12-22 → 2027-01-04 (+13d) | 2026-12-22 → 2027-01-04 (+13d) | -4.12d → -11.12d |  |
| DH.1500B-EQP-22 | Gallery 1503 - B150/Line-Ups // Set CRAH-DH1500- 26 | 2026-12-22 → 2027-01-04 (+13d) | 2026-12-22 → 2027-01-04 (+13d) | -4.12d → -11.12d |  |
| DH.1500B-EQP-201 | Gallery 1503 - B150/Line-Ups // Set CDU-DH1500-25 | 2026-12-23 → 2027-01-05 (+13d) | 2026-12-23 → 2027-01-05 (+13d) | 61.88d → 43.88d | Gallery 1503 - B150/Line-Ups // Set MOD B140-02 (Does No apply) → DH.1500B-EQP-22 |
| DH.1500B-EQP-202 | Gallery 1503 - B150/Line-Ups // Set CDU-DH1500-26 | 2026-12-24 → 2027-01-05 (+12d) | 2026-12-24 → 2027-01-05 (+12d) | 61.88d → 43.88d | DH.1500B-EQP-201, DH.1500B-EQP-201 FF → DH.1500B-EQP-22 |
| DH.1500B-EQP-28 | Gallery 1503 - B150/Line-Ups // Mount Electrial Gear for Chiller Controls | 2026-12-23 → 2027-01-05 (+13d) | 2027-01-07 → 2027-01-19 (+12d) | 47.88d → 40.88d | Gallery 1503 - B150/Line-Ups // Set MOD B140-02 (Does No apply) → DH.1500B-EQP-22 |
| DH.1500B-EQP-32 | Gallery 1503 - B150/Line-Ups // Terminate CRAHU Electrical Connections |  |  |  | Gallery 1503 - B150/Line-Ups // Pull Cable Tray Feed from MOD to CRAHU's, Gallery 1503 - B150/Line-Ups // Pull Cable Tray Feed from MOD to CRAHU's SS+2d → DH.1500B-EQP-19 |
| DH.1500B-EQP-20 | Gallery 1503 - B150/Line-Ups // Connect CRAH units | 2026-12-30 → 2027-01-11 (+12d) | 2027-01-13 → 2027-01-25 (+12d) | 40.88d → 33.88d |  |
| DH.1500B-EQP-27 | Gallery 1503 - B150/Line-Ups // Mechanical Connections to CRAHU Units | 2026-12-30 → 2027-01-11 (+12d) | 2027-01-13 → 2027-01-25 (+12d) | 45.88d → 38.88d |  |
| DH.1500B-EQP-33 | Gallery 1503 - B150/Line-Ups // Pull Feeder and Branch circuits to MIsc equipment and Chiller controls | 2026-12-30 → 2027-01-11 (+12d) | 2027-01-13 → 2027-01-25 (+12d) | 47.88d → 40.88d | DH.1500B-EQP-28 SS+4d → DH.1500B-EQP-202, DH.1500B-EQP-201, DH.1500B-EQP-28 SS+4d |
| DH.1500B-EQP-35 | Gallery 1503 - B150/Line-Ups // Teminate all Misc Equipment and Chiller Controls | 2027-01-06 → 2027-01-15 (+9d) | 2027-01-20 → 2027-01-29 (+9d) | 47.88d → 40.88d |  |
| DH.1500B-EQP-21 | Gallery 1503 - B150/Line-Ups // Condensate connections to Floor Drains | 2027-01-07 → 2027-01-19 (+12d) | 2027-01-21 → 2027-02-01 (+11d) | 40.88d → 33.88d |  |
| DH.1500B-EQP-30 | Gallery 1503 - B150/Line-Ups // Condensate connections to Floor Drains | 2027-01-14 → 2027-01-26 (+12d) | 2027-01-28 → 2027-02-08 (+11d) | 40.88d → 33.88d |  |
| DH.1500B-EQP-36 | Gallery 1503 - B150/Line-Ups // Electrical Gear FOD Inspection Pre-Start Up | 2027-01-21 → 2027-02-01 (+11d) | 2027-01-22 → 2027-02-02 (+11d) | 47.88d → 40.88d | Gallery 1503 - B150/Line-Ups // Terminat Mod Panels, DH.1500B-EQP-35, DH.1500B-EQP-32 → DH.1500B-EQP-32, DH.1500B-EQP-35 |
| DH.1500B-EQP-34 | Gallery 1503 - B150/Line-Ups // Mechanical Gear FOD Inspection Pre-Start Up | 2027-01-29 → 2027-02-09 (+11d) | 2027-02-02 → 2027-02-11 (+9d) | 40.88d → 33.88d |  |
| 3 | **C150** | 2026-12-22 → 2027-01-04 (+13d) | 2027-02-02 → 2027-02-11 (+9d) |  |  |

| ID | Task | Start | Finish | Total float | Predecessors |
| --- | --- | --- | --- | --- | --- |
| DH.1500B-EQP-37 | Gallery 1503 - C150/Line-Ups // Set CRAH-DH1500- 27 | 2026-12-22 → 2027-01-04 (+13d) | 2026-12-22 → 2027-01-04 (+13d) | -4.12d → -11.12d |  |
| DH.1500B-EQP-40 | Gallery 1503 - C150/Line-Ups // Set CRAH-DH1500- 28 | 2026-12-22 → 2027-01-04 (+13d) | 2026-12-22 → 2027-01-04 (+13d) | -4.12d → -11.12d |  |
| DH.1500B-EQP-203 | Gallery 1503 - C150/Line-Ups // Set CDU-DH1500-27 | 2026-12-23 → 2027-01-05 (+13d) | 2026-12-23 → 2027-01-05 (+13d) | 61.88d → 43.88d | Gallery 1503 - C150/Line-Ups // Set MOD C140-02 (Does No apply) → DH.1500B-EQP-40 |
| DH.1500B-EQP-204 | Gallery 1503 - C150/Line-Ups // Set CDU-DH1500-28 | 2026-12-24 → 2027-01-05 (+12d) | 2026-12-24 → 2027-01-05 (+12d) | 61.88d → 43.88d | DH.1500B-EQP-203, DH.1500B-EQP-203 FF → DH.1500B-EQP-40 |
| DH.1500B-EQP-46 | Gallery 1503 - C150/Line-Ups // Mount Electrial Gear for Chiller Controls | 2026-12-23 → 2027-01-05 (+13d) | 2027-01-07 → 2027-01-19 (+12d) | 47.88d → 40.88d | Gallery 1503 - C150/Line-Ups // Set MOD C140-02 (Does No apply) → DH.1500B-EQP-40 |
| DH.1500B-EQP-50 | Gallery 1503 - C150/Line-Ups // Terminate CRAHU Electrical Connections |  |  |  | Gallery 1503 - C150/Line-Ups // Pull Cable Tray Feed from MOD to CRAHU's, Gallery 1503 - C150/Line-Ups // Pull Cable Tray Feed from MOD to CRAHU's SS+2d → DH.1500B-EQP-37 |
| DH.1500B-EQP-38 | Gallery 1503 - C150/Line-Ups // Connect CRAH units | 2026-12-30 → 2027-01-11 (+12d) | 2027-01-13 → 2027-01-25 (+12d) | 40.88d → 33.88d |  |
| DH.1500B-EQP-45 | Gallery 1503 - C150/Line-Ups // Mechanical Connections to CRAHU Units | 2026-12-30 → 2027-01-11 (+12d) | 2027-01-13 → 2027-01-25 (+12d) | 45.88d → 38.88d |  |
| DH.1500B-EQP-51 | Gallery 1503 - C150/Line-Ups // Pull Feeder and Branch circuits to MIsc equipment and Chiller controls | 2026-12-30 → 2027-01-11 (+12d) | 2027-01-13 → 2027-01-25 (+12d) | 47.88d → 40.88d | DH.1500B-EQP-46 SS+4d → DH.1500B-EQP-204, DH.1500B-EQP-203, DH.1500B-EQP-46 SS+4d |
| DH.1500B-EQP-53 | Gallery 1503 - C150/Line-Ups // Teminate all Misc Equipment and Chiller Controls | 2027-01-06 → 2027-01-15 (+9d) | 2027-01-20 → 2027-01-29 (+9d) | 47.88d → 40.88d |  |
| DH.1500B-EQP-39 | Gallery 1503 - C150/Line-Ups // Condensate connections to Floor Drains | 2027-01-07 → 2027-01-19 (+12d) | 2027-01-21 → 2027-02-01 (+11d) | 40.88d → 33.88d |  |
| DH.1500B-EQP-48 | Gallery 1503 - C150/Line-Ups // Condensate connections to Floor Drains | 2027-01-14 → 2027-01-26 (+12d) | 2027-01-28 → 2027-02-08 (+11d) | 40.88d → 33.88d |  |
| DH.1500B-EQP-54 | Gallery 1503 - C150/Line-Ups // Electrical Gear FOD Inspection Pre-Start Up | 2027-01-21 → 2027-02-01 (+11d) | 2027-01-22 → 2027-02-02 (+11d) | 47.88d → 40.88d | Gallery 1503 - C150/Line-Ups // Terminat Mod Panels, DH.1500B-EQP-53, DH.1500B-EQP-50 → DH.1500B-EQP-50, DH.1500B-EQP-53 |
| DH.1500B-EQP-52 | Gallery 1503 - C150/Line-Ups // Mechanical Gear FOD Inspection Pre-Start Up | 2027-01-29 → 2027-02-09 (+11d) | 2027-02-02 → 2027-02-11 (+9d) | 40.88d → 33.88d |  |
| 4 | **D150** | 2026-12-23 → 2027-01-05 (+13d) | 2027-02-03 → 2027-02-12 (+9d) |  |  |
| DH.1500B-EQP-55 | Gallery 1503 - D150/Line-Ups // Set CRAH-DH1500- 29 | 2026-12-23 → 2027-01-05 (+13d) | 2026-12-23 → 2027-01-05 (+13d) | -4.12d → -11.12d |  |
| DH.1500B-EQP-58 | Gallery 1503 - D150/Line-Ups // Set CRAH-DH1500-30 | 2026-12-23 → 2027-01-05 (+13d) | 2026-12-23 → 2027-01-05 (+13d) | -4.12d → -11.12d |  |
| DH.1500B-EQP-205 | Gallery 1503 - D150/Line-Ups // Set CDU-DH1500-29 | 2026-12-24 → 2027-01-06 (+13d) | 2026-12-24 → 2027-01-06 (+13d) | 60.88d → 42.88d | Gallery 1503 - D150/Line-Ups // Set MOD D140-02 (Does No apply) → DH.1500B-EQP-58 |
| DH.1500B-EQP-206 | Gallery 1503 - D150/Line-Ups // Set CDU-DH1500-30 | 2026-12-28 → 2027-01-06 (+9d) | 2026-12-28 → 2027-01-06 (+9d) | 60.88d → 42.88d | DH.1500B-EQP-205 → DH.1500B-EQP-58 |
| DH.1500B-EQP-64 | Gallery 1503 - D150/Line-Ups // Mount Electrial Gear for Chiller Controls | 2026-12-24 → 2027-01-06 (+13d) | 2027-01-08 → 2027-01-20 (+12d) | 46.88d → 39.88d | Gallery 1503 - D150/Line-Ups // Set MOD D140-02 (Does No apply) → DH.1500B-EQP-58 |
| DH.1500B-EQP-68 | Gallery 1503 - D150/Line-Ups // Terminate CRAHU Electrical Connections |  |  |  | Gallery 1503 - D150/Line-Ups // Pull Cable Tray Feed from MOD to CRAHU's, Gallery 1503 - D150/Line-Ups // Pull Cable Tray Feed from MOD to CRAHU's SS+2d → DH.1500B-EQP-55 |
| DH.1500B-EQP-56 | Gallery 1503 - D150/Line-Ups // Connect CRAH units | 2026-12-31 → 2027-01-12 (+12d) | 2027-01-14 → 2027-01-26 (+12d) | 39.88d → 32.88d |  |
| DH.1500B-EQP-63 | Gallery 1503 - D150/Line-Ups // Mechanical Connections to CRAHU Units | 2026-12-31 → 2027-01-12 (+12d) | 2027-01-14 → 2027-01-26 (+12d) | 44.88d → 37.88d |  |
| DH.1500B-EQP-69 | Gallery 1503 - D150/Line-Ups // Pull Feeder and Branch circuits to MIsc equipment and Chiller controls | 2026-12-31 → 2027-01-12 (+12d) | 2027-01-14 → 2027-01-26 (+12d) | 46.88d → 39.88d | DH.1500B-EQP-64 SS+4d → DH.1500B-EQP-206, DH.1500B-EQP-205, DH.1500B-EQP-64 SS+4d |
| DH.1500B-EQP-71 | Gallery 1503 - D150/Line-Ups // Teminate all Misc Equipment and Chiller Controls | 2027-01-07 → 2027-01-19 (+12d) | 2027-01-21 → 2027-02-01 (+11d) | 46.88d → 39.88d |  |
| DH.1500B-EQP-57 | Gallery 1503 - D150/Line-Ups // Condensate connections to Floor Drains | 2027-01-08 → 2027-01-20 (+12d) | 2027-01-22 → 2027-02-02 (+11d) | 39.88d → 32.88d |  |
| DH.1500B-EQP-66 | Gallery 1503 - D150/Line-Ups // Condensate connections to Floor Drains | 2027-01-15 → 2027-01-27 (+12d) | 2027-01-29 → 2027-02-09 (+11d) | 39.88d → 32.88d |  |
| DH.1500B-EQP-72 | Gallery 1503 - D150/Line-Ups // Electrical Gear FOD Inspection Pre-Start Up | 2027-01-22 → 2027-02-02 (+11d) | 2027-01-25 → 2027-02-03 (+9d) | 46.88d → 39.88d | Gallery 1503 - D150/Line-Ups // Terminat Mod Panels, DH.1500B-EQP-71, DH.1500B-EQP-68 → DH.1500B-EQP-68, DH.1500B-EQP-71 |
| DH.1500B-EQP-70 | Gallery 1503 - D150/Line-Ups // Mechanical Gear FOD Inspection Pre-Start Up | 2027-02-01 → 2027-02-10 (+9d) | 2027-02-03 → 2027-02-12 (+9d) | 39.88d → 32.88d |  |
| 5 | **E150** | 2026-12-23 → 2027-01-05 (+13d) | 2027-02-03 → 2027-02-12 (+9d) |  |  |
| DH.1500B-EQP-73 | Gallery 1503 - E150/Line-Ups // Set CRAH-DH1500- 31 | 2026-12-23 → 2027-01-05 (+13d) | 2026-12-23 → 2027-01-05 (+13d) | -4.12d → -11.12d |  |
| DH.1500B-EQP-76 | Gallery 1503 - E150/Line-Ups // Set CRAH-DH1500-32 | 2026-12-23 → 2027-01-05 (+13d) | 2026-12-23 → 2027-01-05 (+13d) | -4.12d → -11.12d |  |
| DH.1500B-EQP-207 | Gallery 1503 - E150/Line-Ups // Set CDU-DH1500-31 | 2026-12-24 → 2027-01-06 (+13d) | 2026-12-24 → 2027-01-06 (+13d) | 60.88d → 42.88d | Gallery 1503 - E150/Line-Ups // Set MOD E140-02 (Does No apply) → DH.1500B-EQP-76 FF, DH.1500B-EQP-76 |
| DH.1500B-EQP-208 | Gallery 1503 - E150/Line-Ups // Set CDU-DH1500-32 | 2026-12-28 → 2027-01-06 (+9d) | 2026-12-28 → 2027-01-06 (+9d) | 60.88d → 42.88d | DH.1500B-EQP-207 → DH.1500B-EQP-76 |
| DH.1500B-EQP-82 | Gallery 1503 - E150/Line-Ups // Mount Electrial Gear for Chiller Controls | 2026-12-24 → 2027-01-06 (+13d) | 2027-01-08 → 2027-01-20 (+12d) | 46.88d → 39.88d | Gallery 1503 - E150/Line-Ups // Set MOD E140-02 (Does No apply) → DH.1500B-EQP-76 |
| DH.1500B-EQP-86 | Gallery 1503 - E150/Line-Ups // Terminate CRAHU Electrical Connections |  |  |  | Gallery 1503 - E150/Line-Ups // Pull Cable Tray Feed from MOD to CRAHU's, Gallery 1503 - E150/Line-Ups // Pull Cable Tray Feed from MOD to CRAHU's SS+2d → DH.1500B-EQP-73 |
| DH.1500B-EQP-74 | Gallery 1503 - E150/Line-Ups // Connect CRAH units | 2026-12-31 → 2027-01-12 (+12d) | 2027-01-14 → 2027-01-26 (+12d) | 39.88d → 32.88d |  |
| DH.1500B-EQP-81 | Gallery 1503 - E150/Line-Ups // Mechanical Connections to CRAHU Units | 2026-12-31 → 2027-01-12 (+12d) | 2027-01-14 → 2027-01-26 (+12d) | 44.88d → 37.88d |  |
| DH.1500B-EQP-87 | Gallery 1503 - E150/Line-Ups // Pull Feeder and Branch circuits to MIsc equipment and Chiller controls | 2026-12-31 → 2027-01-12 (+12d) | 2027-01-14 → 2027-01-26 (+12d) | 46.88d → 39.88d | DH.1500B-EQP-82 SS+4d → DH.1500B-EQP-208, DH.1500B-EQP-207, DH.1500B-EQP-82 SS+4d |
| DH.1500B-EQP-89 | Gallery 1503 - E150/Line-Ups // Teminate all Misc Equipment and Chiller Controls | 2027-01-07 → 2027-01-19 (+12d) | 2027-01-21 → 2027-02-01 (+11d) | 46.88d → 39.88d |  |
| DH.1500B-EQP-75 | Gallery 1503 - E150/Line-Ups // Condensate connections to Floor Drains | 2027-01-08 → 2027-01-20 (+12d) | 2027-01-22 → 2027-02-02 (+11d) | 39.88d → 32.88d |  |
| DH.1500B-EQP-84 | Gallery 1503 - E150/Line-Ups // Condensate connections to Floor Drains | 2027-01-15 → 2027-01-27 (+12d) | 2027-01-29 → 2027-02-09 (+11d) | 39.88d → 32.88d |  |
| DH.1500B-EQP-90 | Gallery 1503 - E150/Line-Ups // Electrical Gear FOD Inspection Pre-Start Up | 2027-01-22 → 2027-02-02 (+11d) | 2027-01-25 → 2027-02-03 (+9d) | 46.88d → 39.88d | Gallery 1503 - E150/Line-Ups // Terminat Mod Panels, DH.1500B-EQP-89, DH.1500B-EQP-86 → DH.1500B-EQP-86, DH.1500B-EQP-89 |
| DH.1500B-EQP-88 | Gallery 1503 - E150/Line-Ups // Mechanical Gear FOD Inspection Pre-Start Up | 2027-02-01 → 2027-02-10 (+9d) | 2027-02-03 → 2027-02-12 (+9d) | 39.88d → 32.88d |  |
| 6 | **F150** | 2026-12-23 → 2027-01-05 (+13d) | 2027-02-03 → 2027-02-12 (+9d) |  |  |
| DH.1500B-EQP-91 | Gallery 1503 - F150/Line-Ups // Set CRAH-DH1500-33 | 2026-12-23 → 2027-01-05 (+13d) | 2026-12-23 → 2027-01-05 (+13d) | -4.12d → -11.12d |  |
| DH.1500B-EQP-94 | Gallery 1503 - F150/Line-Ups // Set CRAH-DH1500-34 | 2026-12-23 → 2027-01-05 (+13d) | 2026-12-23 → 2027-01-05 (+13d) | -4.12d → -11.12d |  |
| DH.1500B-EQP-100 | Gallery 1503 - F150/Line-Ups // Mount Electrial Gear for Chiller Controls | 2026-12-24 → 2027-01-06 (+13d) | 2027-01-08 → 2027-01-20 (+12d) | 46.88d → 39.88d | Gallery 1503 - F150/Line-Ups // Set MOD F140-02 (Does No apply) → DH.1500B-EQP-94 |
| DH.1500B-EQP-104 | Gallery 1503 - F150/Line-Ups // Terminate CRAHU Electrical Connections |  |  |  | Gallery 1503 - F150/Line-Ups // Pull Cable Tray Feed from MOD to CRAHU's, Gallery 1503 - F150/Line-Ups // Pull Cable Tray Feed from MOD to CRAHU's SS+2d → DH.1500B-EQP-91 |
| DH.1500B-EQP-209 | Gallery 1503 - F150/Line-Ups // Set CDU-DH1500-33 | 2026-12-24 → 2027-01-06 (+13d) | 2026-12-24 → 2027-01-06 (+13d) | 60.88d → 42.88d | Gallery 1503 - F150/Line-Ups // Set MOD F140-02 (Does No apply) → DH.1500B-EQP-94 |
| DH.1500B-EQP-210 | Gallery 1503 - F150/Line-Ups // Set CDU-DH1500-34 | 2026-12-28 → 2027-01-06 (+9d) | 2026-12-28 → 2027-01-06 (+9d) | 60.88d → 42.88d | DH.1500B-EQP-209 → DH.1500B-EQP-94 |
| DH.1500B-EQP-105 | Gallery 1503 - F150/Line-Ups // Pull Feeder and Branch circuits to MIsc equipment and Chiller controls | 2026-12-31 → 2027-01-12 (+12d) | 2027-01-14 → 2027-01-26 (+12d) | 46.88d → 39.88d | DH.1500B-EQP-100 SS+4d → DH.1500B-EQP-210, DH.1500B-EQP-209, DH.1500B-EQP-100 SS+4d |
| DH.1500B-EQP-92 | Gallery 1503 - F150/Line-Ups // Connect CRAH units | 2026-12-31 → 2027-01-12 (+12d) | 2027-01-14 → 2027-01-26 (+12d) | 39.88d → 32.88d |  |
| DH.1500B-EQP-99 | Gallery 1503 - F150/Line-Ups // Mechanical Connections to CRAHU Units | 2026-12-31 → 2027-01-12 (+12d) | 2027-01-14 → 2027-01-26 (+12d) | 44.88d → 37.88d |  |
| DH.1500B-EQP-107 | Gallery 1503 - F150/Line-Ups // Teminate all Misc Equipment and Chiller Controls | 2027-01-07 → 2027-01-19 (+12d) | 2027-01-21 → 2027-02-01 (+11d) | 46.88d → 39.88d |  |
| DH.1500B-EQP-93 | Gallery 1503 - F150/Line-Ups // Condensate connections to Floor Drains | 2027-01-08 → 2027-01-20 (+12d) | 2027-01-22 → 2027-02-02 (+11d) | 39.88d → 32.88d |  |
| DH.1500B-EQP-102 | Gallery 1503 - F150/Line-Ups // Condensate connections to Floor Drains | 2027-01-15 → 2027-01-27 (+12d) | 2027-01-29 → 2027-02-09 (+11d) | 39.88d → 32.88d |  |
| DH.1500B-EQP-108 | Gallery 1503 - F150/Line-Ups // Electrical Gear FOD Inspection Pre-Start Up | 2027-01-22 → 2027-02-02 (+11d) | 2027-01-25 → 2027-02-03 (+9d) | 46.88d → 39.88d | Gallery 1503 - F150/Line-Ups // Terminat Mod Panels, DH.1500B-EQP-107, DH.1500B-EQP-104 → DH.1500B-EQP-104, DH.1500B-EQP-107 |
| DH.1500B-EQP-106 | Gallery 1503 - F150/Line-Ups // Mechanical Gear FOD Inspection Pre-Start Up | 2027-02-01 → 2027-02-10 (+9d) | 2027-02-03 → 2027-02-12 (+9d) | 39.88d → 32.88d |  |
| 7 | **G150** | 2026-12-24 → 2027-01-06 (+13d) | 2027-02-04 → 2027-02-16 (+12d) |  |  |
| DH.1500B-EQP-109 | Gallery 1503 - G150/Line-Ups // Set CRAH-DH1500-35 | 2026-12-24 → 2027-01-06 (+13d) | 2026-12-24 → 2027-01-06 (+13d) | -4.12d → -11.12d |  |
| DH.1500B-EQP-112 | Gallery 1503 - G150/Line-Ups // Set CRAH-DH1500-36 | 2026-12-24 → 2027-01-06 (+13d) | 2026-12-24 → 2027-01-06 (+13d) | -4.12d → -11.12d |  |
| DH.1500B-EQP-118 | Gallery 1503 - G150/Line-Ups // Mount Electrial Gear for Chiller Controls | 2026-12-28 → 2027-01-07 (+10d) | 2027-01-11 → 2027-01-21 (+10d) | 45.88d → 38.88d | Gallery 1503 - G150/Line-Ups // Set MOD G140-02 (Does No apply) → DH.1500B-EQP-112 |
| DH.1500B-EQP-122 | Gallery 1503 - G150/Line-Ups // Terminate CRAHU Electrical Connections |  |  |  | Gallery 1503 - G150/Line-Ups // Pull Cable Tray Feed from MOD to CRAHU's, Gallery 1503 - G150/Line-Ups // Pull Cable Tray Feed from MOD to CRAHU's SS+2d → DH.1500B-EQP-109 |
| DH.1500B-EQP-211 | Gallery 1503 - G150/Line-Ups // Set CDU-DH1500-35 | 2026-12-28 → 2027-01-07 (+10d) | 2026-12-28 → 2027-01-07 (+10d) | 59.88d → 41.88d | Gallery 1503 - G150/Line-Ups // Set MOD G140-02 (Does No apply) → DH.1500B-EQP-112 |
| DH.1500B-EQP-212 | Gallery 1503 - G150/Line-Ups // Set CDU-DH1500-36 | 2026-12-29 → 2027-01-07 (+9d) | 2026-12-29 → 2027-01-07 (+9d) | 59.88d → 41.88d | DH.1500B-EQP-211 → DH.1500B-EQP-112 |
| DH.1500B-EQP-110 | Gallery 1503 - G150/Line-Ups // Connect CRAH units | 2027-01-04 → 2027-01-13 (+9d) | 2027-01-15 → 2027-01-27 (+12d) | 38.88d → 31.88d |  |
| DH.1500B-EQP-117 | Gallery 1503 - G150/Line-Ups // Mechanical Connections to CRAHU Units | 2027-01-04 → 2027-01-13 (+9d) | 2027-01-15 → 2027-01-27 (+12d) | 43.88d → 36.88d |  |
| DH.1500B-EQP-123 | Gallery 1503 - G150/Line-Ups // Pull Feeder and Branch circuits to MIsc equipment and Chiller controls | 2027-01-04 → 2027-01-13 (+9d) | 2027-01-15 → 2027-01-27 (+12d) | 45.88d → 38.88d | DH.1500B-EQP-118 SS+4d → DH.1500B-EQP-212, DH.1500B-EQP-211, DH.1500B-EQP-118 SS+4d |
| DH.1500B-EQP-125 | Gallery 1503 - G150/Line-Ups // Teminate all Misc Equipment and Chiller Controls | 2027-01-08 → 2027-01-20 (+12d) | 2027-01-22 → 2027-02-02 (+11d) | 45.88d → 38.88d |  |

| ID | Task | Start | Finish | Total float | Predecessors |
| --- | --- | --- | --- | --- | --- |
| DH.1500B-EQP-111 | Gallery 1503 - G150/Line-Ups // Condensate connections to Floor Drains | 2027-01-11 → 2027-01-21 (+10d) | 2027-01-25 → 2027-02-03 (+9d) | 38.88d → 31.88d |  |
| DH.1500B-EQP-120 | Gallery 1503 - G150/Line-Ups // Condensate connections to Floor Drains | 2027-01-19 → 2027-01-28 (+9d) | 2027-02-01 → 2027-02-10 (+9d) | 38.88d → 31.88d |  |
| DH.1500B-EQP-126 | Gallery 1503 - G150/Line-Ups // Electrical Gear FOD Inspection Pre-Start Up | 2027-01-25 → 2027-02-03 (+9d) | 2027-01-26 → 2027-02-04 (+9d) | 45.88d → 38.88d | Gallery 1503 - G150/Line-Ups // Terminat Mod Panels, DH.1500B-EQP-125, DH.1500B-EQP-122 → DH.1500B-EQP-122, DH.1500B-EQP-125 |
| DH.1500B-EQP-124 | Gallery 1503 - G150/Line-Ups // Mechanical Gear FOD Inspection Pre-Start Up | 2027-02-02 → 2027-02-11 (+9d) | 2027-02-04 → 2027-02-16 (+12d) | 38.88d → 31.88d |  |
| 8 | **H150** | 2026-12-24 → 2027-01-06 (+13d) | 2027-02-04 → 2027-02-16 (+12d) |  |  |
| DH.1500B-EQP-127 | Gallery 1503 - H150/Line-Ups // Set CRAH-DH1500-37 | 2026-12-24 → 2027-01-06 (+13d) | 2026-12-24 → 2027-01-06 (+13d) | -4.12d → -11.12d |  |
| DH.1500B-EQP-130 | Gallery 1503 - H150/Line-Ups // Set CRAH-DH1500-38 | 2026-12-24 → 2027-01-06 (+13d) | 2026-12-24 → 2027-01-06 (+13d) | -4.12d → -11.12d |  |
| DH.1500B-EQP-136 | Gallery 1503 - H150/Line-Ups // Mount Electrial Gear for Chiller Controls | 2026-12-28 → 2027-01-07 (+10d) | 2027-01-11 → 2027-01-21 (+10d) | 45.88d → 38.88d | Gallery 1503 - H150/Line-Ups // Set MOD H140-02 → DH.1500B-EQP-130 |
| DH.1500B-EQP-140 | Gallery 1503 - H150/Line-Ups // Terminate CRAHU Electrical Connections |  |  |  | Gallery 1503 - H150/Line-Ups // Pull Cable Tray Feed from MOD to CRAHU's, Gallery 1503 - H150/Line-Ups // Pull Cable Tray Feed from MOD to CRAHU's SS+2d → DH.1500B-EQP-127 |
| DH.1500B-EQP-213 | Gallery 1503 - H150/Line-Ups // Set CDU-DH1500-37 | 2026-12-28 → 2027-01-07 (+10d) | 2026-12-28 → 2027-01-07 (+10d) | 59.88d → 41.88d | Gallery 1503 - H150/Line-Ups // Set MOD H140-02 → DH.1500B-EQP-130 |
| DH.1500B-EQP-214 | Gallery 1503 - H150/Line-Ups // Set CDU-DH1500-38 | 2026-12-29 → 2027-01-07 (+9d) | 2026-12-29 → 2027-01-07 (+9d) | 59.88d → 41.88d | DH.1500B-EQP-213 → DH.1500B-EQP-130 |
| DH.1500B-EQP-128 | Gallery 1503 - H150/Line-Ups // Connect CRAH units | 2027-01-04 → 2027-01-13 (+9d) | 2027-01-15 → 2027-01-27 (+12d) | 38.88d → 31.88d |  |
| DH.1500B-EQP-135 | Gallery 1503 - H150/Line-Ups // Mechanical Connections to CRAHU Units | 2027-01-04 → 2027-01-13 (+9d) | 2027-01-15 → 2027-01-27 (+12d) | 43.88d → 36.88d |  |
| DH.1500B-EQP-141 | Gallery 1503 - H150/Line-Ups // Pull Feeder and Branch circuits to MIsc equipment and Chiller controls | 2027-01-04 → 2027-01-13 (+9d) | 2027-01-15 → 2027-01-27 (+12d) | 45.88d → 38.88d | DH.1500B-EQP-136 SS+4d → DH.1500B-EQP-213, DH.1500B-EQP-214, DH.1500B-EQP-136 SS+4d |
| DH.1500B-EQP-143 | Gallery 1503 - H150/Line-Ups // Teminate all Misc Equipment and Chiller Controls | 2027-01-08 → 2027-01-20 (+12d) | 2027-01-22 → 2027-02-02 (+11d) | 45.88d → 38.88d |  |
| DH.1500B-EQP-129 | Gallery 1503 - H150/Line-Ups // Condensate connections to Floor Drains | 2027-01-11 → 2027-01-21 (+10d) | 2027-01-25 → 2027-02-03 (+9d) | 38.88d → 31.88d |  |
| DH.1500B-EQP-138 | Gallery 1503 - H150/Line-Ups // Condensate connections to Floor Drains | 2027-01-19 → 2027-01-28 (+9d) | 2027-02-01 → 2027-02-10 (+9d) | 38.88d → 31.88d |  |
| DH.1500B-EQP-144 | Gallery 1503 - H150/Line-Ups // Electrical Gear FOD Inspection Pre-Start Up | 2027-01-25 → 2027-02-03 (+9d) | 2027-01-26 → 2027-02-04 (+9d) | 45.88d → 38.88d | Gallery 1503 - H150/Line-Ups // Terminat Mod Panels, DH.1500B-EQP-143, DH.1500B-EQP-140 → DH.1500B-EQP-140, DH.1500B-EQP-143 |
| DH.1500B-EQP-142 | Gallery 1503 - H150/Line-Ups // Mechanical Gear FOD Inspection Pre-Start Up | 2027-02-02 → 2027-02-11 (+9d) | 2027-02-04 → 2027-02-16 (+12d) | 38.88d → 31.88d |  |
| 9 | **J150** | 2026-12-24 → 2027-01-06 (+13d) | 2027-02-04 → 2027-02-16 (+12d) |  |  |
| DH.1500B-EQP-145 | Gallery 1503 - J150/Line-Ups // Set CRAH-DH1500-39 | 2026-12-24 → 2027-01-06 (+13d) | 2026-12-24 → 2027-01-06 (+13d) | -4.12d → -11.12d |  |
| DH.1500B-EQP-148 | Gallery 1503 - J150/Line-Ups // Set CRAH-DH1500-40 | 2026-12-24 → 2027-01-06 (+13d) | 2026-12-24 → 2027-01-06 (+13d) | -4.12d → -11.12d |  |
| DH.1500B-EQP-154 | Gallery 1503 - J150/Line-Ups // Mount Electrial Gear for Chiller Controls | 2026-12-28 → 2027-01-07 (+10d) | 2027-01-11 → 2027-01-21 (+10d) | 45.88d → 38.88d | Gallery 1503 - J150/Line-Ups // Set MOD J140-02 → DH.1500B-EQP-148 |
| DH.1500B-EQP-158 | Gallery 1503 - J150/Line-Ups // Terminate CRAHU Electrical Connections |  |  |  | Gallery 1503 - J150/Line-Ups // Pull Cable Tray Feed from MOD to CRAHU's, Gallery 1503 - J150/Line-Ups // Pull Cable Tray Feed from MOD to CRAHU's SS+2d → DH.1500B-EQP-145 |
| DH.1500B-EQP-215 | Gallery 1503 - J150/Line-Ups // Set CDU-DH1500-39 | 2026-12-28 → 2027-01-07 (+10d) | 2026-12-28 → 2027-01-07 (+10d) | 59.88d → 41.88d | Gallery 1503 - J150/Line-Ups // Set MOD J140-02 → DH.1500B-EQP-148 |
| DH.1500B-EQP-216 | Gallery 1503 - J150/Line-Ups // Set CDU-DH1500-40 | 2026-12-29 → 2027-01-07 (+9d) | 2026-12-29 → 2027-01-07 (+9d) | 59.88d → 41.88d | DH.1500B-EQP-215 → DH.1500B-EQP-148 |
| DH.1500B-EQP-146 | Gallery 1503 - J150/Line-Ups // Connect CRAH units | 2027-01-04 → 2027-01-13 (+9d) | 2027-01-15 → 2027-01-27 (+12d) | 38.88d → 31.88d |  |
| DH.1500B-EQP-153 | Gallery 1503 - J150/Line-Ups // Mechanical Connections to CRAHU Units | 2027-01-04 → 2027-01-13 (+9d) | 2027-01-15 → 2027-01-27 (+12d) | 43.88d → 36.88d |  |
| DH.1500B-EQP-159 | Gallery 1503 - J150/Line-Ups // Pull Feeder and Branch circuits to MIsc equipment and Chiller controls | 2027-01-04 → 2027-01-13 (+9d) | 2027-01-15 → 2027-01-27 (+12d) | 45.88d → 38.88d | DH.1500B-EQP-154 SS+4d → DH.1500B-EQP-216, DH.1500B-EQP-215, DH.1500B-EQP-154 SS+4d |
| DH.1500B-EQP-161 | Gallery 1503 - J150/Line-Ups // Teminate all Misc Equipment and Chiller Controls | 2027-01-08 → 2027-01-20 (+12d) | 2027-01-22 → 2027-02-02 (+11d) | 45.88d → 38.88d |  |
| DH.1500B-EQP-147 | Gallery 1503 - J150/Line-Ups // Condensate connections to Floor Drains | 2027-01-11 → 2027-01-21 (+10d) | 2027-01-25 → 2027-02-03 (+9d) | 38.88d → 31.88d |  |
| DH.1500B-EQP-156 | Gallery 1503 - J150/Line-Ups // Condensate connections to Floor Drains | 2027-01-19 → 2027-01-28 (+9d) | 2027-02-01 → 2027-02-10 (+9d) | 38.88d → 31.88d |  |
| DH.1500B-EQP-162 | Gallery 1503 - J150/Line-Ups // Electrical Gear FOD Inspection Pre-Start Up | 2027-01-25 → 2027-02-03 (+9d) | 2027-01-26 → 2027-02-04 (+9d) | 45.88d → 38.88d | Gallery 1503 - J150/Line-Ups // Terminat Mod Panels, DH.1500B-EQP-161, DH.1500B-EQP-158 → DH.1500B-EQP-158, DH.1500B-EQP-161 |
| DH.1500B-EQP-160 | Gallery 1503 - J150/Line-Ups // Mechanical Gear FOD Inspection Pre-Start Up | 2027-02-02 → 2027-02-11 (+9d) | 2027-02-04 → 2027-02-16 (+12d) | 38.88d → 31.88d |  |
| 10 | **K150** | 2026-12-28 → 2027-01-07 (+10d) | 2027-02-05 → 2027-02-17 (+12d) |  |  |
| DH.1500B-EQP-163 | Gallery 1503 - K150/Line-Ups // Set CRAH-DH1500-41 | 2026-12-28 → 2027-01-07 (+10d) | 2026-12-28 → 2027-01-07 (+10d) | -4.12d → -11.12d |  |
| DH.1500B-EQP-166 | Gallery 1503 - K150/Line-Ups // Set CRAH-DH1500-42 | 2026-12-28 → 2027-01-07 (+10d) | 2026-12-28 → 2027-01-07 (+10d) | -4.12d → -11.12d |  |
| DH.1500B-EQP-172 | Gallery 1503 - K150/Line-Ups // Mount Electrial Gear for Chiller Controls | 2026-12-29 → 2027-01-08 (+10d) | 2027-01-12 → 2027-01-22 (+10d) | 44.88d → 37.88d | Gallery 1503 - K150/Line-Ups // Set MOD K140-02 (Does No apply) → DH.1500B-EQP-166 |
| DH.1500B-EQP-176 | Gallery 1503 - K150/Line-Ups // Terminate CRAHU Electrical Connections |  |  |  | Gallery 1503 - K150/Line-Ups // Pull Cable Tray Feed from MOD to CRAHU's, Gallery 1503 - K150/Line-Ups // Pull Cable Tray Feed from MOD to CRAHU's SS+2d → DH.1500B-EQP-163 |
| DH.1500B-EQP-164 | Gallery 1503 - K150/Line-Ups // Connect CRAH units | 2027-01-05 → 2027-01-14 (+9d) | 2027-01-19 → 2027-01-28 (+9d) | 37.88d → 30.88d |  |
| DH.1500B-EQP-171 | Gallery 1503 - K150/Line-Ups // Mechanical Connections to CRAHU Units | 2027-01-05 → 2027-01-14 (+9d) | 2027-01-19 → 2027-01-28 (+9d) | 42.88d → 35.88d |  |
| DH.1500B-EQP-177 | Gallery 1503 - K150/Line-Ups // Pull Feeder and Branch circuits to MIsc equipment and Chiller controls | 2027-01-05 → 2027-01-14 (+9d) | 2027-01-19 → 2027-01-28 (+9d) | 44.88d → 37.88d |  |
| DH.1500B-EQP-179 | Gallery 1503 - K150/Line-Ups // Teminate all Misc Equipment and Chiller Controls | 2027-01-11 → 2027-01-21 (+10d) | 2027-01-25 → 2027-02-03 (+9d) | 44.88d → 37.88d |  |
| DH.1500B-EQP-165 | Gallery 1503 - K150/Line-Ups // Condensate connections to Floor Drains | 2027-01-12 → 2027-01-22 (+10d) | 2027-01-26 → 2027-02-04 (+9d) | 37.88d → 30.88d |  |
| DH.1500B-EQP-174 | Gallery 1503 - K150/Line-Ups // Condensate connections to Floor Drains | 2027-01-20 → 2027-01-29 (+9d) | 2027-02-02 → 2027-02-11 (+9d) | 37.88d → 30.88d |  |
| DH.1500B-EQP-180 | Gallery 1503 - K150/Line-Ups // Electrical Gear FOD Inspection Pre-Start Up | 2027-01-26 → 2027-02-04 (+9d) | 2027-01-27 → 2027-02-05 (+9d) | 44.88d → 37.88d | Gallery 1503 - K150/Line-Ups // Terminat Mod Panels, DH.1500B-EQP-179, DH.1500B-EQP-176 → DH.1500B-EQP-176, DH.1500B-EQP-179 |
| DH.1500B-EQP-178 | Gallery 1503 - K150/Line-Ups // Mechanical Gear FOD Inspection Pre-Start Up | 2027-02-03 → 2027-02-12 (+9d) | 2027-02-05 → 2027-02-17 (+12d) | 37.88d → 30.88d |  |
| 11 | **R150** | 2026-12-28 → 2027-01-07 (+10d) | 2027-02-05 → 2027-02-17 (+12d) |  |  |
| DH.1500B-EQP-181 | Gallery 1503 - R150/Line-Ups // Set CRAH-DH1500-43 | 2026-12-28 → 2027-01-07 (+10d) | 2026-12-28 → 2027-01-07 (+10d) | -4.12d → -11.12d |  |
| DH.1500B-EQP-184 | Gallery 1503 - R150/Line-Ups // Set CRAH-DH1500-44 | 2026-12-28 → 2027-01-07 (+10d) | 2026-12-28 → 2027-01-07 (+10d) | -0.12d → -7.12d |  |
| DH.1500B-EQP-190 | Gallery 1503 - R150/Line-Ups // Mount Electrial Gear for Chiller Controls | 2026-12-29 → 2027-01-08 (+10d) | 2027-01-12 → 2027-01-22 (+10d) | 6.88d → -0.12d | Gallery 1503 - R150/Line-Ups // Set MOD R140-02 (Does No apply) → DH.1500B-EQP-184 |
| DH.1500B-EQP-194 | Gallery 1503 - R150/Line-Ups // Terminate CRAHU Electrical Connections |  |  |  | Gallery 1503 - R150/Line-Ups // Pull Cable Tray Feed from MOD to CRAHU's, Gallery 1503 - R150/Line-Ups // Pull Cable Tray Feed from MOD to CRAHU's SS+2d → DH.1500B-EQP-181 |
| DH.1500B-EQP-195 | Gallery 1503 - R150/Line-Ups // Pull Feeder and Branch circuits to MIsc equipment and Chiller controls | 2026-12-29 → 2027-01-08 (+10d) | 2027-01-12 → 2027-01-22 (+10d) | 6.88d → -0.12d |  |
| DH.1500B-EQP-197 | Gallery 1503 - R150/Line-Ups // Teminate all Misc Equipment and Chiller Controls | 2026-12-29 → 2027-01-08 (+10d) | 2027-01-12 → 2027-01-22 (+10d) | 10.88d → 3.88d |  |
| DH.1500B-EQP-182 | Gallery 1503 - R150/Line-Ups // Connect CRAH units | 2027-01-05 → 2027-01-14 (+9d) | 2027-01-19 → 2027-01-28 (+9d) | -4.12d → -11.12d |  |
| DH.1500B-EQP-189 | Gallery 1503 - R150/Line-Ups // Mechanical Connections to CRAHU Units | 2027-01-05 → 2027-01-14 (+9d) | 2027-01-19 → 2027-01-28 (+9d) | 0.88d → -6.12d |  |
| DH.1500B-EQP-183 | Gallery 1503 - R150/Line-Ups // Condensate connections to Floor Drains | 2027-01-12 → 2027-01-22 (+10d) | 2027-01-26 → 2027-02-04 (+9d) | -4.12d → -11.12d |  |
| DH.1500B-EQP-198 | Gallery 1503 - R150/Line-Ups // Electrical Gear FOD Inspection Pre-Start Up | 2027-01-15 → 2027-01-25 (+10d) | 2027-01-19 → 2027-01-26 (+7d) | 8.88d → 3.88d | Gallery 1503 - R150/Line-Ups // Terminat Mod Panels, DH.1500B-EQP-197, DH.1500B-EQP-194 → DH.1500B-EQP-194, DH.1500B-EQP-197 |
| DH.1500B-EQP-192 | Gallery 1503 - R150/Line-Ups // Condensate connections to Floor Drains | 2027-01-20 → 2027-01-29 (+9d) | 2027-02-02 → 2027-02-11 (+9d) | -4.12d → -11.12d |  |
| DH.1500B-EQP-196 | Gallery 1503 - R150/Line-Ups // Mechanical Gear FOD Inspection Pre-Start Up | 2027-02-03 → 2027-02-12 (+9d) | 2027-02-05 → 2027-02-17 (+12d) | -4.12d → -11.12d |  |
| 12 | **Equipment Connections** | 2026-12-30 → 2027-01-08 (+9d) | 2027-01-25 → 2027-02-01 (+7d) |  |  |
| 1 | **CRAH** | 2027-01-13 → 2027-01-08 (-5d) | 2027-01-25 → 2027-01-20 (-5d) |  |  |
| DH1500-004 | Gallery 1503 // DH 1500 / Elec Room // CRAH Duct Work Termination | 2027-01-13 → 2027-01-08 (-5d) | 2027-01-14 → 2027-01-11 (-3d) | 4.88d → 7.88d | Gallery 1503 - R150/Line-Ups // Pull Cable Tray Feed from MOD to CRAHU's → DH.1500B-EQP-184 |
| DH1500-003 | Gallery 1503 // DH 1500 / Elec Room // CRAH Chilled Water | 2027-01-15 → 2027-01-12 (-3d) | 2027-01-19 → 2027-01-13 (-6d) | 4.88d → 7.88d |  |
| DH1500-001 | Gallery 1503 // DH 1500 / Elec Room // CRAH Power Connections | 2027-01-20 → 2027-01-14 (-6d) | 2027-01-21 → 2027-01-15 (-6d) | 4.88d → 7.88d |  |
| DH1500-002 | Gallery 1503 // DH 1500 / Elec Room // CRAH LV Connections | 2027-01-22 → 2027-01-19 (-3d) | 2027-01-25 → 2027-01-20 (-5d) | 4.88d → 7.88d |  |
| 2 | **CDU** | 2027-01-13 → 2027-01-25 (+12d) | 2027-01-21 → 2027-02-01 (+11d) |  |  |
| DH1500-007 | Gallery 1503 // DH 1500 / Elec Room // CDU Chilled Water Connections | 2027-01-13 → 2027-01-25 (+12d) | 2027-01-14 → 2027-01-26 (+12d) | 6.88d → -0.12d |  |
| DH1500-005 | Gallery 1503 // DH 1500 /Elec Room // CDU Power Connections | 2027-01-15 → 2027-01-27 (+12d) | 2027-01-19 → 2027-01-28 (+9d) | 6.88d → -0.12d |  |
| DH1500-006 | Gallery 1503 // DH 1500 / Elec Room // CDU Controls Connections | 2027-01-20 → 2027-01-29 (+9d) | 2027-01-21 → 2027-02-01 (+11d) | 6.88d → -0.12d |  |

| ID | Task | Start | Finish | Complete | Total float | Predecessors |
| --- | --- | --- | --- | --- | --- | --- |
| 3 | **MOD** | 2026-12-30 → 2027-01-21 (+22d) | 2027-01-05 → 2027-01-26 (+21d) |  |  |  |
| DH1500-008 | Gallery 1503 // DH 1500 / Elec Room // MOD Power Connections | 2026-12-30 → 2027-01-21 (+22d) | 2026-12-31 → 2027-01-22 (+22d) |  | 17.88d → 3.88d | Gallery 1503 - R150/Line-Ups // Pull Feeder from SWD to MOD → DH.1500B-EQP-195 FF |
| DH1500-009 | Gallery 1503 // DH 1500 / Elec Room // MOD LV Connections | 2027-01-04 → 2027-01-25 (+21d) | 2027-01-05 → 2027-01-26 (+21d) |  | 17.88d → 3.88d |  |
| 6 | **Corridors** | 2026-10-06 → 2026-10-05 (-1d) | 2026-12-09 → 2026-12-18 (+9d) |  |  |  |
| 3 | **Corridor 1000** | 2026-10-06 → 2026-10-05 (-1d) | 2026-12-09 → 2026-12-15 (+6d) |  |  |  |
| DH.150012078 | DH 1500/Corridor 1000 // Seal concrete | 2026-10-06 → 2026-10-05 A (-1d) | 2026-10-06 → 2026-10-05 A (-1d) | 0% → 100% | 16.88d → none |  |
| DH.150012071 | DH 1500/Corridor 1000 // MEPF high overhead install | 2026-10-07 → 2026-10-14 (+7d) | 2026-10-09 → 2026-10-16 (+7d) |  | 34.88d → 30.88d |  |
| B120001.3215 | DH 1500/Corridor 1000 // Install Overhead Cable Ladder / 36" Cable Tray - TFO | 2026-10-13 → 2026-10-19 (+6d) | 2026-10-19 → 2026-10-23 (+4d) |  | 34.88d → 30.88d |  |
| B120001.3216 | DH 1500/Corridor 1000 // Install Overhead HAC - TFO | 2026-10-20 → 2026-10-26 (+6d) | 2026-10-26 → 2026-10-30 (+4d) |  | 34.88d → 30.88d |  |
| DH.150012069 | DH 1500/Corridor 1000 // Frame walls | 2026-10-16 → 2026-10-29 (+13d) | 2026-10-20 → 2026-11-02 (+13d) |  | 36.88d → 27.88d |  |
| DH.150012068 | DH 1500/Corridor 1000 // MEPF Overhead Hangers | 2026-10-27 → 2026-11-02 (+6d) | 2026-11-02 → 2026-11-06 (+4d) |  | 34.88d → 30.88d |  |
| DH.150012072 | DH 1500/Corridor 1000 // MEP rough in walls | 2026-10-21 → 2026-11-03 (+13d) | 2026-10-23 → 2026-11-05 (+13d) |  | 39.88d → 30.88d |  |
| DH.150012073 | DH 1500/Corridor 1000 // In wall inspection | 2026-10-26 → 2026-11-06 (+11d) | 2026-10-26 → 2026-11-06 (+11d) |  | 39.88d → 30.88d |  |
| DH.150012070 | DH 1500/Corridor 1000 // Install Top Down Sheetrock | 2026-10-27 → 2026-11-09 (+13d) | 2026-10-29 → 2026-11-12 (+14d) |  | 39.88d → 30.88d |  |
| DH.150012074 | DH 1500/Corridor 1000 // Install Balance of Sheetrock on Walls | 2026-11-03 → 2026-11-09 (+6d) | 2026-11-09 → 2026-11-16 (+7d) |  | 34.88d → 30.88d |  |
| DH.150012075 | DH 1500/Corridor 1000 // Tape and finish walls | 2026-11-10 → 2026-11-17 (+7d) | 2026-11-20 → 2026-11-27 (+7d) |  | 34.88d → 30.88d |  |
| DH.150012076 | DH 1500/Corridor 1000 // Install wall door frames | 2026-11-23 → 2026-11-30 (+7d) | 2026-11-25 → 2026-12-02 (+7d) |  | 34.88d → 30.88d |  |
| DH.150012077 | DH 1500/Corridor 1000 // Prime and Paint first coat walls | 2026-11-23 → 2026-11-30 (+7d) | 2026-11-25 → 2026-12-02 (+7d) |  | 34.88d → 30.88d |  |
| DH.150012079 | DH 1500/Corridor 1000 // Install lights and exit signs | 2026-11-27 → 2026-12-03 (+6d) | 2026-12-01 → 2026-12-07 (+6d) |  | 34.88d → 30.88d |  |
| DH.150012080 | DH 1500/Corridor 1000 // Final Coat Paint & Touchup Walls | 2026-12-02 → 2026-12-08 (+6d) | 2026-12-07 → 2026-12-11 (+4d) |  | 34.88d → 30.88d |  |
| DH.150012081 | DH 1500/Corridor 1000 // Install MEP Devices and Trim | 2026-12-08 → 2026-12-14 (+6d) | 2026-12-09 → 2026-12-15 (+6d) |  | 34.88d → 30.88d |  |
| DH.160012160 | DH 1500/Corridor 1000 // Ready to Receive Equipment | 2026-12-09 → 2026-12-15 (+6d) | 2026-12-09 → 2026-12-15 (+6d) |  | 34.88d → 30.88d |  |
| 2 | **Corridor 1000F** | 2026-10-07 → 2026-10-05 (-2d) | 2026-12-07 → 2026-12-18 (+11d) |  |  |  |
| DH.150012092 | DH 1500/Corridor 1000F // Seal concrete | 2026-10-07 → 2026-10-05 A (-2d) | 2026-10-07 → 2026-10-05 A (-2d) | 0% → 100% | 16.88d → none |  |
| DH.150012085 | DH 1500/Corridor 1000F // MEPF high overhead install | 2026-10-08 → 2026-10-14 (+6d) | 2026-10-13 → 2026-10-16 (+3d) |  | 16.88d → 13.88d |  |
| B120001.3217 | DH 1500/Corridor 1000F // Install Overhead Cable Ladder / 36" Cable Tray - TFO | 2026-10-14 → 2026-10-19 (+5d) | 2026-10-20 → 2026-10-23 (+3d) |  | 16.88d → 13.88d |  |
| B120001.3218 | DH 1500/Corridor 1000F // Install Overhead HAC - TFO | 2026-10-21 → 2026-10-26 (+5d) | 2026-10-27 → 2026-10-30 (+3d) |  | 16.88d → 13.88d |  |
| DH.150012082 | DH 1500/Corridor 1000F // MEPF Overhead Hangers | 2026-10-28 → 2026-11-02 (+5d) | 2026-11-03 → 2026-11-06 (+3d) |  | 16.88d → 13.88d |  |
| DH.150012083 | DH 1500/Corridor 1000F // Frame walls | 2026-10-21 → 2026-11-03 (+13d) | 2026-10-23 → 2026-11-05 (+13d) |  | 36.88d → 27.88d |  |
| DH.150012086 | DH 1500/Corridor 1000F // MEP rough in walls | 2026-10-26 → 2026-11-06 (+11d) | 2026-10-28 → 2026-11-10 (+13d) |  | 36.88d → 27.88d |  |
| DH.150012087 | DH 1500/Corridor 1000F // In wall inspection | 2026-10-29 → 2026-11-12 (+14d) | 2026-10-29 → 2026-11-12 (+14d) |  | 36.88d → 27.88d |  |
| DH.150012084 | DH 1500/Corridor 1000F // Install Top Down Sheetrock | 2026-10-30 → 2026-11-13 (+14d) | 2026-11-03 → 2026-11-17 (+14d) |  | 36.88d → 27.88d |  |
| DH.150012088 | DH 1500/Corridor 1000F // Install Balance of Sheetrock on Walls | 2026-10-30 → 2026-11-13 (+14d) | 2026-11-05 → 2026-11-19 (+14d) |  | 36.88d → 27.88d |  |
| DH.150012089 | DH 1500/Corridor 1000F // Tape and finish walls | 2026-11-06 → 2026-11-20 (+14d) | 2026-11-18 → 2026-12-02 (+14d) |  | 36.88d → 27.88d |  |
| DH.150012090 | DH 1500/Corridor 1000F // Install wall door frames | 2026-11-19 → 2026-12-03 (+14d) | 2026-11-23 → 2026-12-07 (+14d) |  | 36.88d → 27.88d |  |
| DH.150012091 | DH 1500/Corridor 1000F // Prime and Paint first coat walls | 2026-11-19 → 2026-12-03 (+14d) | 2026-11-23 → 2026-12-07 (+14d) |  | 36.88d → 27.88d |  |
| DH.150012093 | DH 1500/Corridor 1000F // Install lights and exit signs | 2026-11-24 → 2026-12-08 (+14d) | 2026-11-27 → 2026-12-10 (+13d) |  | 36.88d → 27.88d |  |
| DH.150012094 | DH 1500/Corridor 1000F // Final Coat Paint & Touchup Walls | 2026-11-30 → 2026-12-11 (+11d) | 2026-12-03 → 2026-12-16 (+13d) |  | 36.88d → 27.88d |  |
| DH.150012095 | DH 1500/Corridor 1000F // Install MEP Devices and Trim | 2026-12-04 → 2026-12-17 (+13d) | 2026-12-07 → 2026-12-18 (+11d) |  | 36.88d → 27.88d |  |
| DH.160012161 | DH 1500/Corridor 1000F // Ready to Receive Equipment | 2026-12-07 → 2026-12-18 (+11d) | 2026-12-07 → 2026-12-18 (+11d) |  | 36.88d → 27.88d |  |
| 10 | **Flex 1000F1** | 2026-10-08 → 2026-10-05 (-3d) | 2027-01-13 → 2027-01-19 (+6d) |  |  |  |
| DH.1500..1000 | DH 1500/Flex 1000F1 // Seal Concrete | 2026-10-08 → 2026-10-05 A (-3d) | 2026-10-09 → 2026-10-06 A (-3d) | 0% → 100% | 18.88d → none |  |
| DH.1500..1010 | DH 1500/Flex 1000F1 // MEPF Layout of Overhead Supports | 2026-11-04 → 2026-11-09 (+5d) | 2026-11-05 → 2026-11-10 (+5d) |  | 16.88d → 13.88d |  |
| DH.1500..1020 | DH 1500/Flex 1000F1 // MEPF Install High Overhead Systems | 2026-11-06 → 2026-11-12 (+6d) | 2026-11-16 → 2026-11-19 (+3d) |  | 16.88d → 13.88d |  |
| DH.1500..1040 | DH 1500/Flex 1000F1 // Frame Walls including Backing | 2026-11-17 → 2026-11-20 (+3d) | 2026-11-20 → 2026-11-25 (+5d) |  | 16.88d → 13.88d |  |
| DH.1500..1060 | DH 1500/Flex 1000F1 // MEPF Install Rough Wall | 2026-11-23 → 2026-11-27 (+4d) | 2026-11-24 → 2026-11-30 (+6d) |  | 16.88d → 13.88d |  |
| DH.1500..1080 | DH 1500/Flex 1000F1 // Rough Wall Inspspection (Approval to Close up) | 2026-11-25 → 2026-12-01 (+6d) | 2026-11-25 → 2026-12-01 (+6d) |  | 16.88d → 13.88d |  |
| DH.1500..1070 | DH 1500/Flex 1000F1 // Install Top Down Sheet Rock | 2026-11-27 → 2026-12-02 (+5d) | 2026-12-03 → 2026-12-08 (+5d) |  | 16.88d → 13.88d |  |
| DH.1500..1090 | DH 1500/Flex 1000F1 // Install Balance of Sheetrock | 2026-12-04 → 2026-12-09 (+5d) | 2026-12-08 → 2026-12-11 (+3d) |  | 16.88d → 13.88d |  |
| DH.1500..1100 | DH 1500/Flex 1000F1 // Tape and Finish Walls | 2026-12-09 → 2026-12-14 (+5d) | 2026-12-16 → 2026-12-21 (+5d) |  | 16.88d → 13.88d |  |
| DH.1500..1110 | DH 1500/Flex 1000F1 // Prime and First Coat of Paint | 2026-12-17 → 2026-12-22 (+5d) | 2026-12-18 → 2026-12-23 (+5d) |  | 16.88d → 13.88d |  |
| DH.1500..1120 | DH 1500/Flex 1000F1 // Install MEPF Overhead Ceiling Rough | 2026-12-21 → 2026-12-24 (+3d) | 2026-12-23 → 2026-12-29 (+6d) |  | 16.88d → 13.88d |  |
| DH.1500..1130 | DH 1500/Flex 1000F1 // Install Lighting, Fire Alarm & Fire Protection | 2026-12-24 → 2026-12-30 (+6d) | 2026-12-28 → 2026-12-31 (+3d) |  | 16.88d → 13.88d |  |
| DH.1500..1140 | DH 1500/Flex 1000F1 // Wall Touch up Final Coat of Paint | 2026-12-29 → 2027-01-04 (+6d) | 2026-12-31 → 2027-01-06 (+6d) |  | 16.88d → 13.88d |  |
| DH.1500..1050 | DH 1500/Flex 1000F1 // Install Door Frames | 2027-01-04 → 2027-01-07 (+3d) | 2027-01-04 → 2027-01-07 (+3d) |  | 55.88d → 52.88d |  |
| DH.1500..1150 | DH 1500/Flex 1000F1 // Install Wall Base, Trim, and Devices | 2027-01-04 → 2027-01-07 (+3d) | 2027-01-06 → 2027-01-11 (+5d) |  | 16.88d → 13.88d |  |
| DH.1500..1161 | DH 1500/Flex 1000F1 // Ready to Receive Equipment | 2027-01-06 → 2027-01-11 (+5d) | 2027-01-06 → 2027-01-11 (+5d) |  | 16.88d → 13.88d |  |
| DH.1500..1160 | DH 1500/Flex 1000F1 // Suffolk Pre Punch | 2027-01-07 → 2027-01-12 (+5d) | 2027-01-13 → 2027-01-19 (+6d) |  | 53.88d → 50.88d |  |
| 13 | **Restroom-Dock & Janitor** | 2026-10-13 → 2026-09-29 (-14d) | 2027-01-04 → 2026-12-28 (-7d) |  |  |  |
| DH.1500000 | DH 1500/Restroom-Dock & Janitor // Seal concrete | 2026-10-13 → 2026-09-29 A (-14d) | 2026-10-19 → 2026-10-05 A (-14d) | 0% → 100% | 18.88d → none |  |
| DH.1500010 | DH 1500/Restroom-Dock & Janitor // MEPF overhead layout | 2026-10-20 → 2026-10-14 (-6d) | 2026-10-26 → 2026-10-20 (-6d) |  | 18.88d → 22.88d |  |
| DH.1500020 | DH 1500/Restroom-Dock & Janitor // Layout walls | 2026-10-27 → 2026-10-21 (-6d) | 2026-11-02 → 2026-10-27 (-6d) |  | 18.88d → 22.88d |  |
| DH.1500030 | DH 1500/Restroom-Dock & Janitor // Frame walls | 2026-11-03 → 2026-10-28 (-6d) | 2026-11-09 → 2026-11-03 (-6d) |  | 18.88d → 22.88d |  |
| DH.1500040 | DH 1500/Restroom-Dock & Janitor // Install wall door frames | 2026-11-04 → 2026-10-29 (-6d) | 2026-11-06 → 2026-11-02 (-4d) |  | 18.88d → 22.88d |  |
| DH.1500060 | DH 1500/Restroom-Dock & Janitor // MEP rough in walls | 2026-11-09 → 2026-11-03 (-6d) | 2026-11-12 → 2026-11-05 (-7d) |  | 18.88d → 22.88d |  |
| DH.1500070 | DH 1500/Restroom-Dock & Janitor // In wall inspection | 2026-11-13 → 2026-11-06 (-7d) | 2026-11-13 → 2026-11-06 (-7d) |  | 18.88d → 22.88d |  |
| DH.1500050 | DH 1500/Restroom-Dock & Janitor // Install Top Down Sheetrock | 2026-11-16 → 2026-11-09 (-7d) | 2026-11-20 → 2026-11-16 (-4d) |  | 18.88d → 22.88d |  |
| DH.1500080 | DH 1500/Restroom-Dock & Janitor // MEPF high overhead install | 2026-11-23 → 2026-11-17 (-6d) | 2026-11-25 → 2026-11-19 (-6d) |  | 18.88d → 22.88d |  |
| DH.1500090 | DH 1500/Restroom-Dock & Janitor // Install Balance of Sheetrock on Walls | 2026-11-27 → 2026-11-20 (-7d) | 2026-12-03 → 2026-11-27 (-6d) |  | 18.88d → 22.88d |  |
| DH.1500100 | DH 1500/Restroom-Dock & Janitor // Tape and finish walls | 2026-12-04 → 2026-11-30 (-4d) | 2026-12-15 → 2026-12-09 (-6d) |  | 18.88d → 22.88d |  |

| ID | Task | Start | Finish | Complete | Total float | Predecessors |
| --- | --- | --- | --- | --- | --- | --- |
| DH.1500110 | DH 1500/Restroom-Dock & Janitor // Prime and Paint first coat walls | 2026-12-16 → 2026-12-10 (-6d) | 2026-12-18 → 2026-12-14 (-4d) |  | 18.88d → 22.88d |  |
| DH.1500120 | DH 1500/Restroom-Dock & Janitor // Install lights and exit signs | 2026-12-21 → 2026-12-15 (-6d) | 2026-12-23 → 2026-12-17 (-6d) |  | 18.88d → 22.88d |  |
| DH.1500130 | DH 1500/Restroom-Dock & Janitor // Final Coat Paint & Touchup Walls | 2026-12-24 → 2026-12-18 (-6d) | 2026-12-30 → 2026-12-23 (-7d) |  | 18.88d → 22.88d |  |
| DH.1500140 | DH 1500/Restroom-Dock & Janitor // Install MEP Devices and Trim | 2026-12-31 → 2026-12-24 (-7d) | 2027-01-04 → 2026-12-28 (-7d) |  | 18.88d → 22.88d |  |
| 5 | **1500 Energization, Start-up & Commissioning** | 2027-02-16 → 2027-03-19 (+31d) | 2027-05-21 → 2027-06-24 (+34d) |  |  |  |
| 1 | **Energization & L3 Prefunctional Testing** | 2027-02-16 → 2027-03-19 (+31d) | 2027-04-15 → 2027-05-18 (+33d) |  |  |  |
| DH1500.L3CX.99 | DH1500 L3 Start | 2027-02-16 → 2027-03-19 (+31d) | 2027-02-16 → 2027-03-19 (+31d) |  | -9.12d → -32.12d |  |
| DH1500.L3CX.BMS.41 | DH1500 L3 PTPs & SOOs – BMS | 2027-02-16 → 2027-03-19 (+31d) | 2027-04-12 → 2027-05-13 (+31d) |  | -9.12d → -32.12d |  |
| DH1500.L3CX.ELEC.123 | DH1500 L3 FTEs | 2027-02-16 → 2027-03-19 (+31d) | 2027-02-22 → 2027-03-25 (+31d) |  | -9.12d → -32.12d |  |
| DH1500.L3CX.MECH.123 | DH1500 L3 Startup / Pre-Functional – MECHANICAL | 2027-02-19 → 2027-03-24 (+33d) | 2027-03-18 → 2027-04-20 (+33d) |  | -2.12d → -25.12d |  |
| DH1500.L3CX.ELEC.113 | DH1500 L3 Startup / Pre-Functional – ELECTRICAL | 2027-02-23 → 2027-03-26 (+31d) | 2027-03-15 → 2027-04-15 (+31d) |  | 2.88d → -20.12d |  |
| DH1500.L3CX.MECH.133 | DH1500 L3 TAB (Air, Water and Reports) – MECHANICAL | 2027-03-30 → 2027-04-30 (+31d) | 2027-04-12 → 2027-05-13 (+31d) |  | -9.12d → -32.12d |  |
| DH1500.L3CX.MECH.143 | DH1500 L3 FLS – MECHANICAL | 2027-04-01 → 2027-05-04 (+33d) | 2027-04-14 → 2027-05-17 (+33d) |  | -9.12d → -32.12d |  |
| DH1500.L3CX.89 | DH1500 L3 Cx Complete | 2027-04-15 → 2027-05-18 (+33d) | 2027-04-15 → 2027-05-18 (+33d) |  | -9.12d → -32.12d | DH1500.L3CX.MECH.143 FF, DH1500.L3CX.MECH.133 FF → DH1500.LD.1997 FF, DH1500.L3CX.MECH.133 FF, DH1500.L3CX.MECH.143 FF |
| 2 | **L4 Function Testing** | 2027-03-19 → 2027-04-21 (+33d) | 2027-04-22 → 2027-05-25 (+33d) |  |  |  |
| DH1500.L4CX.COMM.170 | DH1500 L4 Cx | 2027-03-19 → 2027-04-21 (+33d) | 2027-04-22 → 2027-05-25 (+33d) |  | 0d → -23d |  |
| 3 | **L5 Integrated System Testing (IST)** | 2027-04-05 → 2027-05-06 (+31d) | 2027-05-21 → 2027-06-24 (+34d) |  |  |  |
| DH1500.L5CX.COMM.280 | DH1500 L5 Integrated Systems Testing - IST | 2027-04-05 → 2027-05-06 (+31d) | 2027-04-30 → 2027-06-03 (+34d) |  | 0d → -23d |  |
| DH1500.A2110.CO | DH1500– Phase Closeout Period O&M / TRAINING/ CLOSEOUT DOCS | 2027-05-03 → 2027-06-04 (+32d) | 2027-05-21 → 2027-06-24 (+34d) |  | 6d → 0d |  |
| DH1500.L5CX.COMM.290 | DH1500 – IST / L5 Cx Complete | 2027-05-03 → 2027-06-04 (+32d) | 2027-05-03 → 2027-06-04 (+32d) |  | 0d → -23d |  |
| 3 | **Data Hall 1200** |  | 2027-02-24 → 2027-02-23 (-1d) |  |  |  |
| 10 | **Exterior Build Out** |  | 2026-11-18 → 2026-11-25 (+7d) |  |  |  |
| 1 | **Mechanical Yard** |  | 2026-11-18 → 2026-11-23 (+5d) |  |  |  |
| 5 | **Equipment** | 2026-08-04 → 2026-08-24 (+20d) | 2026-11-02 → 2026-10-28 (-5d) |  |  |  |
| 1 | **A120** | 2026-08-04 → 2026-08-24 (+20d) | 2026-10-02 → 2026-10-19 (+17d) |  |  |  |
| B12000.12023 | DH1200/Mechanical Yard-A120 // Install CHWP | 2026-08-04 A → 2026-08-24 A (+20d) |  |  |  |  |
| B12000.12024 | DH1200/Mechanical Yard-A120 // Install Mechanical Piping Mains (Building -to Line) | 2026-08-05 A → 2026-09-08 A (+34d) |  |  |  |  |
| B12000.12002 | DH1200/Mechanical Yard-A120 // Set TES tank - TES-1CY40-A120 | 2026-10-01 A | 2026-10-01 → 2026-10-08 A (+7d) | 0% → 100% | 50d → none | B12000.12001 → A5702 |
| B12000.12025 | DH1200/Mechanical Yard-A120 // Install Mechanical Chiller to Mains | 2026-10-02 → 2026-10-14 (+12d) | 2026-10-02 → 2026-10-14 (+12d) |  | 50d → 43d |  |
| B12000.12001 | DH1200/Mechanical Yard-A120 // Set Chiller - CHLR-1CY40-A120 | 2026-09-30 → 2026-10-19 (+19d) | 2026-09-30 → 2026-10-19 (+19d) |  | 29d → 26d | A5702, STRUCTURE.6860 → A5880, STRUCTURE.6860, A5702 |
| 2 | **B120** | 2026-08-05 → 2026-08-24 (+19d) | 2026-10-05 → 2026-10-19 (+14d) |  |  |  |
| B12000.12026 | DH1200/Mechanical Yard-B120 // Install CHWP | 2026-08-05 A → 2026-08-24 A (+19d) |  |  |  |  |
| B12000.12027 | DH1200/Mechanical Yard-B120 // Install Mechanical Piping Mains (Building -to Line) | 2026-08-06 A → 2026-09-08 A (+33d) |  |  |  |  |
| B12000.12004 | DH1200/Mechanical Yard-B120 // Set TES tank - TES-1CY40-B120 | 2026-10-02 A | 2026-10-02 → 2026-10-08 A (+6d) | 0% → 100% | 49d → none | B12000.12003 → A5702 |
| B12000.12028 | DH1200/Mechanical Yard-B120 // Install Mechanical Chiller to Mains | 2026-10-05 → 2026-10-14 (+9d) | 2026-10-05 → 2026-10-14 (+9d) |  | 49d → 43d |  |
| B12000.12003 | DH1200/Mechanical Yard-B120 // Set Chiller - CHLR-1CY40-B120 | 2026-10-01 → 2026-10-19 (+18d) | 2026-10-01 → 2026-10-19 (+18d) |  | 29d → 26d | B12000.12001 → A5880, B12000.12001 SS |
| 3 | **C120** | 2026-08-06 → 2026-08-24 (+18d) | 2026-10-06 → 2026-10-19 (+13d) |  |  |  |
| B12000.12029 | DH1200/Mechanical Yard-C120 // Install CHWP | 2026-08-06 A → 2026-08-24 A (+18d) |  |  |  |  |
| B12000.12030 | DH1200/Mechanical Yard-C120 // Install Mechanical Piping Mains (Building -to Line) | 2026-08-07 A → 2026-09-08 A (+32d) |  |  |  |  |
| B12000.12006 | DH1200/Mechanical Yard-C120 // Set TES tank - TES-1CY40-C120 | 2026-10-05 A | 2026-10-05 → 2026-10-08 A (+3d) | 0% → 100% | 48d → none | B12000.12005 → A5702 |
| B12000.12031 | DH1200/Mechanical Yard-C120 // Install Mechanical Chiller to Mains | 2026-10-06 → 2026-10-14 (+8d) | 2026-10-06 → 2026-10-14 (+8d) |  | 48d → 43d |  |
| B12000.12005 | DH1200/Mechanical Yard-C120 // Set Chiller - CHLR-1CY40-C120 | 2026-10-02 → 2026-10-19 (+17d) | 2026-10-02 → 2026-10-19 (+17d) |  | 29d → 26d | B12000.12003 → A5880, B12000.12003 SS |
| 4 | **D120** | 2026-08-07 → 2026-08-25 (+18d) | 2026-10-07 → 2026-10-19 (+12d) |  |  |  |
| B12000.12032 | DH1200/Mechanical Yard-D120 // Install CHWP | 2026-08-07 A → 2026-08-25 A (+18d) |  |  |  |  |
| B12000.12033 | DH1200/Mechanical Yard-D120 // Install Mechanical Piping Mains (Building -to Line) | 2026-08-10 A → 2026-09-08 A (+29d) |  |  |  |  |
| B12000.12008 | DH1200/Mechanical Yard-D120 // Set TES tank - TES-1CY40-D120 | 2026-10-06 A | 2026-10-06 → 2026-10-08 A (+2d) | 0% → 100% | 47d → none | B12000.12007 → A5704 |
| B12000.12034 | DH1200/Mechanical Yard-D120 // Install Mechanical Chiller to Mains | 2026-10-07 → 2026-10-14 (+7d) | 2026-10-07 → 2026-10-14 (+7d) |  | 47d → 43d |  |
| B12000.12007 | DH1200/Mechanical Yard-D120 // Set Chiller - CHLR-1CY40-D120 | 2026-10-05 → 2026-10-19 (+14d) | 2026-10-05 → 2026-10-19 (+14d) |  | 29d → 26d | B12000.12005 → A5880, B12000.12005 SS |
| 5 | **E120** | 2026-08-10 → 2026-08-25 (+15d) | 2026-10-08 → 2026-10-19 (+11d) |  |  |  |
| B12000.12035 | DH1200/Mechanical Yard-E120 // Install CHWP | 2026-08-10 A → 2026-08-25 A (+15d) |  |  |  |  |
| B12000.12036 | DH1200/Mechanical Yard-E120 // Install Mechanical Piping Mains (Building -to Line) | 2026-08-11 A → 2026-09-08 A (+28d) |  |  |  |  |
| B12000.12010 | DH1200/Mechanical Yard-E120 // Set TES tank - TES-1CY40-E120 | 2026-10-07 A | 2026-10-07 → 2026-10-08 A (+1d) | 0% → 100% | 46d → none | B12000.12009 → A5704 |
| B12000.12037 | DH1200/Mechanical Yard-E120 // Install Mechanical Chiller to Mains | 2026-10-08 → 2026-10-14 (+6d) | 2026-10-08 → 2026-10-14 (+6d) |  | 46d → 43d |  |
| B12000.12009 | DH1200/Mechanical Yard-E120 // Set Chiller - CHLR-1CY40-E120 | 2026-10-06 → 2026-10-19 (+13d) | 2026-10-06 → 2026-10-19 (+13d) |  | 29d → 26d | B12000.12007 → A5880, B12000.12007 SS |
| 6 | **F120** | 2026-08-11 → 2026-08-26 (+15d) | 2026-10-09 → 2026-10-20 (+11d) |  |  |  |
| B12000.12038 | DH1200/Mechanical Yard-F120 // Install CHWP | 2026-08-11 A → 2026-08-26 A (+15d) |  |  |  |  |
| B12000.12039 | DH1200/Mechanical Yard-F120 // Install Mechanical Piping Mains (Building -to Line) | 2026-08-12 A → 2026-09-08 A (+27d) |  |  |  |  |
| B12000.12012 | DH1200/Mechanical Yard-F120 // Set TES tank - TES-1CY40-F120 | 2026-10-08 A | 2026-10-08 A | 0% → 100% | 45d → none | B12000.12011 → A5704 |
| B12000.12040 | DH1200/Mechanical Yard-F120 // Install Mechanical Chiller to Mains | 2026-10-09 → 2026-10-14 (+5d) | 2026-10-09 → 2026-10-14 (+5d) |  | 45d → 43d |  |
| B12000.12011 | DH1200/Mechanical Yard-F120 // Set Chiller - CHLR-1CY40-F120 | 2026-10-07 → 2026-10-20 (+13d) | 2026-10-07 → 2026-10-20 (+13d) |  | 29d → 26d |  |
| 7 | **G120** | 2026-08-12 → 2026-08-26 (+14d) | 2026-10-13 → 2026-10-20 (+7d) |  |  |  |
| B12000.12041 | DH1200/Mechanical Yard-G120 // Install CHWP | 2026-08-12 A → 2026-08-26 A (+14d) |  |  |  |  |
| B12000.12042 | DH1200/Mechanical Yard-G120 // Install Mechanical Piping Mains (Building -to Line) | 2026-08-13 A → 2026-09-08 A (+26d) |  |  |  |  |
| B12000.12014 | DH1200/Mechanical Yard-G120 // Set TES tank - TES-1CY40-G120 | 2026-10-09 → 2026-10-08 A (-1d) | 2026-10-09 → 2026-10-08 A (-1d) | 0% → 100% | 44d → none | B12000.12013 → A5704 |
| B12000.12043 | DH1200/Mechanical Yard-G120 // Install Mechanical Chiller to Mains | 2026-10-13 → 2026-10-14 (+1d) | 2026-10-13 → 2026-10-14 (+1d) |  | 44d → 43d |  |
| B12000.12013 | DH1200/Mechanical Yard-G120 // Set Chiller - CHLR-1CY40-G120 | 2026-10-08 → 2026-10-20 (+12d) | 2026-10-08 → 2026-10-20 (+12d) |  | 29d → 26d | B12000.12011 → B12000.12011 SS |
| 8 | **H120** | 2026-08-13 → 2026-08-27 (+14d) | 2026-10-14 → 2026-10-20 (+6d) |  |  |  |
| B12000.12044 | DH1200/Mechanical Yard-H120 // Install CHWP | 2026-08-13 A → 2026-08-27 A (+14d) |  |  |  |  |
| B12000.12045 | DH1200/Mechanical Yard-H120 // Install Mechanical Piping Mains (Building -to Line) | 2026-08-14 A → 2026-09-08 A (+25d) |  |  |  |  |
| B12000.12016 | DH1200/Mechanical Yard-H120 // Set TES tank - TES-1CY40-H120 | 2026-10-13 → 2026-10-08 A (-5d) | 2026-10-13 → 2026-10-08 A (-5d) | 0% → 100% | 43d → none | B12000.12015 → A5705 |

| ID | Task | Start | Finish | Complete | Total float | Predecessors |
| --- | --- | --- | --- | --- | --- | --- |
| B12000.12015 | DH1200/Mechanical Yard-H120 // Set Chiller - CHLR-1CY40-H120 | 2026-10-09 → 2026-10-20 (+11d) | 2026-10-09 → 2026-10-20 (+11d) |  | 29d → 26d | B12000.12013 → B12000.12013 SS |
| 9 | **J120** | 2026-08-14 → 2026-08-27 (+13d) | 2026-10-15 → 2026-10-20 (+5d) |  |  |  |
| B12000.12047 | DH1200/Mechanical Yard-J120 // Install CHWP | 2026-08-14 A → 2026-08-27 A (+13d) |  |  |  |  |
| B12000.12048 | DH1200/Mechanical Yard-J120 // Install Mechanical Piping Mains (Building -to Line) | 2026-08-17 A → 2026-09-08 A (+22d) |  |  |  |  |
| B12000.12018 | DH1200/Mechanical Yard-J120 // Set TES tank - TES-1CY40-J120 | 2026-10-14 → 2026-10-08 A (-6d) | 2026-10-14 → 2026-10-08 A (-6d) | 0% → 100% | 42d → none | B12000.12017 → A5705 |
| B12000.12049 | DH1200/Mechanical Yard-J120 // Install Mechanical Chiller to Mains | 2026-10-15 → 2026-10-14 (-1d) | 2026-10-15 → 2026-10-14 (-1d) |  | 42d → 43d |  |
| B12000.12017 | DH1200/Mechanical Yard-J120 // Set Chiller - CHLR-1CY40-J120 | 2026-10-13 → 2026-10-20 (+7d) | 2026-10-13 → 2026-10-20 (+7d) |  | 29d → 26d | B12000.12015 → B12000.12015 SS |
| 10 | **K120** | 2026-08-17 → 2026-08-28 (+11d) | 2026-10-16 → 2026-10-20 (+4d) |  |  |  |
| B12000.12050 | DH1200/Mechanical Yard-K120 // Install CHWP | 2026-08-17 A → 2026-08-28 A (+11d) |  |  |  |  |
| B12000.12051 | DH1200/Mechanical Yard-K120 // Install Mechanical Piping Mains (Building -to Line) | 2026-08-18 A → 2026-09-08 A (+21d) |  |  |  |  |
| B12000.12020 | DH1200/Mechanical Yard-K120 // Set TES tank - TES-1CY40-K120 | 2026-10-15 → 2026-10-08 A (-7d) | 2026-10-15 → 2026-10-08 A (-7d) | 0% → 100% | 41d → none | B12000.12019 → A5705 |
| B12000.12052 | DH1200/Mechanical Yard-K120 // Install Mechanical Chiller to Mains | 2026-10-16 → 2026-10-14 (-2d) | 2026-10-16 → 2026-10-14 (-2d) |  | 41d → 43d |  |
| B12000.12019 | DH1200/Mechanical Yard-K120 // Set Chiller - CHLR-1CY40-K120 | 2026-10-14 → 2026-10-20 (+6d) | 2026-10-14 → 2026-10-20 (+6d) |  | 29d → 26d | B12000.12017 → B12000.12017 SS |
| 11 | **R120** | 2026-08-18 → 2026-08-28 (+10d) | 2026-10-19 → 2026-10-20 (+1d) |  |  |  |
| B12000.12053 | DH1200/Mechanical Yard-R120 // Install CHWP | 2026-08-18 A → 2026-08-28 A (+10d) |  |  |  |  |
| B12000.12054 | DH1200/Mechanical Yard-R120 // Install Mechanical Piping Mains (Building -to Line) | 2026-08-19 A → 2026-09-08 A (+20d) |  |  |  |  |
| B12000.12022 | DH1200/Mechanical Yard-R120 // Set TES tank - TES-1CY40-R120 | 2026-10-16 → 2026-10-08 A (-8d) | 2026-10-16 → 2026-10-08 A (-8d) | 0% → 100% | 40d → none | B12000.12021 → A5705 |
| B12000.12055 | DH1200/Mechanical Yard-R120 // Install Mechanical Chiller to Mains | 2026-10-19 → 2026-10-14 (-5d) | 2026-10-19 → 2026-10-14 (-5d) |  | 40d → 43d |  |
| B12000.12021 | DH1200/Mechanical Yard-R120 // Set Chiller - CHLR-1CY40-R120 | 2026-10-15 → 2026-10-20 (+5d) | 2026-10-15 → 2026-10-20 (+5d) |  | 29d → 26d | B12000.12019 → B12000.12019 SS |
| 12 | **Test & Flushing** | 2026-10-20 → 2026-10-15 (-5d) | 2026-11-02 → 2026-10-28 (-5d) |  |  |  |
| A5733 | DH1200/Mechanical Yard-Test & Flushing // Line Test & Checking | 2026-10-20 → 2026-10-15 (-5d) | 2026-10-21 → 2026-10-16 (-5d) |  | 40d → 43d |  |
| A5735 | DH1200/Mechanical Yard-Test & Flushing // Electrical & Controls Testing / Checking | 2026-10-22 → 2026-10-19 (-3d) | 2026-10-26 → 2026-10-21 (-5d) |  | 40d → 43d |  |
| A5734 | DH1200/Mechanical Yard-Test & Flushing // Fill, Flush & Purge | 2026-10-27 → 2026-10-22 (-5d) | 2026-11-02 → 2026-10-28 (-5d) |  | 40d → 43d |  |
| 2 | **Electrical & Controls** |  | 2026-11-18 → 2026-11-23 (+5d) |  |  |  |
| A5712 | DH1200/Electrical & Controls // Raceway connections to Chiller units | 2026-10-16 → 2026-10-21 (+5d) | 2026-10-23 → 2026-10-28 (+5d) |  | 29d → 26d |  |
| A5713 | DH1200/Electrical & Controls // Install Panels and Raceways to CHWP | 2026-10-16 → 2026-10-21 (+5d) | 2026-10-29 → 2026-11-03 (+5d) |  | 29d → 26d |  |
| A5715 | DH1200/Electrical & Controls // Install Controls conduits and wire to Chiller units | 2026-10-16 → 2026-10-21 (+5d) | 2026-11-02 → 2026-11-05 (+3d) |  | 29d → 26d |  |
| A5722 | DH1200/Electrical & Controls // Pull and Terminate Feeders to Chiller units | 2026-10-26 → 2026-10-29 (+3d) | 2026-11-02 → 2026-11-05 (+3d) |  | 29d → 26d |  |
| A5723 | DH1200/Electrical & Controls // Chiller units Ready to Energize | 2026-11-03 → 2026-11-06 (+3d) | 2026-11-10 → 2026-11-16 (+6d) |  | 29d → 26d |  |
| A5719 | DH1200/Electrical & Controls // Fine Grade Install Landscape Fabric & Install Rock | 2026-11-12 → 2026-11-17 (+5d) | 2026-11-18 → 2026-11-23 (+5d) |  | 29d → 26d |  |
| 2 | **Roof - RTUs** | 2026-07-29 → 2026-08-03 (+5d) | 2026-11-12 → 2026-11-25 (+13d) |  |  |  |
| 1 | **Column Lines 1.2 thru 2.0** | 2026-07-29 → 2026-08-03 (+5d) | 2026-11-12 → 2026-11-25 (+13d) |  |  |  |
| B12000.12058 | DH1200/Roof - RTUs // - RTU-RT05-01 | 2026-07-29 A → 2026-08-03 A (+5d) |  |  |  |  |
| B12000.12057 | DH1200/Roof - RTUs // - RTU-RT- 06 | 2026-07-31 A → 2026-08-05 A (+5d) |  |  |  |  |
| B12000.12064 | DH1200/Roof - RTUs // - RTU-RT- 07 | 2026-08-03 A → 2026-08-06 A (+3d) |  |  |  |  |
| B12000.12059 | DH1200/Roof - RTUs // Install Mechanical Piping | 2026-09-30 → 2026-10-14 (+14d) | 2026-10-21 → 2026-11-03 (+13d) |  | 33d → 24d |  |
| B12000.12056 | DH1200/Roof - RTUs // Install heat trace system | 2026-10-22 → 2026-11-04 (+13d) | 2026-11-12 → 2026-11-25 (+13d) |  | 33d → 24d |  |
| B12000.7841 | DH1200/Roof - RTUs // Install Electrical Conduit and Controls Piping | 2026-10-22 → 2026-11-04 (+13d) | 2026-11-12 → 2026-11-25 (+13d) |  | 33d → 24d |  |
| 1 | **Interior Build Out** |  | 2027-02-24 → 2027-02-23 (-1d) |  |  |  |
| 9 | **Flex 1000B10** |  | 2026-11-16 → 2026-11-30 (+14d) |  |  |  |
| B12000A.1010 | DH1200/Flex 1000B10 // MEPF Layout of Overhead Supports | 2026-07-28 A → 2026-08-03 A (+6d) |  |  |  |  |
| B12000A.1020 | DH1200/Flex 1000B10 // MEPF Install High Overhead Systems | 2026-07-30 A → 2026-08-20 A (+21d) |  |  |  |  |
| B12000A.1060 | DH1200/Flex 1000B10 // MEPF Install Rough Wall | 2026-08-12 A → 2026-08-20 A (+8d) |  |  |  |  |
| B12000A.1080 | DH1200/Flex 1000B10 // Rough Wall Inspspection (Approval to Close up) | 2026-09-30 A | 2026-09-30 → 2026-10-08 A (+8d) | 0% → 100% | 35d → none |  |
| B12000A.1070 | DH1200/Flex 1000B10 // Install Top Down Sheet Rock | 2026-09-30 → 2026-10-14 (+14d) | 2026-10-06 → 2026-10-20 (+14d) |  | 31d → 22d |  |
| B12000A.1090 | DH1200/Flex 1000B10 // Install Balance of Sheetrock | 2026-10-07 → 2026-10-21 (+14d) | 2026-10-09 → 2026-10-23 (+14d) |  | 31d → 22d |  |
| B12000A.1100 | DH1200/Flex 1000B10 // Tape and Finish Walls | 2026-10-13 → 2026-10-26 (+13d) | 2026-10-20 → 2026-11-02 (+13d) |  | 31d → 22d |  |
| B12000A.1110 | DH1200/Flex 1000B10 // Prime and First Coat of Paint | 2026-10-21 → 2026-11-03 (+13d) | 2026-10-22 → 2026-11-04 (+13d) |  | 31d → 22d |  |
| B12000A.1120 | DH1200/Flex 1000B10 // Install MEPF Overhead Ceiling Rough | 2026-10-23 → 2026-11-05 (+13d) | 2026-10-27 → 2026-11-09 (+13d) |  | 31d → 22d |  |
| B12000A.1130 | DH1200/Flex 1000B10 // Install Lighting, Fire Alarm & Fire Protection | 2026-10-28 → 2026-11-10 (+13d) | 2026-10-29 → 2026-11-12 (+14d) |  | 31d → 22d |  |
| B12000A.1050 | DH1200/Flex 1000B10 // Install Door Frames | 2026-10-30 → 2026-11-13 (+14d) | 2026-10-30 → 2026-11-13 (+14d) |  | 33d → 24d |  |
| B12000A.1140 | DH1200/Flex 1000B10 // Wall Touch up Final Coat of Paint | 2026-10-30 → 2026-11-13 (+14d) | 2026-11-03 → 2026-11-17 (+14d) |  | 31d → 22d |  |
| B12000A.1150 | DH1200/Flex 1000B10 // Install Wall Base, Trim, and Devices | 2026-11-04 → 2026-11-18 (+14d) | 2026-11-06 → 2026-11-20 (+14d) |  | 31d → 22d |  |
| B12000A.1161 | DH1200/Flex 1000B10 // Ready to Receive Equipment | 2026-11-06 → 2026-11-20 (+14d) | 2026-11-06 → 2026-11-20 (+14d) |  | 31d → 22d |  |
| B12000A.1160 | DH1200/Flex 1000B10 // Suffolk Pre Punch | 2026-11-09 → 2026-11-23 (+14d) | 2026-11-16 → 2026-11-30 (+14d) |  | 31d → 22d |  |
| 7 | **Electrical Room #5201** |  | 2026-11-20 → 2026-12-01 (+11d) |  |  |  |
| B120001.1010 | DH1200/Electrical Room #5201 // MEPF Layout of Overhead Supports | 2026-07-30 A → 2026-08-03 A (+4d) |  |  |  |  |
| B120001.1020 | DH1200/Electrical Room #5201 // MEPF Install High Overhead Systems | 2026-08-03 A → 2026-08-21 A (+18d) |  |  |  |  |
| B120001.1060 | DH1200/Electrical Room #5201 // MEPF Install Rough Wall | 2026-08-18 A → 2026-08-27 A (+9d) |  |  |  |  |
| B120001.3111 | DH1200/Electrical Room #5201 // Install Overhead Cable Ladder / 36" Cable Tray - TFO | 2026-08-11 A → 2026-09-08 A (+28d) |  |  |  |  |
| B120001.1070 | DH1200/Electrical Room #5201 // Install Top Down Sheet Rock | 2026-08-14 A → 2026-09-10 A (+27d) |  |  |  |  |
| B120001.1080 | DH1200/Electrical Room #5201 // Rough Wall Inspspection (Approval to Close up) | 2026-08-20 A → 2026-09-17 A (+28d) |  |  |  |  |
| B120001.1090 | DH1200/Electrical Room #5201 // Install Balance of Sheetrock | 2026-08-21 A → 2026-09-18 A (+28d) |  |  |  |  |
| F.1000A.1191 | DH1200/Electrical Room #5201 // Rough-In Security | 2026-08-18 A → 2026-09-18 A (+31d) |  |  |  |  |
| F.1000A.1385 | DH1200/Electrical Room #5201 // BMS & EPMS Rough-In | 2026-09-30 → 2026-09-18 A (-12d) | 2026-10-01 → 2026-09-21 A (-10d) | 0% → 100% | 56d → none |  |
| B120001.1100 | DH1200/Electrical Room #5201 // Tape and Finish Walls |  | 2026-10-07 → 2026-10-01 A (-6d) | 0% → 100% | -2d → none |  |
| B120001.1120 | DH1200/Electrical Room #5201 // Install MEPF Overhead Ceiling Rough |  | 2026-10-02 → 2026-10-08 A (+6d) | 0% → 100% | 1d → none |  |
| B120001.1180 | DH1200/Electrical Room #5201 // Install Cable Tray |  | 2026-10-02 → 2026-10-07 A (+5d) | 0% → 100% | 1d → none |  |
| B120001.1110 | DH1200/Electrical Room #5201 // Prime and First Coat of Paint | 2026-09-25 A → 2026-09-30 A (+5d) | 2026-10-07 → 2026-10-01 A (-6d) | 0% → 100% | -2d → none |  |
| B120001.1170 | DH1200/Electrical Room #5201 // Install Overhead Buss duct | 2026-09-30 A | 2026-10-01 → 2026-10-09 A (+8d) | 0% → 100% | 4d → none |  |

| ID | Task | Start | Finish | Complete | Total float | Predecessors |
| --- | --- | --- | --- | --- | --- | --- |
| B120001.3112 | DH1200/Electrical Room #5201 // Install Overhead HAC - TFO | 2026-09-30 A | 2026-10-06 → 2026-10-13 A (+7d) | 0% → 100% | 4d → none |  |
| B120001.3110 | DH1200/Electrical Room #5201 // Room Ready to Receive Equipment | 2026-10-08 → 2026-10-02 A (-6d) | 2026-10-08 → 2026-10-02 A (-6d) | 0% → 100% | -2d → none |  |
| B120001.1250 | DH1200/Electrical Room #5201 // Set CRAH-ER5201- 01 | 2026-10-14 → 2026-10-06 A (-8d) | 2026-10-14 → 2026-10-08 A (-6d) | 0% → 100% | -4d → none |  |
| B120001.3031 | DH1200/Electrical Room #5201 // Set CRAH-ER5201- 02 | 2026-10-15 → 2026-10-06 A (-9d) | 2026-10-15 → 2026-10-08 A (-7d) | 0% → 100% | -4d → none | B120001.1250, B120001.1180 → B120001.1180 SS |
| B120001.3032 | DH1200/Electrical Room #5201 // Set CRAH-ER5201- 03 | 2026-10-16 → 2026-10-06 A (-10d) | 2026-10-16 → 2026-10-08 A (-8d) | 0% → 100% | -4d → none | B120001.3031 → B120001.3031 FF |
| B120001.3033 | DH1200/Electrical Room #5201 // Set CRAH-ER5201- 04 | 2026-10-19 → 2026-10-06 A (-13d) | 2026-10-19 → 2026-10-08 A (-11d) | 0% → 100% | -4d → none | B120001.3032 → B120001.3032 FF |
| B120001.3034 | DH1200/Electrical Room #5201 // Set CRAH-ER5201- 05 | 2026-10-20 → 2026-10-06 A (-14d) | 2026-10-20 → 2026-10-08 A (-12d) | 0% → 100% | -4d → none | B120001.3033 → B120001.3033 FF |
| B120001.3035 | DH1200/Electrical Room #5201 // Set CRAH-ER5201- 06 | 2026-10-21 → 2026-10-06 A (-15d) | 2026-10-21 → 2026-10-08 A (-13d) | 0% → 100% | -4d → none | B120001.3034 → B120001.3034 FF |
| ER.5101.3045 | DH1200/Electrical Room #5201 // Set Skid - SKID-A120 | 2026-10-13 → 2026-10-12 A (-1d) | 2026-10-13 A | 0% → 100% | -4d → none |  |
| ER.5101.3046 | DH1200/Electrical Room #5201 // Set Skid - SKID-B120 | 2026-10-13 → 2026-10-12 A (-1d) | 2026-10-13 A | 0% → 100% | -4d → none | ER.5101.3045 SS → B120001.3219, ER.5101.3045 SS |
| ER.5101.3047 | DH1200/Electrical Room #5201 // Set Skid - SKID-C120 | 2026-10-13 → 2026-10-12 A (-1d) | 2026-10-13 A | 0% → 100% | -4d → none | ER.5101.3046 SS → B120001.3219, ER.5101.3046 SS |
| B120001.3219 | DH1200/Electrical Room #5201 // DH1200 - OFCI Skid Ship Date (09/30/2026) First Shipment | 2026-10-13 A | 2026-10-13 A | 0% → 100% | -4d → none |  |
| ER.5101.3048 | DH1200/Electrical Room #5201 // Set Skid - SKID-D120 | 2026-10-13 A | 2026-10-13 A | 0% → 100% | -4d → none | ER.5101.3047 SS → B120001.3230, ER.5101.3047 |
| ER.5101.3049 | DH1200/Electrical Room #5201 // Set Skid - SKID-E120 | 2026-10-13 A | 2026-10-13 A | 0% → 100% | -4d → none | ER.5101.3048 SS → B120001.3230, ER.5101.3048 SS |
| B120001.1220 | DH1200/Electrical Room #5201 // Pull Cable Tray Feeders (CRAHU/CDU) | 2026-10-05 → 2026-10-14 (+9d) | 2026-10-19 → 2026-10-27 (+8d) |  | 1d → -5d |  |
| B120001.1290 | DH1200/Electrical Room #5201 // Pull Misc Feeder and Branch Circuits | 2026-10-05 → 2026-10-14 (+9d) | 2026-10-19 → 2026-10-27 (+8d) |  | 1d → -5d |  |
| ER.5101.3096 | DH1200/Electrical Room #5201 // Set PDU - PDU-R120-01 | 2026-10-05 → 2026-10-14 (+9d) | 2026-10-05 → 2026-10-14 (+9d) |  | 6d → 0d |  |
| F.1000A.1192 | DH1200/Electrical Room #5201 // Pull & Test Security Cable | 2026-09-30 → 2026-10-14 (+14d) | 2026-10-02 → 2026-10-16 (+14d) |  | 46d → 37d |  |
| ER.5101.3102 | DH1200/Electrical Room #5201 // Set UPS - UPS-R120 | 2026-10-06 → 2026-10-15 (+9d) | 2026-10-06 → 2026-10-15 (+9d) |  | 6d → 0d |  |
| B120001.1260 | DH1200/Electrical Room #5201 // Mechanical Connections to CRAHU | 2026-10-22 → 2026-10-16 (-6d) | 2026-10-28 → 2026-10-22 (-6d) |  | -4d → 0d |  |
| F.1000A.1193 | DH1200/Electrical Room #5201 // Install Security Devices | 2026-10-05 → 2026-10-19 (+14d) | 2026-10-06 → 2026-10-20 (+14d) |  | 46d → 37d |  |
| B120001.1240 | DH1200/Electrical Room #5201 // Land and Terminate Cabel Tray Feeders In Gear | 2026-10-13 → 2026-10-21 (+8d) | 2026-10-26 → 2026-11-03 (+8d) |  | 1d → -5d |  |
| B120001.1300 | DH1200/Electrical Room #5201 // Land and Terminate Misc Feeder and Branch Circuits | 2026-10-13 → 2026-10-21 (+8d) | 2026-10-26 → 2026-11-03 (+8d) |  | 1d → -5d |  |
| B120001.1270 | DH1200/Electrical Room #5201 // Install Condensate lines from CRAHU's | 2026-10-29 → 2026-10-23 (-6d) | 2026-10-30 → 2026-10-26 (-4d) |  | -3d → 1d |  |
| B120001.1280 | DH1200/Electrical Room #5201 // Install Elec Feeders to CRAHU's | 2026-10-29 → 2026-10-23 (-6d) | 2026-11-02 → 2026-10-27 (-6d) |  | -4d → 0d |  |
| B120001.1050 | DH1200/Electrical Room #5201 // Install Door Frames | 2026-10-27 → 2026-11-04 (+8d) | 2026-10-27 → 2026-11-04 (+8d) |  | 28d → 22d |  |
| B120001.1130 | DH1200/Electrical Room #5201 // Install Lighting, Fire Alarm & Fire Protection | 2026-10-27 → 2026-11-04 (+8d) | 2026-10-28 → 2026-11-05 (+8d) |  | 27d → 21d |  |
| B120001.1310 | DH1200/Electrical Room #5201 // Final FOD Check of all Panels | 2026-10-30 → 2026-11-04 (+5d) | 2026-11-02 → 2026-11-05 (+3d) |  | -2d → -5d |  |
| B120001.1330 | DH1200/Electrical Room #5201 // Mechanical Equipment Pre-Start up | 2026-11-03 → 2026-11-04 (+1d) | 2026-11-04 → 2026-11-05 (+1d) |  | -4d → -5d |  |
| B120001.1140 | DH1200/Electrical Room #5201 // Wall Touch up Final Coat of Paint | 2026-10-29 → 2026-11-06 (+8d) | 2026-11-02 → 2026-11-10 (+8d) |  | 27d → 21d |  |
| F.1000A.1194 | DH1200/Electrical Room #5201 // Mount & Terminate Security Devices | 2026-10-29 → 2026-11-06 (+8d) | 2026-11-04 → 2026-11-13 (+9d) |  | 31d → 25d |  |
| B120001.1150 | DH1200/Electrical Room #5201 // Install Wall Base, Trim, and Devices | 2026-11-03 → 2026-11-12 (+9d) | 2026-11-05 → 2026-11-16 (+11d) |  | 27d → 21d |  |
| F.1000A.1195 | DH1200/Electrical Room #5201 // Test Security Devices | 2026-11-12 → 2026-11-20 (+8d) | 2026-11-13 → 2026-11-23 (+10d) |  | 27d → 21d |  |
| B120001.1160 | DH1200/Electrical Room #5201 // Suffolk Pre Punch | 2026-11-16 → 2026-11-24 (+8d) | 2026-11-20 → 2026-12-01 (+11d) |  | 27d → 21d |  |
| 2 | **Electrcal Room #5204** |  | 2026-11-10 → 2026-11-24 (+14d) |  |  |  |
| B120004.1060 | DH1200/Electrical Room #5204 // MEPF Install Rough Wall | 2026-08-11 A → 2026-08-20 A (+9d) |  |  |  |  |
| B120004.1020 | DH1200/Electrical Room #5204 // MEPF Install High Overhead Systems | 2026-08-05 A → 2026-08-27 A (+22d) |  |  |  |  |
| B120001.3113 | DH1200/Electrical Room #5204 // Install Overhead Cable Ladder / 36" Cable Tray - TFO | 2026-08-05 A → 2026-09-08 A (+34d) |  |  |  |  |
| B120004.1070 | DH1200/Electrical Room #5204 // Install Top Down Sheet Rock | 2026-08-11 A → 2026-09-10 A (+30d) |  |  |  |  |
| B120004.1090 | DH1200/Electrical Room #5204 // Rough Wall Inspspection (Approval to Close up) | 2026-08-13 A → 2026-09-17 A (+35d) |  |  |  |  |
| B120004.1130 | DH1200/Electrical Room #5204 // Install MEPF Overhead Ceiling Rough | 2026-08-19 A → 2026-09-17 A (+29d) |  |  |  |  |
| B120004.1140 | DH1200/Electrical Room #5204 // Install Cable Tray | 2026-08-19 A → 2026-09-17 A (+29d) |  |  |  |  |
| F.1000A.1196 | DH1200/Electrical Room #5204 // Rough-In Security | 2026-08-13 A → 2026-09-17 A (+35d) |  |  |  |  |
| F.1000A.1395 | DH1200/Electrical Room #5204 // BMS & EPMS Rough-In | 2026-09-30 → 2026-09-17 A (-13d) | 2026-10-01 → 2026-09-18 A (-13d) | 0% → 100% | 61d → none |  |
| B120004.1080 | DH1200/Electrical Room #5204 // Install Overhead Buss duct | 2026-08-18 A → 2026-09-22 A (+35d) |  |  |  |  |
| B120004.1110 | DH1200/Electrical Room #5204 // Tape and Finish Walls |  | 2026-10-07 → 2026-10-06 A (-1d) | 0% → 100% | 1d → none |  |
| B120004.1120 | DH1200/Electrical Room #5204 // Prime and First Coat of Paint |  | 2026-10-02 → 2026-10-05 A (+3d) | 0% → 100% | 0d → none |  |
| B120004.1100 | DH1200/Electrical Room #5204 // Install Balance of Sheetrock | 2026-09-30 → 2026-10-01 A (+1d) | 2026-10-02 → 2026-10-05 A (+3d) | 0% → 100% | 0d → none |  |
| B120004.1150 | DH1200/Electrical Room #5204 // Set CRAH-ER5204- 01 | 2026-10-05 A | 2026-10-05 → 2026-10-08 A (+3d) | 0% → 100% | 0d → none |  |
| B120004.3031 | DH1200/Electrical Room #5204 // Set CRAH-ER5204- 02 | 2026-10-05 A | 2026-10-05 → 2026-10-08 A (+3d) | 0% → 100% | 0d → none |  |
| B120004.3032 | DH1200/Electrical Room #5204 // Set CRAH-ER5204- 03 | 2026-10-05 A | 2026-10-05 → 2026-10-08 A (+3d) | 0% → 100% | 0d → none |  |
| B120004.3033 | DH1200/Electrical Room #5204 // Set CRAH-ER5204- 04 | 2026-10-05 A | 2026-10-05 → 2026-10-08 A (+3d) | 0% → 100% | 0d → none |  |
| B120004.3034 | DH1200/Electrical Room #5204 // Set CRAH-ER5204- 05 | 2026-10-05 A | 2026-10-05 → 2026-10-08 A (+3d) | 0% → 100% | 0d → none |  |
| B120004.3035 | DH1200/Electrical Room #5204 // Set CRAH-ER5204- 06 | 2026-10-05 A | 2026-10-05 → 2026-10-08 A (+3d) | 0% → 100% | 0d → none |  |
| B120004.3036 | DH1200/Electrical Room #5204 // Ready to Receive Equipment | 2026-10-02 → 2026-10-06 A (+4d) | 2026-10-02 → 2026-10-06 A (+4d) | 0% → 100% | 2d → none |  |
| ER.5101.3050 | DH1200/Electrical Room #5204 // Set Skid - SKID-F120 | 2026-10-14 → 2026-10-13 A (-1d) | 2026-10-14 → 2026-10-13 A (-1d) | 0% → 100% | -4d → none | ER.5101.3049, B120001.3220 → B120001.3230, ER.5101.3049 SS |
| ER.5101.3051 | DH1200/Electrical Room #5204 // Set Skid - SKID-G120 | 2026-10-14 → 2026-10-13 A (-1d) | 2026-10-14 → 2026-10-13 A (-1d) | 0% → 100% | -4d → none | ER.5101.3050 SS → B120001.3230, ER.5101.3050 SS |
| B120001.3114 | DH1200/Electrical Room #5204 // Install Overhead HAC - TFO | 2026-09-30 → 2026-10-14 (+14d) | 2026-10-06 → 2026-10-20 (+14d) |  | 4d → -5d |  |
| B120001.3220 | DH1200/Electrical Room #5204 // DH1200 - OFCI Skid Ship Date (10/06/2026) 2ND Shipment | 2026-10-06 → 2026-10-14 (+8d) | 2026-10-06 → 2026-10-14 (+8d) |  | 1d → -3d |  |
| B120004.1160 | DH1200/Electrical Room #5204 // Mechanical Connections to CRAHU | 2026-10-06 → 2026-10-14 (+8d) | 2026-10-13 → 2026-10-20 (+7d) |  | 2d → -3d |  |
| B120004.1180 | DH1200/Electrical Room #5204 // Pull Misc Feeder and Branch Circuits | 2026-09-30 → 2026-10-14 (+14d) | 2026-10-05 → 2026-10-19 (+14d) |  | 9d → 0d |  |
| B120004.1200 | DH1200/Electrical Room #5204 // Pull Cable Tray Feeders (CRAHU/CDU) | 2026-09-30 → 2026-10-14 (+14d) | 2026-10-14 → 2026-10-27 (+13d) |  | -6d → -8d |  |
| ER.5101.3052 | DH1200/Electrical Room #5204 // Set Skid - SKID-H120 | 2026-10-15 → 2026-10-14 (-1d) | 2026-10-15 → 2026-10-14 (-1d) |  | -4d → -3d | ER.5101.3051 → B120001.3220, ER.5101.3051 |
| ER.5101.3053 | DH1200/Electrical Room #5204 // Set Skid - SKID-J120 | 2026-10-15 → 2026-10-14 (-1d) | 2026-10-15 → 2026-10-14 (-1d) |  | -4d → -3d | ER.5101.3052 SS → B120001.3220, ER.5101.3052 SS |
| ER.5101.3054 | DH1200/Electrical Room #5204 // Set Skid - SKID-K120 | 2026-10-15 → 2026-10-14 (-1d) | 2026-10-15 → 2026-10-14 (-1d) |  | -4d → -3d | ER.5101.3053 SS → B120001.3220, ER.5101.3053 SS |
| F.1000A.1197 | DH1200/Electrical Room #5204 // Pull & Test Security Cable | 2026-09-30 → 2026-10-14 (+14d) | 2026-10-02 → 2026-10-16 (+14d) |  | 51d → 61d |  |
| B120004.1190 | DH1200/Electrical Room #5204 // Install Cable Buss From Exterior | 2026-10-16 → 2026-10-15 (-1d) | 2026-10-20 → 2026-10-19 (-1d) |  | -4d → -3d |  |
| B120004.1230 | DH1200/Electrical Room #5204 // Buss Duct Tie In to Elect Gear | 2026-10-16 → 2026-10-15 (-1d) | 2026-10-20 → 2026-10-19 (-1d) |  | 5d → 6d |  |
| B120004.1280 | DH1200/Electrical Room #5204 // Land and Terminate Cabel Tray Feeders In Gear | 2026-10-15 → 2026-10-19 (+4d) | 2026-10-28 → 2026-10-30 (+2d) |  | -6d → -8d | B120004.1200, B120004.3035 → B120004.3035, B120004.1200 FF+3d |
| F.1000A.1198 | DH1200/Electrical Room #5204 // Install Security Devices | 2026-10-05 → 2026-10-19 (+14d) | 2026-10-06 → 2026-10-20 (+14d) |  | 51d → 61d |  |

| ID | Task | Start | Finish | Complete | Total float | Predecessors |
| --- | --- | --- | --- | --- | --- | --- |
| B120004.1240 | DH1200/Electrical Room #5204 // Pull Cable Buss Feeders | 2026-10-21 → 2026-10-20 (-1d) | 2026-10-28 → 2026-10-27 (-1d) |  | -4d → -3d |  |
| B120004.3046 | DH1200/Electrical Room #5204 // Pull Misc Feeder and Branch Circuits | 2026-10-16 → 2026-10-20 (+4d) | 2026-10-23 → 2026-10-27 (+4d) |  | 2d → 0d |  |
| B120004.1210 | DH1200/Electrical Room #5204 // Install Condensate lines from CRAHU's | 2026-10-14 → 2026-10-21 (+7d) | 2026-10-15 → 2026-10-22 (+7d) |  | 3d → -2d |  |
| B120004.1220 | DH1200/Electrical Room #5204 // Install Elec Feeders to CRAHU's | 2026-10-14 → 2026-10-21 (+7d) | 2026-10-16 → 2026-10-23 (+7d) |  | 2d → -3d |  |
| B120004.1260 | DH1200/Electrical Room #5204 // Land and Terminate Misc Feeder and Branch Circuits | 2026-10-07 → 2026-10-21 (+14d) | 2026-10-21 → 2026-11-03 (+13d) |  | 4d → -5d |  |
| B120004.1270 | DH1200/Electrical Room #5204 // Terminate Cable Buss Feeders | 2026-10-29 → 2026-10-28 (-1d) | 2026-11-02 → 2026-10-30 (-3d) |  | -4d → -3d |  |
| B120004.1250 | DH1200/Electrical Room #5204 // Mechanical Equipment Pre-Start up | 2026-10-29 → 2026-11-02 (+4d) | 2026-11-06 → 2026-11-10 (+4d) |  | -6d → -8d |  |
| B120004.1290 | DH1200/Electrical Room #5204 // Install Lighting, Fire Alarm & Fire Protection | 2026-10-22 → 2026-11-04 (+13d) | 2026-10-23 → 2026-11-05 (+13d) |  | 34d → 25d |  |
| B120004.1310 | DH1200/Electrical Room #5204 // Final FOD Check of all Panels | 2026-11-03 → 2026-11-04 (+1d) | 2026-11-04 → 2026-11-05 (+1d) |  | -4d → -5d |  |
| B120004.1050 | DH1200/Electrical Room #5204 // Install Door Frames | 2026-10-26 → 2026-11-06 (+11d) | 2026-10-26 → 2026-11-06 (+11d) |  | 34d → 25d |  |
| F.1000A.1199 | DH1200/Electrical Room #5204 // Mount & Terminate Security Devices | 2026-10-26 → 2026-11-06 (+11d) | 2026-10-30 → 2026-11-13 (+14d) |  | 39d → 49d |  |
| B120004.1300 | DH1200/Electrical Room #5204 // Wall Touch up Final Coat of Paint | 2026-10-27 → 2026-11-09 (+13d) | 2026-10-29 → 2026-11-12 (+14d) |  | 34d → 25d |  |
| B120004.1320 | DH1200/Electrical Room #5204 // Install Wall Base, Trim, and Devices | 2026-10-30 → 2026-11-13 (+14d) | 2026-11-03 → 2026-11-17 (+14d) |  | 34d → 25d |  |
| B120004.1330 | DH1200/Electrical Room #5204 // Suffolk Pre Punch | 2026-11-04 → 2026-11-18 (+14d) | 2026-11-10 → 2026-11-24 (+14d) |  | 34d → 25d |  |
| F.1000A.1200 | DH1200/Electrical Room #5204 // Test Security Devices | 2026-11-04 → 2026-11-18 (+14d) | 2026-11-05 → 2026-11-19 (+14d) |  | 37d → 47d |  |
| 3 | **Data Hall 1200** |  | 2026-11-13 → 2026-11-25 (+12d) |  |  |  |
| B12000.6290 | DH 1200 // MEPF high overhead install | 2026-08-10 A → 2026-09-01 A (+22d) |  |  |  |  |
| B12000.12067 | DH 1200 // Install 1-Side Sheet Rock (DH-Side) | 2026-08-19 A → 2026-09-10 A (+22d) |  |  |  |  |
| B12000.6320 | DH 1200 // MEP rough in walls | 2026-08-19 A → 2026-09-10 A (+22d) |  |  |  |  |
| F.1000A.1405 | DH 1200 // BMS & EPMS Rough-In | 2026-10-15 → 2026-09-10 A (-35d) | 2026-10-16 → 2026-09-11 A (-35d) | 0% → 100% | 51d → none | F.1000A.1201 FF, F.1000A.1201 SS → B12000.6300 |
| B12000.6360 | DH 1200 // Tape and finish walls |  | 2026-10-13 → 2026-10-06 A (-7d) | 40% → 100% | -9d → none |  |
| B120001.3115 | DH 1200 // Install Overhead Cable Ladder / 36" Cable Tray - TFO |  | 2026-10-06 → 2026-10-09 A (+3d) | 0% → 100% | 39d → none |  |
| B12000.6310 | DH 1200 // Install wall door frames |  | 2026-10-02 → 2026-10-05 A (+3d) | 0% → 100% | 43d → none |  |
| B12000.6250 | DH 1200 // Install overhead MEP and lighting |  | 2026-10-06 → 2026-10-14 (+8d) | 0% → 100% | 43d → 53d |  |
| B12000.7800 | DH 1200 // Install Ceiling supports (rods/wires) no grid | 2026-09-30 → 2026-10-14 (+14d) | 2026-10-06 → 2026-10-20 (+14d) |  | 38d → 43d |  |
| B120001.3116 | DH 1200 // Install Overhead HAC - TFO | 2026-10-07 → 2026-10-14 (+7d) | 2026-10-14 → 2026-10-20 (+6d) |  | 39d → 49d |  |
| B12000.6220 | DH 1200 // Install ceiling grid system | 2026-10-07 → 2026-10-21 (+14d) | 2026-10-19 → 2026-10-30 (+11d) |  | 38d → 43d |  |
| F.1000A.1201 | DH 1200 // Rough-In Security | 2026-10-15 → 2026-10-21 (+6d) | 2026-10-16 → 2026-10-22 (+6d) |  | 39d → 49d |  |
| F.1000A.1202 | DH 1200 // Pull & Test Security Cable | 2026-10-19 → 2026-10-23 (+4d) | 2026-10-21 → 2026-10-27 (+6d) |  | 39d → 49d |  |
| B12000.6240 | DH 1200 // Install ceiling grid tiles | 2026-10-13 → 2026-10-26 (+13d) | 2026-10-15 → 2026-10-28 (+13d) |  | 40d → 45d |  |
| F.1000A.1203 | DH 1200 // Install Security Devices | 2026-10-22 → 2026-10-28 (+6d) | 2026-10-23 → 2026-10-29 (+6d) |  | 39d → 49d |  |
| F.1000A.1204 | DH 1200 // Mount & Terminate Security Devices | 2026-10-26 → 2026-10-30 (+4d) | 2026-10-30 → 2026-11-05 (+6d) |  | 39d → 49d |  |
| B12000.7790 | DH 1200 // Final Paint & Touch up walls | 2026-10-21 → 2026-11-02 (+12d) | 2026-10-27 → 2026-11-06 (+10d) |  | 37d → 43d |  |
| B12000.7810 | DH 1200 // Install MEPF Trim and Finishes | 2026-10-28 → 2026-11-09 (+12d) | 2026-11-03 → 2026-11-16 (+13d) |  | 37d → 43d |  |
| B12000.12096 | DH 1200 // Ready to Receive Equipment | 2026-11-03 → 2026-11-16 (+13d) | 2026-11-03 → 2026-11-16 (+13d) |  | 53d → 45d |  |
| F.1000A.1205 | DH 1200 // Test Security Devices | 2026-11-04 → 2026-11-17 (+13d) | 2026-11-05 → 2026-11-18 (+13d) |  | 37d → 43d |  |
| B12000.7820 | DH 1200 // Suffolk Pre Punch | 2026-11-06 → 2026-11-19 (+13d) | 2026-11-13 → 2026-11-25 (+12d) |  | 51d → 43d |  |
| 15 | **PDU Gallery** |  | 2026-10-23 → 2026-10-16 (-7d) |  |  |  |
| B1200100.1000 | DH1200/PDU Gallery // Seal concrete | 2026-10-15 → 2026-09-04 A (-41d) | 2026-10-21 → 2026-09-11 A (-40d) | 0% → 100% | 46d → none | B1200100.1090, B1200100.1030 → B1200100.1030 SS, B1200100.1090 SS |
| B1200100.1050 | DH1200/PDU Gallery // Install wall door frames | 2026-08-24 A → 2026-09-10 A (+17d) |  |  |  |  |
| B1200100.1060 | DH1200/PDU Gallery // Install Sheetrock Top Down | 2026-08-25 A → 2026-09-11 A (+17d) |  |  |  |  |
| B1200100.1711 | DH1200/PDU Gallery // MEP rough in walls |  | 2026-10-02 → 2026-10-01 A (-1d) | 0% → 100% | 9d → none |  |
| B1200100.1080 | DH1200/PDU Gallery // Install sheetrock on walls | 2026-10-06 → 2026-09-28 A (-8d) | 2026-10-13 → 2026-10-15 (+2d) | 0% → 100% |  | B1200100.1070 → B1200100.1070 FF |
| B1200100.1030 | DH1200/PDU Gallery // MEPF high overhead install |  | 2026-10-02 → 2026-10-16 (+14d) |  | 53d → 52d |  |
| B1200100.1090 | DH1200/PDU Gallery // Tape and finish walls | 2026-10-14 → 2026-10-02 A (-12d) | 2026-10-14 → 2026-10-15 (+1d) | 0% → 100% |  | B1200100.1080 → B1200100.1080 SS |
| B1200100.1070 | DH1200/PDU Gallery // In wall inspection | 2026-10-05 → 2026-10-14 (+9d) | 2026-10-05 → 2026-10-14 (+9d) |  |  |  |
| B1200100.1100 | DH1200/PDU Gallery // Paint walls | 2026-10-22 → 2026-10-15 (-7d) | 2026-10-23 → 2026-10-16 (-7d) |  | 46d → 51d |  |
| B1200100.1712 | DH1200/PDU Gallery // Ready to Receive Equipment | 2026-10-23 → 2026-10-16 (-7d) | 2026-10-23 → 2026-10-16 (-7d) |  | 46d → 51d |  |
| 14 | **CRAH/CDU Galleries** |  | 2026-11-27 → 2026-11-17 (-10d) |  |  |  |
| 4 | **Architectural** |  | 2026-11-03 → 2026-11-05 (+2d) |  |  |  |
| B1200.4690 | DH 1200/Gallery 1202 // MEPF high overhead install | 2026-08-21 A → 2026-09-14 A (+24d) |  |  |  |  |
| B1200.4720 | DH 1200/Gallery 1202 // Install Sheetrock Top Down | 2026-08-13 A → 2026-09-14 A (+32d) |  |  |  |  |
| B1200.4750 | DH 1200/Gallery 1202 // Install Balance of Sheetrock on walls | 2026-09-04 A → 2026-09-16 A (+12d) |  |  |  |  |
| F.1000A.1415 | DH 1200/Gallery 1202 // BMS & EPMS Rough-In | 2026-10-07 → 2026-09-17 A (-20d) | 2026-10-08 → 2026-09-18 A (-20d) | 0% → 100% | 51d → none | F.1000A.1206 FF, F.1000A.1206 SS → B1200.4700 |
| B1200.4730 | DH 1200/Gallery 1202 // MEP rough in walls |  | 2026-10-05 → 2026-09-29 A (-6d) | 0% → 100% | -8d → none |  |
| B120001.3117 | DH 1200/Gallery 1202 // Install Overhead Cable Ladder / 36" Cable Tray - TFO |  | 2026-10-06 → 2026-10-12 A (+6d) | 0% → 100% | 39d → none |  |
| B120001.3118 | DH 1200/Gallery 1202 // Install Overhead HAC - TFO |  | 2026-10-06 → 2026-10-09 A (+3d) | 0% → 100% | 39d → none |  |
| F.1000A.1206 | DH 1200/Gallery 1202 // Rough-In Security | 2026-10-07 → 2026-09-28 A (-9d) | 2026-10-08 → 2026-09-29 A (-9d) | 0% → 100% | 39d → none |  |
| B1200.4740 | DH 1200/Gallery 1202 // In wall inspection | 2026-10-06 → 2026-09-29 A (-7d) | 2026-10-06 → 2026-09-29 A (-7d) | 0% → 100% | -8d → none | B1200.4730 → B1200.4730 FF |
| B1200.4790 | DH 1200/Gallery 1202 // Prime and Paint walls | 2026-10-07 A | 2026-10-13 → 2026-10-12 A (-1d) | 0% → 100% | -8d → none |  |
| B1200.4821 | DH 1200/Gallery 1202 // Ready to Receive Equipment | 2026-10-14 → 2026-10-12 A (-2d) | 2026-10-14 → 2026-10-12 A (-2d) | 0% → 100% | -8d → none | B1200.4810 → B1200.4790 |
| B1200.4800 | DH 1200/Gallery 1202 // Touch up Walls and Fianl Paint | 2026-10-06 → 2026-10-14 (+8d) | 2026-10-13 → 2026-10-20 (+7d) |  | -8d → 42d |  |
| F.1000A.1207 | DH 1200/Gallery 1202 // Pull & Test Security Cable | 2026-10-09 → 2026-10-14 (+5d) | 2026-10-14 → 2026-10-16 (+2d) |  | 39d → 37d |  |
| B1200.4810 | DH 1200/Gallery 1202 // Install Trim and Devices | 2026-10-09 → 2026-10-19 (+10d) | 2026-10-13 → 2026-10-20 (+7d) |  | -8d → 42d |  |
| F.1000A.1208 | DH 1200/Gallery 1202 // Install Security Devices | 2026-10-15 → 2026-10-19 (+4d) | 2026-10-16 → 2026-10-20 (+4d) |  | 39d → 37d |  |
| F.1000A.1209 | DH 1200/Gallery 1202 // Mount & Terminate Security Devices | 2026-10-19 → 2026-10-21 (+2d) | 2026-10-23 → 2026-10-27 (+4d) |  | 39d → 37d |  |
| F.1000A.1210 | DH 1200/Gallery 1202 // Test Security Devices | 2026-10-26 → 2026-10-28 (+2d) | 2026-10-27 → 2026-10-29 (+2d) |  | 39d → 37d |  |
| B1200.4820 | DH 1200/Gallery 1202 // Suffolk Pre Punch | 2026-10-28 → 2026-10-30 (+2d) | 2026-11-03 → 2026-11-05 (+2d) |  | 39d → 37d |  |
| 4 | **Gallery 1203** |  | 2026-11-27 → 2026-11-16 (-11d) |  |  |  |
| 1 | **Architectural** |  | 2026-11-03 → 2026-11-09 (+6d) |  |  |  |

| ID | Task | Start | Finish | Complete | Total float | Predecessors |
| --- | --- | --- | --- | --- | --- | --- |
| B12003.1010 | DH 1200/Gallery 1203 // MEPF overhead layout | 2026-08-03 A → 2026-08-10 A (+7d) |  |  |  |  |
| B12003.1030 | DH 1200/Gallery 1203 // MEPF high overhead install | 2026-08-18 A → 2026-09-01 A (+14d) |  |  |  |  |
| B12003.1070 | DH 1200/Gallery 1203 // MEP rough in walls | 2026-08-25 A → 2026-09-10 A (+16d) |  |  |  |  |
| B12003.1090 | DH 1200/Gallery 1203 // Install Balance of Sheetrock on walls | 2026-08-25 A → 2026-09-10 A (+16d) |  |  |  |  |
| B12003.1080 | DH 1200/Gallery 1203 // In wall inspection | 2026-08-31 A → 2026-09-16 A (+16d) |  |  |  |  |
| B120001.3119 | DH 1200/Gallery 1203 // Install Overhead Cable Ladder / 36" Cable Tray - TFO | 2026-08-10 A → 2026-09-17 A (+38d) |  |  |  |  |
| B12003.1100 | DH 1200/Gallery 1203 // Tape and finish walls |  | 2026-10-02 A | 62% → 100% | -9d → none |  |
| F.1000A.1425 | DH 1200/Gallery 1203 // BMS & EPMS Rough-In | 2026-10-07 → 2026-09-17 A (-20d) | 2026-10-08 → 2026-09-18 A (-20d) | 0% → 100% | 51d → none | F.1000A.1211 FF, F.1000A.1211 SS → B12003.1040 |
| B12003.1060 | DH 1200/Gallery 1203 // Install wall door frames |  | 2026-10-01 → 2026-10-14 (+13d) | 0% → 50% | -4d → 41d |  |
| B120001.3120 | DH 1200/Gallery 1203 // Install Overhead HAC - TFO | 2026-09-30 → 2026-10-01 A (+1d) | 2026-10-06 A | 0% → 100% | 39d → none |  |
| B12003.1110 | DH 1200/Gallery 1203 // Prime and Paint walls | 2026-10-05 A | 2026-10-08 → 2026-10-07 A (-1d) | 0% → 100% | -9d → none | B12003.1100, B12003.1060 FF → B12003.1050, B12003.1100 |
| B12003.1141 | DH 1200/Gallery 1203 // Ready to Receive Equipment | 2026-10-13 → 2026-10-07 A (-6d) | 2026-10-13 → 2026-10-07 A (-6d) | 0% → 100% | -9d → none | B12003.1130 FF → B12003.1110 FF |
| F.1000A.1211 | DH 1200/Gallery 1203 // Rough-In Security | 2026-10-07 → 2026-10-14 (+7d) | 2026-10-08 → 2026-10-15 (+7d) |  | 39d → 35d |  |
| B12003.1120 | DH 1200/Gallery 1203 // Touch up Walls and Fianl Paint | 2026-10-06 → 2026-10-15 (+9d) | 2026-10-13 → 2026-10-21 (+8d) |  | -9d → 41d | B12003.1110 FF+2d → B12003.1060, B12003.1110 FS+2d |
| F.1000A.1212 | DH 1200/Gallery 1203 // Pull & Test Security Cable | 2026-10-09 → 2026-10-16 (+7d) | 2026-10-14 → 2026-10-20 (+6d) |  | 39d → 35d |  |
| B12003.1130 | DH 1200/Gallery 1203 // Install Trim and Devices | 2026-10-09 → 2026-10-20 (+11d) | 2026-10-13 → 2026-10-21 (+8d) |  | -9d → 41d |  |
| F.1000A.1213 | DH 1200/Gallery 1203 // Install Security Devices | 2026-10-15 → 2026-10-21 (+6d) | 2026-10-16 → 2026-10-22 (+6d) |  | 39d → 35d |  |
| F.1000A.1214 | DH 1200/Gallery 1203 // Mount & Terminate Security Devices | 2026-10-19 → 2026-10-23 (+4d) | 2026-10-23 → 2026-10-29 (+6d) |  | 39d → 35d |  |
| F.1000A.1215 | DH 1200/Gallery 1203 // Test Security Devices | 2026-10-26 → 2026-10-30 (+4d) | 2026-10-27 → 2026-11-02 (+6d) |  | 39d → 35d |  |
| B12003.1140 | DH 1200/Gallery 1203 // Suffolk Pre Punch | 2026-10-28 → 2026-11-03 (+6d) | 2026-11-03 → 2026-11-09 (+6d) |  | 39d → 35d |  |
| 3 | **Equipment Line-Ups** | 2026-09-30 → 2026-10-06 (+6d) | 2026-11-27 → 2026-11-16 (-11d) |  |  |  |
| 1 | **A120** | 2026-10-14 → 2026-10-06 (-8d) | 2026-11-16 → 2026-11-10 (-6d) |  |  |  |
| B12000-B-EQP-1 | Gallery 1203 - A120/Line-Ups // Set CRAH-DH1200- 12 | 2026-10-14 → 2026-10-06 A (-8d) | 2026-10-14 → 2026-10-07 A (-7d) | 0% → 100% | -9d → none | B12000.6360, B12003.1141 → B12003.1141 FF, B12000.6360 |
| B12000-B-EQP-199 | Gallery 1203 - A120/Line-Ups // Set CDU-DH1200-11 | 2026-10-15 → 2026-10-06 A (-9d) | 2026-10-15 → 2026-10-14 (-1d) |  | 47d → 37d | Gallery 1203 - A120/Line-Ups // Set MOD A140-02 (Does No apply) → B12000-B-EQP-4 |
| B12000-B-EQP-200 | Gallery 1203 - A120/Line-Ups // Set CDU-DH1200-12 | 2026-10-16 → 2026-10-06 A (-10d) | 2026-10-16 → 2026-10-14 (-2d) |  | 47d → 37d | B12000-B-EQP-199 → B12000-B-EQP-4 |
| B12000-B-EQP-4 | Gallery 1203 - A120/Line-Ups // Set CRAH-DH1200- 13 | 2026-10-14 → 2026-10-06 A (-8d) | 2026-10-14 → 2026-10-07 A (-7d) | 0% → 100% | -9d → none |  |
| B12000-B-EQP-10 | Gallery 1203 - A120/Line-Ups // Mount Electrial Gear for Chiller Controls | 2026-10-15 → 2026-10-14 (-1d) | 2026-10-28 → 2026-10-27 (-1d) |  | 33d → 34d | Gallery 1203 - A120/Line-Ups // Set MOD A140-02 (Does No apply) → B12000-B-EQP-4 |
| B12000-B-EQP-14 | Gallery 1203 - A120/Line-Ups // Terminate Electrical Connections - CRAHU | 2026-10-20 → 2026-10-14 (-6d) | 2026-10-22 → 2026-10-16 (-6d) |  | 45d → 49d | Gallery 1203 - A120/Line-Ups // Pull Cable Tray Feed from MOD to CRAHU's → B12000-B-EQP-1 |
| B12000-B-EQP-3 | Gallery 1203 - A120/Line-Ups // Condensate connections to Floor Drains | 2026-10-15 → 2026-10-14 (-1d) | 2026-10-28 → 2026-10-27 (-1d) |  | 35d → 36d |  |
| B12000-B-EQP-9 | Gallery 1203 - A120/Line-Ups // Mechanical Connections to CRAHU Units | 2026-10-21 → 2026-10-14 (-7d) | 2026-10-27 → 2026-10-20 (-7d) |  | 31d → 36d |  |
| B12000-B-EQP-15 | Gallery 1203 - A120/Line-Ups // Pull Feeder and Branch circuits to MIsc equipment and Chiller controls | 2026-10-21 → 2026-10-20 (-1d) | 2026-11-03 → 2026-11-02 (-1d) |  | 33d → 34d | B12000-B-EQP-10 SS+4d → B12000-B-EQP-200, B12000-B-EQP-199, B12000-B-EQP-10 SS+4d |
| B12000-B-EQP-12 | Gallery 1203 - A120/Line-Ups // Condensate connections to Floor Drains | 2026-10-28 → 2026-10-21 (-7d) | 2026-11-10 → 2026-11-03 (-7d) |  | 31d → 36d |  |
| B12000-B-EQP-17 | Gallery 1203 - A120/Line-Ups // Teminate all Misc Equipment and Chiller Controls | 2026-10-27 → 2026-10-26 (-1d) | 2026-11-09 → 2026-11-06 (-3d) |  | 33d → 34d |  |
| B12000-B-EQP-16 | Gallery 1203 - A120/Line-Ups // Mechanical Gear FOD Inspection Pre-Start Up | 2026-11-12 → 2026-11-04 (-8d) | 2026-11-16 → 2026-11-06 (-10d) |  | 31d → 36d |  |
| B12000-B-EQP-18 | Gallery 1203 - A120/Line-Ups // Electrical Gear FOD Inspection Pre-Start Up | 2026-11-10 → 2026-11-09 (-1d) | 2026-11-12 → 2026-11-10 (-2d) |  | 33d → 34d | Gallery 1203 - A120/Line-Ups // Terminate MOD Panels, B12000-B-EQP-17, B12000-B-EQP-14 → B12000-B-EQP-14, B12000-B-EQP-17 |
| 2 | **B120** | 2026-10-14 → 2026-10-06 (-8d) | 2026-11-23 → 2026-11-16 (-7d) |  |  |  |
| B12000-B-EQP-19 | Gallery 1203 - B120/Line-Ups // Set CRAH-DH1200- 14 | 2026-10-14 → 2026-10-06 A (-8d) | 2026-10-14 → 2026-10-07 A (-7d) | 0% → 100% | -9d → none |  |
| B12000-B-EQP-22 | Gallery 1203 - B120/Line-Ups // Set CRAH-DH1200- 15 | 2026-10-14 → 2026-10-06 A (-8d) | 2026-10-14 → 2026-10-07 A (-7d) | 0% → 100% | -9d → none |  |
| B12000-B-EQP-20 | Gallery 1203 - B120/Line-Ups // Connect CRAH units | 2026-10-21 → 2026-10-14 (-7d) | 2026-11-03 → 2026-10-27 (-7d) |  | 26d → 31d |  |
| B12000-B-EQP-201 | Gallery 1203 - B120/Line-Ups // Set CDU-DH1200-13 | 2026-10-15 → 2026-10-14 (-1d) | 2026-10-15 → 2026-10-14 (-1d) |  | 47d → 37d | Gallery 1203 - B120/Line-Ups // Set MOD B140-02 (Does No apply) → B12000-B-EQP-22 |
| B12000-B-EQP-202 | Gallery 1203 - B120/Line-Ups // Set CDU-DH1200-14 | 2026-10-16 → 2026-10-14 (-2d) | 2026-10-16 → 2026-10-14 (-2d) |  | 47d → 37d | B12000-B-EQP-201, B12000-B-EQP-201 FF → B12000-B-EQP-22 |
| B12000-B-EQP-27 | Gallery 1203 - B120/Line-Ups // Mechanical Connections to CRAHU Units | 2026-10-21 → 2026-10-14 (-7d) | 2026-11-03 → 2026-10-27 (-7d) |  | 31d → 36d |  |
| B12000-B-EQP-28 | Gallery 1203 - B120/Line-Ups // Mount Electrial Gear for Chiller Controls | 2026-10-15 → 2026-10-14 (-1d) | 2026-10-28 → 2026-10-27 (-1d) |  | 33d → 34d | Gallery 1203 - B120/Line-Ups // Set MOD B140-02 (Does No apply) → B12000-B-EQP-22 |
| B12000-B-EQP-32 | Gallery 1203 - B120/Line-Ups // Terminate CRAHU Electrical Connections | 2026-10-26 → 2026-10-14 (-12d) | 2026-10-30 → 2026-10-20 (-10d) |  | 39d → 47d | Gallery 1203 - B120/Line-Ups // Pull Cable Tray Feed from MOD to CRAHU's, Gallery 1203 - B120/Line-Ups // Pull Cable Tray Feed from MOD to CRAHU's SS+2d → B12000-B-EQP-19 |
| B12000-B-EQP-33 | Gallery 1203 - B120/Line-Ups // Pull Feeder and Branch circuits to MIsc equipment and Chiller controls | 2026-10-21 → 2026-10-20 (-1d) | 2026-11-03 → 2026-11-02 (-1d) |  | 33d → 34d | B12000-B-EQP-28 SS+4d → B12000-B-EQP-202, B12000-B-EQP-201, B12000-B-EQP-28 SS+4d |
| B12000-B-EQP-21 | Gallery 1203 - B120/Line-Ups // Condensate connections to Floor Drains | 2026-10-28 → 2026-10-21 (-7d) | 2026-11-10 → 2026-11-03 (-7d) |  | 26d → 31d |  |
| B12000-B-EQP-35 | Gallery 1203 - B120/Line-Ups // Teminate all Misc Equipment and Chiller Controls | 2026-10-27 → 2026-10-26 (-1d) | 2026-11-09 → 2026-11-06 (-3d) |  | 33d → 34d |  |
| B12000-B-EQP-30 | Gallery 1203 - B120/Line-Ups // Condensate connections to Floor Drains | 2026-11-04 → 2026-10-28 (-7d) | 2026-11-18 → 2026-11-10 (-8d) |  | 26d → 31d |  |
| B12000-B-EQP-36 | Gallery 1203 - B120/Line-Ups // Electrical Gear FOD Inspection Pre-Start Up | 2026-11-10 → 2026-11-09 (-1d) | 2026-11-12 → 2026-11-10 (-2d) |  | 33d → 34d | Gallery 1203 - B120/Line-Ups // Terminat Mod Panels, B12000-B-EQP-35, B12000-B-EQP-32 → B12000-B-EQP-32, B12000-B-EQP-35 |
| B12000-B-EQP-34 | Gallery 1203 - B120/Line-Ups // Mechanical Gear FOD Inspection Pre-Start Up | 2026-11-19 → 2026-11-12 (-7d) | 2026-11-23 → 2026-11-16 (-7d) |  | 26d → 31d |  |
| 3 | **C120** | 2026-10-14 → 2026-10-06 (-8d) | 2026-11-23 → 2026-11-16 (-7d) |  |  |  |
| B12000-B-EQP-37 | Gallery 1203 - C120/Line-Ups // Set CRAH-DH1200- 16 | 2026-10-14 → 2026-10-06 A (-8d) | 2026-10-14 → 2026-10-07 A (-7d) | 0% → 100% | -9d → none |  |
| B12000-B-EQP-40 | Gallery 1203 - C120/Line-Ups // Set CRAH-DH1200- 17 | 2026-10-14 → 2026-10-06 A (-8d) | 2026-10-14 → 2026-10-07 A (-7d) | 0% → 100% | -9d → none |  |
| B12000-B-EQP-203 | Gallery 1203 - C120/Line-Ups // Set CDU-DH1200-27 | 2026-10-15 → 2026-10-14 (-1d) | 2026-10-15 → 2026-10-14 (-1d) |  | 47d → 37d | Gallery 1203 - C120/Line-Ups // Set MOD C140-02 (Does No apply) → B12000-B-EQP-40 |
| B12000-B-EQP-204 | Gallery 1203 - C120/Line-Ups // Set CDU-DH1200-28 | 2026-10-16 → 2026-10-14 (-2d) | 2026-10-16 → 2026-10-14 (-2d) |  | 47d → 37d | B12000-B-EQP-203, B12000-B-EQP-203 FF → B12000-B-EQP-40 |
| B12000-B-EQP-38 | Gallery 1203 - C120/Line-Ups // Connect CRAH units | 2026-10-21 → 2026-10-14 (-7d) | 2026-11-03 → 2026-10-27 (-7d) |  | 26d → 31d |  |
| B12000-B-EQP-45 | Gallery 1203 - C120/Line-Ups // Mechanical Connections to CRAHU Units | 2026-10-21 → 2026-10-14 (-7d) | 2026-11-03 → 2026-10-27 (-7d) |  | 31d → 36d |  |
| B12000-B-EQP-46 | Gallery 1203 - C120/Line-Ups // Mount Electrial Gear for Chiller Controls | 2026-10-15 → 2026-10-14 (-1d) | 2026-10-28 → 2026-10-27 (-1d) |  | 33d → 34d | Gallery 1203 - C120/Line-Ups // Set MOD C140-02 (Does No apply) → B12000-B-EQP-40 |
| B12000-B-EQP-50 | Gallery 1203 - C120/Line-Ups // Terminate CRAHU Electrical Connections | 2026-10-26 → 2026-10-14 (-12d) | 2026-10-30 → 2026-10-20 (-10d) |  | 39d → 47d | Gallery 1203 - C120/Line-Ups // Pull Cable Tray Feed from MOD to CRAHU's, Gallery 1203 - C120/Line-Ups // Pull Cable Tray Feed from MOD to CRAHU's SS+2d → B12000-B-EQP-37 |
| B12000-B-EQP-51 | Gallery 1203 - C120/Line-Ups // Pull Feeder and Branch circuits to MIsc equipment and Chiller controls | 2026-10-21 → 2026-10-20 (-1d) | 2026-11-03 → 2026-11-02 (-1d) |  | 33d → 34d | B12000-B-EQP-46 SS+4d → B12000-B-EQP-203, B12000-B-EQP-204, B12000-B-EQP-46 SS+4d |
| B12000-B-EQP-39 | Gallery 1203 - C120/Line-Ups // Condensate connections to Floor Drains | 2026-10-28 → 2026-10-21 (-7d) | 2026-11-10 → 2026-11-03 (-7d) |  | 26d → 31d |  |
| B12000-B-EQP-53 | Gallery 1203 - C120/Line-Ups // Teminate all Misc Equipment and Chiller Controls | 2026-10-27 → 2026-10-26 (-1d) | 2026-11-09 → 2026-11-06 (-3d) |  | 33d → 34d |  |
| B12000-B-EQP-48 | Gallery 1203 - C120/Line-Ups // Condensate connections to Floor Drains | 2026-11-04 → 2026-10-28 (-7d) | 2026-11-18 → 2026-11-10 (-8d) |  | 26d → 31d |  |
| B12000-B-EQP-54 | Gallery 1203 - C120/Line-Ups // Electrical Gear FOD Inspection Pre-Start Up | 2026-11-10 → 2026-11-09 (-1d) | 2026-11-12 → 2026-11-10 (-2d) |  | 33d → 34d | Gallery 1203 - C120/Line-Ups // Terminat Mod Panels, B12000-B-EQP-53, B12000-B-EQP-50 → B12000-B-EQP-50, B12000-B-EQP-53 |
| B12000-B-EQP-52 | Gallery 1203 - C120/Line-Ups // Mechanical Gear FOD Inspection Pre-Start Up | 2026-11-19 → 2026-11-12 (-7d) | 2026-11-23 → 2026-11-16 (-7d) |  | 26d → 31d |  |
| 4 | **D120** | 2026-10-15 → 2026-10-06 (-9d) | 2026-11-24 → 2026-11-16 (-8d) |  |  |  |
| B12000-B-EQP-55 | Gallery 1203 - D120/Line-Ups // Set CRAH-DH1200- 29 | 2026-10-15 → 2026-10-06 A (-9d) | 2026-10-15 → 2026-10-07 A (-8d) | 0% → 100% | -9d → none | B12000-B-EQP-40 → B12000-B-EQP-40 SS |
| B12000-B-EQP-58 | Gallery 1203 - D120/Line-Ups // Set CRAH-DH1200-30 | 2026-10-15 → 2026-10-06 A (-9d) | 2026-10-15 → 2026-10-07 A (-8d) | 0% → 100% | -9d → none |  |
| B12000-B-EQP-205 | Gallery 1203 - D120/Line-Ups // Set CDU-DH1200-29 | 2026-10-16 → 2026-10-14 (-2d) | 2026-10-16 → 2026-10-14 (-2d) |  | 46d → 37d | Gallery 1203 - D120/Line-Ups // Set MOD D140-02 (Does No apply) → B12000-B-EQP-58 |
| B12000-B-EQP-206 | Gallery 1203 - D120/Line-Ups // Set CDU-DH1200-30 | 2026-10-19 → 2026-10-14 (-5d) | 2026-10-19 → 2026-10-14 (-5d) |  | 46d → 37d | B12000-B-EQP-205 → B12000-B-EQP-58 |

| ID | Task | Start | Finish | Complete | Total float | Predecessors |
| --- | --- | --- | --- | --- | --- | --- |
| B12000-B-EQP-56 | Gallery 1203 - D120/Line-Ups // Connect CRAH units | 2026-10-22 → 2026-10-14 (-8d) | 2026-11-04 → 2026-10-27 (-8d) |  | 25d → 31d |  |
| B12000-B-EQP-63 | Gallery 1203 - D120/Line-Ups // Mechanical Connections to CRAHU Units | 2026-10-22 → 2026-10-14 (-8d) | 2026-11-04 → 2026-10-27 (-8d) |  | 30d → 36d |  |
| B12000-B-EQP-64 | Gallery 1203 - D120/Line-Ups // Mount Electrial Gear for Chiller Controls | 2026-10-16 → 2026-10-14 (-2d) | 2026-10-29 → 2026-10-27 (-2d) |  | 32d → 34d | Gallery 1203 - D120/Line-Ups // Set MOD D140-02 (Does No apply) → B12000-B-EQP-58 |
| B12000-B-EQP-68 | Gallery 1203 - D120/Line-Ups // Terminate CRAHU Electrical Connections | 2026-10-27 → 2026-10-14 (-13d) | 2026-11-02 → 2026-10-20 (-13d) |  | 38d → 47d | Gallery 1203 - D120/Line-Ups // Pull Cable Tray Feed from MOD to CRAHU's, Gallery 1203 - D120/Line-Ups // Pull Cable Tray Feed from MOD to CRAHU's SS+2d → B12000-B-EQP-55 |
| B12000-B-EQP-69 | Gallery 1203 - D120/Line-Ups // Pull Feeder and Branch circuits to MIsc equipment and Chiller controls | 2026-10-22 → 2026-10-20 (-2d) | 2026-11-04 → 2026-11-02 (-2d) |  | 32d → 34d | B12000-B-EQP-64 SS+4d → B12000-B-EQP-206, B12000-B-EQP-205, B12000-B-EQP-64 SS+4d |
| B12000-B-EQP-57 | Gallery 1203 - D120/Line-Ups // Condensate connections to Floor Drains | 2026-10-29 → 2026-10-21 (-8d) | 2026-11-12 → 2026-11-03 (-9d) |  | 25d → 31d |  |
| B12000-B-EQP-71 | Gallery 1203 - D120/Line-Ups // Teminate all Misc Equipment and Chiller Controls | 2026-10-28 → 2026-10-26 (-2d) | 2026-11-10 → 2026-11-06 (-4d) |  | 32d → 34d |  |
| B12000-B-EQP-66 | Gallery 1203 - D120/Line-Ups // Condensate connections to Floor Drains | 2026-11-05 → 2026-10-28 (-8d) | 2026-11-19 → 2026-11-10 (-9d) |  | 25d → 31d |  |
| B12000-B-EQP-72 | Gallery 1203 - D120/Line-Ups // Electrical Gear FOD Inspection Pre-Start Up | 2026-11-12 → 2026-11-09 (-3d) | 2026-11-13 → 2026-11-10 (-3d) |  | 32d → 34d | Gallery 1203 - D120/Line-Ups // Terminat Mod Panels, B12000-B-EQP-71, B12000-B-EQP-68 → B12000-B-EQP-68, B12000-B-EQP-71 |
| B12000-B-EQP-70 | Gallery 1203 - D120/Line-Ups // Mechanical Gear FOD Inspection Pre-Start Up | 2026-11-20 → 2026-11-12 (-8d) | 2026-11-24 → 2026-11-16 (-8d) |  | 25d → 31d |  |
| 5 | **E120** | 2026-10-15 → 2026-10-06 (-9d) | 2026-11-24 → 2026-11-16 (-8d) |  |  |  |
| B12000-B-EQP-73 | Gallery 1203 - E120/Line-Ups // Set CRAH-DH1200- 31 | 2026-10-15 → 2026-10-06 A (-9d) | 2026-10-15 → 2026-10-07 A (-8d) | 0% → 100% | -9d → none |  |
| B12000-B-EQP-76 | Gallery 1203 - E120/Line-Ups // Set CRAH-DH1200-32 | 2026-10-15 → 2026-10-06 A (-9d) | 2026-10-15 → 2026-10-07 A (-8d) | 0% → 100% | -9d → none |  |
| B12000-B-EQP-207 | Gallery 1203 - E120/Line-Ups // Set CDU-DH1200-31 | 2026-10-16 → 2026-10-14 (-2d) | 2026-10-16 → 2026-10-14 (-2d) |  | 46d → 37d | Gallery 1203 - E120/Line-Ups // Set MOD E140-02 (Does No apply) → B12000-B-EQP-76 |
| B12000-B-EQP-208 | Gallery 1203 - E120/Line-Ups // Set CDU-DH1200-32 | 2026-10-19 → 2026-10-14 (-5d) | 2026-10-19 → 2026-10-14 (-5d) |  | 46d → 37d | B12000-B-EQP-207 → B12000-B-EQP-76 |
| B12000-B-EQP-74 | Gallery 1203 - E120/Line-Ups // Connect CRAH units | 2026-10-22 → 2026-10-14 (-8d) | 2026-11-04 → 2026-10-27 (-8d) |  | 25d → 31d |  |
| B12000-B-EQP-81 | Gallery 1203 - E120/Line-Ups // Mechanical Connections to CRAHU Units | 2026-10-22 → 2026-10-14 (-8d) | 2026-11-04 → 2026-10-27 (-8d) |  | 30d → 36d |  |
| B12000-B-EQP-82 | Gallery 1203 - E120/Line-Ups // Mount Electrial Gear for Chiller Controls | 2026-10-16 → 2026-10-14 (-2d) | 2026-10-29 → 2026-10-27 (-2d) |  | 32d → 34d | Gallery 1203 - E120/Line-Ups // Set MOD E140-02 (Does No apply) → B12000-B-EQP-76 |
| B12000-B-EQP-86 | Gallery 1203 - E120/Line-Ups // Terminate CRAHU Electrical Connections | 2026-10-27 → 2026-10-14 (-13d) | 2026-11-02 → 2026-10-20 (-13d) |  | 38d → 47d | Gallery 1203 - E120/Line-Ups // Pull Cable Tray Feed from MOD to CRAHU's, Gallery 1203 - E120/Line-Ups // Pull Cable Tray Feed from MOD to CRAHU's SS+2d → B12000-B-EQP-73 |
| B12000-B-EQP-87 | Gallery 1203 - E120/Line-Ups // Pull Feeder and Branch circuits to MIsc equipment and Chiller controls | 2026-10-22 → 2026-10-20 (-2d) | 2026-11-04 → 2026-11-02 (-2d) |  | 32d → 34d | B12000-B-EQP-82 SS+4d → B12000-B-EQP-208, B12000-B-EQP-207, B12000-B-EQP-82 SS+4d |
| B12000-B-EQP-75 | Gallery 1203 - E120/Line-Ups // Condensate connections to Floor Drains | 2026-10-29 → 2026-10-21 (-8d) | 2026-11-12 → 2026-11-03 (-9d) |  | 25d → 31d |  |
| B12000-B-EQP-89 | Gallery 1203 - E120/Line-Ups // Teminate all Misc Equipment and Chiller Controls | 2026-10-28 → 2026-10-26 (-2d) | 2026-11-10 → 2026-11-06 (-4d) |  | 32d → 34d |  |
| B12000-B-EQP-84 | Gallery 1203 - E120/Line-Ups // Condensate connections to Floor Drains | 2026-11-05 → 2026-10-28 (-8d) | 2026-11-19 → 2026-11-10 (-9d) |  | 25d → 31d |  |
| B12000-B-EQP-90 | Gallery 1203 - E120/Line-Ups // Electrical Gear FOD Inspection Pre-Start Up | 2026-11-12 → 2026-11-09 (-3d) | 2026-11-13 → 2026-11-10 (-3d) |  | 32d → 34d | Gallery 1203 - E120/Line-Ups // Terminat Mod Panels, B12000-B-EQP-89, B12000-B-EQP-86 → B12000-B-EQP-86, B12000-B-EQP-89 |
| B12000-B-EQP-88 | Gallery 1203 - E120/Line-Ups // Mechanical Gear FOD Inspection Pre-Start Up | 2026-11-20 → 2026-11-12 (-8d) | 2026-11-24 → 2026-11-16 (-8d) |  | 25d → 31d |  |
| 6 | **F120** | 2026-10-15 → 2026-10-06 (-9d) | 2026-11-24 → 2026-11-16 (-8d) |  |  |  |
| B12000-B-EQP-91 | Gallery 1203 - F120/Line-Ups // Set CRAH-DH1200-33 | 2026-10-15 → 2026-10-06 A (-9d) | 2026-10-15 → 2026-10-07 A (-8d) | 0% → 100% | -9d → none |  |
| B12000-B-EQP-94 | Gallery 1203 - F120/Line-Ups // Set CRAH-DH1200-34 | 2026-10-15 → 2026-10-06 A (-9d) | 2026-10-15 → 2026-10-07 A (-8d) | 0% → 100% | -9d → none |  |
| B12000-B-EQP-100 | Gallery 1203 - F120/Line-Ups // Mount Electrial Gear for Chiller Controls | 2026-10-16 → 2026-10-14 (-2d) | 2026-10-29 → 2026-10-27 (-2d) |  | 32d → 34d | Gallery 1203 - F120/Line-Ups // Set MOD F140-02 (Does No apply) → B12000-B-EQP-94 |
| B12000-B-EQP-104 | Gallery 1203 - F120/Line-Ups // Terminate CRAHU Electrical Connections | 2026-10-27 → 2026-10-14 (-13d) | 2026-11-02 → 2026-10-20 (-13d) |  | 38d → 47d | Gallery 1203 - F120/Line-Ups // Pull Cable Tray Feed from MOD to CRAHU's, Gallery 1203 - F120/Line-Ups // Pull Cable Tray Feed from MOD to CRAHU's SS+2d → B12000-B-EQP-91 |
| B12000-B-EQP-209 | Gallery 1203 - F120/Line-Ups // Set CDU-DH1200-33 | 2026-10-16 → 2026-10-14 (-2d) | 2026-10-16 → 2026-10-14 (-2d) |  | 46d → 37d | Gallery 1203 - F120/Line-Ups // Set MOD F140-02 (Does No apply) → B12000-B-EQP-94 |
| B12000-B-EQP-210 | Gallery 1203 - F120/Line-Ups // Set CDU-DH1200-34 | 2026-10-19 → 2026-10-14 (-5d) | 2026-10-19 → 2026-10-14 (-5d) |  | 46d → 37d | B12000-B-EQP-209 → B12000-B-EQP-94 |
| B12000-B-EQP-92 | Gallery 1203 - F120/Line-Ups // Connect CRAH units | 2026-10-22 → 2026-10-14 (-8d) | 2026-11-04 → 2026-10-27 (-8d) |  | 25d → 31d |  |
| B12000-B-EQP-99 | Gallery 1203 - F120/Line-Ups // Mechanical Connections to CRAHU Units | 2026-10-22 → 2026-10-14 (-8d) | 2026-11-04 → 2026-10-27 (-8d) |  | 30d → 36d |  |
| B12000-B-EQP-105 | Gallery 1203 - F120/Line-Ups // Pull Feeder and Branch circuits to MIsc equipment and Chiller controls | 2026-10-22 → 2026-10-20 (-2d) | 2026-11-04 → 2026-11-02 (-2d) |  | 32d → 34d | B12000-B-EQP-100 SS+4d → B12000-B-EQP-210, B12000-B-EQP-209, B12000-B-EQP-100 SS+4d |
| B12000-B-EQP-93 | Gallery 1203 - F120/Line-Ups // Condensate connections to Floor Drains | 2026-10-29 → 2026-10-21 (-8d) | 2026-11-12 → 2026-11-03 (-9d) |  | 25d → 31d |  |
| B12000-B-EQP-107 | Gallery 1203 - F120/Line-Ups // Teminate all Misc Equipment and Chiller Controls | 2026-10-28 → 2026-10-26 (-2d) | 2026-11-10 → 2026-11-06 (-4d) |  | 32d → 34d |  |
| B12000-B-EQP-102 | Gallery 1203 - F120/Line-Ups // Condensate connections to Floor Drains | 2026-11-05 → 2026-10-28 (-8d) | 2026-11-19 → 2026-11-10 (-9d) |  | 25d → 31d |  |
| B12000-B-EQP-108 | Gallery 1203 - F120/Line-Ups // Electrical Gear FOD Inspection Pre-Start Up | 2026-11-12 → 2026-11-09 (-3d) | 2026-11-13 → 2026-11-10 (-3d) |  | 32d → 34d | Gallery 1203 - F120/Line-Ups // Terminat Mod Panels, B12000-B-EQP-107, B12000-B-EQP-104 → B12000-B-EQP-104, B12000-B-EQP-107 |
| B12000-B-EQP-106 | Gallery 1203 - F120/Line-Ups // Mechanical Gear FOD Inspection Pre-Start Up | 2026-11-20 → 2026-11-12 (-8d) | 2026-11-24 → 2026-11-16 (-8d) |  | 25d → 31d |  |
| 7 | **G120** | 2026-10-16 → 2026-10-06 (-10d) | 2026-11-25 → 2026-11-16 (-9d) |  |  |  |
| B12000-B-EQP-109 | Gallery 1203 - G120/Line-Ups // Set CRAH-DH1200-35 | 2026-10-16 → 2026-10-06 A (-10d) | 2026-10-16 → 2026-10-07 A (-9d) | 0% → 100% | -9d → none | B12000-B-EQP-94 → B12000-B-EQP-94 SS |
| B12000-B-EQP-112 | Gallery 1203 - G120/Line-Ups // Set CRAH-DH1200-36 | 2026-10-16 → 2026-10-06 A (-10d) | 2026-10-16 → 2026-10-07 A (-9d) | 0% → 100% | -9d → none |  |
| B12000-B-EQP-110 | Gallery 1203 - G120/Line-Ups // Connect CRAH units | 2026-10-23 → 2026-10-14 (-9d) | 2026-11-05 → 2026-10-27 (-9d) |  | 24d → 31d |  |
| B12000-B-EQP-117 | Gallery 1203 - G120/Line-Ups // Mechanical Connections to CRAHU Units | 2026-10-23 → 2026-10-14 (-9d) | 2026-11-05 → 2026-10-27 (-9d) |  | 29d → 36d |  |
| B12000-B-EQP-118 | Gallery 1203 - G120/Line-Ups // Mount Electrial Gear for Chiller Controls | 2026-10-19 → 2026-10-14 (-5d) | 2026-10-30 → 2026-10-27 (-3d) |  | 31d → 34d | Gallery 1203 - G120/Line-Ups // Set MOD G140-02 (Does No apply) → B12000-B-EQP-112 |
| B12000-B-EQP-122 | Gallery 1203 - G120/Line-Ups // Terminate CRAHU Electrical Connections | 2026-10-28 → 2026-10-14 (-14d) | 2026-11-03 → 2026-10-20 (-14d) |  | 37d → 47d | Gallery 1203 - G120/Line-Ups // Pull Cable Tray Feed from MOD to CRAHU's, Gallery 1203 - G120/Line-Ups // Pull Cable Tray Feed from MOD to CRAHU's SS+2d → B12000-B-EQP-109 |
| B12000-B-EQP-211 | Gallery 1203 - G120/Line-Ups // Set CDU-DH1200-35 | 2026-10-19 → 2026-10-14 (-5d) | 2026-10-19 → 2026-10-14 (-5d) |  | 45d → 37d | Gallery 1203 - G120/Line-Ups // Set MOD G140-02 (Does No apply) → B12000-B-EQP-112 |
| B12000-B-EQP-212 | Gallery 1203 - G120/Line-Ups // Set CDU-DH1200-36 | 2026-10-20 → 2026-10-14 (-6d) | 2026-10-20 → 2026-10-14 (-6d) |  | 45d → 37d | B12000-B-EQP-211 → B12000-B-EQP-112 |
| B12000-B-EQP-123 | Gallery 1203 - G120/Line-Ups // Pull Feeder and Branch circuits to MIsc equipment and Chiller controls | 2026-10-23 → 2026-10-20 (-3d) | 2026-11-05 → 2026-11-02 (-3d) |  | 31d → 34d | B12000-B-EQP-118 SS+4d → B12000-B-EQP-212, B12000-B-EQP-211, B12000-B-EQP-118 SS+4d |
| B12000-B-EQP-111 | Gallery 1203 - G120/Line-Ups // Condensate connections to Floor Drains | 2026-10-30 → 2026-10-21 (-9d) | 2026-11-13 → 2026-11-03 (-10d) |  | 24d → 31d |  |
| B12000-B-EQP-125 | Gallery 1203 - G120/Line-Ups // Teminate all Misc Equipment and Chiller Controls | 2026-10-29 → 2026-10-26 (-3d) | 2026-11-12 → 2026-11-06 (-6d) |  | 31d → 34d |  |
| B12000-B-EQP-120 | Gallery 1203 - G120/Line-Ups // Condensate connections to Floor Drains | 2026-11-06 → 2026-10-28 (-9d) | 2026-11-20 → 2026-11-10 (-10d) |  | 24d → 31d |  |
| B12000-B-EQP-126 | Gallery 1203 - G120/Line-Ups // Electrical Gear FOD Inspection Pre-Start Up | 2026-11-13 → 2026-11-09 (-4d) | 2026-11-16 → 2026-11-10 (-6d) |  | 31d → 34d | Gallery 1203 - G120/Line-Ups // Terminat Mod Panels, B12000-B-EQP-125, B12000-B-EQP-122 → B12000-B-EQP-122, B12000-B-EQP-125 |
| B12000-B-EQP-124 | Gallery 1203 - G120/Line-Ups // Mechanical Gear FOD Inspection Pre-Start Up | 2026-11-23 → 2026-11-12 (-11d) | 2026-11-25 → 2026-11-16 (-9d) |  | 24d → 31d |  |
| 8 | **H120** | 2026-10-16 → 2026-10-06 (-10d) | 2026-11-25 → 2026-11-16 (-9d) |  |  |  |
| B12000-B-EQP-127 | Gallery 1203 - H120/Line-Ups // Set CRAH-DH1200-37 | 2026-10-16 → 2026-10-06 A (-10d) | 2026-10-16 → 2026-10-07 A (-9d) | 0% → 100% | -9d → none |  |
| B12000-B-EQP-130 | Gallery 1203 - H120/Line-Ups // Set CRAH-DH1200-38 | 2026-10-16 → 2026-10-06 A (-10d) | 2026-10-16 → 2026-10-07 A (-9d) | 0% → 100% | -9d → none |  |
| B12000-B-EQP-128 | Gallery 1203 - H120/Line-Ups // Connect CRAH units | 2026-10-23 → 2026-10-14 (-9d) | 2026-11-05 → 2026-10-27 (-9d) |  | 24d → 31d |  |
| B12000-B-EQP-135 | Gallery 1203 - H120/Line-Ups // Mechanical Connections to CRAHU Units | 2026-10-23 → 2026-10-14 (-9d) | 2026-11-05 → 2026-10-27 (-9d) |  | 29d → 36d |  |
| B12000-B-EQP-136 | Gallery 1203 - H120/Line-Ups // Mount Electrial Gear for Chiller Controls | 2026-10-19 → 2026-10-14 (-5d) | 2026-10-30 → 2026-10-27 (-3d) |  | 31d → 34d | Gallery 1203 - H120/Line-Ups // Set MOD H140-02 → B12000-B-EQP-130 |
| B12000-B-EQP-140 | Gallery 1203 - H120/Line-Ups // Terminate CRAHU Electrical Connections | 2026-10-28 → 2026-10-14 (-14d) | 2026-11-03 → 2026-10-20 (-14d) |  | 37d → 47d | Gallery 1203 - H120/Line-Ups // Pull Cable Tray Feed from MOD to CRAHU's, Gallery 1203 - H120/Line-Ups // Pull Cable Tray Feed from MOD to CRAHU's SS+2d → B12000-B-EQP-127 |
| B12000-B-EQP-213 | Gallery 1203 - H120/Line-Ups // Set CDU-DH1200-37 | 2026-10-19 → 2026-10-14 (-5d) | 2026-10-19 → 2026-10-14 (-5d) |  | 45d → 37d | Gallery 1203 - H120/Line-Ups // Set MOD H140-02 → B12000-B-EQP-130 |
| B12000-B-EQP-214 | Gallery 1203 - H120/Line-Ups // Set CDU-DH1200-38 | 2026-10-20 → 2026-10-14 (-6d) | 2026-10-20 → 2026-10-14 (-6d) |  | 45d → 37d | B12000-B-EQP-213 → B12000-B-EQP-130 |
| B12000-B-EQP-141 | Gallery 1203 - H120/Line-Ups // Pull Feeder and Branch circuits to MIsc equipment and Chiller controls | 2026-10-23 → 2026-10-20 (-3d) | 2026-11-05 → 2026-11-02 (-3d) |  | 31d → 34d | B12000-B-EQP-136 SS+4d → B12000-B-EQP-213, B12000-B-EQP-214, B12000-B-EQP-136 SS+4d |
| B12000-B-EQP-129 | Gallery 1203 - H120/Line-Ups // Condensate connections to Floor Drains | 2026-10-30 → 2026-10-21 (-9d) | 2026-11-13 → 2026-11-03 (-10d) |  | 24d → 31d |  |
| B12000-B-EQP-143 | Gallery 1203 - H120/Line-Ups // Teminate all Misc Equipment and Chiller Controls | 2026-10-29 → 2026-10-26 (-3d) | 2026-11-12 → 2026-11-06 (-6d) |  | 31d → 34d |  |
| B12000-B-EQP-138 | Gallery 1203 - H120/Line-Ups // Condensate connections to Floor Drains | 2026-11-06 → 2026-10-28 (-9d) | 2026-11-20 → 2026-11-10 (-10d) |  | 24d → 31d |  |
| B12000-B-EQP-144 | Gallery 1203 - H120/Line-Ups // Electrical Gear FOD Inspection Pre-Start Up | 2026-11-13 → 2026-11-09 (-4d) | 2026-11-16 → 2026-11-10 (-6d) |  | 31d → 34d | Gallery 1203 - H120/Line-Ups // Terminat Mod Panels, B12000-B-EQP-143, B12000-B-EQP-140 → B12000-B-EQP-140, B12000-B-EQP-143 |
| B12000-B-EQP-142 | Gallery 1203 - H120/Line-Ups // Mechanical Gear FOD Inspection Pre-Start Up | 2026-11-23 → 2026-11-12 (-11d) | 2026-11-25 → 2026-11-16 (-9d) |  | 24d → 31d |  |

| ID | Task | Start | Finish | Complete | Total float | Predecessors |
| --- | --- | --- | --- | --- | --- | --- |
| 9 | **J120** | 2026-10-16 → 2026-10-06 (-10d) | 2026-11-25 → 2026-11-16 (-9d) |  |  |  |
| B12000-B-EQP-145 | Gallery 1203 - J120/Line-Ups // Set CRAH-DH1200-39 | 2026-10-16 → 2026-10-06 A (-10d) | 2026-10-16 → 2026-10-07 A (-9d) | 0% → 100% | -9d → none |  |
| B12000-B-EQP-148 | Gallery 1203 - J120/Line-Ups // Set CRAH-DH1200-40 | 2026-10-19 → 2026-10-06 A (-13d) | 2026-10-19 → 2026-10-07 A (-12d) | 0% → 100% | -9d → none | B12000-B-EQP-145 → B12000-B-EQP-145 SS |
| B12000-B-EQP-146 | Gallery 1203 - J120/Line-Ups // Connect CRAH units | 2026-10-23 → 2026-10-14 (-9d) | 2026-11-05 → 2026-10-27 (-9d) |  | 24d → 31d |  |
| B12000-B-EQP-153 | Gallery 1203 - J120/Line-Ups // Mechanical Connections to CRAHU Units | 2026-10-26 → 2026-10-14 (-12d) | 2026-11-06 → 2026-10-27 (-10d) |  | 28d → 36d |  |
| B12000-B-EQP-154 | Gallery 1203 - J120/Line-Ups // Mount Electrial Gear for Chiller Controls | 2026-10-20 → 2026-10-14 (-6d) | 2026-11-02 → 2026-10-27 (-6d) |  | 30d → 34d | Gallery 1203 - J120/Line-Ups // Set MOD J140-02 → B12000-B-EQP-148 |
| B12000-B-EQP-158 | Gallery 1203 - J120/Line-Ups // Terminate CRAHU Electrical Connections | 2026-10-29 → 2026-10-14 (-15d) | 2026-11-04 → 2026-10-20 (-15d) |  | 36d → 47d | Gallery 1203 - J120/Line-Ups // Pull Cable Tray Feed from MOD to CRAHU's, Gallery 1203 - J120/Line-Ups // Pull Cable Tray Feed from MOD to CRAHU's SS+2d → B12000-B-EQP-145 |
| B12000-B-EQP-215 | Gallery 1203 - J120/Line-Ups // Set CDU-DH1200-39 | 2026-10-20 → 2026-10-14 (-6d) | 2026-10-20 → 2026-10-14 (-6d) |  | 44d → 37d | Gallery 1203 - J120/Line-Ups // Set MOD J140-02 → B12000-B-EQP-148 |
| B12000-B-EQP-216 | Gallery 1203 - J120/Line-Ups // Set CDU-DH1200-40 | 2026-10-21 → 2026-10-14 (-7d) | 2026-10-21 → 2026-10-14 (-7d) |  | 44d → 37d | B12000-B-EQP-215 → B12000-B-EQP-148 |
| B12000-B-EQP-159 | Gallery 1203 - J120/Line-Ups // Pull Feeder and Branch circuits to MIsc equipment and Chiller controls | 2026-10-26 → 2026-10-20 (-6d) | 2026-11-06 → 2026-11-02 (-4d) |  | 30d → 34d | B12000-B-EQP-154 SS+4d → B12000-B-EQP-216, B12000-B-EQP-215, B12000-B-EQP-154 SS+4d |
| B12000-B-EQP-147 | Gallery 1203 - J120/Line-Ups // Condensate connections to Floor Drains | 2026-10-30 → 2026-10-21 (-9d) | 2026-11-13 → 2026-11-03 (-10d) |  | 24d → 31d |  |
| B12000-B-EQP-161 | Gallery 1203 - J120/Line-Ups // Teminate all Misc Equipment and Chiller Controls | 2026-10-30 → 2026-10-26 (-4d) | 2026-11-13 → 2026-11-06 (-7d) |  | 30d → 34d |  |
| B12000-B-EQP-156 | Gallery 1203 - J120/Line-Ups // Condensate connections to Floor Drains | 2026-11-06 → 2026-10-28 (-9d) | 2026-11-20 → 2026-11-10 (-10d) |  | 24d → 31d |  |
| B12000-B-EQP-162 | Gallery 1203 - J120/Line-Ups // Electrical Gear FOD Inspection Pre-Start Up | 2026-11-16 → 2026-11-09 (-7d) | 2026-11-17 → 2026-11-10 (-7d) |  | 30d → 34d | Gallery 1203 - J120/Line-Ups // Terminat Mod Panels, B12000-B-EQP-161, B12000-B-EQP-158 → B12000-B-EQP-158, B12000-B-EQP-161 |
| B12000-B-EQP-160 | Gallery 1203 - J120/Line-Ups // Mechanical Gear FOD Inspection Pre-Start Up | 2026-11-23 → 2026-11-12 (-11d) | 2026-11-25 → 2026-11-16 (-9d) |  | 24d → 31d |  |
| 10 | **K120** | 2026-10-19 → 2026-10-06 (-13d) | 2026-11-27 → 2026-11-16 (-11d) |  |  |  |
| B12000-B-EQP-163 | Gallery 1203 - K120/Line-Ups // Set CRAH-DH1200-41 | 2026-10-19 → 2026-10-06 A (-13d) | 2026-10-19 → 2026-10-07 A (-12d) | 0% → 100% | -9d → none |  |
| B12000-B-EQP-166 | Gallery 1203 - K120/Line-Ups // Set CRAH-DH1200-42 | 2026-10-19 → 2026-10-06 A (-13d) | 2026-10-19 → 2026-10-07 A (-12d) | 0% → 100% | -9d → none |  |
| B12000-B-EQP-164 | Gallery 1203 - K120/Line-Ups // Connect CRAH units | 2026-10-26 → 2026-10-14 (-12d) | 2026-11-06 → 2026-10-27 (-10d) |  | 23d → 31d |  |
| B12000-B-EQP-171 | Gallery 1203 - K120/Line-Ups // Mechanical Connections to CRAHU Units | 2026-10-26 → 2026-10-14 (-12d) | 2026-11-06 → 2026-10-27 (-10d) |  | 28d → 36d |  |
| B12000-B-EQP-172 | Gallery 1203 - K120/Line-Ups // Mount Electrial Gear for Chiller Controls | 2026-10-20 → 2026-10-14 (-6d) | 2026-11-02 → 2026-10-27 (-6d) |  | 30d → 34d | Gallery 1203 - K120/Line-Ups // Set MOD K140-02 (Does No apply) → B12000-B-EQP-166 |
| B12000-B-EQP-176 | Gallery 1203 - K120/Line-Ups // Terminate CRAHU Electrical Connections | 2026-10-29 → 2026-10-14 (-15d) | 2026-11-04 → 2026-10-20 (-15d) |  | 36d → 47d | Gallery 1203 - K120/Line-Ups // Pull Cable Tray Feed from MOD to CRAHU's, Gallery 1203 - K120/Line-Ups // Pull Cable Tray Feed from MOD to CRAHU's SS+2d → B12000-B-EQP-163 |
| B12000-B-EQP-177 | Gallery 1203 - K120/Line-Ups // Pull Feeder and Branch circuits to MIsc equipment and Chiller controls | 2026-10-26 → 2026-10-20 (-6d) | 2026-11-06 → 2026-11-02 (-4d) |  | 30d → 34d |  |
| B12000-B-EQP-165 | Gallery 1203 - K120/Line-Ups // Condensate connections to Floor Drains | 2026-11-02 → 2026-10-21 (-12d) | 2026-11-16 → 2026-11-03 (-13d) |  | 23d → 31d |  |
| B12000-B-EQP-179 | Gallery 1203 - K120/Line-Ups // Teminate all Misc Equipment and Chiller Controls | 2026-10-30 → 2026-10-26 (-4d) | 2026-11-13 → 2026-11-06 (-7d) |  | 30d → 34d |  |
| B12000-B-EQP-174 | Gallery 1203 - K120/Line-Ups // Condensate connections to Floor Drains | 2026-11-09 → 2026-10-28 (-12d) | 2026-11-23 → 2026-11-10 (-13d) |  | 23d → 31d |  |
| B12000-B-EQP-180 | Gallery 1203 - K120/Line-Ups // Electrical Gear FOD Inspection Pre-Start Up | 2026-11-16 → 2026-11-09 (-7d) | 2026-11-17 → 2026-11-10 (-7d) |  | 30d → 34d | Gallery 1203 - K120/Line-Ups // Terminat Mod Panels, B12000-B-EQP-179, B12000-B-EQP-176 → B12000-B-EQP-176, B12000-B-EQP-179 |
| B12000-B-EQP-178 | Gallery 1203 - K120/Line-Ups // Mechanical Gear FOD Inspection Pre-Start Up | 2026-11-24 → 2026-11-12 (-12d) | 2026-11-27 → 2026-11-16 (-11d) |  | 23d → 31d |  |
| 11 | **R120** | 2026-09-30 → 2026-10-06 (+6d) | 2026-11-27 → 2026-11-16 (-11d) |  |  |  |
| B12000-B-EQP-181 | Gallery 1203 - R120/Line-Ups // Set CRAH-DH1200-43 | 2026-10-19 → 2026-10-06 A (-13d) | 2026-10-19 → 2026-10-07 A (-12d) | 0% → 100% | -9d → none |  |
| B12000-B-EQP-184 | Gallery 1203 - R120/Line-Ups // Set CRAH-DH1200-44 | 2026-10-19 → 2026-10-06 A (-13d) | 2026-10-19 → 2026-10-07 A (-12d) | 0% → 100% | -8d → none |  |
| B12000-B-EQP-182 | Gallery 1203 - R120/Line-Ups // Connect CRAH units | 2026-10-26 → 2026-10-14 (-12d) | 2026-11-06 → 2026-10-27 (-10d) |  | -9d → -1d |  |
| B12000-B-EQP-189 | Gallery 1203 - R120/Line-Ups // Mechanical Connections to CRAHU Units | 2026-10-26 → 2026-10-14 (-12d) | 2026-11-06 → 2026-10-27 (-10d) |  | -4d → 4d |  |
| B12000-B-EQP-190 | Gallery 1203 - R120/Line-Ups // Mount Electrial Gear for Chiller Controls | 2026-10-20 → 2026-10-14 (-6d) | 2026-11-02 → 2026-10-27 (-6d) |  | -8d → -4d |  |
| B12000-B-EQP-194 | Gallery 1203 - R120/Line-Ups // Terminate CRAHU Electrical Connections | 2026-10-07 → 2026-10-14 (+7d) | 2026-10-14 → 2026-10-20 (+6d) |  | 26d → 22d | Gallery 1203 - R120/Line-Ups // Pull Cable Tray Feed from MOD to CRAHU's, Gallery 1203 - R120/Line-Ups // Pull Cable Tray Feed from MOD to CRAHU's SS+2d → B12000-B-EQP-181 |
| B12000-B-EQP-195 | Gallery 1203 - R120/Line-Ups // Pull Feeder and Branch circuits to MIsc equipment and Chiller controls | 2026-10-20 → 2026-10-14 (-6d) | 2026-11-02 → 2026-10-27 (-6d) |  | -8d → -4d |  |
| B12000-B-EQP-197 | Gallery 1203 - R120/Line-Ups // Teminate all Misc Equipment and Chiller Controls | 2026-10-20 → 2026-10-14 (-6d) | 2026-11-02 → 2026-10-27 (-6d) |  | 13d → 17d |  |
| B12000-B-EQP-183 | Gallery 1203 - R120/Line-Ups // Condensate connections to Floor Drains | 2026-11-02 → 2026-10-21 (-12d) | 2026-11-16 → 2026-11-03 (-13d) |  | -9d → -1d |  |
| B12000-B-EQP-192 | Gallery 1203 - R120/Line-Ups // Condensate connections to Floor Drains | 2026-11-09 → 2026-10-28 (-12d) | 2026-11-23 → 2026-11-10 (-13d) |  | -9d → -1d |  |
| B12000-B-EQP-198 | Gallery 1203 - R120/Line-Ups // Electrical Gear FOD Inspection Pre-Start Up | 2026-11-03 → 2026-10-28 (-6d) | 2026-11-04 → 2026-10-29 (-6d) |  | 13d → 17d | Gallery 1203 - R120/Line-Ups // Terminat Mod Panels, B12000-B-EQP-197, B12000-B-EQP-194 → B12000-B-EQP-194, B12000-B-EQP-197 |
| B12000-B-EQP-196 | Gallery 1203 - R120/Line-Ups // Mechanical Gear FOD Inspection Pre-Start Up | 2026-11-24 → 2026-11-12 (-12d) | 2026-11-27 → 2026-11-16 (-11d) |  | -9d → -1d |  |
| 12 | **Equipment Connections** | 2026-10-01 → 2026-10-13 (+12d) | 2026-11-10 → 2026-11-04 (-6d) |  |  |  |
| 1 | **CRAH** | 2026-10-07 → 2026-10-13 (+6d) | 2026-10-19 → 2026-10-23 (+4d) |  |  |  |
| DH1200-004 | Gallery 1203 // DH 1200 / Elec Room // CRAH Duct Work Termination | 2026-10-07 → 2026-10-13 A (+6d) | 2026-10-08 → 2026-10-15 (+7d) |  | 8d → 4d | Gallery 1203 - R120/Line-Ups // Pull Cable Tray Feed from MOD to CRAHU's → B12000-B-EQP-184 |
| DH1200-003 | Gallery 1203 // DH 1200 / Elec Room // CRAH Chilled Water | 2026-10-09 → 2026-10-16 (+7d) | 2026-10-13 → 2026-10-19 (+6d) |  | 8d → 4d |  |
| DH1200-001 | Gallery 1203 // DH 1200 / Elec Room // CRAH Power Connections | 2026-10-14 → 2026-10-20 (+6d) | 2026-10-15 → 2026-10-21 (+6d) |  | 8d → 4d |  |
| DH1200-002 | Gallery 1203 // DH 1200 / Elec Room // CRAH LV Connections | 2026-10-16 → 2026-10-22 (+6d) | 2026-10-19 → 2026-10-23 (+4d) |  | 8d → 4d |  |
| 2 | **CDU** | 2026-11-03 → 2026-10-28 (-6d) | 2026-11-10 → 2026-11-04 (-6d) |  |  |  |
| DH1200-007 | Gallery 1203 // DH 1200 / Elec Room // CDU Chilled Water Connections | 2026-11-03 → 2026-10-28 (-6d) | 2026-11-04 → 2026-10-29 (-6d) |  | -8d → -4d |  |
| DH1200-005 | Gallery 1203 // DH 1200 /Elec Room // CDU Power Connections | 2026-11-05 → 2026-10-30 (-6d) | 2026-11-06 → 2026-11-02 (-4d) |  | -8d → -4d |  |
| DH1200-006 | Gallery 1203 // DH 1200 / Elec Room // CDU Controls Connections | 2026-11-09 → 2026-11-03 (-6d) | 2026-11-10 → 2026-11-04 (-6d) |  | -8d → -4d |  |
| 3 | **MOD** | 2026-10-01 → 2026-10-28 (+27d) | 2026-10-06 → 2026-11-02 (+27d) |  |  |  |
| DH1200-008 | Gallery 1203 // DH 1200 / Elec Room // MOD Power Connections | 2026-10-01 → 2026-10-28 (+27d) | 2026-10-02 → 2026-10-29 (+27d) |  | 16d → -2d | Gallery 1203 - R120/Line-Ups // Pull Feeder from SWD to MOD → B12000-B-EQP-195 |
| DH1200-009 | Gallery 1203 // DH 1200 / Elec Room // MOD LV Connections | 2026-10-05 → 2026-10-30 (+25d) | 2026-10-06 → 2026-11-02 (+27d) |  | 16d → -2d |  |
| 6 | **Corridors** | 2026-07-27 → 2026-08-19 (+23d) | 2026-11-05 → 2026-11-06 (+1d) |  |  |  |
| 3 | **Corridor 1000** | 2026-07-27 → 2026-08-19 (+23d) | 2026-10-27 → 2026-11-02 (+6d) |  |  |  |
| B12000.12071 | DH 1200/Corridor 1000 // MEPF high overhead install | 2026-07-28 A → 2026-08-21 A (+24d) |  |  |  |  |
| B12000.12078 | DH 1200/Corridor 1000 // Seal concrete | 2026-07-27 A → 2026-08-24 A (+28d) |  |  |  |  |
| B12000.12068 | DH 1200/Corridor 1000 // MEPF Overhead Hangers | 2026-08-20 A → 2026-08-26 A (+6d) |  |  |  |  |
| B12000.12073 | DH 1200/Corridor 1000 // In wall inspection | 2026-09-04 A → 2026-09-08 A (+4d) |  |  |  |  |
| B120001.3123 | DH 1200/Corridor 1000 // Install Overhead Cable Ladder / 36" Cable Tray - TFO | 2026-09-30 A | 2026-10-06 → 2026-10-13 A (+7d) | 0% → 100% | 2d → none |  |
| B12000.12076 | DH 1200/Corridor 1000 // Install wall door frames | 2026-09-30 → 2026-10-01 A (+1d) | 2026-10-02 → 2026-10-07 A (+5d) | 0% → 100% | 9d → none |  |
| B12000.12079 | DH 1200/Corridor 1000 // Install lights and exit signs | 2026-10-05 → 2026-10-06 A (+1d) | 2026-10-07 → 2026-10-16 (+9d) |  | 9d → 3d | B12000.12076, B12000.12077 → B12000.12077, B12000.12076 FF |
| B120001.3124 | DH 1200/Corridor 1000 // Install Overhead HAC - TFO | 2026-10-07 → 2026-10-14 (+7d) | 2026-10-14 → 2026-10-20 (+6d) |  | 2d → -2d |  |
| B12000.12080 | DH 1200/Corridor 1000 // Final Coat Paint & Touchup Walls | 2026-10-08 → 2026-10-19 (+11d) | 2026-10-14 → 2026-10-22 (+8d) |  | 9d → 3d |  |
| B12000.12100 | DH 1200/Corridor 1000 // Electrical Equipment Install | 2026-10-15 → 2026-10-21 (+6d) | 2026-10-23 → 2026-10-29 (+6d) |  | 2d → -2d |  |
| B12000.12081 | DH 1200/Corridor 1000 // Install MEP Devices and Trim | 2026-10-26 → 2026-10-30 (+4d) | 2026-10-27 → 2026-11-02 (+6d) |  | 2d → -2d |  |
| B12000.12098 | DH 1200/Corridor 1000 // ready to Receive Equipment | 2026-10-27 → 2026-11-02 (+6d) | 2026-10-27 → 2026-11-02 (+6d) |  | 2d → -2d |  |
| 2 | **Corridor 1000E** | 2026-07-28 → 2026-08-31 (+34d) | 2026-11-05 → 2026-11-06 (+1d) |  |  |  |
| B12000.12092 | DH 1200/Corridor 1000C // Seal concrete | 2026-07-28 A → 2026-08-31 A (+34d) |  |  |  |  |

| ID | Task | Start | Finish | Complete | Total float | Predecessors |
| --- | --- | --- | --- | --- | --- | --- |
| B12000.12082 | DH 1200/Corridor 1000C // MEPF Overhead Hangers | 2026-08-17 A → 2026-09-01 A (+15d) |  |  |  |  |
| B12000.12083 | DH 1200/Corridor 1000C // Frame walls | 2026-09-01 A → 2026-09-09 A (+8d) |  |  |  |  |
| B12000.12086 | DH 1200/Corridor 1000C // MEP rough in walls | 2026-09-04 A → 2026-09-16 A (+12d) |  |  |  |  |
| B12000.12085 | DH 1200/Corridor 1000C // MEPF high overhead install |  | 2026-10-02 → 2026-10-16 (+14d) |  | 6d → -3d |  |
| B12000.12084 | DH 1200/Corridor 1000C // Install Top Down Sheetrock |  | 2026-10-02 → 2026-10-08 A (+6d) | 0% → 100% | -5d → none |  |
| B12000.12087 | DH 1200/Corridor 1000C // In wall inspection | 2026-09-30 A | 2026-09-30 → 2026-10-08 A (+8d) | 0% → 100% | -3d → none |  |
| B12000.12088 | DH 1200/Corridor 1000C // Install Balance of Sheetrock on Walls | 2026-10-05 → 2026-10-09 A (+4d) | 2026-10-09 → 2026-10-20 (+11d) |  | -5d → -3d |  |
| B12000.12089 | DH 1200/Corridor 1000C // Tape and finish walls | 2026-10-13 → 2026-10-09 A (-4d) | 2026-10-22 → 2026-10-23 (+1d) |  | -5d → -6d | B12000.12088 → B12000.12084 |
| B120001.3125 | DH 1200/Corridor 1000C // Install Overhead Cable Ladder / 36" Cable Tray - TFO | 2026-10-05 → 2026-10-19 (+14d) | 2026-10-09 → 2026-10-23 (+14d) |  | 6d → -3d |  |
| B12000.12091 | DH 1200/Corridor 1000C // Prime and Paint first coat walls | 2026-10-23 → 2026-10-26 (+3d) | 2026-10-27 → 2026-10-28 (+1d) |  | -5d → -6d | B12000.12089 → B12000.12088, B12000.12089 |
| B120001.3126 | DH 1200/Corridor 1000C // Install Overhead HAC - TFO | 2026-10-13 → 2026-10-26 (+13d) | 2026-10-19 → 2026-10-30 (+11d) |  | 6d → -3d |  |
| B12000.12093 | DH 1200/Corridor 1000C // Install lights and exit signs | 2026-10-28 → 2026-10-29 (+1d) | 2026-10-30 → 2026-11-02 (+3d) |  | -5d → -6d |  |
| B12000.12101 | DH 1200/Corridor 1000C // Electrical Equipment Install | 2026-10-28 → 2026-10-29 (+1d) | 2026-11-05 → 2026-11-06 (+1d) |  | -5d → -6d |  |
| B12000.12094 | DH 1200/Corridor 1000C // Final Coat Paint & Touchup Walls | 2026-11-02 → 2026-11-03 (+1d) | 2026-11-05 → 2026-11-06 (+1d) |  | -5d → -6d |  |
| B12000.12095 | DH 1200/Corridor 1000C // Install MEP Devices and Trim | 2026-11-04 → 2026-11-05 (+1d) | 2026-11-05 → 2026-11-06 (+1d) |  | -5d → -6d |  |
| B12000.12099 | DH 1200/Corridor 1000C // Ready to Receive Equipment | 2026-11-05 → 2026-11-06 (+1d) | 2026-11-05 → 2026-11-06 (+1d) |  | -5d → -6d |  |
| 11 | **IDF 1034** | 2026-07-28 → 2026-09-01 (+35d) | 2026-10-29 → 2026-11-04 (+6d) |  |  |  |
| B12002.1000 | DH 1200/IDF 1034 // Seal concrete | 2026-07-28 A → 2026-09-01 A (+35d) |  |  |  |  |
| B12002.1010 | DH 1200/IDF 1034 // MEPF overhead layout |  | 2026-10-01 → 2026-10-15 (+14d) |  | 0d → -4d |  |
| B12002.1030 | DH 1200/IDF 1034 // Frame walls | 2026-08-06 A → 2026-09-09 A (+34d) |  |  |  |  |
| B12002.1040 | DH 1200/IDF 1034 // Install wall door frames | 2026-08-07 A → 2026-09-24 A (+48d) |  |  |  |  |
| B12002.1060 | DH 1200/IDF 1034 // MEP rough in walls | 2026-08-12 A → 2026-09-24 A (+43d) |  |  |  |  |
| B12002.1080 | DH 1200/IDF 1034 // MEPF high overhead install | 2026-08-18 A → 2026-09-25 A (+38d) |  |  |  |  |
| B12002.1070 | DH 1200/IDF 1034 // In wall inspection | 2026-09-30 A | 2026-09-30 → 2026-10-08 A (+8d) | 0% → 100% | 0d → none |  |
| B12002.1050 | DH 1200/IDF 1034 // Install Top Down Sheetrock | 2026-09-30 → 2026-10-08 A (+8d) | 2026-10-06 → 2026-10-20 (+14d) |  | 1d → -4d |  |
| B12002.1090 | DH 1200/IDF 1034 // Install Balance of Sheetrock on Walls | 2026-10-01 → 2026-10-09 A (+8d) | 2026-10-07 → 2026-10-20 (+13d) |  | 0d → -2d |  |
| B12002.1100 | DH 1200/IDF 1034 // Tape and finish walls | 2026-10-08 → 2026-10-13 A (+5d) | 2026-10-20 → 2026-10-23 (+3d) |  | 0d → -4d | B12002.1090 → B12002.1050 SS+3d |
| B12002.1110 | DH 1200/IDF 1034 // Prime and Paint first coat walls | 2026-10-16 → 2026-10-13 A (-3d) | 2026-10-20 → 2026-10-26 (+6d) |  | 0d → -4d | B12002.1100 FF → B12002.1090 FF+2d, B12002.1100 FF+1d |
| B12002.1120 | DH 1200/IDF 1034 // Install lights and exit signs | 2026-10-21 → 2026-10-27 (+6d) | 2026-10-23 → 2026-10-29 (+6d) |  | 0d → -4d |  |
| B12002.1130 | DH 1200/IDF 1034 // Final Coat Paint & Touchup Walls | 2026-10-26 → 2026-10-30 (+4d) | 2026-10-29 → 2026-11-04 (+6d) |  | 0d → -4d |  |
| B12002.1140 | DH 1200/IDF 1034 // Install MEP Devices and Trim | 2026-10-28 → 2026-11-03 (+6d) | 2026-10-29 → 2026-11-04 (+6d) |  | 0d → -4d |  |
| B12002.1141 | DH 1200/IDF 1034 // ready to Receive Equipment | 2026-10-29 → 2026-11-04 (+6d) | 2026-10-29 → 2026-11-04 (+6d) |  | 0d → -4d |  |
| 12 | **Preaction 1033** | 2026-07-30 → 2026-09-03 (+35d) |  |  |  |  |
| PRE.C3.1151 | DH 1200/Preaction 1033 // Preaction Seal concrete | 2026-07-30 A → 2026-09-03 A (+35d) |  |  |  |  |
| PRE.C3.1141 | DH 1200/Preaction 1033 // Preaction MEPF overhead layout |  | 2026-10-01 → 2026-10-15 (+14d) |  | -5d → -2d |  |
| PRE.C3.1143 | DH 1200/Preaction 1033 // Preaction Frame walls | 2026-08-10 A → 2026-09-09 A (+30d) |  |  |  |  |
| PRE.C3.1142 | DH 1200/Preaction 1033 // Preaction Install wall door frames | 2026-08-11 A → 2026-09-24 A (+44d) |  |  |  |  |
| PRE.C3.1144 | DH 1200/Preaction 1033 // Preaction MEP rough in walls | 2026-08-14 A → 2026-09-25 A (+42d) |  |  |  |  |
| PRE.C3.1146 | DH 1200/Preaction 1033 // Preaction Install Top Down Sheetrock | 2026-09-30 → 2026-09-28 A (-2d) | 2026-10-06 → 2026-10-02 A (-4d) | 0% → 100% | -2d → none |  |
| PRE.C3.1147 | DH 1200/Preaction 1033 // Preaction MEPF high overhead install |  | 2026-10-02 → 2026-10-16 (+14d) |  | -5d → 0d |  |
| PRE.C3.1145 | DH 1200/Preaction 1033 // Preaction In wall inspection | 2026-09-30 A | 2026-09-30 A | 0% → 100% | -3d → none |  |
| PRE.C3.1148 | DH 1200/Preaction 1033 // Preaction Install Balance of Sheetrock on Walls | 2026-10-05 → 2026-10-01 A (-4d) | 2026-10-09 → 2026-10-20 (+11d) |  | -5d → -2d | PRE.C3.1145, PRE.C3.1146 SS, PRE.C3.1147 → PRE.C3.1147 FF, PRE.C3.1146 SS, PRE.C3.1145 |
| PRE.C3.1149 | DH 1200/Preaction 1033 // Preaction Tape and finish walls | 2026-10-13 → 2026-10-05 A (-8d) | 2026-10-22 → 2026-10-23 (+1d) |  |  | PRE.C3.1148 → PRE.C3.1148 FF |
| PRE.C3.1150 | DH 1200/Preaction 1033 // Preaction Prime and Paint first coat walls | 2026-10-23 → 2026-10-13 A (-10d) |  |  |  | PRE.C3.1149 → PRE.C3.1149 FF+2d |
| 13 | **Restroom-Dock & Janitor** | 2026-08-12 → 2026-09-14 (+33d) | 2026-11-17 → 2026-11-10 (-7d) |  |  |  |
| B1200.1020 | DH 1200/Restroom-Dock & Janitor // RR-Doc-Jan Layout walls | 2026-08-12 A → 2026-09-14 A (+33d) |  |  |  |  |
| B1200.1030 | DH 1200/Restroom-Dock & Janitor // RR-Doc-Jan Frame walls | 2026-08-19 A → 2026-09-21 A (+33d) |  |  |  |  |
| B1200.1060 | DH 1200/Restroom-Dock & Janitor // RR-Doc-Jan MEP rough in walls | 2026-09-30 → 2026-09-24 A (-6d) | 2026-10-02 → 2026-09-28 A (-4d) | 0% → 100% | 34d → none |  |
| B1200.1040 | DH 1200/Restroom-Dock & Janitor // RR-Doc-Jan Install wall door frames | 2026-08-20 A → 2026-09-25 A (+36d) |  |  |  |  |
| B1200.1010 | DH 1200/Restroom-Dock & Janitor // RR-Doc-Jan MEPF overhead layout |  | 2026-10-06 → 2026-10-02 A (-4d) | 0% → 100% | 30d → none |  |
| B1200.1050 | DH 1200/Restroom-Dock & Janitor // RR-Doc-Jan Install Top Down Sheetrock | 2026-09-30 → 2026-09-28 A (-2d) | 2026-10-06 → 2026-09-30 A (-6d) | 0% → 100% | 30d → none |  |
| B1200.1070 | DH 1200/Restroom-Dock & Janitor // RR-Doc-Jan In wall inspection | 2026-10-05 → 2026-09-29 A (-6d) | 2026-10-05 → 2026-09-29 A (-6d) | 0% → 100% | 34d → none |  |
| B1200.1090 | DH 1200/Restroom-Dock & Janitor // RR-Doc-Jan Install Balance of Sheetrock on Walls | 2026-10-13 → 2026-09-30 A (-13d) | 2026-10-19 → 2026-10-20 (+1d) |  | 30d → 37d | B1200.1070, B1200.1050 SS, B1200.1080 → B1200.1080 FF, B1200.1050 SS, B1200.1070 |
| B1200.1080 | DH 1200/Restroom-Dock & Janitor // RR-Doc-Jan MEPF high overhead install | 2026-10-07 → 2026-10-02 A (-5d) | 2026-10-09 → 2026-10-16 (+7d) |  | 30d → 39d |  |
| B1200.1100 | DH 1200/Restroom-Dock & Janitor // RR-Doc-Jan Tape and finish walls | 2026-10-20 → 2026-10-13 A (-7d) | 2026-10-29 → 2026-10-23 (-6d) |  | 30d → 34d | B1200.1090, B1200.1000 FF → B1200.1050 |
| B1200.1000 | DH 1200/Restroom-Dock & Janitor // RR-Doc-Jan Seal concrete | 2026-09-30 → 2026-10-26 (+26d) | 2026-10-01 → 2026-10-27 (+26d) |  | 49d → 35d | PRE.C3.1151 → B1200.1100, PRE.C3.1151 |
| B1200.1110 | DH 1200/Restroom-Dock & Janitor // RR-Doc-Jan Prime and Paint first coat walls | 2026-10-30 → 2026-10-26 (-4d) | 2026-11-03 → 2026-10-28 (-6d) |  | 30d → 34d | B1200.1100 → B1200.1090, B1200.1000 FF, B1200.1100 |
| B1200.1120 | DH 1200/Restroom-Dock & Janitor // RR-Doc-Jan Install lights and exit signs | 2026-11-04 → 2026-10-29 (-6d) | 2026-11-06 → 2026-11-02 (-4d) |  | 30d → 34d |  |
| B1200.1130 | DH 1200/Restroom-Dock & Janitor // RR-Doc-Jan Final Coat Paint & Touchup Walls | 2026-11-09 → 2026-11-03 (-6d) | 2026-11-13 → 2026-11-06 (-7d) |  | 30d → 34d |  |
| B1200.1140 | DH 1200/Restroom-Dock & Janitor // RR-Doc-Jan Install MEP Devices and Trim | 2026-11-16 → 2026-11-09 (-7d) | 2026-11-17 → 2026-11-10 (-7d) |  | 30d → 34d |  |
| 1 | **1200 Energization, Start-up & Commissioning** |  | 2027-02-24 → 2027-02-23 (-1d) |  |  |  |
| 1 | **Energization & L3 Prefunctional Testing** |  | 2027-01-15 → 2027-01-14 (-1d) |  |  |  |
| DH1200.L3CX.39 | DH1200 L3 Start |  |  |  |  | B120001.1180, B120001.3110, B120001.1240, B120001.1300, B120001.1310, B120001.1330, B120004.1140, B120004.1260, B120004.1280, B120004.1310, B120004.1250, B1200100.1110, B12000-A-EQP-215, DH1200.MG.A110.8685, DH1200.MG.A110.8689, DH1200.MG.A110.8692, DH1200-002, DH1200-006, DH1200-009, B12000.12081, B12000.12095, B12002.1140, PRE.C3.1154, B12000.12098, B12000.12099, DH 1200/Loading Dock // Ready to receive Equipment, B12002.1141, PRE.C3.1156, B12003.1141 → B12003.1141, PRE.C3.1156, B12002.1141, B12000.12099, B12000.12098, PRE.C3.1154, B12002.1140, B12000.12095, B12000.12081, DH1200-009, DH1200-006, DH1200-002, DH1200.MG.A110.8692, DH1200.MG.A110.8689, DH1200.MG.A110.8685, B12000-A-EQP-215, B1200100.1110, B120004.1250, B120004.1310, B120004.1280, B120004.1260, B120004.1140, B120001.1330, B120001.1310, B120001.1300, B120001.1240, B120001.3110, B120001.1180 |
| DH1200.L3CX.MECH.33 | DH1200 L3 Startup / Pre-Functional – MECHANICAL | 2026-11-30 → 2026-11-18 (-12d) | 2026-12-28 → 2026-12-16 (-12d) |  | -9d → -2d |  |
| DH1200.L3CX.MECH.43 | DH1200 L3 TAB (Air, Water and Reports) – MECHANICAL | 2026-12-29 → 2026-12-28 (-1d) | 2027-01-12 → 2027-01-11 (-1d) |  | -9d → -8d |  |
| DH1200.L3CX.MECH.53 | DH1200 L3 FLS – MECHANICAL | 2026-12-31 → 2026-12-30 (-1d) | 2027-01-14 → 2027-01-13 (-1d) |  | -9d → -8d |  |
| DH1200.L3CX.29 | DH1200 L3 Cx Complete | 2027-01-15 → 2027-01-14 (-1d) | 2027-01-15 → 2027-01-14 (-1d) |  | -9d → -8d |  |
| 2 | **L4 Function Testing** | 2026-12-17 → 2026-12-16 (-1d) | 2027-01-25 → 2027-01-22 (-3d) |  |  |  |
| DH1200.L4CX.COMM.140 | DH1200 L4 Cx | 2026-12-17 → 2026-12-16 (-1d) | 2027-01-25 → 2027-01-22 (-3d) |  | -2d → -1d |  |
| 3 | **L5 Integrated System Testing (IST)** | 2027-01-05 → 2027-01-04 (-1d) | 2027-02-24 → 2027-02-23 (-1d) |  |  |  |

| ID | Task | Start | Finish | Total float | Predecessors |
| --- | --- | --- | --- | --- | --- |
| DH1200.L5CX.COMM.220 | DH1200 L5 Integrated Systems Testing - IST | 2027-01-05 → 2027-01-04 (-1d) | 2027-02-02 → 2027-02-01 (-1d) | -2d → -1d |  |
| DH1200.A2110.CO | DH 1200/L5 Integrated System Testing (IST) // DH1200– Phase Closeout Period O&M / TRAINING/ CLOSEOUT DOCS | 2027-02-03 → 2027-02-02 (-1d) | 2027-02-24 → 2027-02-23 (-1d) | 53d → 71d |  |
| DH1200.L5CX.COMM.230 | DH1200 – IST / L5 Cx Complete | 2027-02-03 → 2027-02-02 (-1d) | 2027-02-03 → 2027-02-02 (-1d) | -2d → -1d |  |
| 8 | **Data Hall 1400** |  | 2027-04-21 → 2027-04-22 (+1d) |  |  |
| 10 | **Exterior Build Out** |  | 2027-01-07 → 2027-01-04 (-3d) |  |  |
| 9 | **Electrical Yard** |  | 2026-12-30 → 2027-01-04 (+5d) |  |  |
| 3 | **Electrical** |  | 2026-12-30 → 2027-01-04 (+5d) |  |  |
| 1 | **Underground** |  | 2026-11-05 → 2026-11-19 (+14d) |  |  |
| 1 | **Column Line 4.0 - 4.9** |  | 2026-11-05 → 2026-11-19 (+14d) |  |  |
| DH.1400 | DH1400/Electrical Yard-Underground // Excavate From MVG to Transformers |  | 2026-10-14 → 2026-10-27 (+13d) | -10d → -6d |  |
| B1200378 | DH1400/Electrical Yard-Underground // Install Raceway from MVG to Transformers | 2026-10-15 → 2026-10-28 (+13d) | 2026-10-28 → 2026-11-10 (+13d) | -10d → -6d |  |
| B1200379 | DH1400/Electrical Yard-Underground // Backfill Raceways from MVG to Transformers | 2026-10-29 → 2026-11-12 (+14d) | 2026-11-05 → 2026-11-19 (+14d) | -10d → -6d |  |
| 2 | **Pads** | 2026-11-06 → 2026-11-20 (+14d) | 2026-11-27 → 2026-12-10 (+13d) |  |  |
| B1200388 | DH1400/Electrical Yard-Pads // Excavate / Form / Rebar /pour-Finish Pads (House Gen & (9) Xfmr) 0.1 to 1.4 Line | 2026-11-06 → 2026-11-20 (+14d) | 2026-11-16 → 2026-11-30 (+14d) | -10d → -6d |  |
| B1200389 | DH1400/Electrical Yard-Pads // Pad Strip and Cure (House Gen & (9) Xfmr) 0.1 to 1.4 Line | 2026-11-17 → 2026-12-01 (+14d) | 2026-11-17 → 2026-12-01 (+14d) | -10d → -6d |  |
| B1200390 | DH1400/Electrical Yard-Pads // Excavate / Form / Rebar /pour-Finish Pads (16 Xfmrs) 1.4 to 1.8 Line | 2026-11-18 → 2026-12-02 (+14d) | 2026-11-25 → 2026-12-09 (+14d) | -10d → -6d |  |
| B1200391 | DH1400/Electrical Yard-Pads // Pad Strip and Cure (16 Xfmrs) 1.4 to 1.8 Line | 2026-11-27 → 2026-12-10 (+13d) | 2026-11-27 → 2026-12-10 (+13d) | -10d → -6d |  |
| 3 | **Equipment** | 2026-11-30 → 2026-12-11 (+11d) | 2026-12-30 → 2027-01-04 (+5d) |  |  |
| 1 | **A140** | 2026-11-30 → 2026-12-11 (+11d) | 2026-12-01 → 2026-12-14 (+13d) |  |  |
| DH.14001 | DH1400/Electrical Yard // Set XFMR - XFMR-A140a | 2026-11-30 → 2026-12-11 (+11d) | 2026-11-30 → 2026-12-11 (+11d) | -10d → -6d |  |
| DH.14002 | DH1400/Electrical Yard // Set XFMR - XFMR-A140p | 2026-12-01 → 2026-12-14 (+13d) | 2026-12-01 → 2026-12-14 (+13d) | -10d → -6d |  |
| 2 | **B140** | 2026-12-02 → 2026-12-15 (+13d) | 2026-12-03 → 2026-12-16 (+13d) |  |  |
| DH.14003 | DH1400/Electrical Yard // Set XFMR - XFMR-B140a | 2026-12-02 → 2026-12-15 (+13d) | 2026-12-02 → 2026-12-15 (+13d) | -10d → -6d |  |
| DH.14004 | DH1400/Electrical Yard // Set XFMR - XFMR-B140p | 2026-12-03 → 2026-12-16 (+13d) | 2026-12-03 → 2026-12-16 (+13d) | -10d → -6d |  |
| 3 | **C140** | 2026-12-04 → 2026-12-17 (+13d) | 2026-12-07 → 2026-12-18 (+11d) |  |  |
| DH.14005 | DH1400/Electrical Yard // Set XFMR - XFMR-C140a | 2026-12-04 → 2026-12-17 (+13d) | 2026-12-04 → 2026-12-17 (+13d) | -10d → -6d |  |
| DH.14006 | DH1400/Electrical Yard // Set XFMR - XFMR-C140p | 2026-12-07 → 2026-12-18 (+11d) | 2026-12-07 → 2026-12-18 (+11d) | -10d → -6d |  |
| 4 | **D140** | 2026-12-08 → 2026-12-21 (+13d) | 2026-12-09 → 2026-12-22 (+13d) |  |  |
| DH.14007 | DH1400/Electrical Yard // Set XFMR - XFMR-D140a | 2026-12-08 → 2026-12-21 (+13d) | 2026-12-08 → 2026-12-21 (+13d) | -10d → -6d |  |
| DH.14008 | DH1400/Electrical Yard // Set XFMR - XFMR-D140p | 2026-12-09 → 2026-12-22 (+13d) | 2026-12-09 → 2026-12-22 (+13d) | -10d → -6d |  |
| 5 | **E140** | 2026-12-10 → 2026-12-23 (+13d) | 2026-12-11 → 2026-12-24 (+13d) |  |  |
| DH.14009 | DH1400/Electrical Yard // Set XFMR - XFMR-E140a | 2026-12-10 → 2026-12-23 (+13d) | 2026-12-10 → 2026-12-23 (+13d) | -10d → -6d |  |
| DH.14000 | DH1400/Electrical Yard // Set XFMR - XFMR-E140p | 2026-12-11 → 2026-12-24 (+13d) | 2026-12-11 → 2026-12-24 (+13d) | -10d → -6d |  |
| 6 | **F140** | 2026-12-14 → 2026-12-28 (+14d) | 2026-12-15 → 2026-12-29 (+14d) |  |  |
| DH.160012108 | DH1400/Electrical Yard // Set XFMR - XFMR-F140a | 2026-12-14 → 2026-12-28 (+14d) | 2026-12-14 → 2026-12-28 (+14d) | -4d → -6d |  |
| DH.160012109 | DH1400/Electrical Yard // Set XFMR - XFMR-F140p | 2026-12-15 → 2026-12-29 (+14d) | 2026-12-15 → 2026-12-29 (+14d) | -4d → -6d |  |
| 7 | **G140** | 2026-12-16 → 2026-12-30 (+14d) | 2026-12-17 → 2026-12-31 (+14d) |  |  |
| DH.160012110 | DH1400/Electrical Yard // Set XFMR - XFMR-G140a | 2026-12-16 → 2026-12-30 (+14d) | 2026-12-16 → 2026-12-30 (+14d) | -4d → -6d |  |
| DH.160012111 | DH1400/Electrical Yard // Set XFMR - XFMR-G140p | 2026-12-17 → 2026-12-31 (+14d) | 2026-12-17 → 2026-12-31 (+14d) | -4d → -6d |  |
| 8 | **H140** | 2026-12-18 → 2027-01-04 (+17d) | 2026-12-21 → 2027-01-04 (+14d) |  |  |
| DH.160012112 | DH1400/Electrical Yard // Set XFMR - XFMR-H140a | 2026-12-18 → 2027-01-04 (+17d) | 2026-12-18 → 2027-01-04 (+17d) | -4d → -6d |  |
| DH.160012113 | DH1400/Electrical Yard // Set XFMR - XFMR-H140p | 2026-12-21 → 2027-01-04 (+14d) | 2026-12-21 → 2027-01-04 (+14d) | -4d → -6d | DH.160012112 → DH.160012112 FF |
| 9 | **J140** | 2026-12-22 → 2027-01-04 (+13d) | 2026-12-23 → 2027-01-04 (+12d) |  |  |
| DH.160012114 | DH1400/Electrical Yard // Set XFMR - XFMR-J140a | 2026-12-22 → 2027-01-04 (+13d) | 2026-12-22 → 2027-01-04 (+13d) | -4d → -6d | DH.160012113 → DH.160012113 FF |
| DH.160012115 | DH1400/Electrical Yard // Set XFMR - XFMR-J140p | 2026-12-23 → 2027-01-04 (+12d) | 2026-12-23 → 2027-01-04 (+12d) | -4d → -6d | DH.160012114 → DH.160012114 FF |
| 10 | **K140** | 2026-12-24 → 2027-01-04 (+11d) | 2026-12-28 → 2027-01-04 (+7d) |  |  |
| DH.160012116 | DH1400/Electrical Yard // Set XFMR - XFMR-K140a | 2026-12-24 → 2027-01-04 (+11d) | 2026-12-24 → 2027-01-04 (+11d) | -4d → -6d | DH.160012115 → DH.160012115 FF |
| DH.160012117 | DH1400/Electrical Yard // Set XFMR - XFMR-K140p | 2026-12-28 → 2027-01-04 (+7d) | 2026-12-28 → 2027-01-04 (+7d) | -4d → -6d | DH.160012116 → DH.160012116 FF |
| 11 | **R140** | 2026-12-29 → 2027-01-04 (+6d) | 2026-12-30 → 2027-01-04 (+5d) |  |  |
| DH.160012118 | DH1400/Electrical Yard // Set XFMR - XFMR-R140a | 2026-12-29 → 2027-01-04 (+6d) | 2026-12-29 → 2027-01-04 (+6d) | -4d → -6d | DH.160012117 → DH.160012117 FF |
| DH.160012119 | DH1400/Electrical Yard // Set XFMR - XFMR-R140p | 2026-12-30 → 2027-01-04 (+5d) | 2026-12-30 → 2027-01-04 (+5d) | -4d → -6d | DH.160012118 → DH.160012118 FF |
| 1 | **Mechanical Yard** |  | 2027-01-07 → 2026-12-31 (-7d) |  |  |
| A5777 | DH1400/Mechanical Yard-Pads // Excavate / Form / Rebar / Pour Support and TES Pads (Column Lines 1.6 to 1.9) | 2026-08-21 A → 2026-09-02 A (+12d) |  |  |  |
| 5 | **Equipment** | 2026-09-30 → 2026-10-05 (+5d) | 2027-01-07 → 2026-12-31 (-7d) |  |  |
| 1 | **A140** | 2026-09-30 → 2026-10-05 (+5d) | 2026-10-06 → 2026-12-14 (+69d) |  |  |
| DH.140012024 | DH1400/Mechanical Yard-A140 // Install Mechanical Piping Mains (Building -to Line) | 2026-10-05 A | 2026-10-05 → 2026-12-11 (+67d) | 84d → 38d | DH.140012023 → DH.140012023 FF, A5777 |
| DH.140012001 | DH1400/Mechanical Yard-A140 // Set Chiller - CHLR-1CY40-A140 | 2026-09-30 → 2026-12-09 (+70d) | 2026-09-30 → 2026-12-09 (+70d) | 39d → -6d | STRUCTURE.6940, FDN.1244 → A5900, FDN.1244, STRUCTURE.6940 |
| DH.140012002 | DH1400/Mechanical Yard-A140 // Set TES tank - TES-1CY40-A140 | 2026-10-01 → 2026-12-10 (+70d) | 2026-10-01 → 2026-12-10 (+70d) | 84d → 38d |  |
| DH.140012023 | DH1400/Mechanical Yard-A140 // Install CHWP | 2026-10-02 → 2026-12-11 (+70d) | 2026-10-02 → 2026-12-11 (+70d) | 84d → 38d |  |
| DH.140012025 | DH1400/Mechanical Yard-A140 // Install Mechanical Chiller to Mains | 2026-10-06 → 2026-12-14 (+69d) | 2026-10-06 → 2026-12-14 (+69d) | 84d → 38d |  |
| 2 | **B140** | 2026-12-14 → 2026-12-09 (-5d) | 2026-12-18 → 2026-12-15 (-3d) |  |  |
| DH.140012003 | DH1400/Mechanical Yard-B140 // Set Chiller - CHLR-1CY40-B140 | 2026-12-14 → 2026-12-09 (-5d) | 2026-12-14 → 2026-12-09 (-5d) | -10d → -6d | DH.140012001, DH.14000 → A5900, DH.140012001 SS |
| DH.140012004 | DH1400/Mechanical Yard-B140 // Set TES tank - TES-1CY40-B140 | 2026-12-15 → 2026-12-10 (-5d) | 2026-12-15 → 2026-12-10 (-5d) | 34d → 37d |  |
| DH.140012026 | DH1400/Mechanical Yard-B140 // Install CHWP | 2026-12-16 → 2026-12-11 (-5d) | 2026-12-16 → 2026-12-11 (-5d) | 34d → 37d |  |
| DH.140012027 | DH1400/Mechanical Yard-B140 // Install Mechanical Piping Mains (Building -to Line) | 2026-12-17 → 2026-12-14 (-3d) | 2026-12-17 → 2026-12-14 (-3d) | 34d → 37d |  |
| DH.140012028 | DH1400/Mechanical Yard-B140 // Install Mechanical Chiller to Mains | 2026-12-18 → 2026-12-15 (-3d) | 2026-12-18 → 2026-12-15 (-3d) | 34d → 37d |  |
| 3 | **C140** | 2026-12-14 → 2026-12-09 (-5d) | 2026-12-18 → 2026-12-15 (-3d) |  |  |
| DH.140012005 | DH1400/Mechanical Yard-C140 // Set Chiller - CHLR-1CY40-C140 | 2026-12-14 → 2026-12-09 (-5d) | 2026-12-14 → 2026-12-09 (-5d) | -10d → -6d | DH.140012003 SS → A5900, DH.140012003 SS |
| DH.140012006 | DH1400/Mechanical Yard-C140 // Set TES tank - TES-1CY40-C140 | 2026-12-15 → 2026-12-10 (-5d) | 2026-12-15 → 2026-12-10 (-5d) | 34d → 37d |  |
| DH.140012029 | DH1400/Mechanical Yard-C140 // Install CHWP | 2026-12-16 → 2026-12-11 (-5d) | 2026-12-16 → 2026-12-11 (-5d) | 34d → 37d |  |

| ID | Task | Start | Finish | Total float | Predecessors |
| --- | --- | --- | --- | --- | --- |
| DH.140012030 | DH1400/Mechanical Yard-C140 // Install Mechanical Piping Mains (Building -to Line) | 2026-12-17 → 2026-12-14 (-3d) | 2026-12-17 → 2026-12-14 (-3d) | 34d → 37d |  |
| DH.140012031 | DH1400/Mechanical Yard-C140 // Install Mechanical Chiller to Mains | 2026-12-18 → 2026-12-15 (-3d) | 2026-12-18 → 2026-12-15 (-3d) | 34d → 37d |  |
| 4 | **D140** | 2026-12-14 → 2026-12-09 (-5d) | 2026-12-18 → 2026-12-15 (-3d) |  |  |
| DH.140012007 | DH1400/Mechanical Yard-D140 // Set Chiller - CHLR-1CY40-D140 | 2026-12-14 → 2026-12-09 (-5d) | 2026-12-14 → 2026-12-09 (-5d) | -10d → -6d | DH.140012005 SS → A5900, DH.140012005 SS |
| DH.140012008 | DH1400/Mechanical Yard-D140 // Set TES tank - TES-1CY40-D140 | 2026-12-15 → 2026-12-10 (-5d) | 2026-12-15 → 2026-12-10 (-5d) | 34d → 37d |  |
| DH.140012032 | DH1400/Mechanical Yard-D140 // Install CHWP | 2026-12-16 → 2026-12-11 (-5d) | 2026-12-16 → 2026-12-11 (-5d) | 34d → 37d |  |
| DH.140012033 | DH1400/Mechanical Yard-D140 // Install Mechanical Piping Mains (Building -to Line) | 2026-12-17 → 2026-12-14 (-3d) | 2026-12-17 → 2026-12-14 (-3d) | 34d → 37d |  |
| DH.140012034 | DH1400/Mechanical Yard-D140 // Install Mechanical Chiller to Mains | 2026-12-18 → 2026-12-15 (-3d) | 2026-12-18 → 2026-12-15 (-3d) | 34d → 37d |  |
| 5 | **E140** | 2026-12-15 → 2026-12-09 (-6d) | 2026-12-21 → 2026-12-15 (-6d) |  |  |
| DH.140012009 | DH1400/Mechanical Yard-E140 // Set Chiller - CHLR-1CY40-E140 | 2026-12-15 → 2026-12-09 (-6d) | 2026-12-15 → 2026-12-09 (-6d) | -10d → -6d | DH.140012007 → A5900, DH.140012007 SS |
| DH.140012010 | DH1400/Mechanical Yard-E140 // Set TES tank - TES-1CY40-E140 | 2026-12-16 → 2026-12-10 (-6d) | 2026-12-16 → 2026-12-10 (-6d) | 33d → 37d |  |
| DH.140012035 | DH1400/Mechanical Yard-E140 // Install CHWP | 2026-12-17 → 2026-12-11 (-6d) | 2026-12-17 → 2026-12-11 (-6d) | 33d → 37d |  |
| DH.140012036 | DH1400/Mechanical Yard-E140 // Install Mechanical Piping Mains (Building -to Line) | 2026-12-18 → 2026-12-14 (-4d) | 2026-12-18 → 2026-12-14 (-4d) | 33d → 37d |  |
| DH.140012037 | DH1400/Mechanical Yard-E140 // Install Mechanical Chiller to Mains | 2026-12-21 → 2026-12-15 (-6d) | 2026-12-21 → 2026-12-15 (-6d) | 33d → 37d |  |
| 6 | **F140** | 2026-12-15 → 2026-12-09 (-6d) | 2026-12-21 → 2026-12-15 (-6d) |  |  |
| DH.140012011 | DH1400/Mechanical Yard-F140 // Set Chiller - CHLR-1CY40-F140 | 2026-12-15 → 2026-12-09 (-6d) | 2026-12-15 → 2026-12-09 (-6d) | -10d → -6d | DH.140012009 SS → A5900, DH.140012009 SS |
| DH.140012012 | DH1400/Mechanical Yard-F140 // Set TES tank - TES-1CY40-F140 | 2026-12-16 → 2026-12-10 (-6d) | 2026-12-16 → 2026-12-10 (-6d) | 33d → 37d |  |
| DH.140012038 | DH1400/Mechanical Yard-F140 // Install CHWP | 2026-12-17 → 2026-12-11 (-6d) | 2026-12-17 → 2026-12-11 (-6d) | 33d → 37d |  |
| DH.140012039 | DH1400/Mechanical Yard-F140 // Install Mechanical Piping Mains (Building -to Line) | 2026-12-18 → 2026-12-14 (-4d) | 2026-12-18 → 2026-12-14 (-4d) | 33d → 37d |  |
| DH.140012040 | DH1400/Mechanical Yard-F140 // Install Mechanical Chiller to Mains | 2026-12-21 → 2026-12-15 (-6d) | 2026-12-21 → 2026-12-15 (-6d) | 33d → 37d |  |
| 7 | **G140** | 2026-12-15 → 2026-12-10 (-5d) | 2026-12-21 → 2026-12-16 (-5d) |  |  |
| DH.140012013 | DH1400/Mechanical Yard-G140 // Set Chiller - CHLR-1CY40-G140 | 2026-12-15 → 2026-12-10 (-5d) | 2026-12-15 → 2026-12-10 (-5d) | -10d → -6d | DH.140012011 SS → DH.140012011 |
| DH.140012014 | DH1400/Mechanical Yard-G140 // Set TES tank - TES-1CY40-G140 | 2026-12-16 → 2026-12-11 (-5d) | 2026-12-16 → 2026-12-11 (-5d) | 33d → 36d |  |
| DH.140012041 | DH1400/Mechanical Yard-G140 // Install CHWP | 2026-12-17 → 2026-12-14 (-3d) | 2026-12-17 → 2026-12-14 (-3d) | 33d → 36d |  |
| DH.140012042 | DH1400/Mechanical Yard-G140 // Install Mechanical Piping Mains (Building -to Line) | 2026-12-18 → 2026-12-15 (-3d) | 2026-12-18 → 2026-12-15 (-3d) | 33d → 36d |  |
| DH.140012043 | DH1400/Mechanical Yard-G140 // Install Mechanical Chiller to Mains | 2026-12-21 → 2026-12-16 (-5d) | 2026-12-21 → 2026-12-16 (-5d) | 33d → 36d |  |
| 8 | **H140** | 2026-12-16 → 2026-12-10 (-6d) | 2026-12-22 → 2026-12-16 (-6d) |  |  |
| DH.140012015 | DH1400/Mechanical Yard-H140 // Set Chiller - CHLR-1CY40-H140 | 2026-12-16 → 2026-12-10 (-6d) | 2026-12-16 → 2026-12-10 (-6d) | -10d → -6d | DH.140012013 → DH.140012013 SS |
| DH.140012016 | DH1400/Mechanical Yard-H140 // Set TES tank - TES-1CY40-H140 | 2026-12-17 → 2026-12-11 (-6d) | 2026-12-17 → 2026-12-11 (-6d) | 32d → 36d |  |
| DH.140012044 | DH1400/Mechanical Yard-H140 // Install CHWP | 2026-12-18 → 2026-12-14 (-4d) | 2026-12-18 → 2026-12-14 (-4d) | 32d → 36d |  |
| DH.140012045 | DH1400/Mechanical Yard-H140 // Install Mechanical Piping Mains (Building -to Line) | 2026-12-21 → 2026-12-15 (-6d) | 2026-12-21 → 2026-12-15 (-6d) | 32d → 36d |  |
| DH.140012046 | DH1400/Mechanical Yard-H140 // Install Mechanical Chiller to Mains | 2026-12-22 → 2026-12-16 (-6d) | 2026-12-22 → 2026-12-16 (-6d) | 32d → 36d |  |
| 9 | **J140** | 2026-12-16 → 2026-12-10 (-6d) | 2026-12-22 → 2026-12-16 (-6d) |  |  |
| DH.140012017 | DH1400/Mechanical Yard-J140 // Set Chiller - CHLR-1CY40-J140 | 2026-12-16 → 2026-12-10 (-6d) | 2026-12-16 → 2026-12-10 (-6d) | -10d → -6d |  |
| DH.140012018 | DH1400/Mechanical Yard-J140 // Set TES tank - TES-1CY40-J140 | 2026-12-17 → 2026-12-11 (-6d) | 2026-12-17 → 2026-12-11 (-6d) | 32d → 36d |  |
| DH.140012047 | DH1400/Mechanical Yard-J140 // Install CHWP | 2026-12-18 → 2026-12-14 (-4d) | 2026-12-18 → 2026-12-14 (-4d) | 32d → 36d |  |
| DH.140012048 | DH1400/Mechanical Yard-J140 // Install Mechanical Piping Mains (Building -to Line) | 2026-12-21 → 2026-12-15 (-6d) | 2026-12-21 → 2026-12-15 (-6d) | 32d → 36d |  |
| DH.140012049 | DH1400/Mechanical Yard-J140 // Install Mechanical Chiller to Mains | 2026-12-22 → 2026-12-16 (-6d) | 2026-12-22 → 2026-12-16 (-6d) | 32d → 36d |  |
| 10 | **K140** | 2026-12-16 → 2026-12-10 (-6d) | 2026-12-22 → 2026-12-16 (-6d) |  |  |
| DH.140012019 | DH1400/Mechanical Yard-K140 // Set Chiller - CHLR-1CY40-K140 | 2026-12-16 → 2026-12-10 (-6d) | 2026-12-16 → 2026-12-10 (-6d) | -10d → -6d |  |
| DH.140012020 | DH1400/Mechanical Yard-K140 // Set TES tank - TES-1CY40-K140 | 2026-12-17 → 2026-12-11 (-6d) | 2026-12-17 → 2026-12-11 (-6d) | 32d → 36d |  |
| DH.140012050 | DH1400/Mechanical Yard-K140 // Install CHWP | 2026-12-18 → 2026-12-14 (-4d) | 2026-12-18 → 2026-12-14 (-4d) | 32d → 36d |  |
| DH.140012051 | DH1400/Mechanical Yard-K140 // Install Mechanical Piping Mains (Building -to Line) | 2026-12-21 → 2026-12-15 (-6d) | 2026-12-21 → 2026-12-15 (-6d) | 32d → 36d |  |
| DH.140012052 | DH1400/Mechanical Yard-K140 // Install Mechanical Chiller to Mains | 2026-12-22 → 2026-12-16 (-6d) | 2026-12-22 → 2026-12-16 (-6d) | 32d → 36d |  |
| 11 | **R140** | 2026-12-16 → 2026-12-10 (-6d) | 2026-12-22 → 2026-12-16 (-6d) |  |  |
| DH.140012021 | DH1400/Mechanical Yard-R140 // Set Chiller - CHLR-1CY40-R140 | 2026-12-16 → 2026-12-10 (-6d) | 2026-12-16 → 2026-12-10 (-6d) | -10d → -6d |  |
| DH.140012022 | DH1400/Mechanical Yard-R140 // Set TES tank - TES-1CY40-R140 | 2026-12-17 → 2026-12-11 (-6d) | 2026-12-17 → 2026-12-11 (-6d) | -10d → -6d |  |
| DH.140012053 | DH1400/Mechanical Yard-R140 // Install CHWP | 2026-12-18 → 2026-12-14 (-4d) | 2026-12-18 → 2026-12-14 (-4d) | -10d → -6d |  |
| DH.140012054 | DH1400/Mechanical Yard-R140 // Install Mechanical Piping Mains (Building -to Line) | 2026-12-21 → 2026-12-15 (-6d) | 2026-12-21 → 2026-12-15 (-6d) | -10d → -6d |  |
| DH.140012055 | DH1400/Mechanical Yard-R140 // Install Mechanical Chiller to Mains | 2026-12-22 → 2026-12-16 (-6d) | 2026-12-22 → 2026-12-16 (-6d) | -10d → -6d |  |
| 12 | **Test & Flushing** | 2026-12-23 → 2026-12-17 (-6d) | 2027-01-07 → 2026-12-31 (-7d) |  |  |
| A5739 | DH1400/Mechanical Yard-Test & Flushing // Line Test & Checking | 2026-12-23 → 2026-12-17 (-6d) | 2026-12-24 → 2026-12-18 (-6d) | 35d → 39d |  |
| A5741 | DH1400/Mechanical Yard-Test & Flushing // Electrical & Controls Testing / Checking | 2026-12-28 → 2026-12-21 (-7d) | 2026-12-30 → 2026-12-23 (-7d) | 35d → 39d |  |
| A5740 | DH1400/Mechanical Yard-Test & Flushing // Fill, Flush & Purge | 2026-12-31 → 2026-12-24 (-7d) | 2027-01-07 → 2026-12-31 (-7d) | 35d → 39d |  |
| 2 | **Electrical & Controls** |  | 2026-11-06 → 2026-11-16 (+10d) |  |  |
| A5783 | DH1400/Electrical & Controls // Raceway connections to Chiller units | 2026-09-30 → 2026-10-14 (+14d) | 2026-10-07 → 2026-10-21 (+14d) | 79d → 70d |  |
| A5785 | DH1400/Electrical & Controls // Install Panels and Raceways to CHWP | 2026-09-30 → 2026-10-14 (+14d) | 2026-10-14 → 2026-10-27 (+13d) | 79d → 70d |  |
| A5786 | DH1400/Electrical & Controls // Install Controls conduits and wire to Chiller units | 2026-09-30 → 2026-10-14 (+14d) | 2026-10-16 → 2026-10-29 (+13d) | 79d → 70d |  |
| A5789 | DH1400/Electrical & Controls // Pull and Terminate Feeders to Chiller units | 2026-10-08 → 2026-10-22 (+14d) | 2026-10-16 → 2026-10-29 (+13d) | 79d → 70d |  |
| A5792 | DH1400/Electrical & Controls // Chiller units Ready to Energize | 2026-10-19 → 2026-10-30 (+11d) | 2026-10-26 → 2026-11-06 (+11d) | 79d → 70d |  |
| A5793 | DH1400/Electrical & Controls // Fine Grade Install Landscape Fabric & Install Rock | 2026-11-02 → 2026-11-09 (+7d) | 2026-11-06 → 2026-11-16 (+10d) | 75d → 70d |  |
| 2 | **Roof - RTUs** | 2026-08-10 → 2026-08-11 (+1d) | 2026-10-21 → 2026-11-03 (+13d) |  |  |
| 1 | **Column Lines 1.2 thru 2.0** | 2026-08-10 → 2026-08-11 (+1d) | 2026-10-21 → 2026-11-03 (+13d) |  |  |
| DH.140012058 | DH1400/Roof - RTUs // Set RTU-RT Units - RTU-RT- 011 | 2026-08-10 A → 2026-08-11 A (+1d) |  |  |  |
| DH.140012059 | DH1400/Roof - RTUs // Install Mechanical Piping |  | 2026-09-30 → 2026-10-14 (+14d) | 74d → 65d |  |
| DH.140012056 | DH1400/Roof - RTUs // Install heat trace system | 2026-09-30 → 2026-10-14 (+14d) | 2026-10-21 → 2026-11-03 (+13d) | 87d → 78d |  |
| DH.14007841 | DH1400/Roof - RTUs // Install Electrical Conduit and Controls Piping | 2026-09-30 → 2026-10-14 (+14d) | 2026-10-21 → 2026-11-03 (+13d) | 74d → 65d |  |
| 1 | **Interior Build Out** | 2026-08-10 → 2026-08-12 (+2d) | 2027-04-21 → 2027-04-22 (+1d) |  |  |
| 9 | **Flex 1000D10** | 2026-08-10 → 2026-08-12 (+2d) | 2026-12-11 → 2026-12-14 (+3d) |  |  |
| DH.1400.1000 | DH1400/Flex 1000D10 // Seal Concrete | 2026-08-10 A → 2026-08-12 A (+2d) |  |  |  |

| ID | Task | Start | Finish | Complete | Total float | Predecessors |
| --- | --- | --- | --- | --- | --- | --- |
| DH.1400.1020 | DH1400/Flex 1000D10 // MEPF Install High Overhead Systems | 2026-10-15 → 2026-10-05 A (-10d) | 2026-10-22 → 2026-10-27 (+5d) |  | 15d → 14d | DH.1400.1010, B120001.3160 → B120001.3160 FF, DH.1400.1010 |
| DH.1400.1040 | DH1400/Flex 1000D10 // Frame Walls including Backing | 2026-10-23 → 2026-10-08 A (-15d) | 2026-10-28 → 2026-10-20 (-8d) | 0% → 100% | 15d → 20d | DH.1400.1010, DH.1400.1020 → DH.1400.1020 SS+3d, DH.1400.1010 |
| B120001.3159 | DH1400/Flex 1000D10 // Install Overhead Cable Ladder / 36" Cable Tray - TFO | 2026-09-30 → 2026-10-14 (+14d) | 2026-10-06 → 2026-10-20 (+14d) |  | 15d → 14d |  |
| DH.1400.1060 | DH1400/Flex 1000D10 // MEPF Install Rough Wall | 2026-10-29 → 2026-10-20 (-9d) | 2026-10-30 → 2026-10-21 (-9d) |  | 15d → 22d |  |
| B120001.3160 | DH1400/Flex 1000D10 // Install Overhead HAC - TFO | 2026-10-07 → 2026-10-21 (+14d) | 2026-10-14 → 2026-10-27 (+13d) |  | 15d → 14d |  |
| DH.1400.1080 | DH1400/Flex 1000D10 // Rough Wall Inspspection (Approval to Close up) | 2026-11-02 → 2026-10-22 (-11d) | 2026-11-02 → 2026-10-22 (-11d) |  | 15d → 22d |  |
| DH.1400.1070 | DH1400/Flex 1000D10 // Install Top Down Sheet Rock | 2026-10-27 → 2026-10-28 (+1d) | 2026-11-02 → 2026-11-03 (+1d) |  | 15d → 14d |  |
| DH.1400.1090 | DH1400/Flex 1000D10 // Install Balance of Sheetrock | 2026-11-03 → 2026-11-04 (+1d) | 2026-11-05 → 2026-11-06 (+1d) |  | 15d → 14d |  |
| DH.1400.1100 | DH1400/Flex 1000D10 // Tape and Finish Walls | 2026-11-06 → 2026-11-09 (+3d) | 2026-11-16 → 2026-11-17 (+1d) |  | 15d → 14d |  |
| DH.1400.1110 | DH1400/Flex 1000D10 // Prime and First Coat of Paint | 2026-11-17 → 2026-11-18 (+1d) | 2026-11-18 → 2026-11-19 (+1d) |  | 15d → 14d |  |
| DH.1400.1120 | DH1400/Flex 1000D10 // Install MEPF Overhead Ceiling Rough | 2026-11-19 → 2026-11-20 (+1d) | 2026-11-23 → 2026-11-24 (+1d) |  | 15d → 14d |  |
| DH.1400.1130 | DH1400/Flex 1000D10 // Install Lighting, Fire Alarm & Fire Protection | 2026-11-24 → 2026-11-25 (+1d) | 2026-11-25 → 2026-11-27 (+2d) |  | 15d → 14d |  |
| DH.1400.1140 | DH1400/Flex 1000D10 // Wall Touch up Final Coat of Paint | 2026-11-27 → 2026-11-30 (+3d) | 2026-12-01 → 2026-12-02 (+1d) |  | 15d → 14d |  |
| DH.1400.1050 | DH1400/Flex 1000D10 // Install Door Frames | 2026-12-02 → 2026-12-03 (+1d) | 2026-12-02 → 2026-12-03 (+1d) |  | 54d → 53d |  |
| DH.1400.1150 | DH1400/Flex 1000D10 // Install Wall Base, Trim, and Devices | 2026-12-02 → 2026-12-03 (+1d) | 2026-12-04 → 2026-12-07 (+3d) |  | 15d → 14d |  |
| DH.1400.3069 | DH1400/Flex 1000D10 // Ready to Receive Equipment | 2026-12-04 → 2026-12-07 (+3d) | 2026-12-04 → 2026-12-07 (+3d) |  | 15d → 14d |  |
| DH.1400.1160 | DH1400/Flex 1000D10 // Suffolk Pre Punch | 2026-12-07 → 2026-12-08 (+1d) | 2026-12-11 → 2026-12-14 (+3d) |  | 52d → 51d |  |
| 7 | **Electrical Room #5401** |  | 2027-01-12 → 2027-01-13 (+1d) |  |  |  |
| B120001.3049 | DH1400/Electrical Room #5401 // Frame Walls including Backing | 2026-10-08 → 2026-09-29 A (-9d) | 2026-10-14 → 2026-10-19 (+5d) |  | 16d → 12d | B120001.3048, DH.1400.1180, DH.14001040 → DH.14001040 FF, B120001.3048 |
| F.1000A.1485 | DH1400/Electrical Room #5401 // BMS & EPMS Rough-In | 2026-10-23 → 2026-10-01 A (-22d) | 2026-10-26 → 2026-10-02 A (-24d) | 0% → 100% | 40d → none | F.1000A.1231 FF, F.1000A.1231 SS → B120001.3049 SS |
| B120001.3051 | DH1400/Electrical Room #5401 // MEPF Install High Overhead Systems | 2026-10-15 → 2026-10-02 A (-13d) | 2026-10-22 → 2026-10-27 (+5d) |  | 17d → 25d | B120001.3048, B120001.3162 → B120001.3162 FF, B120001.3048 |
| B120001.3050 | DH1400/Electrical Room #5401 // Install Door Frames | 2026-10-15 → 2026-10-05 A (-10d) | 2026-10-15 → 2026-10-14 (-1d) |  | 40d → 41d | B120001.3049 → B120001.3049 SS, B120001.3048 |
| B120001.3052 | DH1400/Electrical Room #5401 // MEPF Install Rough Wall | 2026-10-15 → 2026-10-05 A (-10d) | 2026-10-16 → 2026-10-21 (+5d) |  | 16d → 12d | B120001.3049 → B120001.3049 FF+2d |
| B120001.3053 | DH1400/Electrical Room #5401 // Install Top Down Sheet Rock | 2026-10-13 → 2026-10-14 (+1d) | 2026-10-19 → 2026-10-20 (+1d) |  | 16d → 14d |  |
| B120001.3161 | DH1400/Electrical Room #5401 // Install Overhead Cable Ladder / 36" Cable Tray - TFO | 2026-09-30 → 2026-10-14 (+14d) | 2026-10-06 → 2026-10-20 (+14d) |  | 17d → 25d |  |
| DH.1400.1170 | DH1400/Electrical Room #5401 // Install Overhead Buss duct | 2026-09-30 → 2026-10-14 (+14d) | 2026-10-01 → 2026-10-15 (+14d) |  | 18d → 8d |  |
| DH.1400.1180 | DH1400/Electrical Room #5401 // Install Cable Tray | 2026-10-01 → 2026-10-15 (+14d) | 2026-10-05 → 2026-10-19 (+14d) |  | 18d → 8d |  |
| DH.1400.1220 | DH1400/Electrical Room #5401 // Pull Cable Tray Feeders (CRAHU/CDU) | 2026-10-06 → 2026-10-20 (+14d) | 2026-10-20 → 2026-11-02 (+13d) |  | 18d → 8d |  |
| B120001.3162 | DH1400/Electrical Room #5401 // Install Overhead HAC - TFO | 2026-10-07 → 2026-10-21 (+14d) | 2026-10-14 → 2026-10-27 (+13d) |  | 17d → 25d |  |
| B120001.3054 | DH1400/Electrical Room #5401 // Rough Wall Inspspection (Approval to Close up) | 2026-10-19 → 2026-10-22 (+3d) | 2026-10-19 → 2026-10-22 (+3d) |  | 16d → 12d |  |
| B120001.3056 | DH1400/Electrical Room #5401 // Install Balance of Sheetrock | 2026-10-20 → 2026-10-23 (+3d) | 2026-10-22 → 2026-10-27 (+5d) |  | 16d → 12d |  |
| DH.1300.3068 | DH1400/Electrical Room #5401 // Room Ready to Receive Equipment | 2026-10-22 → 2026-10-27 (+5d) | 2026-10-22 → 2026-10-27 (+5d) |  | 16d → 12d |  |
| DH.1300.3036 | DH1400/Electrical Room #5401 // Install Cable Tray | 2026-10-23 → 2026-10-28 (+5d) | 2026-10-27 → 2026-10-30 (+3d) |  | 17d → 30d |  |
| F.1000A.1231 | DH1400/Electrical Room #5401 // Rough-In Security | 2026-10-23 → 2026-10-28 (+5d) | 2026-10-26 → 2026-10-29 (+3d) |  | 28d → 25d |  |
| F.1000A.1232 | DH1400/Electrical Room #5401 // Pull & Test Security Cable | 2026-10-27 → 2026-10-30 (+3d) | 2026-10-29 → 2026-11-03 (+5d) |  | 28d → 25d |  |
| DH.1300.3038 | DH1400/Electrical Room #5401 // Install Cable Buss From Exterior | 2026-10-28 → 2026-11-02 (+5d) | 2026-10-30 → 2026-11-04 (+5d) |  | 17d → 30d |  |
| DH.1400.1250 | DH1400/Electrical Room #5401 // Set CRAH-ER5401- 01 | 2026-12-08 → 2026-11-04 (-34d) | 2026-12-08 → 2026-11-04 (-34d) |  | -4d → 18d | DH.1300.3039, ER.5101.3069 → DH.1300.3112 |
| F.1000A.1233 | DH1400/Electrical Room #5401 // Install Security Devices | 2026-10-30 → 2026-11-04 (+5d) | 2026-11-02 → 2026-11-05 (+3d) |  | 28d → 25d |  |
| DH.1400.3031 | DH1400/Electrical Room #5401 // Set CRAH-ER5401- 02 | 2026-12-09 → 2026-11-05 (-34d) | 2026-12-09 → 2026-11-05 (-34d) |  | -4d → 18d | DH.1400.1250 → DH.1300.3112, DH.1400.1250 |
| DH.1400.3032 | DH1400/Electrical Room #5401 // Set CRAH-ER5401- 03 | 2026-12-10 → 2026-11-06 (-34d) | 2026-12-10 → 2026-11-06 (-34d) |  | -4d → 18d | DH.1400.3031 → DH.1300.3112, DH.1400.3031 |
| F.1000A.1234 | DH1400/Electrical Room #5401 // Mount & Terminate Security Devices | 2026-11-03 → 2026-11-06 (+3d) | 2026-11-09 → 2026-11-13 (+4d) |  | 28d → 25d |  |
| DH.1400.3033 | DH1400/Electrical Room #5401 // Set CRAH-ER5401- 04 | 2026-12-11 → 2026-11-09 (-32d) | 2026-12-11 → 2026-11-09 (-32d) |  | -4d → 18d | DH.1400.3032 → DH.1300.3112, DH.1400.3032 |
| DH.1400.3034 | DH1400/Electrical Room #5401 // Set CRAH-ER5401- 05 | 2026-12-14 → 2026-11-10 (-34d) | 2026-12-14 → 2026-11-10 (-34d) |  | -4d → 18d | DH.1400.3033 → DH.1300.3112, DH.1400.3033 |
| DH.1400.3035 | DH1400/Electrical Room #5401 // Set CRAH-ER5401- 06 | 2026-12-15 → 2026-11-12 (-33d) | 2026-12-15 → 2026-11-12 (-33d) |  | -4d → 18d | DH.1400.3034 → DH.1300.3112, DH.1400.3034 |
| ER.5101.3098 | DH1400/Electrical Room #5401 // Set PDU - PDU-R140-01 | 2026-12-16 → 2026-11-13 (-33d) | 2026-12-16 → 2026-11-13 (-33d) |  | -4d → 18d |  |
| ER.5101.3104 | DH1400/Electrical Room #5401 // Set UPS - UPS-R140 | 2026-12-17 → 2026-11-16 (-31d) | 2026-12-17 → 2026-11-16 (-31d) |  | -4d → 18d |  |
| DH.1400.1260 | DH1400/Electrical Room #5401 // Mechanical Connections to CRAHU | 2026-12-18 → 2026-11-17 (-31d) | 2026-12-24 → 2026-11-23 (-31d) |  | -4d → 18d |  |
| DH.1400.1270 | DH1400/Electrical Room #5401 // Install Condensate lines from CRAHU's | 2026-12-28 → 2026-11-24 (-34d) | 2026-12-29 → 2026-11-25 (-34d) |  | -3d → 19d |  |
| DH.1400.1280 | DH1400/Electrical Room #5401 // Install Elec Feeders to CRAHU's | 2026-12-28 → 2026-11-24 (-34d) | 2026-12-30 → 2026-11-27 (-33d) |  | -4d → 18d |  |
| ER.5101.3066 | DH1400/Electrical Room #5401 // Set Skid - SKID-B140 |  |  |  | -10d → -11d | ER.5101.3065 SS → DH.1300.3070, ER.5101.3065 SS |
| ER.5101.3067 | DH1400/Electrical Room #5401 // Set Skid - SKID-C140 |  |  |  | -10d → -11d | ER.5101.3066 SS → DH.1300.3070, ER.5101.3066 SS |
| ER.5101.3068 | DH1400/Electrical Room #5401 // Set Skid - SKID-D140 | 2026-12-02 → 2026-12-03 (+1d) | 2026-12-02 → 2026-12-03 (+1d) |  | -10d → -11d | ER.5101.3067 SS → DH.1300.3092, ER.5101.3067 |
| DH.1300.3039 | DH1400/Electrical Room #5401 // Buss Duct Tie In to Elect Gear | 2026-12-03 → 2026-12-04 (+1d) | 2026-12-07 → 2026-12-08 (+1d) |  | -4d → 11d |  |
| ER.5101.3069 | DH1400/Electrical Room #5401 // Set Skid - SKID-E140 | 2026-12-03 → 2026-12-04 (+1d) | 2026-12-03 → 2026-12-04 (+1d) |  | -10d → -11d | ER.5101.3068 → DH.1300.3092, ER.5101.3068 |
| DH.1400.1200 | DH1400/Electrical Room #5401 // Install Cable Buss From Exterior | 2026-12-04 → 2026-12-07 (+3d) | 2026-12-08 → 2026-12-09 (+1d) |  | -10d → -11d |  |
| DH.1400.1210 | DH1400/Electrical Room #5401 // Pull Cable Buss Feeders | 2026-12-09 → 2026-12-10 (+1d) | 2026-12-16 → 2026-12-17 (+1d) |  | -10d → -11d |  |
| DH.1400.1230 | DH1400/Electrical Room #5401 // Terminate Cable Buss Feeders | 2026-12-17 → 2026-12-18 (+1d) | 2026-12-21 → 2026-12-22 (+1d) |  | -3d → -4d |  |
| DH.1400.1240 | DH1400/Electrical Room #5401 // Land and Terminate Cabel Tray Feeders In Gear | 2026-12-17 → 2026-12-18 (+1d) | 2026-12-31 → 2027-01-04 (+4d) |  | -5d → -6d |  |
| DH.1400.1290 | DH1400/Electrical Room #5401 // Pull Misc Feeder and Branch Circuits | 2026-12-17 → 2026-12-18 (+1d) | 2026-12-31 → 2027-01-04 (+4d) |  | -10d → -11d |  |
| DH.1400.1320 | DH1400/Electrical Room #5401 // Buss Duct Tie In to Elect Gear | 2026-12-22 → 2026-12-23 (+1d) | 2026-12-24 → 2026-12-28 (+4d) |  | -3d → -4d |  |
| DH.1400.1300 | DH1400/Electrical Room #5401 // Land and Terminate Misc Feeder and Branch Circuits | 2026-12-24 → 2026-12-28 (+4d) | 2027-01-08 → 2027-01-11 (+3d) |  | -10d → -11d |  |
| F.1000A.1235 | DH1400/Electrical Room #5401 // Test Security Devices | 2026-12-28 → 2026-12-29 (+1d) | 2026-12-29 → 2026-12-30 (+1d) |  | -3d → -4d |  |
| DH.1400.1330 | DH1400/Electrical Room #5401 // Mechanical Equipment Pre-Start up | 2027-01-04 → 2027-01-05 (+1d) | 2027-01-05 → 2027-01-06 (+1d) |  | -5d → -6d |  |
| DH.1400.1310 | DH1400/Electrical Room #5401 // Final FOD Check of all Panels | 2027-01-11 → 2027-01-12 (+1d) | 2027-01-12 → 2027-01-13 (+1d) |  | -10d → -11d | DH.1400.1230, DH.1400.1240, DH.1400.1320, DH.1400.1300, F.1000A.1235 → DH.1300.3039, F.1000A.1235, DH.1400.1300, DH.1400.1320, DH.1400.1240, DH.1400.1230 |
| 2 | **Electrcal Room #5404** |  | 2027-01-06 → 2027-01-05 (-1d) |  |  |  |
| B120001.3085 | DH1400/Electrical Room #5404 // MEPF Install High Overhead Systems | 2026-09-30 → 2026-10-01 A (+1d) | 2026-10-07 → 2026-10-21 (+14d) |  |  |  |
| B120001.3086 | DH1400/Electrical Room #5404 // Frame Walls including Backing | 2026-10-20 → 2026-10-01 A (-19d) | 2026-10-23 → 2026-10-19 (-4d) |  | 17d → 22d | B120001.3084, DH.1400.3044 → B120001.3084, B120001.3049 SS+2d |
| B120001.3088 | DH1400/Electrical Room #5404 // MEPF Install Rough Wall | 2026-10-26 → 2026-10-09 A (-17d) | 2026-10-27 → 2026-10-21 (-6d) |  | 17d → 22d | B120001.3086 → B120001.3086 FF+2d |
| B120001.3087 | DH1400/Electrical Room #5404 // Install Door Frames | 2026-10-23 → 2026-10-12 A (-11d) | 2026-10-23 → 2026-10-19 (-4d) |  | 78d → 104d |  |
| B120001.3089 | DH1400/Electrical Room #5404 // Install Top Down Sheet Rock | 2026-10-22 → 2026-10-14 (-8d) | 2026-10-28 → 2026-10-20 (-8d) |  | 17d → 24d |  |

| ID | Task | Start | Finish | Complete | Total float | Predecessors |
| --- | --- | --- | --- | --- | --- | --- |
| B120001.3163 | DH1400/Electrical Room #5404 // Install Overhead Cable Ladder / 36" Cable Tray - TFO | 2026-09-30 → 2026-10-14 (+14d) | 2026-10-06 → 2026-10-20 (+14d) |  | 17d → 10d |  |
| DH.1400.3043 | DH1400/Electrical Room #5404 // Install Overhead Buss duct | 2026-09-30 → 2026-10-14 (+14d) | 2026-10-01 → 2026-10-15 (+14d) |  | 26d → 19d |  |
| B120001.3164 | DH1400/Electrical Room #5404 // Install Overhead HAC - TFO | 2026-10-07 → 2026-10-21 (+14d) | 2026-10-14 → 2026-10-27 (+13d) |  | 17d → 10d |  |
| B120001.3090 | DH1400/Electrical Room #5404 // Rough Wall Inspspection (Approval to Close up) | 2026-10-28 → 2026-10-22 (-6d) | 2026-10-28 → 2026-10-22 (-6d) |  | 17d → 22d |  |
| DH.1300.3063 | DH1400/Electrical Room #5404 // Install Cable Tray | 2026-10-08 → 2026-10-22 (+14d) | 2026-10-13 → 2026-10-26 (+13d) |  |  |  |
| F.1000A.1236 | DH1400/Electrical Room #5404 // Rough-In Security | 2026-10-08 → 2026-10-22 (+14d) | 2026-10-09 → 2026-10-23 (+14d) |  | 82d → 95d |  |
| F.1000A.1495 | DH1400/Electrical Room #5404 // BMS & EPMS Rough-In | 2026-10-08 → 2026-10-22 (+14d) | 2026-10-09 → 2026-10-23 (+14d) |  | 94d → 107d |  |
| B120001.3091 | DH1400/Electrical Room #5404 // Install Balance of Sheetrock | 2026-10-29 → 2026-10-23 (-6d) | 2026-11-02 → 2026-10-27 (-6d) |  | 17d → 22d |  |
| F.1000A.1237 | DH1400/Electrical Room #5404 // Pull & Test Security Cable | 2026-10-13 → 2026-10-26 (+13d) | 2026-10-15 → 2026-10-28 (+13d) |  | 82d → 95d |  |
| DH.1400.3070 | DH1400/Electrical Room #5404 // Room Ready to Receive Equipment | 2026-11-02 → 2026-10-27 (-6d) | 2026-11-02 → 2026-10-27 (-6d) |  | 17d → 22d |  |
| DH.1400.3044 | DH1400/Electrical Room #5404 // Install Cable Tray | 2026-10-15 → 2026-10-28 (+13d) | 2026-10-19 → 2026-10-30 (+11d) |  | 17d → 10d |  |
| F.1000A.1238 | DH1400/Electrical Room #5404 // Install Security Devices | 2026-10-16 → 2026-10-29 (+13d) | 2026-10-19 → 2026-10-30 (+11d) |  | 82d → 95d |  |
| DH.1400.3045 | DH1400/Electrical Room #5404 // Install Cable Buss From Exterior | 2026-10-20 → 2026-11-02 (+13d) | 2026-10-22 → 2026-11-04 (+13d) |  | 26d → 17d |  |
| DH.1400.3046 | DH1400/Electrical Room #5404 // Pull Cable Tray Feeders (CRAHU/CDU) | 2026-10-20 → 2026-11-02 (+13d) | 2026-11-02 → 2026-11-16 (+14d) |  | 19d → 10d |  |
| DH.1400.3058 | DH1400/Electrical Room #5404 // Buss Duct Tie In to Elect Gear | 2026-10-20 → 2026-11-02 (+13d) | 2026-10-22 → 2026-11-04 (+13d) |  | 24d → 16d |  |
| F.1000A.1239 | DH1400/Electrical Room #5404 // Mount & Terminate Security Devices | 2026-10-26 → 2026-11-02 (+7d) | 2026-10-30 → 2026-11-06 (+7d) |  | 78d → 95d |  |
| DH.1400.3047 | DH1400/Electrical Room #5404 // Set CRAH-ER5404- 01 | 2026-12-21 → 2026-11-05 (-46d) | 2026-12-21 → 2026-11-05 (-46d) |  | -6d → 24d | DH.1300.3065, ER.5101.3074 → DH.1300.3112 FS+1d |
| DH.1400.3048 | DH1400/Electrical Room #5404 // Set CRAH-ER5404- 02 | 2026-12-21 → 2026-11-05 (-46d) | 2026-12-21 → 2026-11-05 (-46d) |  | -6d → 24d | DH.1400.3047 SS → DH.1300.3112 FS+1d, DH.1400.3047 SS |
| DH.1400.3049 | DH1400/Electrical Room #5404 // Set CRAH-ER5404- 03 | 2026-12-21 → 2026-11-05 (-46d) | 2026-12-21 → 2026-11-05 (-46d) |  | -6d → 24d | DH.1400.3048 SS → DH.1300.3112 FS+1d, DH.1400.3048 SS |
| DH.1400.3050 | DH1400/Electrical Room #5404 // Set CRAH-ER5404- 04 | 2026-12-21 → 2026-11-05 (-46d) | 2026-12-21 → 2026-11-05 (-46d) |  | -6d → 24d | DH.1400.3049 SS → DH.1300.3112 FS+1d, DH.1400.3049 SS |
| DH.1400.3051 | DH1400/Electrical Room #5404 // Set CRAH-ER5404- 05 | 2026-12-21 → 2026-11-05 (-46d) | 2026-12-21 → 2026-11-05 (-46d) |  | -6d → 24d | DH.1400.3050 FF → DH.1300.3112 FS+1d, DH.1400.3050 FF |
| DH.1400.3052 | DH1400/Electrical Room #5404 // Set CRAH-ER5404- 06 | 2026-12-21 → 2026-11-05 (-46d) | 2026-12-21 → 2026-11-05 (-46d) |  | -6d → 24d | DH.1400.3051 FF → DH.1300.3112 FS+1d, DH.1400.3051 FF |
| DH.1400.3053 | DH1400/Electrical Room #5404 // Mechanical Connections to CRAHU | 2026-12-22 → 2026-11-06 (-46d) | 2026-12-29 → 2026-11-13 (-46d) |  | -6d → 24d |  |
| DH.1400.3054 | DH1400/Electrical Room #5404 // Install Condensate lines from CRAHU's | 2026-12-30 → 2026-11-16 (-44d) | 2026-12-31 → 2026-11-17 (-44d) |  | -5d → 25d |  |
| DH.1400.3055 | DH1400/Electrical Room #5404 // Install Elec Feeders to CRAHU's | 2026-12-30 → 2026-11-16 (-44d) | 2027-01-04 → 2026-11-18 (-47d) |  | -6d → 24d |  |
| F.1000A.1240 | DH1400/Electrical Room #5404 // Test Security Devices | 2027-01-05 → 2026-11-19 (-47d) | 2027-01-06 → 2026-11-20 (-47d) |  | 36d → 88d |  |
| DH.1400.3059 | DH1400/Electrical Room #5404 // Land and Terminate Cabel Tray Feeders In Gear | 2026-12-02 → 2026-12-03 (+1d) | 2026-12-15 → 2026-12-16 (+1d) |  | 3d → 2d |  |
| DH.1400.3060 | DH1400/Electrical Room #5404 // Pull Misc Feeder and Branch Circuits | 2026-12-02 → 2026-12-03 (+1d) | 2026-12-15 → 2026-12-16 (+1d) |  | -4d → -5d |  |
| ER.5101.3070 | DH1400/Electrical Room #5404 // Set Skid - SKID-F140 |  |  |  | -6d → -5d | DH.1400.3070, DH.1400.3058, ER.5101.3069, DH.1300.3072 → DH.1300.3092, DH.1300.3072, ER.5101.3069 SS, DH.1400.3058, DH.1400.3070 |
| ER.5101.3071 | DH1400/Electrical Room #5404 // Set Skid - SKID-G140 |  |  |  | -6d → -5d | ER.5101.3070 SS → DH.1300.3092, ER.5101.3070 SS |
| DH.1400.3056 | DH1400/Electrical Room #5404 // Pull Cable Buss Feeders | 2026-12-08 → 2026-12-09 (+1d) | 2026-12-15 → 2026-12-16 (+1d) |  | -4d → -5d |  |
| ER.5101.3072 | DH1400/Electrical Room #5404 // Set Skid - SKID-H140 | 2026-12-08 → 2026-12-09 (+1d) | 2026-12-08 → 2026-12-09 (+1d) |  | -6d → -5d | ER.5101.3071 SS → ER.5101.3071 |
| ER.5101.3073 | DH1400/Electrical Room #5404 // Set Skid - SKID-J140 | 2026-12-08 → 2026-12-09 (+1d) | 2026-12-08 → 2026-12-09 (+1d) |  | -6d → -5d |  |
| ER.5101.3074 | DH1400/Electrical Room #5404 // Set Skid - SKID-K140 | 2026-12-08 → 2026-12-09 (+1d) | 2026-12-08 → 2026-12-09 (+1d) |  | -6d → -5d |  |
| DH.1300.3064 | DH1400/Electrical Room #5404 // Install Cable Buss From Exterior | 2026-12-09 → 2026-12-10 (+1d) | 2026-12-11 → 2026-12-14 (+3d) |  | -6d → 2d |  |
| DH.1300.3065 | DH1400/Electrical Room #5404 // Buss Duct Tie In to Elect Gear | 2026-12-14 → 2026-12-15 (+1d) | 2026-12-18 → 2026-12-21 (+3d) |  | -6d → 2d |  |
| DH.1400.3057 | DH1400/Electrical Room #5404 // Terminate Cable Buss Feeders | 2026-12-16 → 2026-12-17 (+1d) | 2026-12-18 → 2026-12-21 (+3d) |  | 3d → 2d |  |
| DH.1400.3062 | DH1400/Electrical Room #5404 // Land and Terminate Misc Feeder and Branch Circuits | 2026-12-16 → 2026-12-17 (+1d) | 2026-12-30 → 2026-12-31 (+1d) |  | -4d → -5d |  |
| DH.1400.3061 | DH1400/Electrical Room #5404 // Mechanical Equipment Pre-Start up | 2027-01-05 → 2027-01-04 (-1d) | 2027-01-06 → 2027-01-05 (-1d) |  | -6d → -5d |  |
| DH.1400.3063 | DH1400/Electrical Room #5404 // Final FOD Check of all Panels | 2026-12-31 → 2027-01-04 (+4d) | 2027-01-04 → 2027-01-05 (+1d) |  | -4d → -5d | DH.1400.3057, DH.1400.3059, DH.1400.3058, DH.1400.3062 → DH.1300.3065, DH.1400.3062, DH.1400.3058, DH.1400.3059, DH.1400.3057 |
| B120001.3165 | DH 1400 // Install Overhead Cable Ladder / 36" Cable Tray - TFO |  | 2026-10-01 → 2026-10-15 (+14d) |  | -10d → 3d |  |
| DH.14006290 | DH 1400 // MEPF high overhead install | 2026-10-09 → 2026-09-30 A (-9d) | 2026-10-23 → 2026-10-27 (+4d) |  | -10d → 0d | DH.14006270, B120001.3166 → B120001.3166 FF, DH.14006270 |
| DH.14006300 | DH 1400 // Frame walls | 2026-10-09 → 2026-10-01 A (-8d) | 2026-10-23 → 2026-10-15 (-8d) | 0% → 80% | -10d → -1d | B120001.3166, DH.14006270 SS → DH.14006270 SS |
| F.1000A.1505 | DH 1400 // BMS & EPMS Rough-In | 2026-10-26 → 2026-10-01 A (-25d) | 2026-10-27 → 2026-10-02 A (-25d) | 0% → 100% | 78d → none | F.1000A.1241 FF, F.1000A.1241 SS → DH.14006300 SS |
| DH.14006320 | DH 1400 // MEP rough in walls | 2026-10-26 → 2026-10-07 A (-19d) | 2026-10-30 → 2026-10-20 (-10d) |  | -10d → -2d | DH.14006290, DH.14006300 → DH.14006300 FF+2d |
| B120001.3166 | DH 1400 // Install Overhead HAC - TFO | 2026-10-02 → 2026-10-16 (+14d) | 2026-10-08 → 2026-10-22 (+14d) |  | -10d → 3d |  |
| DH.140012067 | DH 1400 // Install 1-Side Sheet Rock (DH-Side) | 2026-11-02 → 2026-10-21 (-12d) | 2026-11-04 → 2026-10-23 (-12d) |  | -10d → -2d |  |
| DH.14006360 | DH 1400 // Tape and finish walls | 2026-11-05 → 2026-10-26 (-10d) | 2026-11-27 → 2026-11-16 (-11d) |  | -10d → -2d |  |
| DH.14007800 | DH 1400 // Install Ceiling supports (rods/wires) no grid | 2026-10-26 → 2026-10-28 (+2d) | 2026-10-30 → 2026-11-03 (+4d) |  | 2d → 0d |  |
| F.1000A.1241 | DH 1400 // Rough-In Security | 2026-10-26 → 2026-10-28 (+2d) | 2026-10-27 → 2026-10-29 (+2d) |  | 66d → 64d |  |
| F.1000A.1242 | DH 1400 // Pull & Test Security Cable | 2026-10-28 → 2026-10-30 (+2d) | 2026-10-30 → 2026-11-03 (+4d) |  | 66d → 64d |  |
| DH.14006220 | DH 1400 // Install ceiling grid system | 2026-11-02 → 2026-11-04 (+2d) | 2026-11-12 → 2026-11-16 (+4d) |  | 2d → 0d |  |
| DH.14006250 | DH 1400 // Install overhead MEP and lighting | 2026-11-13 → 2026-11-17 (+4d) | 2026-11-19 → 2026-11-23 (+4d) |  | 2d → 0d |  |
| DH.14006310 | DH 1400 // Install wall door frames | 2026-11-30 → 2026-11-17 (-13d) | 2026-12-02 → 2026-11-19 (-13d) |  | 7d → 15d |  |
| F.1000A.1243 | DH 1400 // Install Security Devices | 2026-12-03 → 2026-11-20 (-13d) | 2026-12-04 → 2026-11-23 (-11d) |  | 45d → 53d |  |
| DH.14006240 | DH 1400 // Install ceiling grid tiles | 2026-11-20 → 2026-11-24 (+4d) | 2026-11-24 → 2026-11-27 (+3d) |  | 2d → 0d |  |
| 15 | **PDU Gallery** | 2026-09-30 → 2026-09-28 (-2d) | 2026-11-19 → 2026-12-01 (+12d) |  |  |  |
| DH.14000.1040 | DH1400/PDU Gallery // PDU Gallery Frame walls | 2026-10-09 → 2026-09-28 A (-11d) | 2026-10-16 → 2026-10-14 (-2d) | 0% → 100% | 32d → 38d | DH.14000.1010 → DH.14006270 |
| DH.14000.1010 | DH1400/PDU Gallery // PDU Gallery MEPF overhead layout | 2026-10-02 → 2026-10-05 A (+3d) | 2026-10-08 → 2026-10-20 (+12d) |  | 5d → 18d | DH.14006270, DH.14000.1000 → DH.14006270 |
| DH.14000.1711 | DH1400/PDU Gallery // PDU Gallery MEP rough in walls | 2026-10-19 → 2026-10-05 A (-14d) | 2026-10-21 → 2026-10-16 (-5d) |  | 32d → 35d | DH.14000.1040 → DH.14000.1040 FF |
| DH.14000.1000 | DH1400/PDU Gallery // PDU Gallery Seal concrete | 2026-09-30 → 2026-10-14 (+14d) | 2026-10-01 → 2026-10-15 (+14d) |  | -3d → -7d |  |
| B120001.3167 | DH1400/PDU Gallery // Install Overhead Cable Ladder / 36" Cable Tray - TFO | 2026-10-09 → 2026-10-21 (+12d) | 2026-10-16 → 2026-10-27 (+11d) |  | 25d → 18d |  |
| B120001.3168 | DH1400/PDU Gallery // Install Overhead HAC - TFO | 2026-10-19 → 2026-10-28 (+9d) | 2026-10-23 → 2026-11-03 (+11d) |  | 25d → 18d |  |
| DH.14000.1030 | DH1400/PDU Gallery // PDU Gallery MEPF high overhead install | 2026-10-26 → 2026-11-04 (+9d) | 2026-10-28 → 2026-11-06 (+9d) |  | 25d → 18d |  |
| DH.14000.1110 | DH1400/PDU Gallery // Install Cable Tray (From Elec Rm 5401 to CRAHU Gallery) | 2026-10-29 → 2026-11-09 (+11d) | 2026-10-30 → 2026-11-10 (+11d) |  | 25d → 18d |  |
| DH.14000.1070 | DH1400/PDU Gallery // PDU Gallery In wall inspection | 2026-11-02 → 2026-11-12 (+10d) | 2026-11-02 → 2026-11-12 (+10d) |  | 25d → 18d |  |
| DH.14000.1060 | DH1400/PDU Gallery // PDU Gallery Install Sheetrock Top Down | 2026-11-03 → 2026-11-13 (+10d) | 2026-11-05 → 2026-11-17 (+12d) |  | 25d → 18d |  |
| DH.14000.1080 | DH1400/PDU Gallery // PDU Gallery Install sheetrock on walls (Balance) | 2026-11-06 → 2026-11-18 (+12d) | 2026-11-13 → 2026-11-24 (+11d) |  | 25d → 18d |  |
| DH.14000.1090 | DH1400/PDU Gallery // PDU Gallery Tape and finish walls | 2026-11-16 → 2026-11-25 (+9d) | 2026-11-16 → 2026-11-25 (+9d) |  | 25d → 18d |  |
| DH.14000.1050 | DH1400/PDU Gallery // PDU Gallery Install wall door frames | 2026-11-17 → 2026-11-27 (+10d) | 2026-11-17 → 2026-11-27 (+10d) |  | 25d → 18d |  |

| ID | Task | Start | Finish | Complete | Total float | Predecessors |
| --- | --- | --- | --- | --- | --- | --- |
| DH.14000.1100 | DH1400/PDU Gallery // PDU Gallery Paint walls | 2026-11-18 → 2026-11-30 (+12d) | 2026-11-19 → 2026-12-01 (+12d) |  | 25d → 18d |  |
| DH.14000.1712 | DH1400/PDU Gallery // PDU Gallery Ready to Receive Equipment | 2026-11-19 → 2026-12-01 (+12d) | 2026-11-19 → 2026-12-01 (+12d) |  | 25d → 18d |  |
| 14 | **CRAH/CDU Galleries** |  | 2027-01-15 → 2027-01-13 (-2d) |  |  |  |
| 2 | **Gallery 1402** |  | 2027-01-12 → 2027-01-06 (-6d) |  |  |  |
| DH.1400670 | DH 1400/Gallery 1402 // MEPF overhead layout | 2026-09-30 → 2026-09-28 A (-2d) | 2026-10-06 → 2026-10-02 A (-4d) | 0% → 100% | -6d → none |  |
| DH.1400700 | DH 1400/Gallery 1402 // Frame walls |  | 2026-10-07 → 2026-10-15 (+8d) | 0% → 67% | -10d → -10.12d |  |
| F.1000A.1515 | DH 1400/Gallery 1402 // BMS & EPMS Rough-In | 2026-11-02 → 2026-10-01 A (-32d) | 2026-11-03 → 2026-10-02 A (-32d) | 0% → 100% | 71d → none | F.1000A.1286 FF, F.1000A.1286 → DH.1400700 SS |
| DH.1400690 | DH 1400/Gallery 1402 // MEPF high overhead install | 2026-10-15 → 2026-10-05 A (-10d) | 2026-10-28 → 2026-10-27 (-1d) |  | -6d → -5d | DH.1400670 SS, B120001.3170 → B120001.3170 FF, DH.1400670 |
| DH.1400730 | DH 1400/Gallery 1402 // MEP rough in walls | 2026-10-08 → 2026-10-05 A (-3d) | 2026-10-14 → 2026-10-19 (+5d) |  | -3d → -6d | DH.1400700 → DH.1400700 FF+2d |
| B120001.3169 | DH 1400/Gallery 1402 // Install Overhead Cable Ladder / 36" Cable Tray - TFO | 2026-10-07 → 2026-10-14 (+7d) | 2026-10-14 → 2026-10-20 (+6d) |  | -6d → 0d |  |
| B120001.3170 | DH 1400/Gallery 1402 // Install Overhead HAC - TFO | 2026-10-07 → 2026-10-14 (+7d) | 2026-10-14 → 2026-10-20 (+6d) |  | -6d → 0d |  |
| DH.1400660 | DH 1400/Gallery 1402 // Seal concrete | 2026-10-02 → 2026-10-16 (+14d) | 2026-10-05 → 2026-10-19 (+14d) |  | -3d → -7d |  |
| DH.1400740 | DH 1400/Gallery 1402 // In wall inspection | 2026-10-15 → 2026-10-20 (+5d) | 2026-10-15 → 2026-10-20 (+5d) |  | -3d → -6d |  |
| DH.1400720 | DH 1400/Gallery 1402 // Install Sheetrock Top Down | 2026-10-16 → 2026-10-21 (+5d) | 2026-10-23 → 2026-10-28 (+5d) |  | -3d → -6d |  |
| F.1000A.1286 | DH 1400/Gallery 1402 // Rough-In Security | 2026-10-29 → 2026-10-28 (-1d) | 2026-10-30 → 2026-10-29 (-1d) |  | 63d → 64d |  |
| F.1000A.1287 | DH 1400/Gallery 1402 // Pull & Test Security Cable | 2026-11-02 → 2026-10-30 (-3d) | 2026-11-04 → 2026-11-03 (-1d) |  | 63d → 64d |  |
| 3 | **Equipment Line-Ups** | 2026-11-30 → 2026-11-25 (-5d) | 2027-01-12 → 2027-01-06 (-6d) |  |  |  |
| 1 | **A140** | 2026-11-30 → 2026-11-25 (-5d) | 2026-12-31 → 2027-01-04 (+4d) |  |  |  |
| DH.1400A-EQP-1 | Gallery 1402 - A140/Line-Ups // Set CRAH-DH1400- 01 | 2026-11-30 → 2026-11-25 (-5d) | 2026-11-30 → 2026-11-25 (-5d) |  | -8d → -6d |  |
| DH.1400A-EQP-3 | Gallery 1402 - A140/Line-Ups // Set CRAH-DH1400- 02 | 2026-11-30 → 2026-11-25 (-5d) | 2026-11-30 → 2026-11-25 (-5d) |  | -8d → -6d |  |
| DH.1400A-EQP-5 | Gallery 1402 - A140/Line-Ups // Set MOD-A140-01 | 2026-11-30 → 2026-11-25 (-5d) | 2026-11-30 → 2026-11-25 (-5d) |  | 41d → 43d |  |
| DH.1400A-EQP-6 | Gallery 1402 - A140/Line-Ups // Set MOD-A140-02 | 2026-11-30 → 2026-11-25 (-5d) | 2026-11-30 → 2026-11-25 (-5d) |  | 41d → 43d |  |
| DH.1400A-EQP-10 | Gallery 1402 - A140/Line-Ups // Pull Cable Tray Feed from MOD to CRAHU's | 2026-12-01 → 2026-11-27 (-4d) | 2026-12-07 → 2026-12-03 (-4d) |  | 47d → 49d |  |
| DH.1400A-EQP-12 | Gallery 1402 - A140/Line-Ups // Mount Electrial Gear for Chiller Controls | 2026-12-01 → 2026-11-27 (-4d) | 2026-12-14 → 2026-12-10 (-4d) |  | 41d → 43d |  |
| DH.1400A-EQP-7 | Gallery 1402 - A140/Line-Ups // Set CDU-DH1400- 01 | 2026-12-01 → 2026-11-27 (-4d) | 2026-12-01 → 2026-11-27 (-4d) |  | 41d → 43d |  |
| DH.1400A-EQP-9 | Gallery 1402 - A140/Line-Ups // Pull Feeder from SWD to MOD | 2026-12-01 → 2026-11-27 (-4d) | 2026-12-01 → 2026-11-27 (-4d) |  | 57d → 59d |  |
| DH.1400A-EQP-8 | Gallery 1402 - A140/Line-Ups // Set CDU-DH1400- 02 | 2026-12-02 → 2026-11-30 (-2d) | 2026-12-02 → 2026-11-30 (-2d) |  | 41d → 43d |  |
| DH.1400A-EQP-4 | Gallery 1402 - A140/Line-Ups // Condensate connections to Floor Drains | 2026-12-03 → 2026-12-01 (-2d) | 2026-12-16 → 2026-12-14 (-2d) |  | 41d → 43d |  |
| DH.1400A-EQP-11 | Gallery 1402 - A140/Line-Ups // Mechanical Connections to CRAHU Units | 2026-12-07 → 2026-12-03 (-4d) | 2026-12-18 → 2026-12-16 (-2d) |  | 39d → 41d |  |
| DH.1400A-EQP-17 | Gallery 1402 - A140/Line-Ups // Pull Feeder and Branch circuits to MIsc equipment and Chiller controls | 2026-12-07 → 2026-12-03 (-4d) | 2026-12-18 → 2026-12-16 (-2d) |  | 41d → 43d |  |
| DH.1400A-EQP-13 | Gallery 1402 - A140/Line-Ups // Pull Cable Tray Feed from MOD to CRAHU's | 2026-12-08 → 2026-12-04 (-4d) | 2026-12-14 → 2026-12-10 (-4d) |  | 47d → 49d |  |
| DH.1400A-EQP-16 | Gallery 1402 - A140/Line-Ups // Terminate CRAHU Electrical Connections | 2026-12-10 → 2026-12-08 (-2d) | 2026-12-16 → 2026-12-14 (-2d) |  | 47d → 49d |  |
| DH.1400A-EQP-19 | Gallery 1402 - A140/Line-Ups // Teminate all Misc Equipment and Chiller Controls | 2026-12-11 → 2026-12-09 (-2d) | 2026-12-24 → 2026-12-22 (-2d) |  | 41d → 43d |  |
| DH.1400A-EQP-15 | Gallery 1402 - A140/Line-Ups // Terminate Mod Panels | 2026-12-15 → 2026-12-11 (-4d) | 2026-12-15 → 2026-12-11 (-4d) |  | 48d → 50d |  |
| DH.1400A-EQP-14 | Gallery 1402 - A140/Line-Ups // Condensate connections to Floor Drains | 2026-12-14 → 2026-12-15 (+1d) | 2026-12-28 → 2026-12-29 (+1d) |  | 39d → 38d |  |
| DH.1400A-EQP-20 | Gallery 1402 - A140/Line-Ups // Electrical Gear FOD Inspection Pre-Start Up | 2026-12-28 → 2026-12-23 (-5d) | 2026-12-29 → 2026-12-24 (-5d) |  | 41d → 43d |  |
| DH.1400A-EQP-18 | Gallery 1402 - A140/Line-Ups // Mechanical Gear FOD Inspection Pre-Start Up | 2026-12-29 → 2026-12-30 (+1d) | 2026-12-31 → 2027-01-04 (+4d) |  | 39d → 38d |  |
| 2 | **B140** | 2026-11-30 → 2026-11-25 (-5d) | 2027-01-08 → 2027-01-05 (-3d) |  |  |  |
| DH.1400A-EQP-21 | Gallery 1402 - B140/Line-Ups // Set CRAH-DH1400- 03 | 2026-11-30 → 2026-11-25 (-5d) | 2026-11-30 → 2026-11-25 (-5d) |  | -8d → -6d |  |
| DH.1400A-EQP-23 | Gallery 1402 - B140/Line-Ups // Set CRAH-DH1400- 04 | 2026-11-30 → 2026-11-25 (-5d) | 2026-11-30 → 2026-11-25 (-5d) |  | -8d → -6d |  |
| DH.1400A-EQP-25 | Gallery 1402 - B140/Line-Ups // Set MOD-B140-01 | 2026-11-30 → 2026-11-25 (-5d) | 2026-11-30 → 2026-11-25 (-5d) |  | 41d → 43d |  |
| DH.1400A-EQP-26 | Gallery 1402 - B140/Line-Ups // Set MOD-B140-02 | 2026-11-30 → 2026-11-25 (-5d) | 2026-11-30 → 2026-11-25 (-5d) |  | 41d → 43d |  |
| DH.1400A-EQP-27 | Gallery 1402 - B140/Line-Ups // Set CDU-DH1400- 03 | 2026-12-01 → 2026-11-27 (-4d) | 2026-12-01 → 2026-11-27 (-4d) |  | 41d → 43d |  |
| DH.1400A-EQP-29 | Gallery 1402 - B140/Line-Ups // Pull Feeder from SWD to MOD | 2026-12-01 → 2026-11-27 (-4d) | 2026-12-01 → 2026-11-27 (-4d) |  | 57d → 59d |  |
| DH.1400A-EQP-30 | Gallery 1402 - B140/Line-Ups // Pull Cable Tray Feed from MOD to CRAHU's | 2026-12-01 → 2026-11-27 (-4d) | 2026-12-07 → 2026-12-03 (-4d) |  | 47d → 49d |  |
| DH.1400A-EQP-32 | Gallery 1402 - B140/Line-Ups // Mount Electrial Gear for Chiller Controls | 2026-12-01 → 2026-11-27 (-4d) | 2026-12-14 → 2026-12-10 (-4d) |  | 41d → 43d |  |
| DH.1400A-EQP-28 | Gallery 1402 - B140/Line-Ups // Set CDU-DH1400- 04 | 2026-12-02 → 2026-11-30 (-2d) | 2026-12-02 → 2026-11-30 (-2d) |  | 41d → 43d |  |
| DH.1400A-EQP-24 | Gallery 1402 - B140/Line-Ups // Condensate connections to Floor Drains | 2026-12-03 → 2026-12-01 (-2d) | 2026-12-16 → 2026-12-14 (-2d) |  | 41d → 43d |  |
| DH.1400A-EQP-31 | Gallery 1402 - B140/Line-Ups // Mechanical Connections to CRAHU Units | 2026-12-07 → 2026-12-03 (-4d) | 2026-12-18 → 2026-12-16 (-2d) |  | 39d → 41d |  |
| DH.1400A-EQP-37 | Gallery 1402 - B140/Line-Ups // Pull Feeder and Branch circuits to MIsc equipment and Chiller controls | 2026-12-07 → 2026-12-03 (-4d) | 2026-12-18 → 2026-12-16 (-2d) |  | 41d → 43d |  |
| DH.1400A-EQP-33 | Gallery 1402 - B140/Line-Ups // Pull Cable Tray Feed from MOD to CRAHU's | 2026-12-08 → 2026-12-04 (-4d) | 2026-12-14 → 2026-12-10 (-4d) |  | 47d → 49d |  |
| DH.1400A-EQP-36 | Gallery 1402 - B140/Line-Ups // Terminate CRAHU Electrical Connections | 2026-12-10 → 2026-12-08 (-2d) | 2026-12-16 → 2026-12-14 (-2d) |  | 47d → 49d |  |
| DH.1400A-EQP-39 | Gallery 1402 - B140/Line-Ups // Teminate all Misc Equipment and Chiller Controls | 2026-12-11 → 2026-12-09 (-2d) | 2026-12-24 → 2026-12-22 (-2d) |  | 41d → 43d |  |
| DH.1400A-EQP-35 | Gallery 1402 - B140/Line-Ups // Terminate Mod Panels | 2026-12-15 → 2026-12-11 (-4d) | 2026-12-15 → 2026-12-11 (-4d) |  | 48d → 50d |  |
| DH.1400A-EQP-34 | Gallery 1402 - B140/Line-Ups // Condensate connections to Floor Drains | 2026-12-21 → 2026-12-16 (-5d) | 2027-01-05 → 2026-12-30 (-6d) |  | 34d → 37d |  |
| DH.1400A-EQP-40 | Gallery 1402 - B140/Line-Ups // Electrical Gear FOD Inspection Pre-Start Up | 2026-12-28 → 2026-12-23 (-5d) | 2026-12-29 → 2026-12-24 (-5d) |  | 41d → 43d |  |
| DH.1400A-EQP-38 | Gallery 1402 - B140/Line-Ups // Mechanical Gear FOD Inspection Pre-Start Up | 2027-01-06 → 2026-12-31 (-6d) | 2027-01-08 → 2027-01-05 (-3d) |  | 34d → 37d |  |
| 3 | **C140** | 2026-11-30 → 2026-11-25 (-5d) | 2027-01-08 → 2027-01-05 (-3d) |  |  |  |
| DH.1400A-EQP-41 | Gallery 1402 - C140/Line-Ups // Set CRAH-DH1400- 05 | 2026-11-30 → 2026-11-25 (-5d) | 2026-11-30 → 2026-11-25 (-5d) |  | -8d → -6d |  |
| DH.1400A-EQP-43 | Gallery 1402 - C140/Line-Ups // Set CRAH-DH1400- 06 | 2026-11-30 → 2026-11-25 (-5d) | 2026-11-30 → 2026-11-25 (-5d) |  | -8d → -6d |  |
| DH.1400A-EQP-45 | Gallery 1402 - C140/Line-Ups // Set MOD-C140-01 | 2026-11-30 → 2026-11-25 (-5d) | 2026-11-30 → 2026-11-25 (-5d) |  | 41d → 43d |  |
| DH.1400A-EQP-46 | Gallery 1402 - C140/Line-Ups // Set MOD-C140-02 | 2026-11-30 → 2026-11-25 (-5d) | 2026-11-30 → 2026-11-25 (-5d) |  | 41d → 43d |  |
| DH.1400A-EQP-47 | Gallery 1402 - C140/Line-Ups // Set CDU-DH1400- 05 | 2026-12-01 → 2026-11-27 (-4d) | 2026-12-01 → 2026-11-27 (-4d) |  | 41d → 43d |  |
| DH.1400A-EQP-49 | Gallery 1402 - C140/Line-Ups // Pull Feeder from SWD to MOD | 2026-12-01 → 2026-11-27 (-4d) | 2026-12-01 → 2026-11-27 (-4d) |  | 57d → 59d |  |
| DH.1400A-EQP-50 | Gallery 1402 - C140/Line-Ups // Pull Cable Tray Feed from MOD to CRAHU's | 2026-12-01 → 2026-11-27 (-4d) | 2026-12-07 → 2026-12-03 (-4d) |  | 47d → 49d |  |
| DH.1400A-EQP-52 | Gallery 1402 - C140/Line-Ups // Mount Electrial Gear for Chiller Controls | 2026-12-01 → 2026-11-27 (-4d) | 2026-12-14 → 2026-12-10 (-4d) |  | 41d → 43d |  |
| DH.1400A-EQP-48 | Gallery 1402 - C140/Line-Ups // Set CDU-DH1400- 06 | 2026-12-02 → 2026-11-30 (-2d) | 2026-12-02 → 2026-11-30 (-2d) |  | 41d → 43d |  |
| DH.1400A-EQP-44 | Gallery 1402 - C140/Line-Ups // Condensate connections to Floor Drains | 2026-12-03 → 2026-12-01 (-2d) | 2026-12-16 → 2026-12-14 (-2d) |  | 41d → 43d |  |
| DH.1400A-EQP-51 | Gallery 1402 - C140/Line-Ups // Mechanical Connections to CRAHU Units | 2026-12-07 → 2026-12-03 (-4d) | 2026-12-18 → 2026-12-16 (-2d) |  | 39d → 41d |  |
| DH.1400A-EQP-57 | Gallery 1402 - C140/Line-Ups // Pull Feeder and Branch circuits to MIsc equipment and Chiller controls | 2026-12-07 → 2026-12-03 (-4d) | 2026-12-18 → 2026-12-16 (-2d) |  | 41d → 43d |  |

| ID | Task | Start | Finish | Total float |
| --- | --- | --- | --- | --- |
| DH.1400A-EQP-53 | Gallery 1402 - C140/Line-Ups // Pull Cable Tray Feed from MOD to CRAHU's | 2026-12-08 → 2026-12-04 (-4d) | 2026-12-14 → 2026-12-10 (-4d) | 47d → 49d |
| DH.1400A-EQP-56 | Gallery 1402 - C140/Line-Ups // Terminate CRAHU Electrical Connections | 2026-12-10 → 2026-12-08 (-2d) | 2026-12-16 → 2026-12-14 (-2d) | 47d → 49d |
| DH.1400A-EQP-59 | Gallery 1402 - C140/Line-Ups // Teminate all Misc Equipment and Chiller Controls | 2026-12-11 → 2026-12-09 (-2d) | 2026-12-24 → 2026-12-22 (-2d) | 41d → 43d |
| DH.1400A-EQP-55 | Gallery 1402 - C140/Line-Ups // Terminate Mod Panels | 2026-12-15 → 2026-12-11 (-4d) | 2026-12-15 → 2026-12-11 (-4d) | 48d → 50d |
| DH.1400A-EQP-54 | Gallery 1402 - C140/Line-Ups // Condensate connections to Floor Drains | 2026-12-21 → 2026-12-16 (-5d) | 2027-01-05 → 2026-12-30 (-6d) | 34d → 37d |
| DH.1400A-EQP-60 | Gallery 1402 - C140/Line-Ups // Electrical Gear FOD Inspection Pre-Start Up | 2026-12-28 → 2026-12-23 (-5d) | 2026-12-29 → 2026-12-24 (-5d) | 41d → 43d |
| DH.1400A-EQP-58 | Gallery 1402 - C140/Line-Ups // Mechanical Gear FOD Inspection Pre-Start Up | 2027-01-06 → 2026-12-31 (-6d) | 2027-01-08 → 2027-01-05 (-3d) | 34d → 37d |
| 4 | **D140** | 2026-12-01 → 2026-11-27 (-4d) | 2027-01-08 → 2027-01-05 (-3d) |  |
| DH.1400A-EQP-61 | Gallery 1402 - D140/Line-Ups // Set CRAH-DH1400- 07 | 2026-12-01 → 2026-11-27 (-4d) | 2026-12-01 → 2026-11-27 (-4d) | -8d → -6d |
| DH.1400A-EQP-63 | Gallery 1402 - D140/Line-Ups // Set CRAH-DH1400- 08 | 2026-12-01 → 2026-11-27 (-4d) | 2026-12-01 → 2026-11-27 (-4d) | -8d → -6d |
| DH.1400A-EQP-65 | Gallery 1402 - D140/Line-Ups // Set MOD-D140-01 | 2026-12-01 → 2026-11-27 (-4d) | 2026-12-01 → 2026-11-27 (-4d) | 40d → 42d |
| DH.1400A-EQP-66 | Gallery 1402 - D140/Line-Ups // Set MOD-D140-02 | 2026-12-01 → 2026-11-27 (-4d) | 2026-12-01 → 2026-11-27 (-4d) | 40d → 42d |
| DH.1400A-EQP-67 | Gallery 1402 - D140/Line-Ups // Set CDU-DH1400- 07 | 2026-12-02 → 2026-11-30 (-2d) | 2026-12-02 → 2026-11-30 (-2d) | 40d → 42d |
| DH.1400A-EQP-69 | Gallery 1402 - D140/Line-Ups // Pull Feeder from SWD to MOD | 2026-12-02 → 2026-11-30 (-2d) | 2026-12-02 → 2026-11-30 (-2d) | 56d → 58d |
| DH.1400A-EQP-70 | Gallery 1402 - D140/Line-Ups // Pull Cable Tray Feed from MOD to CRAHU's | 2026-12-02 → 2026-11-30 (-2d) | 2026-12-08 → 2026-12-04 (-4d) | 46d → 48d |
| DH.1400A-EQP-72 | Gallery 1402 - D140/Line-Ups // Mount Electrial Gear for Chiller Controls | 2026-12-02 → 2026-11-30 (-2d) | 2026-12-15 → 2026-12-11 (-4d) | 40d → 42d |
| DH.1400A-EQP-68 | Gallery 1402 - D140/Line-Ups // Set CDU-DH1400- 08 | 2026-12-03 → 2026-12-01 (-2d) | 2026-12-03 → 2026-12-01 (-2d) | 40d → 42d |
| DH.1400A-EQP-64 | Gallery 1402 - D140/Line-Ups // Condensate connections to Floor Drains | 2026-12-04 → 2026-12-02 (-2d) | 2026-12-17 → 2026-12-15 (-2d) | 40d → 42d |
| DH.1400A-EQP-71 | Gallery 1402 - D140/Line-Ups // Mechanical Connections to CRAHU Units | 2026-12-08 → 2026-12-04 (-4d) | 2026-12-21 → 2026-12-17 (-4d) | 38d → 40d |
| DH.1400A-EQP-77 | Gallery 1402 - D140/Line-Ups // Pull Feeder and Branch circuits to MIsc equipment and Chiller controls | 2026-12-08 → 2026-12-04 (-4d) | 2026-12-21 → 2026-12-17 (-4d) | 40d → 42d |
| DH.1400A-EQP-73 | Gallery 1402 - D140/Line-Ups // Pull Cable Tray Feed from MOD to CRAHU's | 2026-12-09 → 2026-12-07 (-2d) | 2026-12-15 → 2026-12-11 (-4d) | 46d → 48d |
| DH.1400A-EQP-76 | Gallery 1402 - D140/Line-Ups // Terminate CRAHU Electrical Connections | 2026-12-11 → 2026-12-09 (-2d) | 2026-12-17 → 2026-12-15 (-2d) | 46d → 48d |
| DH.1400A-EQP-79 | Gallery 1402 - D140/Line-Ups // Teminate all Misc Equipment and Chiller Controls | 2026-12-14 → 2026-12-10 (-4d) | 2026-12-28 → 2026-12-23 (-5d) | 40d → 42d |
| DH.1400A-EQP-75 | Gallery 1402 - D140/Line-Ups // Terminate Mod Panels | 2026-12-16 → 2026-12-14 (-2d) | 2026-12-16 → 2026-12-14 (-2d) | 47d → 49d |
| DH.1400A-EQP-74 | Gallery 1402 - D140/Line-Ups // Condensate connections to Floor Drains | 2026-12-21 → 2026-12-16 (-5d) | 2027-01-05 → 2026-12-30 (-6d) | 34d → 37d |
| DH.1400A-EQP-80 | Gallery 1402 - D140/Line-Ups // Electrical Gear FOD Inspection Pre-Start Up | 2026-12-29 → 2026-12-24 (-5d) | 2026-12-30 → 2026-12-28 (-2d) | 40d → 42d |
| DH.1400A-EQP-78 | Gallery 1402 - D140/Line-Ups // Mechanical Gear FOD Inspection Pre-Start Up | 2027-01-06 → 2026-12-31 (-6d) | 2027-01-08 → 2027-01-05 (-3d) | 34d → 37d |
| 5 | **E140** | 2026-12-01 → 2026-11-27 (-4d) | 2027-01-11 → 2027-01-05 (-6d) |  |
| DH.1400A-EQP-81 | Gallery 1402 - D140/Line-Ups // Set CRAH-DH1400- 09 | 2026-12-01 → 2026-11-27 (-4d) | 2026-12-01 → 2026-11-27 (-4d) | -8d → -6d |
| DH.1400A-EQP-83 | Gallery 1402 - D140/Line-Ups // Set CRAH-DH1400- 10 | 2026-12-01 → 2026-11-27 (-4d) | 2026-12-01 → 2026-11-27 (-4d) | -8d → -6d |
| DH.1400A-EQP-85 | Gallery 1402 - D140/Line-Ups // Set MOD-E140-01 | 2026-12-01 → 2026-11-27 (-4d) | 2026-12-01 → 2026-11-27 (-4d) | 40d → 42d |
| DH.1400A-EQP-86 | Gallery 1402 - D140/Line-Ups // Set MOD-E140-02 | 2026-12-01 → 2026-11-27 (-4d) | 2026-12-01 → 2026-11-27 (-4d) | 40d → 42d |
| DH.1400A-EQP-87 | Gallery 1402 - D140/Line-Ups // Set CDU-DH1400- 09 | 2026-12-02 → 2026-11-30 (-2d) | 2026-12-02 → 2026-11-30 (-2d) | 40d → 42d |
| DH.1400A-EQP-89 | Gallery 1402 - D140/Line-Ups // Pull Feeder from SWD to MOD | 2026-12-02 → 2026-11-30 (-2d) | 2026-12-02 → 2026-11-30 (-2d) | 56d → 58d |
| DH.1400A-EQP-90 | Gallery 1402 - D140/Line-Ups // Pull Cable Tray Feed from MOD to CRAHU's | 2026-12-02 → 2026-11-30 (-2d) | 2026-12-08 → 2026-12-04 (-4d) | 46d → 48d |
| DH.1400A-EQP-92 | Gallery 1402 - D140/Line-Ups // Mount Electrial Gear for Chiller Controls | 2026-12-02 → 2026-11-30 (-2d) | 2026-12-15 → 2026-12-11 (-4d) | 40d → 42d |
| DH.1400A-EQP-88 | Gallery 1402 - D140/Line-Ups // Set CDU-DH1400- 10 | 2026-12-03 → 2026-12-01 (-2d) | 2026-12-03 → 2026-12-01 (-2d) | 40d → 42d |
| DH.1400A-EQP-84 | Gallery 1402 - D140/Line-Ups // Condensate connections to Floor Drains | 2026-12-04 → 2026-12-02 (-2d) | 2026-12-17 → 2026-12-15 (-2d) | 40d → 42d |
| DH.1400A-EQP-91 | Gallery 1402 - D140/Line-Ups // Mechanical Connections to CRAHU Units | 2026-12-08 → 2026-12-04 (-4d) | 2026-12-21 → 2026-12-17 (-4d) | 38d → 40d |
| DH.1400A-EQP-97 | Gallery 1402 - D140/Line-Ups // Pull Feeder and Branch circuits to MIsc equipment and Chiller controls | 2026-12-08 → 2026-12-04 (-4d) | 2026-12-21 → 2026-12-17 (-4d) | 40d → 42d |
| DH.1400A-EQP-93 | Gallery 1402 - D140/Line-Ups // Pull Cable Tray Feed from MOD to CRAHU's | 2026-12-09 → 2026-12-07 (-2d) | 2026-12-15 → 2026-12-11 (-4d) | 46d → 48d |
| DH.1400A-EQP-96 | Gallery 1402 - D140/Line-Ups // Terminate CRAHU Electrical Connections | 2026-12-11 → 2026-12-09 (-2d) | 2026-12-17 → 2026-12-15 (-2d) | 46d → 48d |
| DH.1400A-EQP-99 | Gallery 1402 - D140/Line-Ups // Teminate all Misc Equipment and Chiller Controls | 2026-12-14 → 2026-12-10 (-4d) | 2026-12-28 → 2026-12-23 (-5d) | 40d → 42d |
| DH.1400A-EQP-95 | Gallery 1402 - D140/Line-Ups // Terminate Mod Panels | 2026-12-16 → 2026-12-14 (-2d) | 2026-12-16 → 2026-12-14 (-2d) | 47d → 49d |
| DH.1400A-EQP-94 | Gallery 1402 - D140/Line-Ups // Condensate connections to Floor Drains | 2026-12-22 → 2026-12-16 (-6d) | 2027-01-06 → 2026-12-30 (-7d) | 33d → 37d |
| DH.1400A-EQP-100 | Gallery 1402 - D140/Line-Ups // Electrical Gear FOD Inspection Pre-Start Up | 2026-12-29 → 2026-12-24 (-5d) | 2026-12-30 → 2026-12-28 (-2d) | 40d → 42d |
| DH.1400A-EQP-98 | Gallery 1402 - D140/Line-Ups // Mechanical Gear FOD Inspection Pre-Start Up | 2027-01-07 → 2026-12-31 (-7d) | 2027-01-11 → 2027-01-05 (-6d) | 33d → 37d |
| 6 | **F140** | 2026-12-01 → 2026-11-27 (-4d) | 2027-01-11 → 2027-01-05 (-6d) |  |
| DH.1400A-EQP-101 | Gallery 1402 - F140/Line-Ups // Set CRAH-DH1400- 11 | 2026-12-01 → 2026-11-27 (-4d) | 2026-12-01 → 2026-11-27 (-4d) | -8d → -6d |
| DH.1400A-EQP-103 | Gallery 1402 - F140/Line-Ups // Set CRAH-DH1400- 12 | 2026-12-01 → 2026-11-27 (-4d) | 2026-12-01 → 2026-11-27 (-4d) | -8d → -6d |
| DH.1400A-EQP-105 | Gallery 1402 - F140/Line-Ups // Set MOD-F140-01 | 2026-12-01 → 2026-11-27 (-4d) | 2026-12-01 → 2026-11-27 (-4d) | 40d → 42d |
| DH.1400A-EQP-106 | Gallery 1402 - F140/Line-Ups // Set MOD-F140-02 | 2026-12-01 → 2026-11-27 (-4d) | 2026-12-01 → 2026-11-27 (-4d) | 40d → 42d |
| DH.1400A-EQP-107 | Gallery 1402 - F140/Line-Ups // Set CDU-DH1400- 11 | 2026-12-02 → 2026-11-30 (-2d) | 2026-12-02 → 2026-11-30 (-2d) | 40d → 42d |
| DH.1400A-EQP-109 | Gallery 1402 - F140/Line-Ups // Pull Feeder from SWD to MOD | 2026-12-02 → 2026-11-30 (-2d) | 2026-12-02 → 2026-11-30 (-2d) | 56d → 58d |
| DH.1400A-EQP-110 | Gallery 1402 - F140/Line-Ups // Pull Cable Tray Feed from MOD to CRAHU's | 2026-12-02 → 2026-11-30 (-2d) | 2026-12-08 → 2026-12-04 (-4d) | 46d → 48d |
| DH.1400A-EQP-112 | Gallery 1402 - F140/Line-Ups // Mount Electrial Gear for Chiller Controls | 2026-12-02 → 2026-11-30 (-2d) | 2026-12-15 → 2026-12-11 (-4d) | 40d → 42d |
| DH.1400A-EQP-108 | Gallery 1402 - F140/Line-Ups // Set CDU-DH1400- 12 | 2026-12-03 → 2026-12-01 (-2d) | 2026-12-03 → 2026-12-01 (-2d) | 40d → 42d |
| DH.1400A-EQP-104 | Gallery 1402 - F140/Line-Ups // Condensate connections to Floor Drains | 2026-12-04 → 2026-12-02 (-2d) | 2026-12-17 → 2026-12-15 (-2d) | 40d → 42d |
| DH.1400A-EQP-111 | Gallery 1402 - F140/Line-Ups // Mechanical Connections to CRAHU Units | 2026-12-08 → 2026-12-04 (-4d) | 2026-12-21 → 2026-12-17 (-4d) | 38d → 40d |
| DH.1400A-EQP-117 | Gallery 1402 - F140/Line-Ups // Pull Feeder and Branch circuits to MIsc equipment and Chiller controls | 2026-12-08 → 2026-12-04 (-4d) | 2026-12-21 → 2026-12-17 (-4d) | 40d → 42d |
| DH.1400A-EQP-113 | Gallery 1402 - F140/Line-Ups // Pull Cable Tray Feed from MOD to CRAHU's | 2026-12-09 → 2026-12-07 (-2d) | 2026-12-15 → 2026-12-11 (-4d) | 46d → 48d |
| DH.1400A-EQP-116 | Gallery 1402 - F140/Line-Ups // Terminate CRAHU Electrical Connections | 2026-12-11 → 2026-12-09 (-2d) | 2026-12-17 → 2026-12-15 (-2d) | 46d → 48d |
| DH.1400A-EQP-119 | Gallery 1402 - F140/Line-Ups // Teminate all Misc Equipment and Chiller Controls | 2026-12-14 → 2026-12-10 (-4d) | 2026-12-28 → 2026-12-23 (-5d) | 40d → 42d |
| DH.1400A-EQP-115 | Gallery 1402 - F140/Line-Ups // Terminate Mod Panels | 2026-12-16 → 2026-12-14 (-2d) | 2026-12-16 → 2026-12-14 (-2d) | 47d → 49d |
| DH.1400A-EQP-114 | Gallery 1402 - F140/Line-Ups // Condensate connections to Floor Drains | 2026-12-22 → 2026-12-16 (-6d) | 2027-01-06 → 2026-12-30 (-7d) | 33d → 37d |
| DH.1400A-EQP-120 | Gallery 1402 - F140/Line-Ups // Electrical Gear FOD Inspection Pre-Start Up | 2026-12-29 → 2026-12-24 (-5d) | 2026-12-30 → 2026-12-28 (-2d) | 40d → 42d |
| DH.1400A-EQP-118 | Gallery 1402 - F140/Line-Ups // Mechanical Gear FOD Inspection Pre-Start Up | 2027-01-07 → 2026-12-31 (-7d) | 2027-01-11 → 2027-01-05 (-6d) | 33d → 37d |
| 7 | **G140** | 2026-12-02 → 2026-11-30 (-2d) | 2027-01-11 → 2027-01-06 (-5d) |  |
| DH.1400A-EQP-121 | Gallery 1402 - G140/Line-Ups // Set CRAH-DH1400- 13 | 2026-12-02 → 2026-11-30 (-2d) | 2026-12-02 → 2026-11-30 (-2d) | -8d → -6d |
| DH.1400A-EQP-123 | Gallery 1402 - G140/Line-Ups // Set CRAH-DH1400- 14 | 2026-12-02 → 2026-11-30 (-2d) | 2026-12-02 → 2026-11-30 (-2d) | -8d → -6d |

| ID | Task | Start | Finish | Total float |
| --- | --- | --- | --- | --- |
| DH.1400A-EQP-125 | Gallery 1402 - G140/Line-Ups // Set MOD-G140-01 | 2026-12-02 → 2026-11-30 (-2d) | 2026-12-02 → 2026-11-30 (-2d) | 39d → 41d |
| DH.1400A-EQP-126 | Gallery 1402 - G140/Line-Ups // Set MOD-G140-02 | 2026-12-02 → 2026-11-30 (-2d) | 2026-12-02 → 2026-11-30 (-2d) | 39d → 41d |
| DH.1400A-EQP-127 | Gallery 1402 - G140/Line-Ups // Set CDU-DH1400- 13 | 2026-12-03 → 2026-12-01 (-2d) | 2026-12-03 → 2026-12-01 (-2d) | 39d → 41d |
| DH.1400A-EQP-129 | Gallery 1402 - G140/Line-Ups // Pull Feeder from SWD to MOD | 2026-12-03 → 2026-12-01 (-2d) | 2026-12-03 → 2026-12-01 (-2d) | 55d → 57d |
| DH.1400A-EQP-130 | Gallery 1402 - G140/Line-Ups // Pull Cable Tray Feed from MOD to CRAHU's | 2026-12-03 → 2026-12-01 (-2d) | 2026-12-09 → 2026-12-07 (-2d) | 45d → 47d |
| DH.1400A-EQP-132 | Gallery 1402 - G140/Line-Ups // Mount Electrial Gear for Chiller Controls | 2026-12-03 → 2026-12-01 (-2d) | 2026-12-16 → 2026-12-14 (-2d) | 39d → 41d |
| DH.1400A-EQP-128 | Gallery 1402 - G140/Line-Ups // Set CDU-DH1400- 14 | 2026-12-04 → 2026-12-02 (-2d) | 2026-12-04 → 2026-12-02 (-2d) | 39d → 41d |
| DH.1400A-EQP-124 | Gallery 1402 - G140/Line-Ups // Condensate connections to Floor Drains | 2026-12-07 → 2026-12-03 (-4d) | 2026-12-18 → 2026-12-16 (-2d) | 39d → 41d |
| DH.1400A-EQP-131 | Gallery 1402 - G140/Line-Ups // Mechanical Connections to CRAHU Units | 2026-12-09 → 2026-12-07 (-2d) | 2026-12-22 → 2026-12-18 (-4d) | 37d → 39d |
| DH.1400A-EQP-137 | Gallery 1402 - G140/Line-Ups // Pull Feeder and Branch circuits to MIsc equipment and Chiller controls | 2026-12-09 → 2026-12-07 (-2d) | 2026-12-22 → 2026-12-18 (-4d) | 39d → 41d |
| DH.1400A-EQP-133 | Gallery 1402 - G140/Line-Ups // Pull Cable Tray Feed from MOD to CRAHU's | 2026-12-10 → 2026-12-08 (-2d) | 2026-12-16 → 2026-12-14 (-2d) | 45d → 47d |
| DH.1400A-EQP-136 | Gallery 1402 - G140/Line-Ups // Terminate CRAHU Electrical Connections | 2026-12-14 → 2026-12-10 (-4d) | 2026-12-18 → 2026-12-16 (-2d) | 45d → 47d |
| DH.1400A-EQP-139 | Gallery 1402 - G140/Line-Ups // Teminate all Misc Equipment and Chiller Controls | 2026-12-15 → 2026-12-11 (-4d) | 2026-12-29 → 2026-12-24 (-5d) | 39d → 41d |
| DH.1400A-EQP-135 | Gallery 1402 - G140/Line-Ups // Terminate Mod Panels | 2026-12-17 → 2026-12-15 (-2d) | 2026-12-17 → 2026-12-15 (-2d) | 46d → 48d |
| DH.1400A-EQP-134 | Gallery 1402 - G140/Line-Ups // Condensate connections to Floor Drains | 2026-12-22 → 2026-12-17 (-5d) | 2027-01-06 → 2026-12-31 (-6d) | 33d → 36d |
| DH.1400A-EQP-140 | Gallery 1402 - G140/Line-Ups // Electrical Gear FOD Inspection Pre-Start Up | 2026-12-30 → 2026-12-28 (-2d) | 2026-12-31 → 2026-12-29 (-2d) | 39d → 41d |
| DH.1400A-EQP-138 | Gallery 1402 - G140/Line-Ups // Mechanical Gear FOD Inspection Pre-Start Up | 2027-01-07 → 2027-01-04 (-3d) | 2027-01-11 → 2027-01-06 (-5d) | 33d → 36d |
| 8 | **H140** | 2026-12-02 → 2026-11-30 (-2d) | 2027-01-12 → 2027-01-06 (-6d) |  |
| DH.1400A-EQP-141 | Gallery 1402 - H140/Line-Ups // Set CRAH-DH1400- 15 | 2026-12-02 → 2026-11-30 (-2d) | 2026-12-02 → 2026-11-30 (-2d) | -8d → -6d |
| DH.1400A-EQP-143 | Gallery 1402 - H140/Line-Ups // Set CRAH-DH1400- 16 | 2026-12-02 → 2026-11-30 (-2d) | 2026-12-02 → 2026-11-30 (-2d) | -8d → -6d |
| DH.1400A-EQP-145 | Gallery 1402 - H140/Line-Ups // Set MOD-H140-01 | 2026-12-02 → 2026-11-30 (-2d) | 2026-12-02 → 2026-11-30 (-2d) | 39d → 41d |
| DH.1400A-EQP-146 | Gallery 1402 - H140/Line-Ups // Set MOD-H140-02 | 2026-12-02 → 2026-11-30 (-2d) | 2026-12-02 → 2026-11-30 (-2d) | 39d → 41d |
| DH.1400A-EQP-147 | Gallery 1402 - H140/Line-Ups // Set CDU-DH1400- 15 | 2026-12-03 → 2026-12-01 (-2d) | 2026-12-03 → 2026-12-01 (-2d) | 39d → 41d |
| DH.1400A-EQP-149 | Gallery 1402 - H140/Line-Ups // Pull Feeder from SWD to MOD | 2026-12-03 → 2026-12-01 (-2d) | 2026-12-03 → 2026-12-01 (-2d) | 55d → 57d |
| DH.1400A-EQP-150 | Gallery 1402 - H140/Line-Ups // Pull Cable Tray Feed from MOD to CRAHU's | 2026-12-03 → 2026-12-01 (-2d) | 2026-12-09 → 2026-12-07 (-2d) | 45d → 47d |
| DH.1400A-EQP-152 | Gallery 1402 - H140/Line-Ups // Mount Electrial Gear for Chiller Controls | 2026-12-03 → 2026-12-01 (-2d) | 2026-12-16 → 2026-12-14 (-2d) | 39d → 41d |
| DH.1400A-EQP-148 | Gallery 1402 - H140/Line-Ups // Set CDU-DH1400- 16 | 2026-12-04 → 2026-12-02 (-2d) | 2026-12-04 → 2026-12-02 (-2d) | 39d → 41d |
| DH.1400A-EQP-144 | Gallery 1402 - H140/Line-Ups // Condensate connections to Floor Drains | 2026-12-07 → 2026-12-03 (-4d) | 2026-12-18 → 2026-12-16 (-2d) | 39d → 41d |
| DH.1400A-EQP-151 | Gallery 1402 - H140/Line-Ups // Mechanical Connections to CRAHU Units | 2026-12-09 → 2026-12-07 (-2d) | 2026-12-22 → 2026-12-18 (-4d) | 37d → 39d |
| DH.1400A-EQP-157 | Gallery 1402 - H140/Line-Ups // Pull Feeder and Branch circuits to MIsc equipment and Chiller controls | 2026-12-09 → 2026-12-07 (-2d) | 2026-12-22 → 2026-12-18 (-4d) | 39d → 41d |
| DH.1400A-EQP-153 | Gallery 1402 - H140/Line-Ups // Pull Cable Tray Feed from MOD to CRAHU's | 2026-12-10 → 2026-12-08 (-2d) | 2026-12-16 → 2026-12-14 (-2d) | 45d → 47d |
| DH.1400A-EQP-156 | Gallery 1402 - H140/Line-Ups // Terminate CRAHU Electrical Connections | 2026-12-14 → 2026-12-10 (-4d) | 2026-12-18 → 2026-12-16 (-2d) | 45d → 47d |
| DH.1400A-EQP-159 | Gallery 1402 - H140/Line-Ups // Teminate all Misc Equipment and Chiller Controls | 2026-12-15 → 2026-12-11 (-4d) | 2026-12-29 → 2026-12-24 (-5d) | 39d → 41d |
| DH.1400A-EQP-155 | Gallery 1402 - H140/Line-Ups // Terminate Mod Panels | 2026-12-17 → 2026-12-15 (-2d) | 2026-12-17 → 2026-12-15 (-2d) | 46d → 48d |
| DH.1400A-EQP-154 | Gallery 1402 - H140/Line-Ups // Condensate connections to Floor Drains | 2026-12-23 → 2026-12-17 (-6d) | 2027-01-07 → 2026-12-31 (-7d) | 32d → 36d |
| DH.1400A-EQP-160 | Gallery 1402 - H140/Line-Ups // Electrical Gear FOD Inspection Pre-Start Up | 2026-12-30 → 2026-12-28 (-2d) | 2026-12-31 → 2026-12-29 (-2d) | 39d → 41d |
| DH.1400A-EQP-158 | Gallery 1402 - H140/Line-Ups // Mechanical Gear FOD Inspection Pre-Start Up | 2027-01-08 → 2027-01-04 (-4d) | 2027-01-12 → 2027-01-06 (-6d) | 32d → 36d |
| 9 | **J140** | 2026-12-02 → 2026-11-30 (-2d) | 2027-01-12 → 2027-01-06 (-6d) |  |
| DH.1400A-EQP-161 | Gallery 1402 - J140/Line-Ups // Set CRAH-DH1400- 17 | 2026-12-02 → 2026-11-30 (-2d) | 2026-12-02 → 2026-11-30 (-2d) | -8d → -6d |
| DH.1400A-EQP-163 | Gallery 1402 - J140/Line-Ups // Set CRAH-DH1400- 18 | 2026-12-02 → 2026-11-30 (-2d) | 2026-12-02 → 2026-11-30 (-2d) | -8d → -6d |
| DH.1400A-EQP-165 | Gallery 1402 - J140/Line-Ups // Set MOD-J140-01 | 2026-12-02 → 2026-11-30 (-2d) | 2026-12-02 → 2026-11-30 (-2d) | 39d → 41d |
| DH.1400A-EQP-166 | Gallery 1402 - J140/Line-Ups // Set MOD-J140-02 | 2026-12-02 → 2026-11-30 (-2d) | 2026-12-02 → 2026-11-30 (-2d) | 39d → 41d |
| DH.1400A-EQP-167 | Gallery 1402 - J140/Line-Ups // Set CDU-DH1400- 17 | 2026-12-03 → 2026-12-01 (-2d) | 2026-12-03 → 2026-12-01 (-2d) | 39d → 41d |
| DH.1400A-EQP-169 | Gallery 1402 - J140/Line-Ups // Pull Feeder from SWD to MOD | 2026-12-03 → 2026-12-01 (-2d) | 2026-12-03 → 2026-12-01 (-2d) | 55d → 57d |
| DH.1400A-EQP-170 | Gallery 1402 - J140/Line-Ups // Pull Cable Tray Feed from MOD to CRAHU's | 2026-12-03 → 2026-12-01 (-2d) | 2026-12-09 → 2026-12-07 (-2d) | 45d → 47d |
| DH.1400A-EQP-172 | Gallery 1402 - J140/Line-Ups // Mount Electrial Gear for Chiller Controls | 2026-12-03 → 2026-12-01 (-2d) | 2026-12-16 → 2026-12-14 (-2d) | 39d → 41d |
| DH.1400A-EQP-168 | Gallery 1402 - J140/Line-Ups // Set CDU-DH1400- 18 | 2026-12-04 → 2026-12-02 (-2d) | 2026-12-04 → 2026-12-02 (-2d) | 39d → 41d |
| DH.1400A-EQP-164 | Gallery 1402 - J140/Line-Ups // Condensate connections to Floor Drains | 2026-12-07 → 2026-12-03 (-4d) | 2026-12-18 → 2026-12-16 (-2d) | 39d → 41d |
| DH.1400A-EQP-171 | Gallery 1402 - J140/Line-Ups // Mechanical Connections to CRAHU Units | 2026-12-09 → 2026-12-07 (-2d) | 2026-12-22 → 2026-12-18 (-4d) | 37d → 39d |
| DH.1400A-EQP-177 | Gallery 1402 - J140/Line-Ups // Pull Feeder and Branch circuits to MIsc equipment and Chiller controls | 2026-12-09 → 2026-12-07 (-2d) | 2026-12-22 → 2026-12-18 (-4d) | 39d → 41d |
| DH.1400A-EQP-173 | Gallery 1402 - J140/Line-Ups // Pull Cable Tray Feed from MOD to CRAHU's | 2026-12-10 → 2026-12-08 (-2d) | 2026-12-16 → 2026-12-14 (-2d) | 45d → 47d |
| DH.1400A-EQP-176 | Gallery 1402 - J140/Line-Ups // Terminate CRAHU Electrical Connections | 2026-12-14 → 2026-12-10 (-4d) | 2026-12-18 → 2026-12-16 (-2d) | 45d → 47d |
| DH.1400A-EQP-179 | Gallery 1402 - J140/Line-Ups // Teminate all Misc Equipment and Chiller Controls | 2026-12-15 → 2026-12-11 (-4d) | 2026-12-29 → 2026-12-24 (-5d) | 39d → 41d |
| DH.1400A-EQP-175 | Gallery 1402 - J140/Line-Ups // Terminate Mod Panels | 2026-12-17 → 2026-12-15 (-2d) | 2026-12-17 → 2026-12-15 (-2d) | 46d → 48d |
| DH.1400A-EQP-174 | Gallery 1402 - J140/Line-Ups // Condensate connections to Floor Drains | 2026-12-23 → 2026-12-17 (-6d) | 2027-01-07 → 2026-12-31 (-7d) | 32d → 36d |
| DH.1400A-EQP-180 | Gallery 1402 - J140/Line-Ups // Electrical Gear FOD Inspection Pre-Start Up | 2026-12-30 → 2026-12-28 (-2d) | 2026-12-31 → 2026-12-29 (-2d) | 39d → 41d |
| DH.1400A-EQP-178 | Gallery 1402 - J140/Line-Ups // Mechanical Gear FOD Inspection Pre-Start Up | 2027-01-08 → 2027-01-04 (-4d) | 2027-01-12 → 2027-01-06 (-6d) | 32d → 36d |
| 10 | **K140** | 2026-12-03 → 2026-12-01 (-2d) | 2027-01-12 → 2027-01-06 (-6d) |  |
| DH.1400A-EQP-181 | Gallery 1402 - K140/Line-Ups // Set CRAH-DH1400- 19 | 2026-12-03 → 2026-12-01 (-2d) | 2026-12-03 → 2026-12-01 (-2d) | -8d → -6d |
| DH.1400A-EQP-183 | Gallery 1402 - K140/Line-Ups // Set CRAH-DH1400- 20 | 2026-12-03 → 2026-12-01 (-2d) | 2026-12-03 → 2026-12-01 (-2d) | -8d → -6d |
| DH.1400A-EQP-185 | Gallery 1402 - K140/Line-Ups // Set MOD-K140-01 | 2026-12-03 → 2026-12-01 (-2d) | 2026-12-03 → 2026-12-01 (-2d) | 38d → 40d |
| DH.1400A-EQP-186 | Gallery 1402 - K140/Line-Ups // Set MOD-K140-02 | 2026-12-03 → 2026-12-01 (-2d) | 2026-12-03 → 2026-12-01 (-2d) | 38d → 40d |
| DH.1400A-EQP-187 | Gallery 1402 - K140/Line-Ups // Set CDU-DH1400- 19 | 2026-12-04 → 2026-12-02 (-2d) | 2026-12-04 → 2026-12-02 (-2d) | 38d → 40d |
| DH.1400A-EQP-189 | Gallery 1402 - K140/Line-Ups // Pull Feeder from SWD to MOD | 2026-12-04 → 2026-12-02 (-2d) | 2026-12-04 → 2026-12-02 (-2d) | 54d → 56d |
| DH.1400A-EQP-190 | Gallery 1402 - K140/Line-Ups // Pull Cable Tray Feed from MOD to CRAHU's | 2026-12-04 → 2026-12-02 (-2d) | 2026-12-10 → 2026-12-08 (-2d) | 44d → 46d |
| DH.1400A-EQP-192 | Gallery 1402 - K140/Line-Ups // Mount Electrial Gear for Chiller Controls | 2026-12-04 → 2026-12-02 (-2d) | 2026-12-17 → 2026-12-15 (-2d) | 38d → 40d |
| DH.1400A-EQP-188 | Gallery 1402 - K140/Line-Ups // Set CDU-DH1400- 20 | 2026-12-07 → 2026-12-03 (-4d) | 2026-12-07 → 2026-12-03 (-4d) | 38d → 40d |
| DH.1400A-EQP-184 | Gallery 1402 - K140/Line-Ups // Condensate connections to Floor Drains | 2026-12-08 → 2026-12-04 (-4d) | 2026-12-21 → 2026-12-17 (-4d) | 38d → 40d |
| DH.1400A-EQP-191 | Gallery 1402 - K140/Line-Ups // Mechanical Connections to CRAHU Units | 2026-12-10 → 2026-12-08 (-2d) | 2026-12-23 → 2026-12-21 (-2d) | 36d → 38d |
| DH.1400A-EQP-197 | Gallery 1402 - K140/Line-Ups // Pull Feeder and Branch circuits to MIsc equipment and Chiller controls | 2026-12-10 → 2026-12-08 (-2d) | 2026-12-23 → 2026-12-21 (-2d) | 38d → 40d |

| ID | Task | Start | Finish | Complete | Total float | Predecessors |
| --- | --- | --- | --- | --- | --- | --- |
| DH.1400A-EQP-193 | Gallery 1402 - K140/Line-Ups // Pull Cable Tray Feed from MOD to CRAHU's | 2026-12-11 → 2026-12-09 (-2d) | 2026-12-17 → 2026-12-15 (-2d) |  | 44d → 46d |  |
| DH.1400A-EQP-196 | Gallery 1402 - K140/Line-Ups // Terminate CRAHU Electrical Connections | 2026-12-15 → 2026-12-11 (-4d) | 2026-12-21 → 2026-12-17 (-4d) |  | 44d → 46d |  |
| DH.1400A-EQP-199 | Gallery 1402 - K140/Line-Ups // Teminate all Misc Equipment and Chiller Controls | 2026-12-16 → 2026-12-14 (-2d) | 2026-12-30 → 2026-12-28 (-2d) |  | 38d → 40d |  |
| DH.1400A-EQP-195 | Gallery 1402 - K140/Line-Ups // Terminate Mod Panels | 2026-12-18 → 2026-12-16 (-2d) | 2026-12-18 → 2026-12-16 (-2d) |  | 45d → 47d |  |
| DH.1400A-EQP-194 | Gallery 1402 - K140/Line-Ups // Condensate connections to Floor Drains | 2026-12-23 → 2026-12-17 (-6d) | 2027-01-07 → 2026-12-31 (-7d) |  | 32d → 36d |  |
| DH.1400A-EQP-200 | Gallery 1402 - K140/Line-Ups // Electrical Gear FOD Inspection Pre-Start Up | 2026-12-31 → 2026-12-29 (-2d) | 2027-01-04 → 2026-12-30 (-5d) |  | 38d → 40d |  |
| DH.1400A-EQP-198 | Gallery 1402 - K140/Line-Ups // Mechanical Gear FOD Inspection Pre-Start Up | 2027-01-08 → 2027-01-04 (-4d) | 2027-01-12 → 2027-01-06 (-6d) |  | 32d → 36d |  |
| 11 | **R140** | 2026-12-03 → 2026-12-01 (-2d) | 2027-01-12 → 2027-01-06 (-6d) |  |  |  |
| DH.1400A-EQP-201 | Gallery 1402 - R140/Line-Ups // Set CRAH-DH1400- 21 | 2026-12-03 → 2026-12-01 (-2d) | 2026-12-03 → 2026-12-01 (-2d) |  | -8d → -6d |  |
| DH.1400A-EQP-203 | Gallery 1402 - R140/Line-Ups // Set CRAH-DH1400- 22 | 2026-12-03 → 2026-12-01 (-2d) | 2026-12-03 → 2026-12-01 (-2d) |  | -8d → -6d |  |
| DH.1400A-EQP-205 | Gallery 1402 - R140/Line-Ups // Set MOD-R140-01 | 2026-12-03 → 2026-12-01 (-2d) | 2026-12-03 → 2026-12-01 (-2d) |  | -8d → -6d |  |
| DH.1400A-EQP-206 | Gallery 1402 - R140/Line-Ups // Set MOD-R140-02 | 2026-12-03 → 2026-12-01 (-2d) | 2026-12-03 → 2026-12-01 (-2d) |  | -8d → -6d |  |
| DH.1400A-EQP-207 | Gallery 1402 - R140/Line-Ups // Set CDU-DH1400- 21 | 2026-12-04 → 2026-12-02 (-2d) | 2026-12-04 → 2026-12-02 (-2d) |  | -4d → -2d |  |
| DH.1400A-EQP-210 | Gallery 1402 - R140/Line-Ups // Pull Cable Tray Feed from MOD to CRAHU's | 2026-12-04 → 2026-12-02 (-2d) | 2026-12-10 → 2026-12-08 (-2d) |  | -2d → 0d |  |
| DH.1400A-EQP-212 | Gallery 1402 - R140/Line-Ups // Mount Electrial Gear for Chiller Controls | 2026-12-04 → 2026-12-02 (-2d) | 2026-12-17 → 2026-12-15 (-2d) |  | -8d → -6d |  |
| DH.1400A-EQP-208 | Gallery 1402 - R140/Line-Ups // Set CDU-DH1400- 22 | 2026-12-07 → 2026-12-03 (-4d) | 2026-12-07 → 2026-12-03 (-4d) |  | -4d → -2d |  |
| DH.1400A-EQP-204 | Gallery 1402 - R140/Line-Ups // Condensate connections to Floor Drains | 2026-12-08 → 2026-12-04 (-4d) | 2026-12-21 → 2026-12-17 (-4d) |  | -4d → -2d |  |
| DH.1400A-EQP-221 | Gallery 1402 - R140/Line-Ups // Set SWD-R140 | 2026-12-08 → 2026-12-04 (-4d) | 2026-12-08 → 2026-12-04 (-4d) |  | 7d → 9d |  |
| DH.1400A-EQP-222 | Gallery 1402 - R140/Line-Ups // Set SWD-TIE-R140 | 2026-12-09 → 2026-12-07 (-2d) | 2026-12-09 → 2026-12-07 (-2d) |  | 7d → 9d |  |
| DH.1400A-EQP-209 | Gallery 1402 - R140/Line-Ups // Pull Feeder from SWD to MOD | 2026-12-10 → 2026-12-08 (-2d) | 2026-12-10 → 2026-12-08 (-2d) |  | 7d → 9d |  |
| DH.1400A-EQP-211 | Gallery 1402 - R140/Line-Ups // Mechanical Connections to CRAHU Units | 2026-12-10 → 2026-12-08 (-2d) | 2026-12-23 → 2026-12-21 (-2d) |  | -6d → -4d |  |
| DH.1400A-EQP-217 | Gallery 1402 - R140/Line-Ups // Pull Feeder and Branch circuits to MIsc equipment and Chiller controls | 2026-12-10 → 2026-12-08 (-2d) | 2026-12-23 → 2026-12-21 (-2d) |  | -8d → -6d |  |
| DH.1400A-EQP-213 | Gallery 1402 - R140/Line-Ups // Pull Cable Tray Feed from MOD to CRAHU's | 2026-12-11 → 2026-12-09 (-2d) | 2026-12-17 → 2026-12-15 (-2d) |  | -2d → 0d |  |
| DH.1400A-EQP-216 | Gallery 1402 - R140/Line-Ups // Terminate CRAHU Electrical Connections | 2026-12-15 → 2026-12-11 (-4d) | 2026-12-21 → 2026-12-17 (-4d) |  | 2d → 4d |  |
| DH.1400A-EQP-219 | Gallery 1402 - R140/Line-Ups // Teminate all Misc Equipment and Chiller Controls | 2026-12-16 → 2026-12-14 (-2d) | 2026-12-30 → 2026-12-28 (-2d) |  | -8d → -6d |  |
| DH.1400A-EQP-215 | Gallery 1402 - R140/Line-Ups // Terminate Mod Panels | 2026-12-18 → 2026-12-16 (-2d) | 2026-12-18 → 2026-12-16 (-2d) |  | 3d → 5d |  |
| DH.1400A-EQP-214 | Gallery 1402 - R140/Line-Ups // Condensate connections to Floor Drains | 2026-12-23 → 2026-12-17 (-6d) | 2027-01-07 → 2026-12-31 (-7d) |  | -10d → -6d |  |
| DH.1400A-EQP-220 | Gallery 1402 - R140/Line-Ups // Electrical Gear FOD Inspection Pre-Start Up | 2026-12-31 → 2026-12-29 (-2d) | 2027-01-04 → 2026-12-30 (-5d) |  | -4d → -2d |  |
| DH.1400A-EQP-218 | Gallery 1402 - R140/Line-Ups // Mechanical Gear FOD Inspection Pre-Start Up | 2027-01-08 → 2027-01-04 (-4d) | 2027-01-12 → 2027-01-06 (-6d) |  | -10d → -6d |  |
| 12 | **Equipment Connections** | 2026-12-11 → 2026-12-09 (-2d) | 2027-01-08 → 2027-01-06 (-2d) |  |  |  |
| 1 | **CRAH** | 2026-12-18 → 2026-12-16 (-2d) | 2026-12-30 → 2026-12-28 (-2d) |  |  |  |
| DH1400.MG.A110.8687 | Gallery 1402 // DH 1400 / Elec Room // CRAH Duct Work Termination | 2026-12-18 → 2026-12-16 (-2d) | 2026-12-21 → 2026-12-17 (-4d) |  | -2d → 0d |  |
| DH1400.MG.A110.8686 | Gallery 1402 // DH 1400 / Elec Room // CRAH Chilled Water | 2026-12-22 → 2026-12-18 (-4d) | 2026-12-23 → 2026-12-21 (-2d) |  | -2d → 0d |  |
| DH1400.MG.A110.8684 | Gallery 1402 // DH 1400 / Elec Room // CRAH Power Connections | 2026-12-24 → 2026-12-22 (-2d) | 2026-12-28 → 2026-12-23 (-5d) |  | -2d → 0d |  |
| DH1400.MG.A110.8685 | Gallery 1402 // DH 1400 / Elec Room // CRAH LV Connections | 2026-12-29 → 2026-12-24 (-5d) | 2026-12-30 → 2026-12-28 (-2d) |  | -2d → 0d |  |
| 2 | **CDU** | 2026-12-31 → 2026-12-29 (-2d) | 2027-01-08 → 2027-01-06 (-2d) |  |  |  |
| DH1400.MG.A110.8690 | Gallery 1402 // DH 1400 / Elec Room // CDU Chilled Water Connections | 2026-12-31 → 2026-12-29 (-2d) | 2027-01-04 → 2026-12-30 (-5d) |  | -8d → -6d |  |
| DH1400.MG.A110.8688 | Gallery 1402 // DH 1400 /Elec Room // CDU Power Connections | 2027-01-05 → 2026-12-31 (-5d) | 2027-01-06 → 2027-01-04 (-2d) |  | -8d → -6d |  |
| DH1400.MG.A110.8689 | Gallery 1402 // DH 1400 / Elec Room // CDU Controls Connections | 2027-01-07 → 2027-01-05 (-2d) | 2027-01-08 → 2027-01-06 (-2d) |  | -8d → -6d |  |
| 3 | **MOD** | 2026-12-11 → 2026-12-09 (-2d) | 2026-12-16 → 2026-12-14 (-2d) |  |  |  |
| DH1400.MG.A110.8691 | Gallery 1402 // DH 1400 / Elec Room // MOD Power Connections | 2026-12-11 → 2026-12-09 (-2d) | 2026-12-14 → 2026-12-10 (-4d) |  | 7d → 9d |  |
| DH1400.MG.A110.8692 | Gallery 1402 // DH 1400 / Elec Room // MOD LV Connections | 2026-12-15 → 2026-12-11 (-4d) | 2026-12-16 → 2026-12-14 (-2d) |  | 7d → 9d |  |
| 4 | **Gallery 1403** |  | 2027-01-15 → 2027-01-13 (-2d) |  |  |  |
| 1 | **Architectural** |  | 2026-12-08 → 2026-12-18 (+10d) |  |  |  |
| DH.14001040 | DH 1400/Gallery 1403 // Frame walls |  | 2026-10-07 → 2026-10-14 (+7d) | 0% → 100% | -10d → -6d |  |
| F.1000A.1525 | DH 1400/Gallery 1403 // BMS & EPMS Rough-In | 2026-11-09 → 2026-10-01 A (-39d) | 2026-11-10 → 2026-10-02 A (-39d) | 0% → 100% | 68d → none | F.1000A.1291 FF, F.1000A.1291 SS → DH.14001040 SS |
| DH.14001070 | DH 1400/Gallery 1403 // MEP rough in walls | 2026-10-08 → 2026-10-05 A (-3d) | 2026-10-14 → 2026-10-19 (+5d) |  | -10d → -8d | DH.14001040, DH.14001040 FF → DH.14001040 FF+2d |
| DH.14001000 | DH 1400/Gallery 1403 // Seal concrete | 2026-09-30 → 2026-10-14 (+14d) | 2026-10-01 → 2026-10-15 (+14d) |  | 56d → 47d |  |
| DH.14001010 | DH 1400/Gallery 1403 // MEPF overhead layout | 2026-10-02 → 2026-10-16 (+14d) | 2026-10-08 → 2026-10-22 (+14d) |  | 56d → 47d |  |
| DH.14001080 | DH 1400/Gallery 1403 // In wall inspection | 2026-10-15 → 2026-10-20 (+5d) | 2026-10-15 → 2026-10-20 (+5d) |  | -10d → -8d |  |
| DH.14001050 | DH 1400/Gallery 1403 // Install Sheetrock Top Down | 2026-10-16 → 2026-10-21 (+5d) | 2026-10-23 → 2026-10-28 (+5d) |  | -10d → -8d |  |
| B120001.3171 | DH 1400/Gallery 1403 // Install Overhead Cable Ladder / 36" Cable Tray - TFO | 2026-10-09 → 2026-10-23 (+14d) | 2026-10-16 → 2026-10-29 (+13d) |  | 56d → 47d |  |
| DH.14001090 | DH 1400/Gallery 1403 // Install Balance of Sheetrock on walls | 2026-10-26 → 2026-10-29 (+3d) | 2026-11-02 → 2026-11-05 (+3d) |  | -10d → -8d |  |
| B120001.3172 | DH 1400/Gallery 1403 // Install Overhead HAC - TFO | 2026-10-19 → 2026-10-30 (+11d) | 2026-10-23 → 2026-11-05 (+13d) |  | 56d → 47d |  |
| DH.14001030 | DH 1400/Gallery 1403 // MEPF high overhead install | 2026-10-26 → 2026-11-06 (+11d) | 2026-11-06 → 2026-11-20 (+14d) |  | 56d → 47d |  |
| DH.14001100 | DH 1400/Gallery 1403 // Tape and finish walls | 2026-11-03 → 2026-11-06 (+3d) | 2026-11-13 → 2026-11-18 (+5d) |  | -10d → -8d |  |
| DH.14001060 | DH 1400/Gallery 1403 // Install wall door frames | 2026-11-16 → 2026-11-19 (+3d) | 2026-11-17 → 2026-11-20 (+3d) |  | -8d → 52d |  |
| DH.14001110 | DH 1400/Gallery 1403 // Prime and Paint walls | 2026-11-16 → 2026-11-19 (+3d) | 2026-11-19 → 2026-11-24 (+5d) |  | -10d → -8d |  |
| F.1000A.1291 | DH 1400/Gallery 1403 // Rough-In Security | 2026-11-09 → 2026-11-23 (+14d) | 2026-11-10 → 2026-11-24 (+14d) |  | 56d → 47d |  |
| DH.160012152 | DH 1400/Gallery 1403 // Ready to Receive Equipment | 2026-11-27 → 2026-11-24 (-3d) | 2026-11-27 → 2026-11-24 (-3d) |  | -10d → -8d | DH.14001130 FF → DH.14001110 |
| DH.14001120 | DH 1400/Gallery 1403 // Touch up Walls and Fianl Paint | 2026-11-20 → 2026-11-25 (+5d) | 2026-11-27 → 2026-12-02 (+5d) |  | -10d → 52d |  |
| F.1000A.1292 | DH 1400/Gallery 1403 // Pull & Test Security Cable | 2026-11-12 → 2026-11-25 (+13d) | 2026-11-16 → 2026-11-30 (+14d) |  | 56d → 47d |  |
| DH.14001130 | DH 1400/Gallery 1403 // Install Trim and Devices | 2026-11-25 → 2026-12-01 (+6d) | 2026-11-27 → 2026-12-02 (+5d) |  | -10d → 52d |  |
| F.1000A.1293 | DH 1400/Gallery 1403 // Install Security Devices | 2026-11-18 → 2026-12-01 (+13d) | 2026-11-19 → 2026-12-02 (+13d) |  | 55d → 47d |  |
| F.1000A.1294 | DH 1400/Gallery 1403 // Mount & Terminate Security Devices | 2026-11-20 → 2026-12-03 (+13d) | 2026-11-27 → 2026-12-09 (+12d) |  | 55d → 47d |  |
| F.1000A.1295 | DH 1400/Gallery 1403 // Test Security Devices | 2026-11-30 → 2026-12-10 (+10d) | 2026-12-01 → 2026-12-11 (+10d) |  | 55d → 47d |  |
| DH.14001140 | DH 1400/Gallery 1403 // Suffolk Pre Punch | 2026-12-02 → 2026-12-14 (+12d) | 2026-12-08 → 2026-12-18 (+10d) |  | 55d → 47d |  |
| 3 | **Equipment Line-Ups** | 2026-11-30 → 2026-11-25 (-5d) | 2027-01-15 → 2027-01-13 (-2d) |  |  |  |
| 1 | **A140** | 2026-11-30 → 2026-11-25 (-5d) | 2026-12-31 → 2026-12-29 (-2d) |  |  |  |
| DH.1400B-EQP-1 | Gallery 1403 - A140/Line-Ups // Set CRAH-DH1400- 23 | 2026-11-30 → 2026-11-25 (-5d) | 2026-11-30 → 2026-11-25 (-5d) |  | -10d → -8d |  |

| ID | Task | Start | Finish | Total float | Predecessors |
| --- | --- | --- | --- | --- | --- |
| DH.1400B-EQP-4 | Gallery 1403 - A140/Line-Ups // Set CRAH-DH1400- 24 | 2026-11-30 → 2026-11-25 (-5d) | 2026-11-30 → 2026-11-25 (-5d) | -10d → -8d |  |
| DH.1400B-EQP-10 | Gallery 1403 - A140/Line-Ups // Mount Electrial Gear for Chiller Controls | 2026-12-01 → 2026-11-27 (-4d) | 2026-12-14 → 2026-12-10 (-4d) | 41d → 43d | Gallery 1403 - A140/Line-Ups // Set MOD A140-02 (Does No apply) → DH.1400B-EQP-4 |
| DH.1400B-EQP-14 | Gallery 1403 - A140/Line-Ups // Terminate Electrical Connections - CRAHU | 2026-12-04 → 2026-11-27 (-7d) | 2026-12-08 → 2026-12-01 (-7d) | 53d → 58d | Gallery 1403 - A140/Line-Ups // Pull Cable Tray Feed from MOD to CRAHU's → DH.1400B-EQP-1 |
| DH.1400B-EQP-199 | Gallery 1403 - A140/Line-Ups // Set CDU-DH1400-23 | 2026-12-01 → 2026-11-27 (-4d) | 2026-12-01 → 2026-11-27 (-4d) | 55d → 46d | Gallery 1403 - A140/Line-Ups // Set MOD A140-02 (Does No apply) → DH.1400B-EQP-4 |
| DH.1400B-EQP-200 | Gallery 1403 - A140/Line-Ups // Set CDU-DH1400-24 | 2026-12-02 → 2026-11-27 (-5d) | 2026-12-02 → 2026-11-27 (-5d) | 55d → 46d | DH.1400B-EQP-199 → DH.1400B-EQP-4 |
| DH.1400B-EQP-3 | Gallery 1403 - A140/Line-Ups // Condensate connections to Floor Drains | 2026-12-01 → 2026-11-27 (-4d) | 2026-12-14 → 2026-12-10 (-4d) | 43d → 45d |  |
| DH.1400B-EQP-15 | Gallery 1403 - A140/Line-Ups // Pull Feeder and Branch circuits to MIsc equipment and Chiller controls | 2026-12-07 → 2026-12-03 (-4d) | 2026-12-18 → 2026-12-16 (-2d) | 41d → 43d | DH.1400B-EQP-10 SS+4d → DH.1400B-EQP-200, DH.1400B-EQP-199, DH.1400B-EQP-10 SS+4d |
| DH.1400B-EQP-9 | Gallery 1403 - A140/Line-Ups // Mechanical Connections to CRAHU Units | 2026-12-07 → 2026-12-03 (-4d) | 2026-12-11 → 2026-12-09 (-2d) | 39d → 41d |  |
| DH.1400B-EQP-17 | Gallery 1403 - A140/Line-Ups // Teminate all Misc Equipment and Chiller Controls | 2026-12-11 → 2026-12-09 (-2d) | 2026-12-24 → 2026-12-22 (-2d) | 41d → 43d |  |
| DH.1400B-EQP-12 | Gallery 1403 - A140/Line-Ups // Condensate connections to Floor Drains | 2026-12-14 → 2026-12-10 (-4d) | 2026-12-28 → 2026-12-23 (-5d) | 39d → 41d |  |
| DH.1400B-EQP-18 | Gallery 1403 - A140/Line-Ups // Electrical Gear FOD Inspection Pre-Start Up | 2026-12-28 → 2026-12-23 (-5d) | 2026-12-29 → 2026-12-24 (-5d) | 41d → 43d | Gallery 1403 - A140/Line-Ups // Terminate MOD Panels, DH.1400B-EQP-17, DH.1400B-EQP-14 → DH.1400B-EQP-14, DH.1400B-EQP-17 |
| DH.1400B-EQP-16 | Gallery 1403 - A140/Line-Ups // Mechanical Gear FOD Inspection Pre-Start Up | 2026-12-29 → 2026-12-24 (-5d) | 2026-12-31 → 2026-12-29 (-2d) | 39d → 41d |  |
| 2 | **B140** | 2026-11-30 → 2026-11-25 (-5d) | 2027-01-08 → 2027-01-06 (-2d) |  |  |
| DH.1400B-EQP-19 | Gallery 1403 - B140/Line-Ups // Set CRAH-DH1400- 25 | 2026-11-30 → 2026-11-25 (-5d) | 2026-11-30 → 2026-11-25 (-5d) | -10d → -8d |  |
| DH.1400B-EQP-22 | Gallery 1403 - B140/Line-Ups // Set CRAH-DH1400- 26 | 2026-11-30 → 2026-11-25 (-5d) | 2026-11-30 → 2026-11-25 (-5d) | -10d → -8d |  |
| DH.1400B-EQP-201 | Gallery 1403 - B140/Line-Ups // Set CDU-DH1400-25 | 2026-12-01 → 2026-11-27 (-4d) | 2026-12-01 → 2026-11-27 (-4d) | 55d → 46d | Gallery 1403 - B140/Line-Ups // Set MOD B140-02 (Does No apply) → DH.1400B-EQP-22 |
| DH.1400B-EQP-202 | Gallery 1403 - B140/Line-Ups // Set CDU-DH1400-26 | 2026-12-02 → 2026-11-27 (-5d) | 2026-12-02 → 2026-11-27 (-5d) | 55d → 46d | DH.1400B-EQP-201, DH.1400B-EQP-201 FF → DH.1400B-EQP-22 |
| DH.1400B-EQP-28 | Gallery 1403 - B140/Line-Ups // Mount Electrial Gear for Chiller Controls | 2026-12-01 → 2026-11-27 (-4d) | 2026-12-14 → 2026-12-10 (-4d) | 41d → 43d | Gallery 1403 - B140/Line-Ups // Set MOD B140-02 (Does No apply) → DH.1400B-EQP-22 |
| DH.1400B-EQP-32 | Gallery 1403 - B140/Line-Ups // Terminate CRAHU Electrical Connections | 2026-12-10 → 2026-11-27 (-13d) | 2026-12-16 → 2026-12-03 (-13d) | 47d → 56d | Gallery 1403 - B140/Line-Ups // Pull Cable Tray Feed from MOD to CRAHU's, Gallery 1403 - B140/Line-Ups // Pull Cable Tray Feed from MOD to CRAHU's SS+2d → DH.1400B-EQP-19 |
| DH.1400B-EQP-20 | Gallery 1403 - B140/Line-Ups // Connect CRAH units | 2026-12-07 → 2026-12-03 (-4d) | 2026-12-18 → 2026-12-16 (-2d) | 34d → 36d |  |
| DH.1400B-EQP-27 | Gallery 1403 - B140/Line-Ups // Mechanical Connections to CRAHU Units | 2026-12-07 → 2026-12-03 (-4d) | 2026-12-18 → 2026-12-16 (-2d) | 39d → 41d |  |
| DH.1400B-EQP-33 | Gallery 1403 - B140/Line-Ups // Pull Feeder and Branch circuits to MIsc equipment and Chiller controls | 2026-12-07 → 2026-12-03 (-4d) | 2026-12-18 → 2026-12-16 (-2d) | 41d → 43d | DH.1400B-EQP-28 SS+4d → DH.1400B-EQP-201, DH.1400B-EQP-202, DH.1400B-EQP-28 SS+4d |
| DH.1400B-EQP-35 | Gallery 1403 - B140/Line-Ups // Teminate all Misc Equipment and Chiller Controls | 2026-12-11 → 2026-12-09 (-2d) | 2026-12-24 → 2026-12-22 (-2d) | 41d → 43d |  |
| DH.1400B-EQP-21 | Gallery 1403 - B140/Line-Ups // Condensate connections to Floor Drains | 2026-12-14 → 2026-12-10 (-4d) | 2026-12-28 → 2026-12-23 (-5d) | 34d → 36d |  |
| DH.1400B-EQP-30 | Gallery 1403 - B140/Line-Ups // Condensate connections to Floor Drains | 2026-12-21 → 2026-12-17 (-4d) | 2027-01-05 → 2026-12-31 (-5d) | 34d → 36d |  |
| DH.1400B-EQP-36 | Gallery 1403 - B140/Line-Ups // Electrical Gear FOD Inspection Pre-Start Up | 2026-12-28 → 2026-12-23 (-5d) | 2026-12-29 → 2026-12-24 (-5d) | 41d → 43d | Gallery 1403 - B140/Line-Ups // Terminat Mod Panels, DH.1400B-EQP-35, DH.1400B-EQP-32 → DH.1400B-EQP-32, DH.1400B-EQP-35 |
| DH.1400B-EQP-34 | Gallery 1403 - B140/Line-Ups // Mechanical Gear FOD Inspection Pre-Start Up | 2027-01-06 → 2027-01-04 (-2d) | 2027-01-08 → 2027-01-06 (-2d) | 34d → 36d |  |
| 3 | **C140** | 2026-11-30 → 2026-11-25 (-5d) | 2027-01-08 → 2027-01-06 (-2d) |  |  |
| DH.1400B-EQP-37 | Gallery 1403 - C140/Line-Ups // Set CRAH-DH1400- 27 | 2026-11-30 → 2026-11-25 (-5d) | 2026-11-30 → 2026-11-25 (-5d) | -10d → -8d |  |
| DH.1400B-EQP-40 | Gallery 1403 - C140/Line-Ups // Set CRAH-DH1400- 28 | 2026-11-30 → 2026-11-25 (-5d) | 2026-11-30 → 2026-11-25 (-5d) | -10d → -8d |  |
| DH.1400B-EQP-203 | Gallery 1403 - C140/Line-Ups // Set CDU-DH1400-27 | 2026-12-01 → 2026-11-27 (-4d) | 2026-12-01 → 2026-11-27 (-4d) | 55d → 46d | Gallery 1403 - C140/Line-Ups // Set MOD C140-02 (Does No apply) → DH.1400B-EQP-40 |
| DH.1400B-EQP-204 | Gallery 1403 - C140/Line-Ups // Set CDU-DH1400-28 | 2026-12-02 → 2026-11-27 (-5d) | 2026-12-02 → 2026-11-27 (-5d) | 55d → 46d | DH.1400B-EQP-203, DH.1400B-EQP-203 FF → DH.1400B-EQP-40 |
| DH.1400B-EQP-46 | Gallery 1403 - C140/Line-Ups // Mount Electrial Gear for Chiller Controls | 2026-12-01 → 2026-11-27 (-4d) | 2026-12-14 → 2026-12-10 (-4d) | 41d → 43d | Gallery 1403 - C140/Line-Ups // Set MOD C140-02 (Does No apply) → DH.1400B-EQP-40 |
| DH.1400B-EQP-50 | Gallery 1403 - C140/Line-Ups // Terminate CRAHU Electrical Connections | 2026-12-10 → 2026-11-27 (-13d) | 2026-12-16 → 2026-12-03 (-13d) | 47d → 56d | Gallery 1403 - C140/Line-Ups // Pull Cable Tray Feed from MOD to CRAHU's, Gallery 1403 - C140/Line-Ups // Pull Cable Tray Feed from MOD to CRAHU's SS+2d → DH.1400B-EQP-37 |
| DH.1400B-EQP-38 | Gallery 1403 - C140/Line-Ups // Connect CRAH units | 2026-12-07 → 2026-12-03 (-4d) | 2026-12-18 → 2026-12-16 (-2d) | 34d → 36d |  |
| DH.1400B-EQP-45 | Gallery 1403 - C140/Line-Ups // Mechanical Connections to CRAHU Units | 2026-12-07 → 2026-12-03 (-4d) | 2026-12-18 → 2026-12-16 (-2d) | 39d → 41d |  |
| DH.1400B-EQP-51 | Gallery 1403 - C140/Line-Ups // Pull Feeder and Branch circuits to MIsc equipment and Chiller controls | 2026-12-07 → 2026-12-03 (-4d) | 2026-12-18 → 2026-12-16 (-2d) | 41d → 43d | DH.1400B-EQP-46 SS+4d → DH.1400B-EQP-203, DH.1400B-EQP-204, DH.1400B-EQP-46 SS+4d |
| DH.1400B-EQP-53 | Gallery 1403 - C140/Line-Ups // Teminate all Misc Equipment and Chiller Controls | 2026-12-11 → 2026-12-09 (-2d) | 2026-12-24 → 2026-12-22 (-2d) | 41d → 43d |  |
| DH.1400B-EQP-39 | Gallery 1403 - C140/Line-Ups // Condensate connections to Floor Drains | 2026-12-14 → 2026-12-10 (-4d) | 2026-12-28 → 2026-12-23 (-5d) | 34d → 36d |  |
| DH.1400B-EQP-48 | Gallery 1403 - C140/Line-Ups // Condensate connections to Floor Drains | 2026-12-21 → 2026-12-17 (-4d) | 2027-01-05 → 2026-12-31 (-5d) | 34d → 36d |  |
| DH.1400B-EQP-54 | Gallery 1403 - C140/Line-Ups // Electrical Gear FOD Inspection Pre-Start Up | 2026-12-28 → 2026-12-23 (-5d) | 2026-12-29 → 2026-12-24 (-5d) | 41d → 43d | Gallery 1403 - C140/Line-Ups // Terminat Mod Panels, DH.1400B-EQP-53, DH.1400B-EQP-50 → DH.1400B-EQP-50, DH.1400B-EQP-53 |
| DH.1400B-EQP-52 | Gallery 1403 - C140/Line-Ups // Mechanical Gear FOD Inspection Pre-Start Up | 2027-01-06 → 2027-01-04 (-2d) | 2027-01-08 → 2027-01-06 (-2d) | 34d → 36d |  |
| 4 | **D140** | 2026-12-01 → 2026-11-27 (-4d) | 2027-01-11 → 2027-01-07 (-4d) |  |  |
| DH.1400B-EQP-55 | Gallery 1403 - D140/Line-Ups // Set CRAH-DH1400- 29 | 2026-12-01 → 2026-11-27 (-4d) | 2026-12-01 → 2026-11-27 (-4d) | -10d → -8d |  |
| DH.1400B-EQP-58 | Gallery 1403 - D140/Line-Ups // Set CRAH-DH1400-30 | 2026-12-01 → 2026-11-27 (-4d) | 2026-12-01 → 2026-11-27 (-4d) | -10d → -8d |  |
| DH.1400B-EQP-205 | Gallery 1403 - D140/Line-Ups // Set CDU-DH1400-29 | 2026-12-02 → 2026-11-30 (-2d) | 2026-12-02 → 2026-11-30 (-2d) | 54d → 45d | Gallery 1403 - D140/Line-Ups // Set MOD D140-02 (Does No apply) → DH.1400B-EQP-58 |
| DH.1400B-EQP-206 | Gallery 1403 - D140/Line-Ups // Set CDU-DH1400-30 | 2026-12-03 → 2026-11-30 (-3d) | 2026-12-03 → 2026-11-30 (-3d) | 54d → 45d | DH.1400B-EQP-205 → DH.1400B-EQP-58 |
| DH.1400B-EQP-64 | Gallery 1403 - D140/Line-Ups // Mount Electrial Gear for Chiller Controls | 2026-12-02 → 2026-11-30 (-2d) | 2026-12-15 → 2026-12-11 (-4d) | 40d → 42d | Gallery 1403 - D140/Line-Ups // Set MOD D140-02 (Does No apply) → DH.1400B-EQP-58 |
| DH.1400B-EQP-68 | Gallery 1403 - D140/Line-Ups // Terminate CRAHU Electrical Connections | 2026-12-11 → 2026-11-30 (-11d) | 2026-12-17 → 2026-12-04 (-13d) | 46d → 55d | Gallery 1403 - D140/Line-Ups // Pull Cable Tray Feed from MOD to CRAHU's, Gallery 1403 - D140/Line-Ups // Pull Cable Tray Feed from MOD to CRAHU's SS+2d → DH.1400B-EQP-55 |
| DH.1400B-EQP-56 | Gallery 1403 - D140/Line-Ups // Connect CRAH units | 2026-12-08 → 2026-12-04 (-4d) | 2026-12-21 → 2026-12-17 (-4d) | 33d → 35d |  |
| DH.1400B-EQP-63 | Gallery 1403 - D140/Line-Ups // Mechanical Connections to CRAHU Units | 2026-12-08 → 2026-12-04 (-4d) | 2026-12-21 → 2026-12-17 (-4d) | 38d → 40d |  |
| DH.1400B-EQP-69 | Gallery 1403 - D140/Line-Ups // Pull Feeder and Branch circuits to MIsc equipment and Chiller controls | 2026-12-08 → 2026-12-04 (-4d) | 2026-12-21 → 2026-12-17 (-4d) | 40d → 42d | DH.1400B-EQP-64 SS+4d → DH.1400B-EQP-205, DH.1400B-EQP-206, DH.1400B-EQP-64 SS+4d |
| DH.1400B-EQP-71 | Gallery 1403 - D140/Line-Ups // Teminate all Misc Equipment and Chiller Controls | 2026-12-14 → 2026-12-10 (-4d) | 2026-12-28 → 2026-12-23 (-5d) | 40d → 42d |  |
| DH.1400B-EQP-57 | Gallery 1403 - D140/Line-Ups // Condensate connections to Floor Drains | 2026-12-15 → 2026-12-11 (-4d) | 2026-12-29 → 2026-12-24 (-5d) | 33d → 35d |  |
| DH.1400B-EQP-66 | Gallery 1403 - D140/Line-Ups // Condensate connections to Floor Drains | 2026-12-22 → 2026-12-18 (-4d) | 2027-01-06 → 2027-01-04 (-2d) | 33d → 35d |  |
| DH.1400B-EQP-72 | Gallery 1403 - D140/Line-Ups // Electrical Gear FOD Inspection Pre-Start Up | 2026-12-29 → 2026-12-24 (-5d) | 2026-12-30 → 2026-12-28 (-2d) | 40d → 42d | Gallery 1403 - D140/Line-Ups // Terminat Mod Panels, DH.1400B-EQP-71, DH.1400B-EQP-68 → DH.1400B-EQP-68, DH.1400B-EQP-71 |
| DH.1400B-EQP-70 | Gallery 1403 - D140/Line-Ups // Mechanical Gear FOD Inspection Pre-Start Up | 2027-01-07 → 2027-01-05 (-2d) | 2027-01-11 → 2027-01-07 (-4d) | 33d → 35d |  |
| 5 | **E140** | 2026-12-01 → 2026-11-27 (-4d) | 2027-01-11 → 2027-01-07 (-4d) |  |  |
| DH.1400B-EQP-73 | Gallery 1403 - E140/Line-Ups // Set CRAH-DH1400- 31 | 2026-12-01 → 2026-11-27 (-4d) | 2026-12-01 → 2026-11-27 (-4d) | -10d → -8d |  |
| DH.1400B-EQP-76 | Gallery 1403 - E140/Line-Ups // Set CRAH-DH1400-32 | 2026-12-01 → 2026-11-27 (-4d) | 2026-12-01 → 2026-11-27 (-4d) | -10d → -8d |  |
| DH.1400B-EQP-207 | Gallery 1403 - E140/Line-Ups // Set CDU-DH1400-31 | 2026-12-02 → 2026-11-30 (-2d) | 2026-12-02 → 2026-11-30 (-2d) | 54d → 45d | Gallery 1403 - E140/Line-Ups // Set MOD E140-02 (Does No apply) → DH.1400B-EQP-76 |
| DH.1400B-EQP-208 | Gallery 1403 - E140/Line-Ups // Set CDU-DH1400-32 | 2026-12-03 → 2026-11-30 (-3d) | 2026-12-03 → 2026-11-30 (-3d) | 54d → 45d | DH.1400B-EQP-207 → DH.1400B-EQP-76 |
| DH.1400B-EQP-82 | Gallery 1403 - E140/Line-Ups // Mount Electrial Gear for Chiller Controls | 2026-12-02 → 2026-11-30 (-2d) | 2026-12-15 → 2026-12-11 (-4d) | 40d → 42d | Gallery 1403 - E140/Line-Ups // Set MOD E140-02 (Does No apply) → DH.1400B-EQP-76 |
| DH.1400B-EQP-86 | Gallery 1403 - E140/Line-Ups // Terminate CRAHU Electrical Connections | 2026-12-11 → 2026-11-30 (-11d) | 2026-12-17 → 2026-12-04 (-13d) | 46d → 55d | Gallery 1403 - E140/Line-Ups // Pull Cable Tray Feed from MOD to CRAHU's, Gallery 1403 - E140/Line-Ups // Pull Cable Tray Feed from MOD to CRAHU's SS+2d → DH.1400B-EQP-73 |
| DH.1400B-EQP-74 | Gallery 1403 - E140/Line-Ups // Connect CRAH units | 2026-12-08 → 2026-12-04 (-4d) | 2026-12-21 → 2026-12-17 (-4d) | 33d → 35d |  |
| DH.1400B-EQP-81 | Gallery 1403 - E140/Line-Ups // Mechanical Connections to CRAHU Units | 2026-12-08 → 2026-12-04 (-4d) | 2026-12-21 → 2026-12-17 (-4d) | 38d → 40d |  |
| DH.1400B-EQP-87 | Gallery 1403 - E140/Line-Ups // Pull Feeder and Branch circuits to MIsc equipment and Chiller controls | 2026-12-08 → 2026-12-04 (-4d) | 2026-12-21 → 2026-12-17 (-4d) | 40d → 42d | DH.1400B-EQP-82 SS+4d → DH.1400B-EQP-208, DH.1400B-EQP-207, DH.1400B-EQP-82 SS+4d |
| DH.1400B-EQP-89 | Gallery 1403 - E140/Line-Ups // Teminate all Misc Equipment and Chiller Controls | 2026-12-14 → 2026-12-10 (-4d) | 2026-12-28 → 2026-12-23 (-5d) | 40d → 42d |  |
| DH.1400B-EQP-75 | Gallery 1403 - E140/Line-Ups // Condensate connections to Floor Drains | 2026-12-15 → 2026-12-11 (-4d) | 2026-12-29 → 2026-12-24 (-5d) | 33d → 35d |  |
| DH.1400B-EQP-84 | Gallery 1403 - E140/Line-Ups // Condensate connections to Floor Drains | 2026-12-22 → 2026-12-18 (-4d) | 2027-01-06 → 2027-01-04 (-2d) | 33d → 35d |  |

| ID | Task | Start | Finish | Total float | Predecessors |
| --- | --- | --- | --- | --- | --- |
| DH.1400B-EQP-90 | Gallery 1403 - E140/Line-Ups // Electrical Gear FOD Inspection Pre-Start Up | 2026-12-29 → 2026-12-24 (-5d) | 2026-12-30 → 2026-12-28 (-2d) | 40d → 42d | Gallery 1403 - E140/Line-Ups // Terminat Mod Panels, DH.1400B-EQP-89, DH.1400B-EQP-86 → DH.1400B-EQP-86, DH.1400B-EQP-89 |
| DH.1400B-EQP-88 | Gallery 1403 - E140/Line-Ups // Mechanical Gear FOD Inspection Pre-Start Up | 2027-01-07 → 2027-01-05 (-2d) | 2027-01-11 → 2027-01-07 (-4d) | 33d → 35d |  |
| 6 | **F140** | 2026-12-01 → 2026-11-27 (-4d) | 2027-01-11 → 2027-01-07 (-4d) |  |  |
| DH.1400B-EQP-91 | Gallery 1403 - F140/Line-Ups // Set CRAH-DH1400-33 | 2026-12-01 → 2026-11-27 (-4d) | 2026-12-01 → 2026-11-27 (-4d) | -10d → -8d |  |
| DH.1400B-EQP-94 | Gallery 1403 - F140/Line-Ups // Set CRAH-DH1400-34 | 2026-12-01 → 2026-11-27 (-4d) | 2026-12-01 → 2026-11-27 (-4d) | -10d → -8d |  |
| DH.1400B-EQP-100 | Gallery 1403 - F140/Line-Ups // Mount Electrial Gear for Chiller Controls | 2026-12-02 → 2026-11-30 (-2d) | 2026-12-15 → 2026-12-11 (-4d) | 40d → 42d | Gallery 1403 - F140/Line-Ups // Set MOD F140-02 (Does No apply) → DH.1400B-EQP-94 |
| DH.1400B-EQP-104 | Gallery 1403 - F140/Line-Ups // Terminate CRAHU Electrical Connections | 2026-12-11 → 2026-11-30 (-11d) | 2026-12-17 → 2026-12-04 (-13d) | 46d → 55d | Gallery 1403 - F140/Line-Ups // Pull Cable Tray Feed from MOD to CRAHU's, Gallery 1403 - F140/Line-Ups // Pull Cable Tray Feed from MOD to CRAHU's SS+2d → DH.1400B-EQP-91 |
| DH.1400B-EQP-209 | Gallery 1403 - F140/Line-Ups // Set CDU-DH1400-33 | 2026-12-02 → 2026-11-30 (-2d) | 2026-12-02 → 2026-11-30 (-2d) | 54d → 45d | Gallery 1403 - F140/Line-Ups // Set MOD F140-02 (Does No apply) → DH.1400B-EQP-94 |
| DH.1400B-EQP-210 | Gallery 1403 - F140/Line-Ups // Set CDU-DH1400-34 | 2026-12-03 → 2026-11-30 (-3d) | 2026-12-03 → 2026-11-30 (-3d) | 54d → 45d | DH.1400B-EQP-209 → DH.1400B-EQP-94 |
| DH.1400B-EQP-105 | Gallery 1403 - F140/Line-Ups // Pull Feeder and Branch circuits to MIsc equipment and Chiller controls | 2026-12-08 → 2026-12-04 (-4d) | 2026-12-21 → 2026-12-17 (-4d) | 40d → 42d | DH.1400B-EQP-100 SS+4d → DH.1400B-EQP-209, DH.1400B-EQP-210, DH.1400B-EQP-100 SS+4d |
| DH.1400B-EQP-92 | Gallery 1403 - F140/Line-Ups // Connect CRAH units | 2026-12-08 → 2026-12-04 (-4d) | 2026-12-21 → 2026-12-17 (-4d) | 33d → 35d |  |
| DH.1400B-EQP-99 | Gallery 1403 - F140/Line-Ups // Mechanical Connections to CRAHU Units | 2026-12-08 → 2026-12-04 (-4d) | 2026-12-21 → 2026-12-17 (-4d) | 38d → 40d |  |
| DH.1400B-EQP-107 | Gallery 1403 - F140/Line-Ups // Teminate all Misc Equipment and Chiller Controls | 2026-12-14 → 2026-12-10 (-4d) | 2026-12-28 → 2026-12-23 (-5d) | 40d → 42d |  |
| DH.1400B-EQP-93 | Gallery 1403 - F140/Line-Ups // Condensate connections to Floor Drains | 2026-12-15 → 2026-12-11 (-4d) | 2026-12-29 → 2026-12-24 (-5d) | 33d → 35d |  |
| DH.1400B-EQP-102 | Gallery 1403 - F140/Line-Ups // Condensate connections to Floor Drains | 2026-12-22 → 2026-12-18 (-4d) | 2027-01-06 → 2027-01-04 (-2d) | 33d → 35d |  |
| DH.1400B-EQP-108 | Gallery 1403 - F140/Line-Ups // Electrical Gear FOD Inspection Pre-Start Up | 2026-12-29 → 2026-12-24 (-5d) | 2026-12-30 → 2026-12-28 (-2d) | 40d → 42d | Gallery 1403 - F140/Line-Ups // Terminat Mod Panels, DH.1400B-EQP-107, DH.1400B-EQP-104 → DH.1400B-EQP-104, DH.1400B-EQP-107 |
| DH.1400B-EQP-106 | Gallery 1403 - F140/Line-Ups // Mechanical Gear FOD Inspection Pre-Start Up | 2027-01-07 → 2027-01-05 (-2d) | 2027-01-11 → 2027-01-07 (-4d) | 33d → 35d |  |
| 7 | **G140** | 2026-12-02 → 2026-11-30 (-2d) | 2027-01-12 → 2027-01-08 (-4d) |  |  |
| DH.1400B-EQP-109 | Gallery 1403 - G140/Line-Ups // Set CRAH-DH1400-35 | 2026-12-02 → 2026-11-30 (-2d) | 2026-12-02 → 2026-11-30 (-2d) | -10d → -8d |  |
| DH.1400B-EQP-112 | Gallery 1403 - G140/Line-Ups // Set CRAH-DH1400-36 | 2026-12-03 → 2026-12-01 (-2d) | 2026-12-03 → 2026-12-01 (-2d) | -10d → -8d |  |
| DH.1400B-EQP-122 | Gallery 1403 - G140/Line-Ups // Terminate CRAHU Electrical Connections | 2026-12-15 → 2026-12-01 (-14d) | 2026-12-21 → 2026-12-07 (-14d) | 44d → 54d | Gallery 1403 - G140/Line-Ups // Pull Cable Tray Feed from MOD to CRAHU's, Gallery 1403 - G140/Line-Ups // Pull Cable Tray Feed from MOD to CRAHU's SS+2d → DH.1400B-EQP-109 |
| DH.1400B-EQP-118 | Gallery 1403 - G140/Line-Ups // Mount Electrial Gear for Chiller Controls | 2026-12-04 → 2026-12-02 (-2d) | 2026-12-17 → 2026-12-15 (-2d) | 38d → 40d | Gallery 1403 - G140/Line-Ups // Set MOD G140-02 (Does No apply) → DH.1400B-EQP-112 |
| DH.1400B-EQP-211 | Gallery 1403 - G140/Line-Ups // Set CDU-DH1400-35 | 2026-12-04 → 2026-12-02 (-2d) | 2026-12-04 → 2026-12-02 (-2d) | 52d → 43d | Gallery 1403 - G140/Line-Ups // Set MOD G140-02 (Does No apply) → DH.1400B-EQP-112 |
| DH.1400B-EQP-212 | Gallery 1403 - G140/Line-Ups // Set CDU-DH1400-36 | 2026-12-07 → 2026-12-02 (-5d) | 2026-12-07 → 2026-12-02 (-5d) | 52d → 43d | DH.1400B-EQP-211 → DH.1400B-EQP-112 |
| DH.1400B-EQP-110 | Gallery 1403 - G140/Line-Ups // Connect CRAH units | 2026-12-09 → 2026-12-07 (-2d) | 2026-12-22 → 2026-12-18 (-4d) | 32d → 34d |  |
| DH.1400B-EQP-117 | Gallery 1403 - G140/Line-Ups // Mechanical Connections to CRAHU Units | 2026-12-10 → 2026-12-08 (-2d) | 2026-12-23 → 2026-12-21 (-2d) | 36d → 38d |  |
| DH.1400B-EQP-123 | Gallery 1403 - G140/Line-Ups // Pull Feeder and Branch circuits to MIsc equipment and Chiller controls | 2026-12-10 → 2026-12-08 (-2d) | 2026-12-23 → 2026-12-21 (-2d) | 38d → 40d | DH.1400B-EQP-118 SS+4d → DH.1400B-EQP-211, DH.1400B-EQP-212, DH.1400B-EQP-118 SS+4d |
| DH.1400B-EQP-111 | Gallery 1403 - G140/Line-Ups // Condensate connections to Floor Drains | 2026-12-16 → 2026-12-14 (-2d) | 2026-12-30 → 2026-12-28 (-2d) | 32d → 34d |  |
| DH.1400B-EQP-125 | Gallery 1403 - G140/Line-Ups // Teminate all Misc Equipment and Chiller Controls | 2026-12-16 → 2026-12-14 (-2d) | 2026-12-30 → 2026-12-28 (-2d) | 38d → 40d |  |
| DH.1400B-EQP-120 | Gallery 1403 - G140/Line-Ups // Condensate connections to Floor Drains | 2026-12-23 → 2026-12-21 (-2d) | 2027-01-07 → 2027-01-05 (-2d) | 32d → 34d |  |
| DH.1400B-EQP-126 | Gallery 1403 - G140/Line-Ups // Electrical Gear FOD Inspection Pre-Start Up | 2026-12-31 → 2026-12-29 (-2d) | 2027-01-04 → 2026-12-30 (-5d) | 38d → 40d | Gallery 1403 - G140/Line-Ups // Terminat Mod Panels, DH.1400B-EQP-125, DH.1400B-EQP-122 → DH.1400B-EQP-122, DH.1400B-EQP-125 |
| DH.1400B-EQP-124 | Gallery 1403 - G140/Line-Ups // Mechanical Gear FOD Inspection Pre-Start Up | 2027-01-08 → 2027-01-06 (-2d) | 2027-01-12 → 2027-01-08 (-4d) | 32d → 34d |  |
| 8 | **H140** | 2026-12-04 → 2026-12-02 (-2d) | 2027-01-14 → 2027-01-12 (-2d) |  |  |
| DH.1400B-EQP-127 | Gallery 1403 - H140/Line-Ups // Set CRAH-DH1400-37 | 2026-12-04 → 2026-12-02 (-2d) | 2026-12-04 → 2026-12-02 (-2d) | -10d → -8d |  |
| DH.1400B-EQP-130 | Gallery 1403 - H140/Line-Ups // Set CRAH-DH1400-38 | 2026-12-04 → 2026-12-02 (-2d) | 2026-12-04 → 2026-12-02 (-2d) | -10d → -8d |  |
| DH.1400B-EQP-136 | Gallery 1403 - H140/Line-Ups // Mount Electrial Gear for Chiller Controls | 2026-12-07 → 2026-12-03 (-4d) | 2026-12-18 → 2026-12-16 (-2d) | 37d → 39d | Gallery 1403 - H140/Line-Ups // Set MOD H140-02 → DH.1400B-EQP-130 |
| DH.1400B-EQP-140 | Gallery 1403 - H140/Line-Ups // Terminate CRAHU Electrical Connections | 2026-12-16 → 2026-12-03 (-13d) | 2026-12-22 → 2026-12-09 (-13d) | 43d → 52d | Gallery 1403 - H140/Line-Ups // Pull Cable Tray Feed from MOD to CRAHU's, Gallery 1403 - H140/Line-Ups // Pull Cable Tray Feed from MOD to CRAHU's SS+2d → DH.1400B-EQP-127 |
| DH.1400B-EQP-213 | Gallery 1403 - H140/Line-Ups // Set CDU-DH1400-37 | 2026-12-07 → 2026-12-03 (-4d) | 2026-12-07 → 2026-12-03 (-4d) | 51d → 42d | Gallery 1403 - H140/Line-Ups // Set MOD H140-02 → DH.1400B-EQP-130 |
| DH.1400B-EQP-214 | Gallery 1403 - H140/Line-Ups // Set CDU-DH1400-38 | 2026-12-08 → 2026-12-03 (-5d) | 2026-12-08 → 2026-12-03 (-5d) | 51d → 42d | DH.1400B-EQP-213 → DH.1400B-EQP-130 |
| DH.1400B-EQP-128 | Gallery 1403 - H140/Line-Ups // Connect CRAH units | 2026-12-11 → 2026-12-09 (-2d) | 2026-12-24 → 2026-12-22 (-2d) | 30d → 32d |  |
| DH.1400B-EQP-135 | Gallery 1403 - H140/Line-Ups // Mechanical Connections to CRAHU Units | 2026-12-11 → 2026-12-09 (-2d) | 2026-12-24 → 2026-12-22 (-2d) | 35d → 37d |  |
| DH.1400B-EQP-141 | Gallery 1403 - H140/Line-Ups // Pull Feeder and Branch circuits to MIsc equipment and Chiller controls | 2026-12-11 → 2026-12-09 (-2d) | 2026-12-24 → 2026-12-22 (-2d) | 37d → 39d | DH.1400B-EQP-136 SS+4d → DH.1400B-EQP-214, DH.1400B-EQP-213, DH.1400B-EQP-136 SS+4d |
| DH.1400B-EQP-143 | Gallery 1403 - H140/Line-Ups // Teminate all Misc Equipment and Chiller Controls | 2026-12-17 → 2026-12-15 (-2d) | 2026-12-31 → 2026-12-29 (-2d) | 37d → 39d |  |
| DH.1400B-EQP-129 | Gallery 1403 - H140/Line-Ups // Condensate connections to Floor Drains | 2026-12-18 → 2026-12-16 (-2d) | 2027-01-04 → 2026-12-30 (-5d) | 30d → 32d |  |
| DH.1400B-EQP-138 | Gallery 1403 - H140/Line-Ups // Condensate connections to Floor Drains | 2026-12-28 → 2026-12-23 (-5d) | 2027-01-11 → 2027-01-07 (-4d) | 30d → 32d |  |
| DH.1400B-EQP-144 | Gallery 1403 - H140/Line-Ups // Electrical Gear FOD Inspection Pre-Start Up | 2027-01-04 → 2026-12-30 (-5d) | 2027-01-05 → 2026-12-31 (-5d) | 37d → 39d | Gallery 1403 - H140/Line-Ups // Terminat Mod Panels, DH.1400B-EQP-143, DH.1400B-EQP-140 → DH.1400B-EQP-140, DH.1400B-EQP-143 |
| DH.1400B-EQP-142 | Gallery 1403 - H140/Line-Ups // Mechanical Gear FOD Inspection Pre-Start Up | 2027-01-12 → 2027-01-08 (-4d) | 2027-01-14 → 2027-01-12 (-2d) | 30d → 32d |  |
| 9 | **J140** | 2026-12-07 → 2026-12-03 (-4d) | 2027-01-15 → 2027-01-13 (-2d) |  |  |
| DH.1400B-EQP-145 | Gallery 1403 - J140/Line-Ups // Set CRAH-DH1400-39 | 2026-12-07 → 2026-12-03 (-4d) | 2026-12-07 → 2026-12-03 (-4d) | -10d → -8d |  |
| DH.1400B-EQP-148 | Gallery 1403 - J140/Line-Ups // Set CRAH-DH1400-40 | 2026-12-07 → 2026-12-03 (-4d) | 2026-12-07 → 2026-12-03 (-4d) | -9d → -7d |  |
| DH.1400B-EQP-154 | Gallery 1403 - J140/Line-Ups // Mount Electrial Gear for Chiller Controls | 2026-12-08 → 2026-12-04 (-4d) | 2026-12-21 → 2026-12-17 (-4d) | 36d → 38d | Gallery 1403 - J140/Line-Ups // Set MOD J140-02 → DH.1400B-EQP-148 |
| DH.1400B-EQP-158 | Gallery 1403 - J140/Line-Ups // Terminate CRAHU Electrical Connections | 2026-12-17 → 2026-12-04 (-13d) | 2026-12-23 → 2026-12-10 (-13d) | 42d → 51d | Gallery 1403 - J140/Line-Ups // Pull Cable Tray Feed from MOD to CRAHU's, Gallery 1403 - J140/Line-Ups // Pull Cable Tray Feed from MOD to CRAHU's SS+2d → DH.1400B-EQP-145 |
| DH.1400B-EQP-215 | Gallery 1403 - J140/Line-Ups // Set CDU-DH1400-39 | 2026-12-08 → 2026-12-04 (-4d) | 2026-12-08 → 2026-12-04 (-4d) | 50d → 41d | Gallery 1403 - J140/Line-Ups // Set MOD J140-02 → DH.1400B-EQP-148 |
| DH.1400B-EQP-216 | Gallery 1403 - J140/Line-Ups // Set CDU-DH1400-40 | 2026-12-09 → 2026-12-04 (-5d) | 2026-12-09 → 2026-12-04 (-5d) | 50d → 41d | DH.1400B-EQP-215 → DH.1400B-EQP-148 |
| DH.1400B-EQP-146 | Gallery 1403 - J140/Line-Ups // Connect CRAH units | 2026-12-14 → 2026-12-10 (-4d) | 2026-12-28 → 2026-12-23 (-5d) | -10d → -8d |  |
| DH.1400B-EQP-153 | Gallery 1403 - J140/Line-Ups // Mechanical Connections to CRAHU Units | 2026-12-14 → 2026-12-10 (-4d) | 2026-12-28 → 2026-12-23 (-5d) | -5d → -3d |  |
| DH.1400B-EQP-159 | Gallery 1403 - J140/Line-Ups // Pull Feeder and Branch circuits to MIsc equipment and Chiller controls | 2026-12-14 → 2026-12-10 (-4d) | 2026-12-28 → 2026-12-23 (-5d) | 36d → 38d | DH.1400B-EQP-154 SS+4d → DH.1400B-EQP-216, DH.1400B-EQP-215, DH.1400B-EQP-154 SS+4d |
| DH.1400B-EQP-161 | Gallery 1403 - J140/Line-Ups // Teminate all Misc Equipment and Chiller Controls | 2026-12-18 → 2026-12-16 (-2d) | 2027-01-04 → 2026-12-30 (-5d) | 36d → 38d |  |
| DH.1400B-EQP-147 | Gallery 1403 - J140/Line-Ups // Condensate connections to Floor Drains | 2026-12-21 → 2026-12-17 (-4d) | 2027-01-05 → 2026-12-31 (-5d) | -10d → -8d |  |
| DH.1400B-EQP-156 | Gallery 1403 - J140/Line-Ups // Condensate connections to Floor Drains | 2026-12-29 → 2026-12-24 (-5d) | 2027-01-12 → 2027-01-08 (-4d) | -10d → -8d |  |
| DH.1400B-EQP-162 | Gallery 1403 - J140/Line-Ups // Electrical Gear FOD Inspection Pre-Start Up | 2027-01-05 → 2026-12-31 (-5d) | 2027-01-06 → 2027-01-04 (-2d) | 36d → 38d | Gallery 1403 - J140/Line-Ups // Terminat Mod Panels, DH.1400B-EQP-161, DH.1400B-EQP-158 → DH.1400B-EQP-158, DH.1400B-EQP-161 |
| DH.1400B-EQP-160 | Gallery 1403 - J140/Line-Ups // Mechanical Gear FOD Inspection Pre-Start Up | 2027-01-13 → 2027-01-11 (-2d) | 2027-01-15 → 2027-01-13 (-2d) | 29d → 31d |  |
| 10 | **K140** | 2026-12-08 → 2026-12-04 (-4d) | 2027-01-12 → 2027-01-07 (-5d) |  |  |
| DH.1400B-EQP-163 | Gallery 1403 - K140/Line-Ups // Set CRAH-DH1400-41 | 2026-12-08 → 2026-12-04 (-4d) | 2026-12-08 → 2026-12-04 (-4d) | -9d → -7d |  |
| DH.1400B-EQP-166 | Gallery 1403 - K140/Line-Ups // Set CRAH-DH1400-42 | 2026-12-08 → 2026-12-04 (-4d) | 2026-12-08 → 2026-12-04 (-4d) | -9d → -7d |  |
| DH.1400B-EQP-172 | Gallery 1403 - K140/Line-Ups // Mount Electrial Gear for Chiller Controls | 2026-12-09 → 2026-12-07 (-2d) | 2026-12-22 → 2026-12-18 (-4d) | 35d → 37d | Gallery 1403 - K140/Line-Ups // Set MOD K140-02 (Does No apply) → DH.1400B-EQP-166 |
| DH.1400B-EQP-176 | Gallery 1403 - K140/Line-Ups // Terminate CRAHU Electrical Connections | 2026-12-18 → 2026-12-07 (-11d) | 2026-12-24 → 2026-12-11 (-13d) | 41d → 50d | Gallery 1403 - K140/Line-Ups // Pull Cable Tray Feed from MOD to CRAHU's, Gallery 1403 - K140/Line-Ups // Pull Cable Tray Feed from MOD to CRAHU's SS+2d → DH.1400B-EQP-163 |
| DH.1400B-EQP-164 | Gallery 1403 - K140/Line-Ups // Connect CRAH units | 2026-12-15 → 2026-12-11 (-4d) | 2026-12-29 → 2026-12-24 (-5d) | 38d → 40d |  |
| DH.1400B-EQP-171 | Gallery 1403 - K140/Line-Ups // Mechanical Connections to CRAHU Units | 2026-12-15 → 2026-12-11 (-4d) | 2026-12-29 → 2026-12-24 (-5d) | 33d → 35d |  |
| DH.1400B-EQP-177 | Gallery 1403 - K140/Line-Ups // Pull Feeder and Branch circuits to MIsc equipment and Chiller controls | 2026-12-15 → 2026-12-11 (-4d) | 2026-12-29 → 2026-12-24 (-5d) | 35d → 37d |  |

| ID | Task | Start | Finish | Complete | Total float | Predecessors |
| --- | --- | --- | --- | --- | --- | --- |
| DH.1400B-EQP-179 | Gallery 1403 - K140/Line-Ups // Teminate all Misc Equipment and Chiller Controls | 2026-12-21 → 2026-12-17 (-4d) | 2027-01-05 → 2026-12-31 (-5d) |  | 35d → 37d |  |
| DH.1400B-EQP-174 | Gallery 1403 - K140/Line-Ups // Condensate connections to Floor Drains | 2026-12-23 → 2026-12-18 (-5d) | 2027-01-07 → 2027-01-04 (-3d) |  | 32d → 35d |  |
| DH.1400B-EQP-180 | Gallery 1403 - K140/Line-Ups // Electrical Gear FOD Inspection Pre-Start Up | 2027-01-06 → 2027-01-04 (-2d) | 2027-01-07 → 2027-01-05 (-2d) |  | 35d → 37d | Gallery 1403 - K140/Line-Ups // Terminat Mod Panels, DH.1400B-EQP-179, DH.1400B-EQP-176 → DH.1400B-EQP-176, DH.1400B-EQP-179 |
| DH.1400B-EQP-178 | Gallery 1403 - K140/Line-Ups // Mechanical Gear FOD Inspection Pre-Start Up | 2027-01-08 → 2027-01-05 (-3d) | 2027-01-12 → 2027-01-07 (-5d) |  | 32d → 35d |  |
| 11 | **R140** | 2026-12-08 → 2026-12-04 (-4d) | 2027-01-12 → 2027-01-07 (-5d) |  |  |  |
| DH.1400B-EQP-181 | Gallery 1403 - R140/Line-Ups // Set CRAH-DH1400-43 | 2026-12-08 → 2026-12-04 (-4d) | 2026-12-08 → 2026-12-04 (-4d) |  | -9d → -7d |  |
| DH.1400B-EQP-184 | Gallery 1403 - R140/Line-Ups // Set CRAH-DH1400-44 | 2026-12-08 → 2026-12-04 (-4d) | 2026-12-08 → 2026-12-04 (-4d) |  | -5d → -3d |  |
| DH.1400B-EQP-190 | Gallery 1403 - R140/Line-Ups // Mount Electrial Gear for Chiller Controls | 2026-12-09 → 2026-12-07 (-2d) | 2026-12-22 → 2026-12-18 (-4d) |  | -3d → -1d | Gallery 1403 - R140/Line-Ups // Set MOD R140-02 (Does No apply) → DH.1400B-EQP-184 |
| DH.1400B-EQP-194 | Gallery 1403 - R140/Line-Ups // Terminate CRAHU Electrical Connections | 2026-12-18 → 2026-12-07 (-11d) | 2026-12-24 → 2026-12-11 (-13d) |  | -1d → 8d | Gallery 1403 - R140/Line-Ups // Pull Cable Tray Feed from MOD to CRAHU's, Gallery 1403 - R140/Line-Ups // Pull Cable Tray Feed from MOD to CRAHU's SS+2d → DH.1400B-EQP-181 |
| DH.1400B-EQP-195 | Gallery 1403 - R140/Line-Ups // Pull Feeder and Branch circuits to MIsc equipment and Chiller controls | 2026-12-09 → 2026-12-07 (-2d) | 2026-12-22 → 2026-12-18 (-4d) |  | -3d → -1d |  |
| DH.1400B-EQP-197 | Gallery 1403 - R140/Line-Ups // Teminate all Misc Equipment and Chiller Controls | 2026-12-09 → 2026-12-07 (-2d) | 2026-12-22 → 2026-12-18 (-4d) |  | -3d → -1d |  |
| DH.1400B-EQP-182 | Gallery 1403 - R140/Line-Ups // Connect CRAH units | 2026-12-15 → 2026-12-11 (-4d) | 2026-12-29 → 2026-12-24 (-5d) |  | -9d → -7d |  |
| DH.1400B-EQP-189 | Gallery 1403 - R140/Line-Ups // Mechanical Connections to CRAHU Units | 2026-12-15 → 2026-12-11 (-4d) | 2026-12-29 → 2026-12-24 (-5d) |  | -4d → -2d |  |
| DH.1400B-EQP-183 | Gallery 1403 - R140/Line-Ups // Condensate connections to Floor Drains | 2026-12-23 → 2026-12-18 (-5d) | 2027-01-07 → 2027-01-04 (-3d) |  | -10d → -7d |  |
| DH.1400B-EQP-196 | Gallery 1403 - R140/Line-Ups // Mechanical Gear FOD Inspection Pre-Start Up | 2027-01-08 → 2027-01-05 (-3d) | 2027-01-12 → 2027-01-07 (-5d) |  | -10d → -7d |  |
| DH.1400B-EQP-198 | Gallery 1403 - R140/Line-Ups // Electrical Gear FOD Inspection Pre-Start Up | 2026-12-31 → 2027-01-05 (+5d) | 2027-01-04 → 2027-01-06 (+2d) |  | -4d → -6d | Gallery 1403 - R140/Line-Ups // Terminat Mod Panels, DH.1400B-EQP-197, DH.1400B-EQP-194, DH.160012119 → DH.160012119, DH.1400B-EQP-194, DH.1400B-EQP-197 |
| 12 | **Equipment Connections** | 2026-12-10 → 2026-12-07 (-3d) | 2026-12-31 → 2026-12-29 (-2d) |  |  |  |
| 1 | **CRAH** | 2026-12-16 → 2026-12-07 (-9d) | 2026-12-28 → 2026-12-16 (-12d) |  |  |  |
| DH1400-004 | Gallery 1403 // DH 1400 / Elec Room // CRAH Duct Work Termination | 2026-12-16 → 2026-12-07 (-9d) | 2026-12-17 → 2026-12-08 (-9d) |  | 0d → 7d | Gallery 1403 - R140/Line-Ups // Pull Cable Tray Feed from MOD to CRAHU's → DH.1400B-EQP-184 |
| DH1400-003 | Gallery 1403 // DH 1400 / Elec Room // CRAH Chilled Water | 2026-12-18 → 2026-12-09 (-9d) | 2026-12-21 → 2026-12-10 (-11d) |  | 0d → 7d |  |
| DH1400-001 | Gallery 1403 // DH 1400 / Elec Room // CRAH Power Connections | 2026-12-22 → 2026-12-11 (-11d) | 2026-12-23 → 2026-12-14 (-9d) |  | 0d → 7d |  |
| DH1400-002 | Gallery 1403 // DH 1400 / Elec Room // CRAH LV Connections | 2026-12-24 → 2026-12-15 (-9d) | 2026-12-28 → 2026-12-16 (-12d) |  | 0d → 7d |  |
| 2 | **CDU** | 2026-12-23 → 2026-12-21 (-2d) | 2026-12-31 → 2026-12-29 (-2d) |  |  |  |
| DH1400-007 | Gallery 1403 // DH 1400 / Elec Room // CDU Chilled Water Connections | 2026-12-23 → 2026-12-21 (-2d) | 2026-12-24 → 2026-12-22 (-2d) |  | -3d → -1d |  |
| DH1400-005 | Gallery 1403 // DH 1400 /Elec Room // CDU Power Connections | 2026-12-28 → 2026-12-23 (-5d) | 2026-12-29 → 2026-12-24 (-5d) |  | -3d → -1d |  |
| DH1400-006 | Gallery 1403 // DH 1400 / Elec Room // CDU Controls Connections | 2026-12-30 → 2026-12-28 (-2d) | 2026-12-31 → 2026-12-29 (-2d) |  | -3d → -1d |  |
| 3 | **MOD** | 2026-12-10 → 2026-12-17 (+7d) | 2026-12-15 → 2026-12-22 (+7d) |  |  |  |
| DH1400-008 | Gallery 1403 // DH 1400 / Elec Room // MOD Power Connections | 2026-12-10 → 2026-12-17 (+7d) | 2026-12-11 → 2026-12-18 (+7d) |  | 8d → 3d | Gallery 1403 - R140/Line-Ups // Pull Feeder from SWD to MOD → DH.1400B-EQP-195 FF |
| DH1400-009 | Gallery 1403 // DH 1400 / Elec Room // MOD LV Connections | 2026-12-14 → 2026-12-21 (+7d) | 2026-12-15 → 2026-12-22 (+7d) |  | 8d → 3d |  |
| 6 | **Corridors** | 2026-10-06 → 2026-09-28 (-8d) | 2026-12-24 → 2026-12-02 (-22d) |  |  |  |
| 3 | **Corridor 1000** | 2026-10-06 → 2026-09-28 (-8d) | 2026-12-15 → 2026-12-02 (-13d) |  |  |  |
| DH.140012068 | DH 1400/Corridor 1000 // MEPF Overhead Hangers | 2026-10-07 → 2026-09-28 A (-9d) | 2026-10-14 → 2026-10-02 A (-12d) | 0% → 100% | 8d → none | DH.140012078 → DH.14006270 |
| DH.140012069 | DH 1400/Corridor 1000 // Frame walls | 2026-10-08 → 2026-09-30 A (-8d) | 2026-10-13 → 2026-10-16 (+3d) |  | 16d → 17d | DH.1400700 → DH.1400700 FF |
| DH.140012071 | DH 1400/Corridor 1000 // MEPF high overhead install | 2026-10-15 → 2026-10-05 A (-10d) | 2026-10-19 → 2026-10-16 (-3d) |  | 15d → 46d |  |
| DH.140012072 | DH 1400/Corridor 1000 // MEP rough in walls | 2026-10-29 → 2026-10-13 A (-16d) | 2026-11-02 → 2026-10-20 (-13d) |  | 8d → 17d | DH.140012071, DH.140012069, B120001.3176 → DH.140012069 FF+2d |
| B120001.3175 | DH 1400/Corridor 1000 // Install Overhead Cable Ladder / 36" Cable Tray - TFO | 2026-10-15 → 2026-10-14 (-1d) | 2026-10-21 → 2026-10-20 (-1d) |  | 8d → 39d |  |
| DH.140012078 | DH 1400/Corridor 1000 // Seal concrete | 2026-10-06 → 2026-10-20 (+14d) | 2026-10-06 → 2026-10-20 (+14d) |  | 1d → 45d |  |
| B120001.3176 | DH 1400/Corridor 1000 // Install Overhead HAC - TFO | 2026-10-22 → 2026-10-21 (-1d) | 2026-10-28 → 2026-10-27 (-1d) |  | 8d → 39d |  |
| DH.140012073 | DH 1400/Corridor 1000 // In wall inspection | 2026-11-03 → 2026-10-21 (-13d) | 2026-11-03 → 2026-10-21 (-13d) |  | 8d → 17d |  |
| DH.140012070 | DH 1400/Corridor 1000 // Install Top Down Sheetrock | 2026-11-04 → 2026-10-22 (-13d) | 2026-11-06 → 2026-10-26 (-11d) |  | 8d → 17d |  |
| DH.140012074 | DH 1400/Corridor 1000 // Install Balance of Sheetrock on Walls | 2026-11-09 → 2026-10-27 (-13d) | 2026-11-16 → 2026-11-02 (-14d) |  | 8d → 17d |  |
| DH.140012075 | DH 1400/Corridor 1000 // Tape and finish walls | 2026-11-17 → 2026-11-03 (-14d) | 2026-11-27 → 2026-11-13 (-14d) |  | 8d → 17d |  |
| DH.140012076 | DH 1400/Corridor 1000 // Install wall door frames | 2026-11-30 → 2026-11-16 (-14d) | 2026-12-02 → 2026-11-18 (-14d) |  | 8d → 17d |  |
| DH.140012077 | DH 1400/Corridor 1000 // Prime and Paint first coat walls | 2026-11-30 → 2026-11-16 (-14d) | 2026-12-02 → 2026-11-18 (-14d) |  | 8d → 17d |  |
| DH.140012079 | DH 1400/Corridor 1000 // Install lights and exit signs | 2026-12-03 → 2026-11-19 (-14d) | 2026-12-07 → 2026-11-23 (-14d) |  | 8d → 17d |  |
| DH.140012080 | DH 1400/Corridor 1000 // Final Coat Paint & Touchup Walls | 2026-12-08 → 2026-11-24 (-14d) | 2026-12-11 → 2026-11-30 (-11d) |  | 8d → 17d |  |
| DH.140012081 | DH 1400/Corridor 1000 // Install MEP Devices and Trim | 2026-12-14 → 2026-12-01 (-13d) | 2026-12-15 → 2026-12-02 (-13d) |  | 8d → 17d | DH.140012080 → B120001.3176, DH.140012071, DH.140012080 |
| DH.160012154 | DH 1400/Corridor 1000 // Ready to Receive Equipment | 2026-12-15 → 2026-12-02 (-13d) | 2026-12-15 → 2026-12-02 (-13d) |  | 8d → 17d | DH.140012081 FF → DH.140012081 FF, DH.140012078 |
| 2 | **Corridor 1000E** | 2026-10-07 → 2026-09-28 (-9d) | 2026-12-24 → 2026-12-02 (-22d) |  |  |  |
| DH.140012082 | DH 1400/Corridor 1000E // MEPF Overhead Hangers | 2026-10-28 → 2026-09-28 A (-30d) | 2026-11-03 → 2026-10-02 A (-32d) | 0% → 100% | 1d → none | DH.140012068, DH.140012092, B120001.3178 → DH.140012068 SS |
| DH.140012085 | DH 1400/Corridor 1000E // MEPF high overhead install | 2026-10-08 → 2026-10-05 A (-3d) | 2026-10-13 → 2026-10-16 (+3d) |  | 1d → 23d | DH.140012092 → DH.140012082 |
| DH.140012083 | DH 1400/Corridor 1000E // Frame walls | 2026-11-04 → 2026-10-09 A (-26d) | 2026-11-06 → 2026-10-16 (-21d) |  | 1d → 17d | DH.140012069, DH.140012082 → DH.140012069 FF |
| DH.140012086 | DH 1400/Corridor 1000E // MEP rough in walls | 2026-11-09 → 2026-10-12 A (-28d) | 2026-11-12 → 2026-10-20 (-23d) |  | 1d → 17d | DH.140012085, DH.140012083 → DH.140012083 FF+2d |
| B120001.3177 | DH 1400/Corridor 1000E // Install Overhead Cable Ladder / 36" Cable Tray - TFO | 2026-10-14 → 2026-10-19 (+5d) | 2026-10-20 → 2026-10-23 (+3d) |  | 1d → 43d |  |
| B120001.3178 | DH 1400/Corridor 1000E // Install Overhead HAC - TFO | 2026-10-21 → 2026-10-19 (-2d) | 2026-10-27 → 2026-10-23 (-4d) |  | 1d → 43d | B120001.3177 → B120001.3177 FF |
| DH.140012087 | DH 1400/Corridor 1000E // In wall inspection | 2026-11-13 → 2026-10-21 (-23d) | 2026-11-13 → 2026-10-21 (-23d) |  | 1d → 17d |  |
| DH.140012092 | DH 1400/Corridor 1000E // Seal concrete | 2026-10-07 → 2026-10-21 (+14d) | 2026-10-07 → 2026-10-21 (+14d) |  | 1d → 45d |  |
| DH.140012084 | DH 1400/Corridor 1000E // Install Top Down Sheetrock | 2026-11-16 → 2026-10-22 (-25d) | 2026-11-18 → 2026-10-26 (-23d) |  | 1d → 17d |  |
| DH.140012088 | DH 1400/Corridor 1000E // Install Balance of Sheetrock on Walls | 2026-11-19 → 2026-10-27 (-23d) | 2026-11-25 → 2026-11-02 (-23d) |  | 1d → 17d |  |
| DH.140012089 | DH 1400/Corridor 1000E // Tape and finish walls | 2026-11-27 → 2026-11-03 (-24d) | 2026-12-08 → 2026-11-13 (-25d) |  | 1d → 17d |  |
| DH.140012090 | DH 1400/Corridor 1000E // Install wall door frames | 2026-12-09 → 2026-11-16 (-23d) | 2026-12-11 → 2026-11-18 (-23d) |  | 1d → 17d |  |
| DH.140012091 | DH 1400/Corridor 1000E // Prime and Paint first coat walls | 2026-12-09 → 2026-11-16 (-23d) | 2026-12-11 → 2026-11-18 (-23d) |  | 1d → 17d |  |
| DH.140012093 | DH 1400/Corridor 1000E // Install lights and exit signs | 2026-12-14 → 2026-11-19 (-25d) | 2026-12-16 → 2026-11-23 (-23d) |  | 1d → 17d |  |
| DH.140012094 | DH 1400/Corridor 1000E // Final Coat Paint & Touchup Walls | 2026-12-17 → 2026-11-24 (-23d) | 2026-12-22 → 2026-11-30 (-22d) |  | 1d → 17d |  |
| DH.140012095 | DH 1400/Corridor 1000E // Install MEP Devices and Trim | 2026-12-23 → 2026-12-01 (-22d) | 2026-12-24 → 2026-12-02 (-22d) |  | 1d → 17d |  |
| DH.160012155 | DH 1400/Corridor 1000E // Ready to Receive Equipment | 2026-12-24 → 2026-12-02 (-22d) | 2026-12-24 → 2026-12-02 (-22d) |  | 1d → 17d | DH.140012095 FF → DH.140012095 FF, DH.140012092, B120001.3178 |
| 13 | **Restroom-Dock & Janitor** | 2026-10-09 → 2026-09-28 (-11d) | 2026-12-18 → 2026-11-27 (-21d) |  |  |  |
| DH.1400020 | DH 1400/Restroom-Dock & Janitor // RR-Doc-Jan Layout walls | 2026-10-19 → 2026-09-28 A (-21d) | 2026-10-23 → 2026-10-02 A (-21d) | 0% → 100% | 5d → none | DH.1400010 → DH.14006270 |
| DH.1400010 | DH 1400/Restroom-Dock & Janitor // RR-Doc-Jan MEPF overhead layout | 2026-10-09 → 2026-10-07 A (-2d) | 2026-10-16 → 2026-10-20 (+4d) |  | 5d → 21d | DH.14000.1010 → DH.14000.1010 SS+2d |
| DH.1400030 | DH 1400/Restroom-Dock & Janitor // RR-Doc-Jan Frame walls | 2026-10-26 → 2026-10-08 A (-18d) | 2026-10-30 → 2026-10-20 (-10d) |  | 5d → 20d |  |

| ID | Task | Start | Finish | Total float | Predecessors |
| --- | --- | --- | --- | --- | --- |
| DH.1400040 | DH 1400/Restroom-Dock & Janitor // RR-Doc-Jan Install wall door frames | 2026-10-27 → 2026-10-09 A (-18d) | 2026-10-29 → 2026-10-16 (-13d) | 8d → 36d |  |
| DH.1400080 | DH 1400/Restroom-Dock & Janitor // RR-Doc-Jan MEPF high overhead install | 2026-11-05 → 2026-10-09 A (-27d) | 2026-11-09 → 2026-10-16 (-24d) | 5d → 21d | DH.1400050 → DH.1400010 SS+2d |
| DH.1400060 | DH 1400/Restroom-Dock & Janitor // RR-Doc-Jan MEP rough in walls | 2026-10-30 → 2026-10-12 A (-18d) | 2026-11-03 → 2026-10-16 (-18d) | 8d → 20d | DH.1400040 → DH.1400030 SS+2d |
| DH.1400050 | DH 1400/Restroom-Dock & Janitor // RR-Doc-Jan Install Top Down Sheetrock | 2026-10-29 → 2026-10-14 (-15d) | 2026-11-04 → 2026-10-20 (-15d) | 5d → 24d |  |
| DH.1400070 | DH 1400/Restroom-Dock & Janitor // RR-Doc-Jan In wall inspection | 2026-11-04 → 2026-10-19 (-16d) | 2026-11-04 → 2026-10-19 (-16d) | 8d → 20d |  |
| DH.1400090 | DH 1400/Restroom-Dock & Janitor // RR-Doc-Jan Install Balance of Sheetrock on Walls | 2026-11-10 → 2026-10-20 (-21d) | 2026-11-17 → 2026-10-26 (-22d) | 5d → 20d |  |
| DH.1400100 | DH 1400/Restroom-Dock & Janitor // RR-Doc-Jan Tape and finish walls | 2026-11-18 → 2026-10-27 (-22d) | 2026-11-30 → 2026-11-05 (-25d) | 5d → 20d |  |
| DH.1400000 | DH 1400/Restroom-Dock & Janitor // RR-Doc-Jan Seal concrete | 2026-12-01 → 2026-11-06 (-25d) | 2026-12-07 → 2026-11-13 (-24d) | 5d → 20d |  |
| DH.1400110 | DH 1400/Restroom-Dock & Janitor // RR-Doc-Jan Prime and Paint first coat walls | 2026-12-01 → 2026-11-06 (-25d) | 2026-12-03 → 2026-11-10 (-23d) | 7d → 22d | DH.1400100 → DH.1400080, DH.1400040, DH.1400100 |
| DH.1400120 | DH 1400/Restroom-Dock & Janitor // RR-Doc-Jan Install lights and exit signs | 2026-12-08 → 2026-11-16 (-22d) | 2026-12-10 → 2026-11-18 (-22d) | 5d → 20d |  |
| DH.1400130 | DH 1400/Restroom-Dock & Janitor // RR-Doc-Jan Final Coat Paint & Touchup Walls | 2026-12-11 → 2026-11-19 (-22d) | 2026-12-16 → 2026-11-24 (-22d) | 5d → 20d |  |
| DH.1400140 | DH 1400/Restroom-Dock & Janitor // RR-Doc-Jan Install MEP Devices and Trim | 2026-12-17 → 2026-11-25 (-22d) | 2026-12-18 → 2026-11-27 (-21d) | 5d → 20d |  |
| 4 | **1400 Energization, Start-up & Commissioning** | 2027-01-13 → 2027-01-14 (+1d) | 2027-04-21 → 2027-04-22 (+1d) |  |  |
| 1 | **Energization & L3 Prefunctional Testing** | 2027-01-13 → 2027-01-14 (+1d) | 2027-03-16 → 2027-03-17 (+1d) |  |  |
| DH1400.L3CX.79 | DH1400 L3 Start | 2027-01-13 → 2027-01-14 (+1d) | 2027-01-13 → 2027-01-14 (+1d) | -10d → -11d |  |
| DH1400.L3CX.BMS.31 | DH1400 L3 PTPs & SOOs – BMS | 2027-01-13 → 2027-01-14 (+1d) | 2027-03-11 → 2027-03-12 (+1d) | -10d → -11d |  |
| DH1400.L3CX.ELEC.103 | DH1400 L3 FTEs | 2027-01-13 → 2027-01-14 (+1d) | 2027-01-20 → 2027-01-21 (+1d) | -10d → -11d |  |
| DH1400.L3CX.MECH.93 | DH1400 L3 Startup / Pre-Functional – MECHANICAL | 2027-01-19 → 2027-01-20 (+1d) | 2027-02-16 → 2027-02-17 (+1d) | -3d → -4d |  |
| DH1400.L3CX.ELEC.93 | DH1400 L3 Startup / Pre-Functional – ELECTRICAL | 2027-01-21 → 2027-01-22 (+1d) | 2027-02-10 → 2027-02-11 (+1d) | 2d → 1d |  |
| DH1400.L3CX.MECH.103 | DH1400 L3 TAB (Air, Water and Reports) – MECHANICAL | 2027-02-26 → 2027-03-01 (+3d) | 2027-03-11 → 2027-03-12 (+1d) | -10d → -11d |  |
| DH1400.L3CX.MECH.113 | DH1400 L3 FLS – MECHANICAL | 2027-03-02 → 2027-03-03 (+1d) | 2027-03-15 → 2027-03-16 (+1d) | -10d → -11d |  |
| DH1400.L3CX.69 | DH1400 L3 Cx Complete | 2027-03-16 → 2027-03-17 (+1d) | 2027-03-16 → 2027-03-17 (+1d) | -10d → -11d |  |
| 2 | **L4 Function Testing** | 2027-02-17 → 2027-02-18 (+1d) | 2027-03-23 → 2027-03-24 (+1d) |  |  |
| DH1400.L4CX.COMM.160 | DH1400 L4 Cx | 2027-02-17 → 2027-02-18 (+1d) | 2027-03-23 → 2027-03-24 (+1d) | 0d → -1d |  |
| 3 | **L5 Integrated System Testing (IST)** | 2027-03-04 → 2027-03-05 (+1d) | 2027-04-21 → 2027-04-22 (+1d) |  |  |
| DH1400.L5CX.COMM.260 | DH1400 L5 Integrated Systems Testing - IST | 2027-03-04 → 2027-03-05 (+1d) | 2027-03-31 → 2027-04-01 (+1d) | 0d → -1d |  |
| DH1400.A2110.CO | DH1400– Phase Closeout Period O&M / TRAINING/ CLOSEOUT DOCS | 2027-04-01 → 2027-04-02 (+1d) | 2027-04-21 → 2027-04-22 (+1d) | 13d → 29d |  |
| DH1400.L5CX.COMM.270 | DH1400 – IST / L5 Cx Complete | 2027-04-01 → 2027-04-02 (+1d) | 2027-04-01 → 2027-04-02 (+1d) | 0d → -1d |  |
| 4 | **Data Hall 1600** |  | 2027-06-22 → 2027-06-17 (-5d) |  |  |
| 10 | **Exterior Build Out** |  | 2027-02-16 → 2027-02-23 (+7d) |  |  |
| 9 | **Electrical Yard** | 2026-10-23 → 2026-10-30 (+7d) | 2027-02-16 → 2027-02-23 (+7d) |  |  |
| 3 | **Electrical** | 2026-10-23 → 2026-10-30 (+7d) | 2027-02-16 → 2027-02-23 (+7d) |  |  |
| 1 | **Underground** | 2026-10-23 → 2026-10-30 (+7d) | 2026-12-01 → 2026-12-08 (+7d) |  |  |
| 1 | **Column Line 6.0 - 6.9** | 2026-10-23 → 2026-10-30 (+7d) | 2026-12-01 → 2026-12-08 (+7d) |  |  |
| DH.1600 | DH1600/Electrical Yard-Underground // Excavate From MVG to Transformers | 2026-10-23 → 2026-10-30 (+7d) | 2026-11-05 → 2026-11-13 (+8d) | 9d → 4d |  |
| B1200382 | DH1600/Electrical Yard-Underground // Install Raceway from MVG to Transformers | 2026-11-06 → 2026-11-16 (+10d) | 2026-11-20 → 2026-11-30 (+10d) | 9d → 4d |  |
| B1200383 | DH1600/Electrical Yard-Underground // Backfill Raceways from MVG to Transformers | 2026-11-23 → 2026-12-01 (+8d) | 2026-12-01 → 2026-12-08 (+7d) | 9d → 4d |  |
| 2 | **Pads** | 2026-12-02 → 2026-12-09 (+7d) | 2027-01-13 → 2027-01-21 (+8d) |  |  |
| B1200397 | DH1600/Electrical Yard-Pads // Excavate / Form / Rebar /pour-Finish XFMR Pads | 2026-12-02 → 2026-12-09 (+7d) | 2026-12-15 → 2026-12-22 (+7d) | 9d → 4d |  |
| B1200398 | DH1600/Electrical Yard-Pads // Pad Strip and Cure Xfmr) | 2026-12-16 → 2026-12-23 (+7d) | 2026-12-28 → 2027-01-05 (+8d) | 9d → 4d |  |
| B1200399 | DH1600/Electrical Yard-Pads // Excavate / Form / Rebar /pour-Finish Pads | 2026-12-29 → 2027-01-06 (+8d) | 2027-01-06 → 2027-01-13 (+7d) | 9d → 4d |  |
| B1200400 | DH1600/Electrical Yard-Pads // Pad Strip and Cure XFMR Pads | 2027-01-07 → 2027-01-14 (+7d) | 2027-01-13 → 2027-01-21 (+8d) | 9d → 4d |  |
| 3 | **Equipment** | 2027-01-14 → 2027-01-22 (+8d) | 2027-02-16 → 2027-02-23 (+7d) |  |  |
| 1 | **A160** | 2027-01-14 → 2027-01-22 (+8d) | 2027-01-15 → 2027-01-25 (+10d) |  |  |
| DH.16001 | DH1600/Electrical Yard // Set XFMR - XFMR-A160a | 2027-01-14 → 2027-01-22 (+8d) | 2027-01-14 → 2027-01-22 (+8d) | 9d → 4d |  |
| DH.16002 | DH1600/Electrical Yard // Set XFMR - XFMR-A160p | 2027-01-15 → 2027-01-25 (+10d) | 2027-01-15 → 2027-01-25 (+10d) | 9d → 4d |  |
| 2 | **B160** | 2027-01-19 → 2027-01-26 (+7d) | 2027-01-20 → 2027-01-27 (+7d) |  |  |
| DH.16003 | DH1600/Electrical Yard // Set XFMR - XFMR-B160a | 2027-01-19 → 2027-01-26 (+7d) | 2027-01-19 → 2027-01-26 (+7d) | 9d → 4d |  |
| DH.16004 | DH1600/Electrical Yard // Set XFMR - XFMR-B160p | 2027-01-20 → 2027-01-27 (+7d) | 2027-01-20 → 2027-01-27 (+7d) | 9d → 4d |  |
| 3 | **C160** | 2027-01-21 → 2027-01-28 (+7d) | 2027-01-22 → 2027-01-29 (+7d) |  |  |
| DH.16005 | DH1600/Electrical Yard // Set XFMR - XFMR-C160a | 2027-01-21 → 2027-01-28 (+7d) | 2027-01-21 → 2027-01-28 (+7d) | 9d → 4d |  |
| DH.16006 | DH1600/Electrical Yard // Set XFMR - XFMR-C160p | 2027-01-22 → 2027-01-29 (+7d) | 2027-01-22 → 2027-01-29 (+7d) | 9d → 4d |  |
| 4 | **D160** | 2027-01-25 → 2027-02-01 (+7d) | 2027-01-26 → 2027-02-02 (+7d) |  |  |
| DH.16007 | DH1600/Electrical Yard // Set XFMR - XFMR-D160a | 2027-01-25 → 2027-02-01 (+7d) | 2027-01-25 → 2027-02-01 (+7d) | 9d → 4d |  |
| DH.16008 | DH1600/Electrical Yard // Set XFMR - XFMR-D160p | 2027-01-26 → 2027-02-02 (+7d) | 2027-01-26 → 2027-02-02 (+7d) | 9d → 4d |  |
| 5 | **E160** | 2027-01-27 → 2027-02-03 (+7d) | 2027-01-28 → 2027-02-04 (+7d) |  |  |
| DH.16009 | DH1600/Electrical Yard // Set XFMR - XFMR-E160a | 2027-01-27 → 2027-02-03 (+7d) | 2027-01-27 → 2027-02-03 (+7d) | 9d → 4d |  |
| DH.16000 | DH1600/Electrical Yard // Set XFMR - XFMR-E160p | 2027-01-28 → 2027-02-04 (+7d) | 2027-01-28 → 2027-02-04 (+7d) | 9d → 4d |  |
| 6 | **F160** | 2027-01-29 → 2027-02-05 (+7d) | 2027-02-01 → 2027-02-08 (+7d) |  |  |
| DH.160012132 | DH1600/Electrical Yard // Set XFMR - XFMR-F160a | 2027-01-29 → 2027-02-05 (+7d) | 2027-01-29 → 2027-02-05 (+7d) | 9d → 4d |  |
| DH.160012133 | DH1600/Electrical Yard // Set XFMR - XFMR-F160p | 2027-02-01 → 2027-02-08 (+7d) | 2027-02-01 → 2027-02-08 (+7d) | 9d → 4d |  |
| 7 | **G160** | 2027-02-02 → 2027-02-09 (+7d) | 2027-02-03 → 2027-02-10 (+7d) |  |  |
| DH.160012134 | DH1600/Electrical Yard // Set XFMR - XFMR-G160a | 2027-02-02 → 2027-02-09 (+7d) | 2027-02-02 → 2027-02-09 (+7d) | 9d → 4d |  |
| DH.160012135 | DH1600/Electrical Yard // Set XFMR - XFMR-G160p | 2027-02-03 → 2027-02-10 (+7d) | 2027-02-03 → 2027-02-10 (+7d) | 9d → 4d |  |
| 8 | **H160** | 2027-02-04 → 2027-02-11 (+7d) | 2027-02-05 → 2027-02-12 (+7d) |  |  |
| DH.160012136 | DH1600/Electrical Yard // Set XFMR - XFMR-H160a | 2027-02-04 → 2027-02-11 (+7d) | 2027-02-04 → 2027-02-11 (+7d) | 9d → 4d |  |
| DH.160012137 | DH1600/Electrical Yard // Set XFMR - XFMR-H160p | 2027-02-05 → 2027-02-12 (+7d) | 2027-02-05 → 2027-02-12 (+7d) | 9d → 4d |  |
| 9 | **J160** | 2027-02-08 → 2027-02-16 (+8d) | 2027-02-09 → 2027-02-17 (+8d) |  |  |
| DH.160012138 | DH1600/Electrical Yard // Set XFMR - XFMR-J160a | 2027-02-08 → 2027-02-16 (+8d) | 2027-02-08 → 2027-02-16 (+8d) | 9d → 4d |  |
| DH.160012139 | DH1600/Electrical Yard // Set XFMR - XFMR-J160p | 2027-02-09 → 2027-02-17 (+8d) | 2027-02-09 → 2027-02-17 (+8d) | 9d → 4d |  |

| ID | Task | Start | Finish | Total float | Predecessors |
| --- | --- | --- | --- | --- | --- |
| 10 | **K160** | 2027-02-10 → 2027-02-18 (+8d) | 2027-02-11 → 2027-02-19 (+8d) |  |  |
| DH.160012140 | DH1600/Electrical Yard // Set XFMR - XFMR-K160a | 2027-02-10 → 2027-02-18 (+8d) | 2027-02-10 → 2027-02-18 (+8d) | 9d → 4d |  |
| DH.160012141 | DH1600/Electrical Yard // Set XFMR - XFMR-K160p | 2027-02-11 → 2027-02-19 (+8d) | 2027-02-11 → 2027-02-19 (+8d) | 9d → 4d |  |
| 11 | **R160** | 2027-02-12 → 2027-02-22 (+10d) | 2027-02-16 → 2027-02-23 (+7d) |  |  |
| DH.160012142 | DH1600/Electrical Yard // Set XFMR - XFMR-R160a | 2027-02-12 → 2027-02-22 (+10d) | 2027-02-12 → 2027-02-22 (+10d) | 9d → 4d |  |
| DH.160012143 | DH1600/Electrical Yard // Set XFMR - XFMR-R160p | 2027-02-16 → 2027-02-23 (+7d) | 2027-02-16 → 2027-02-23 (+7d) | 9d → 4d |  |
| 1 | **Mechanical Yard** |  | 2026-12-02 → 2027-01-28 (+57d) |  |  |
| 5 | **Equipment** | 2026-09-30 → 2027-01-06 (+98d) | 2026-11-04 → 2027-01-28 (+85d) |  |  |
| 1 | **A160** | 2026-09-30 → 2027-01-06 (+98d) | 2026-10-06 → 2027-01-12 (+98d) |  |  |
| DH.160012001 | DH1600/Mechanical Yard-A160 // Set Chiller - CHLR-1CY40-A160 | 2026-09-30 → 2027-01-06 (+98d) | 2026-09-30 → 2027-01-06 (+98d) | 121d → 65d | A5838 SS, STRUCTURE.7020, FDN.1252, A5843 → A5920, A5843, FDN.1252, STRUCTURE.7020, A5838 SS |
| DH.160012002 | DH1600/Mechanical Yard-A160 // Set TES tank - TES-1CY40-A160 | 2026-10-01 → 2027-01-07 (+98d) | 2026-10-01 → 2027-01-07 (+98d) | 131d → 66d |  |
| DH.160012023 | DH1600/Mechanical Yard-A160 // Install CHWP | 2026-10-02 → 2027-01-08 (+98d) | 2026-10-02 → 2027-01-08 (+98d) | 131d → 66d |  |
| DH.160012024 | DH1600/Mechanical Yard-A160 // Install Mechanical Piping Mains (Building -to Line) | 2026-10-05 → 2027-01-11 (+98d) | 2026-10-05 → 2027-01-11 (+98d) | 131d → 66d |  |
| DH.160012025 | DH1600/Mechanical Yard-A160 // Install Mechanical Chiller to Mains | 2026-10-06 → 2027-01-12 (+98d) | 2026-10-06 → 2027-01-12 (+98d) | 131d → 66d |  |
| 2 | **B160** | 2026-10-01 → 2027-01-06 (+97d) | 2026-10-07 → 2027-01-12 (+97d) |  |  |
| DH.160012003 | DH1600/Mechanical Yard-B160 // Set Chiller - CHLR-1CY40-B160 | 2026-10-01 → 2027-01-06 (+97d) | 2026-10-01 → 2027-01-06 (+97d) | 121d → 65d | DH.160012001 → A5920, DH.160012001 SS |
| DH.160012004 | DH1600/Mechanical Yard-B160 // Set TES tank - TES-1CY40-B160 | 2026-10-02 → 2027-01-07 (+97d) | 2026-10-02 → 2027-01-07 (+97d) | 130d → 66d |  |
| DH.160012026 | DH1600/Mechanical Yard-B160 // Install CHWP | 2026-10-05 → 2027-01-08 (+95d) | 2026-10-05 → 2027-01-08 (+95d) | 130d → 66d |  |
| DH.160012027 | DH1600/Mechanical Yard-B160 // Install Mechanical Piping Mains (Building -to Line) | 2026-10-06 → 2027-01-11 (+97d) | 2026-10-06 → 2027-01-11 (+97d) | 130d → 66d |  |
| DH.160012028 | DH1600/Mechanical Yard-B160 // Install Mechanical Chiller to Mains | 2026-10-07 → 2027-01-12 (+97d) | 2026-10-07 → 2027-01-12 (+97d) | 130d → 66d |  |
| 3 | **C160** | 2026-10-02 → 2027-01-06 (+96d) | 2026-10-08 → 2027-01-12 (+96d) |  |  |
| DH.160012005 | DH1600/Mechanical Yard-C160 // Set Chiller - CHLR-1CY40-C160 | 2026-10-02 → 2027-01-06 (+96d) | 2026-10-02 → 2027-01-06 (+96d) | 121d → 65d | DH.160012003 → A5920, DH.160012003 SS |
| DH.160012006 | DH1600/Mechanical Yard-C160 // Set TES tank - TES-1CY40-C160 | 2026-10-05 → 2027-01-07 (+94d) | 2026-10-05 → 2027-01-07 (+94d) | 129d → 66d |  |
| DH.160012029 | DH1600/Mechanical Yard-C160 // Install CHWP | 2026-10-06 → 2027-01-08 (+94d) | 2026-10-06 → 2027-01-08 (+94d) | 129d → 66d |  |
| DH.160012030 | DH1600/Mechanical Yard-C160 // Install Mechanical Piping Mains (Building -to Line) | 2026-10-07 → 2027-01-11 (+96d) | 2026-10-07 → 2027-01-11 (+96d) | 129d → 66d |  |
| DH.160012031 | DH1600/Mechanical Yard-C160 // Install Mechanical Chiller to Mains | 2026-10-08 → 2027-01-12 (+96d) | 2026-10-08 → 2027-01-12 (+96d) | 129d → 66d |  |
| 4 | **D160** | 2026-10-05 → 2027-01-06 (+93d) | 2026-10-09 → 2027-01-12 (+95d) |  |  |
| DH.160012007 | DH1600/Mechanical Yard-D160 // Set Chiller - CHLR-1CY40-D160 | 2026-10-05 → 2027-01-06 (+93d) | 2026-10-05 → 2027-01-06 (+93d) | 121d → 65d | DH.160012005 → A5920, DH.160012005 SS |
| DH.160012008 | DH1600/Mechanical Yard-D160 // Set TES tank - TES-1CY40-D160 | 2026-10-06 → 2027-01-07 (+93d) | 2026-10-06 → 2027-01-07 (+93d) | 128d → 66d |  |
| DH.160012032 | DH1600/Mechanical Yard-D160 // Install CHWP | 2026-10-07 → 2027-01-08 (+93d) | 2026-10-07 → 2027-01-08 (+93d) | 128d → 66d |  |
| DH.160012033 | DH1600/Mechanical Yard-D160 // Install Mechanical Piping Mains (Building -to Line) | 2026-10-08 → 2027-01-11 (+95d) | 2026-10-08 → 2027-01-11 (+95d) | 128d → 66d |  |
| DH.160012034 | DH1600/Mechanical Yard-D160 // Install Mechanical Chiller to Mains | 2026-10-09 → 2027-01-12 (+95d) | 2026-10-09 → 2027-01-12 (+95d) | 128d → 66d |  |
| 5 | **E160** | 2026-10-06 → 2027-01-06 (+92d) | 2026-10-13 → 2027-01-12 (+91d) |  |  |
| DH.160012009 | DH1600/Mechanical Yard-E160 // Set Chiller - CHLR-1CY40-E160 | 2026-10-06 → 2027-01-06 (+92d) | 2026-10-06 → 2027-01-06 (+92d) | 121d → 65d | DH.160012007 → A5920, DH.160012007 SS |
| DH.160012010 | DH1600/Mechanical Yard-E160 // Set TES tank - TES-1CY40-E160 | 2026-10-07 → 2027-01-07 (+92d) | 2026-10-07 → 2027-01-07 (+92d) | 127d → 66d |  |
| DH.160012035 | DH1600/Mechanical Yard-E160 // Install CHWP | 2026-10-08 → 2027-01-08 (+92d) | 2026-10-08 → 2027-01-08 (+92d) | 127d → 66d |  |
| DH.160012036 | DH1600/Mechanical Yard-E160 // Install Mechanical Piping Mains (Building -to Line) | 2026-10-09 → 2027-01-11 (+94d) | 2026-10-09 → 2027-01-11 (+94d) | 127d → 66d |  |
| DH.160012037 | DH1600/Mechanical Yard-E160 // Install Mechanical Chiller to Mains | 2026-10-13 → 2027-01-12 (+91d) | 2026-10-13 → 2027-01-12 (+91d) | 127d → 66d |  |
| 6 | **F160** | 2026-10-07 → 2027-01-07 (+92d) | 2026-10-14 → 2027-01-13 (+91d) |  |  |
| DH.160012011 | DH1600/Mechanical Yard-F160 // Set Chiller - CHLR-1CY40-F160 | 2026-10-07 → 2027-01-07 (+92d) | 2026-10-07 → 2027-01-07 (+92d) | 121d → 65d |  |
| DH.160012012 | DH1600/Mechanical Yard-F160 // Set TES tank - TES-1CY40-F160 | 2026-10-08 → 2027-01-08 (+92d) | 2026-10-08 → 2027-01-08 (+92d) | 126d → 65d |  |
| DH.160012038 | DH1600/Mechanical Yard-F160 // Install CHWP | 2026-10-09 → 2027-01-11 (+94d) | 2026-10-09 → 2027-01-11 (+94d) | 126d → 65d |  |
| DH.160012039 | DH1600/Mechanical Yard-F160 // Install Mechanical Piping Mains (Building -to Line) | 2026-10-13 → 2027-01-12 (+91d) | 2026-10-13 → 2027-01-12 (+91d) | 126d → 65d |  |
| DH.160012040 | DH1600/Mechanical Yard-F160 // Install Mechanical Chiller to Mains | 2026-10-14 → 2027-01-13 (+91d) | 2026-10-14 → 2027-01-13 (+91d) | 126d → 65d |  |
| 7 | **G160** | 2026-10-08 → 2027-01-07 (+91d) | 2026-10-15 → 2027-01-13 (+90d) |  |  |
| DH.160012013 | DH1600/Mechanical Yard-G160 // Set Chiller - CHLR-1CY40-G160 | 2026-10-08 → 2027-01-07 (+91d) | 2026-10-08 → 2027-01-07 (+91d) | 121d → 65d | DH.160012011 → DH.160012011 SS |
| DH.160012014 | DH1600/Mechanical Yard-G160 // Set TES tank - TES-1CY40-G160 | 2026-10-09 → 2027-01-08 (+91d) | 2026-10-09 → 2027-01-08 (+91d) | 125d → 65d |  |
| DH.160012041 | DH1600/Mechanical Yard-G160 // Install CHWP | 2026-10-13 → 2027-01-11 (+90d) | 2026-10-13 → 2027-01-11 (+90d) | 125d → 65d |  |
| DH.160012042 | DH1600/Mechanical Yard-G160 // Install Mechanical Piping Mains (Building -to Line) | 2026-10-14 → 2027-01-12 (+90d) | 2026-10-14 → 2027-01-12 (+90d) | 125d → 65d |  |
| DH.160012043 | DH1600/Mechanical Yard-G160 // Install Mechanical Chiller to Mains | 2026-10-15 → 2027-01-13 (+90d) | 2026-10-15 → 2027-01-13 (+90d) | 125d → 65d |  |
| 8 | **H160** | 2026-10-09 → 2027-01-07 (+90d) | 2026-10-16 → 2027-01-13 (+89d) |  |  |
| DH.160012015 | DH1600/Mechanical Yard-H160 // Set Chiller - CHLR-1CY40-H160 | 2026-10-09 → 2027-01-07 (+90d) | 2026-10-09 → 2027-01-07 (+90d) | 121d → 65d | DH.160012013 → DH.160012013 SS |
| DH.160012016 | DH1600/Mechanical Yard-H160 // Set TES tank - TES-1CY40-H160 | 2026-10-13 → 2027-01-08 (+87d) | 2026-10-13 → 2027-01-08 (+87d) | 124d → 65d |  |
| DH.160012044 | DH1600/Mechanical Yard-H160 // Install CHWP | 2026-10-14 → 2027-01-11 (+89d) | 2026-10-14 → 2027-01-11 (+89d) | 124d → 65d |  |
| DH.160012045 | DH1600/Mechanical Yard-H160 // Install Mechanical Piping Mains (Building -to Line) | 2026-10-15 → 2027-01-12 (+89d) | 2026-10-15 → 2027-01-12 (+89d) | 124d → 65d |  |
| DH.160012046 | DH1600/Mechanical Yard-H160 // Install Mechanical Chiller to Mains | 2026-10-16 → 2027-01-13 (+89d) | 2026-10-16 → 2027-01-13 (+89d) | 124d → 65d |  |
| 9 | **J160** | 2026-10-13 → 2027-01-07 (+86d) | 2026-10-19 → 2027-01-13 (+86d) |  |  |
| DH.160012017 | DH1600/Mechanical Yard-J160 // Set Chiller - CHLR-1CY40-J160 | 2026-10-13 → 2027-01-07 (+86d) | 2026-10-13 → 2027-01-07 (+86d) | 121d → 65d | DH.160012015 → DH.160012015 SS |
| DH.160012018 | DH1600/Mechanical Yard-J160 // Set TES tank - TES-1CY40-J160 | 2026-10-14 → 2027-01-08 (+86d) | 2026-10-14 → 2027-01-08 (+86d) | 123d → 65d |  |
| DH.160012047 | DH1600/Mechanical Yard-J160 // Install CHWP | 2026-10-15 → 2027-01-11 (+88d) | 2026-10-15 → 2027-01-11 (+88d) | 123d → 65d |  |
| DH.160012048 | DH1600/Mechanical Yard-J160 // Install Mechanical Piping Mains (Building -to Line) | 2026-10-16 → 2027-01-12 (+88d) | 2026-10-16 → 2027-01-12 (+88d) | 123d → 65d |  |
| DH.160012049 | DH1600/Mechanical Yard-J160 // Install Mechanical Chiller to Mains | 2026-10-19 → 2027-01-13 (+86d) | 2026-10-19 → 2027-01-13 (+86d) | 123d → 65d |  |
| 10 | **K160** | 2026-10-14 → 2027-01-07 (+85d) | 2026-10-20 → 2027-01-13 (+85d) |  |  |
| DH.160012019 | DH1600/Mechanical Yard-K160 // Set Chiller - CHLR-1CY40-K160 | 2026-10-14 → 2027-01-07 (+85d) | 2026-10-14 → 2027-01-07 (+85d) | 121d → 65d | DH.160012017 → DH.160012017 SS |
| DH.160012020 | DH1600/Mechanical Yard-K160 // Set TES tank - TES-1CY40-K160 | 2026-10-15 → 2027-01-08 (+85d) | 2026-10-15 → 2027-01-08 (+85d) | 122d → 65d |  |
| DH.160012050 | DH1600/Mechanical Yard-K160 // Install CHWP | 2026-10-16 → 2027-01-11 (+87d) | 2026-10-16 → 2027-01-11 (+87d) | 122d → 65d |  |
| DH.160012051 | DH1600/Mechanical Yard-K160 // Install Mechanical Piping Mains (Building -to Line) | 2026-10-19 → 2027-01-12 (+85d) | 2026-10-19 → 2027-01-12 (+85d) | 122d → 65d |  |
| DH.160012052 | DH1600/Mechanical Yard-K160 // Install Mechanical Chiller to Mains | 2026-10-20 → 2027-01-13 (+85d) | 2026-10-20 → 2027-01-13 (+85d) | 122d → 65d |  |
| 11 | **R160** | 2026-10-15 → 2027-01-07 (+84d) | 2026-10-21 → 2027-01-13 (+84d) |  |  |
| DH.160012021 | DH1600/Mechanical Yard-R160 // Set Chiller - CHLR-1CY40-R160 | 2026-10-15 → 2027-01-07 (+84d) | 2026-10-15 → 2027-01-07 (+84d) | 121d → 65d | DH.160012019 → DH.160012019 SS |

| ID | Task | Start | Finish | Total float | Predecessors |
| --- | --- | --- | --- | --- | --- |
| DH.160012022 | DH1600/Mechanical Yard-R160 // Set TES tank - TES-1CY40-R160 | 2026-10-16 → 2027-01-08 (+84d) | 2026-10-16 → 2027-01-08 (+84d) | 121d → 65d |  |
| DH.160012053 | DH1600/Mechanical Yard-R160 // Install CHWP | 2026-10-19 → 2027-01-11 (+84d) | 2026-10-19 → 2027-01-11 (+84d) | 121d → 65d |  |
| DH.160012054 | DH1600/Mechanical Yard-R160 // Install Mechanical Piping Mains (Building -to Line) | 2026-10-20 → 2027-01-12 (+84d) | 2026-10-20 → 2027-01-12 (+84d) | 121d → 65d |  |
| DH.160012055 | DH1600/Mechanical Yard-R160 // Install Mechanical Chiller to Mains | 2026-10-21 → 2027-01-13 (+84d) | 2026-10-21 → 2027-01-13 (+84d) | 121d → 65d |  |
| 12 | **Test & Flushing** | 2026-10-22 → 2027-01-14 (+84d) | 2026-11-04 → 2027-01-28 (+85d) |  |  |
| A5745 | DH1600/Mechanical Yard-Test & Flushing // Line Test & Checking | 2026-10-22 → 2027-01-14 (+84d) | 2026-10-23 → 2027-01-15 (+84d) | 121d → 65d |  |
| A5747 | DH1600/Mechanical Yard-Test & Flushing // Electrical & Controls Testing / Checking | 2026-10-26 → 2027-01-19 (+85d) | 2026-10-28 → 2027-01-21 (+85d) | 121d → 65d |  |
| A5746 | DH1600/Mechanical Yard-Test & Flushing // Fill, Flush & Purge | 2026-10-29 → 2027-01-22 (+85d) | 2026-11-04 → 2027-01-28 (+85d) | 121d → 65d |  |
| 2 | **Electrical & Controls** | 2026-09-30 → 2026-10-14 (+14d) | 2026-12-02 → 2026-12-15 (+13d) |  |  |
| A5820 | DH1600/Electrical & Controls // Backfill Chiller Raceways from Building to Chiller Pad | 2026-09-30 → 2026-10-14 (+14d) | 2026-10-09 → 2026-10-23 (+14d) | 103d → 94d |  |
| A5821 | DH1600/Electrical & Controls // Excavate Raceways from Building to Chiller Pad | 2026-10-06 → 2026-10-20 (+14d) | 2026-10-16 → 2026-10-29 (+13d) | 103d → 94d |  |
| A5824 | DH1600/Electrical & Controls // Install Raceway from Building To Chiller Pad | 2026-10-13 → 2026-10-26 (+13d) | 2026-10-22 → 2026-11-04 (+13d) | 103d → 94d |  |
| A5826 | DH1600/Electrical & Controls // Raceway connections to Chiller units | 2026-10-23 → 2026-11-05 (+13d) | 2026-10-30 → 2026-11-13 (+14d) | 103d → 94d |  |
| A5827 | DH1600/Electrical & Controls // Install Panels and Raceways to CHWP | 2026-10-23 → 2026-11-05 (+13d) | 2026-11-05 → 2026-11-19 (+14d) | 103d → 94d |  |
| A5833 | DH1600/Electrical & Controls // Mechanical CWP Support Caisson Footings | 2026-10-23 → 2026-11-05 (+13d) | 2026-11-05 → 2026-11-19 (+14d) | 115d → 106d |  |
| A5831 | DH1600/Electrical & Controls // Pull and Terminate Feeders to Chiller units | 2026-11-02 → 2026-11-16 (+14d) | 2026-11-09 → 2026-11-23 (+14d) | 113d → 104d |  |
| A5830 | DH1600/Electrical & Controls // Install Controls conduits and wire to Chiller units | 2026-11-06 → 2026-11-20 (+14d) | 2026-11-24 → 2026-12-08 (+14d) | 103d → 94d |  |
| A5835 | DH1600/Electrical & Controls // Fine Grade Install Landscape Fabric & Install Rock | 2026-11-06 → 2026-11-20 (+14d) | 2026-11-13 → 2026-11-27 (+14d) | 115d → 106d |  |
| A5834 | DH1600/Electrical & Controls // Chiller units Ready to Energize | 2026-11-25 → 2026-12-09 (+14d) | 2026-12-02 → 2026-12-15 (+13d) | 103d → 94d |  |
| 2 | **Roof - RTUs** | 2026-08-20 → 2026-08-27 (+7d) | 2026-11-12 → 2026-11-25 (+13d) |  |  |
| 1 | **Column Lines 1.2 thru 2.0** | 2026-08-20 → 2026-08-27 (+7d) | 2026-11-12 → 2026-11-25 (+13d) |  |  |
| DH.160012058 | DH1600/Roof - RTUs // RTU-RT- 017 | 2026-08-20 A → 2026-08-27 A (+7d) |  |  |  |
| DH.160012057 | DH1600/Roof - RTUs // RTU-RT- 018 | 2026-08-24 A → 2026-08-31 A (+7d) |  |  |  |
| DH.160012064 | DH1600/Roof - RTUs // RTU-RT- 019 | 2026-08-25 A → 2026-09-01 A (+7d) |  |  |  |
| DH.160012056 | DH1600/Roof - RTUs // Install heat trace system | 2026-09-30 → 2026-10-14 (+14d) | 2026-10-21 → 2026-11-03 (+13d) | 103d → 94d |  |
| DH.16007841 | DH1600/Roof - RTUs // Install Electrical Conduit and Controls Piping | 2026-10-22 → 2026-11-04 (+13d) | 2026-11-12 → 2026-11-25 (+13d) | 103d → 94d |  |
| 1 | **Interior Build Out** | 2026-07-24 → 2026-09-01 (+39d) | 2027-06-22 → 2027-06-17 (-5d) |  |  |
| 9 | **Flex 1000F10** | 2026-08-24 → 2026-09-21 (+28d) | 2026-12-18 → 2027-01-04 (+17d) |  |  |
| DH.1600.1010 | DH1600/Flex 1000F10 // MEPF Layout of Overhead Supports | 2026-08-31 A → 2026-09-21 A (+21d) |  |  |  |
| DH.1600.1000 | DH1600/Flex 1000F10 // Seal Concrete | 2026-08-24 A → 2026-09-24 A (+31d) |  |  |  |
| B120001.3187 | DH1600/Flex 1000F10 // Install Overhead Cable Ladder / 36" Cable Tray - TFO | 2026-09-30 → 2026-10-14 (+14d) | 2026-10-06 → 2026-10-20 (+14d) | 54d → 45d |  |
| B120001.3188 | DH1600/Flex 1000F10 // Install Overhead HAC - TFO | 2026-10-07 → 2026-10-21 (+14d) | 2026-10-14 → 2026-10-27 (+13d) | 54d → 45d |  |
| DH.1600.1020 | DH1600/Flex 1000F10 // MEPF Install High Overhead Systems | 2026-10-15 → 2026-10-28 (+13d) | 2026-10-22 → 2026-11-04 (+13d) | 54d → 45d |  |
| DH.1600.1040 | DH1600/Flex 1000F10 // Frame Walls including Backing | 2026-10-23 → 2026-11-05 (+13d) | 2026-10-28 → 2026-11-10 (+13d) | 54d → 45d |  |
| DH.1600.1060 | DH1600/Flex 1000F10 // MEPF Install Rough Wall | 2026-10-29 → 2026-11-12 (+14d) | 2026-10-30 → 2026-11-13 (+14d) | 54d → 45d |  |
| DH.1600.1080 | DH1600/Flex 1000F10 // Rough Wall Inspection (Approval to Close up) | 2026-11-02 → 2026-11-16 (+14d) | 2026-11-02 → 2026-11-16 (+14d) | 54d → 45d |  |
| DH.1600.1070 | DH1600/Flex 1000F10 // Install Top Down Sheet Rock | 2026-11-03 → 2026-11-17 (+14d) | 2026-11-09 → 2026-11-23 (+14d) | 54d → 45d |  |
| DH.1600.1090 | DH1600/Flex 1000F10 // Install Balance of Sheetrock | 2026-11-10 → 2026-11-24 (+14d) | 2026-11-13 → 2026-11-27 (+14d) | 54d → 45d |  |
| DH.1600.1100 | DH1600/Flex 1000F10 // Tape and Finish Walls | 2026-11-16 → 2026-11-30 (+14d) | 2026-11-23 → 2026-12-07 (+14d) | 54d → 45d |  |
| DH.1600.1110 | DH1600/Flex 1000F10 // Prime and First Coat of Paint | 2026-11-24 → 2026-12-08 (+14d) | 2026-11-25 → 2026-12-09 (+14d) | 54d → 45d |  |
| DH.1600.1120 | DH1600/Flex 1000F10 // Install MEPF Overhead Ceiling Rough | 2026-11-27 → 2026-12-10 (+13d) | 2026-12-01 → 2026-12-14 (+13d) | 54d → 45d |  |
| DH.1600.1050 | DH1600/Flex 1000F10 // Install Door Frames | 2026-12-02 → 2026-12-15 (+13d) | 2026-12-02 → 2026-12-15 (+13d) | 58d → 49d |  |
| DH.1600.1130 | DH1600/Flex 1000F10 // Install Lighting, Fire Alarm & Fire Protection | 2026-12-02 → 2026-12-15 (+13d) | 2026-12-03 → 2026-12-16 (+13d) | 54d → 45d |  |
| DH.1600.1140 | DH1600/Flex 1000F10 // Wall Touch up Final Coat of Paint | 2026-12-04 → 2026-12-17 (+13d) | 2026-12-08 → 2026-12-21 (+13d) | 54d → 45d |  |
| DH.1600.1150 | DH1600/Flex 1000F10 // Install Wall Base, Trim, and Devices | 2026-12-09 → 2026-12-22 (+13d) | 2026-12-11 → 2026-12-24 (+13d) | 54d → 45d |  |
| DH.1600.3058 | DH1600/Flex 1000F10 // Ready to Receive Equipment | 2026-12-11 → 2026-12-24 (+13d) | 2026-12-11 → 2026-12-24 (+13d) | 54d → 45d |  |
| DH.1600.1160 | DH1600/Flex 1000F10 // Suffolk Pre Punch | 2026-12-14 → 2026-12-28 (+14d) | 2026-12-18 → 2027-01-04 (+17d) | 111d → 102d |  |
| 7 | **Electrical Room #5601** | 2026-09-02 → 2026-09-01 (-1d) | 2027-02-26 → 2027-03-10 (+12d) |  |  |
| B120001.3066 | DH1600/Electrical Room #5601 // Frame Walls including Backing | 2026-10-21 → 2026-09-01 A (-50d) | 2026-10-26 → 2026-10-19 (-7d) | 28d → 48d | B120001.3065, DH.1400.3041 → B120001.3065 |
| B120001.3065 | DH1600/Electrical Room #5601 // MEPF Layout of Overhead Supports | 2026-09-02 A → 2026-09-23 A (+21d) |  |  |  |
| B120001.3068 | DH1600/Electrical Room #5601 // MEPF Install High Overhead Systems | 2026-09-30 → 2026-10-01 A (+1d) | 2026-10-07 → 2026-10-21 (+14d) | 48d → 51d |  |
| B120001.3189 | DH1600/Electrical Room #5601 // Install Overhead Cable Ladder / 36" Cable Tray - TFO | 2026-09-30 → 2026-10-01 A (+1d) | 2026-10-06 → 2026-10-20 (+14d) | 28d → 78d |  |
| DH.1400.3041 | DH1600/Electrical Room #5601 // Install Cable Tray | 2026-10-16 → 2026-10-01 A (-15d) | 2026-10-20 → 2026-10-16 (-4d) | 28d → 78d | DH.1400.3040 SS+1d → B120001.3065 |
| B120001.3070 | DH1600/Electrical Room #5601 // Install Top Down Sheet Rock | 2026-10-30 → 2026-10-12 A (-18d) | 2026-11-05 → 2026-10-26 (-10d) | 28d → 48d | B120001.3066 SS+2d, B120001.3071 → B120001.3071 FF+2d, B120001.3066 SS+2d |
| B120001.3069 | DH1600/Electrical Room #5601 // MEPF Install Rough Wall | 2026-10-27 → 2026-10-20 (-7d) | 2026-10-28 → 2026-10-21 (-7d) | 28d → 48d |  |
| B120001.3190 | DH1600/Electrical Room #5601 // Install Overhead HAC - TFO | 2026-10-07 → 2026-10-21 (+14d) | 2026-10-14 → 2026-10-27 (+13d) | 28d → 78d |  |
| B120001.3071 | DH1600/Electrical Room #5601 // Rough Wall Inspspection (Approval to Close up) | 2026-10-29 → 2026-10-22 (-7d) | 2026-10-29 → 2026-10-22 (-7d) | 28d → 48d |  |
| F.1000A.1261 | DH1600/Electrical Room #5601 // Rough-In Security | 2026-10-08 → 2026-10-22 (+14d) | 2026-10-09 → 2026-10-23 (+14d) | 82d → 73d |  |
| F.1000A.1585 | DH1600/Electrical Room #5601 // BMS & EPMS Rough-In | 2026-10-08 → 2026-10-22 (+14d) | 2026-10-09 → 2026-10-23 (+14d) | 94d → 85d |  |
| DH.1600.1220 | DH1600/Electrical Room #5601 // Pull Cable Tray Feeders (CRAHU/CDU) | 2026-10-30 → 2026-10-23 (-7d) | 2026-11-13 → 2026-11-05 (-8d) | 61d → 66d |  |
| F.1000A.1262 | DH1600/Electrical Room #5601 // Pull & Test Security Cable | 2026-10-13 → 2026-10-26 (+13d) | 2026-10-15 → 2026-10-28 (+13d) | 82d → 73d |  |
| DH.1600.1290 | DH1600/Electrical Room #5601 // Pull Misc Feeder and Branch Circuits | 2026-11-06 → 2026-10-27 (-10d) | 2026-11-20 → 2026-11-09 (-11d) | 28d → 48d |  |
| DH.1400.3040 | DH1600/Electrical Room #5601 // Install Overhead Buss duct | 2026-10-15 → 2026-10-28 (+13d) | 2026-10-16 → 2026-10-29 (+13d) | 28d → 78d |  |
| DH.1600.1240 | DH1600/Electrical Room #5601 // Land and Terminate Cabel Tray Feeders In Gear | 2026-11-16 → 2026-11-06 (-10d) | 2026-11-30 → 2026-11-20 (-10d) | 61d → 66d |  |
| DH.1600.1300 | DH1600/Electrical Room #5601 // Land and Terminate Misc Feeder and Branch Circuits | 2026-11-23 → 2026-11-10 (-13d) | 2026-12-07 → 2026-11-24 (-13d) | 28d → 48d |  |
| B120001.3067 | DH1600/Electrical Room #5601 // Install Door Frames | 2026-12-08 → 2026-11-25 (-13d) | 2026-12-08 → 2026-11-25 (-13d) | 28d → 48d |  |
| DH.1600.3059 | DH1600/Electrical Room #5601 // Room Ready to Receive Equipment | 2026-12-08 → 2026-11-25 (-13d) | 2026-12-08 → 2026-11-25 (-13d) | 28d → 48d |  |
| F.1000A.1263 | DH1600/Electrical Room #5601 // Install Security Devices | 2026-12-09 → 2026-11-27 (-12d) | 2026-12-10 → 2026-11-30 (-10d) | 46d → 54d |  |
| F.1000A.1264 | DH1600/Electrical Room #5601 // Mount & Terminate Security Devices | 2026-12-11 → 2026-12-01 (-10d) | 2026-12-17 → 2026-12-07 (-10d) | 46d → 54d |  |
| DH.1600.1250 | DH1600/Electrical Room #5601 // Set CRAH-ER5601- 01 | 2027-02-04 → 2026-12-02 (-64d) | 2027-02-04 → 2026-12-02 (-64d) | 3d → 51d | ER.5101.3089 → DH.1600.3082 |

| ID | Task | Start | Finish | Complete | Total float | Predecessors |
| --- | --- | --- | --- | --- | --- | --- |
| DH.1600.3031 | DH1600/Electrical Room #5601 // Set CRAH-ER5601- 02 | 2027-02-05 → 2026-12-02 (-65d) | 2027-02-05 → 2026-12-02 (-65d) |  | 3d → 51d | DH.1600.1250 → DH.1600.3082, DH.1600.1250 FF |
| DH.1600.3032 | DH1600/Electrical Room #5601 // Set CRAH-ER5601- 03 | 2027-02-08 → 2026-12-02 (-68d) | 2027-02-08 → 2026-12-02 (-68d) |  | 3d → 51d | DH.1600.3031 → DH.1600.3082, DH.1600.3031 FF |
| DH.1600.3033 | DH1600/Electrical Room #5601 // Set CRAH-ER5601- 04 | 2027-02-09 → 2026-12-02 (-69d) | 2027-02-09 → 2026-12-02 (-69d) |  | 3d → 51d | DH.1600.3032 → DH.1600.3082, DH.1600.3032 FF |
| DH.1600.3034 | DH1600/Electrical Room #5601 // Set CRAH-ER5601- 05 | 2027-02-10 → 2026-12-02 (-70d) | 2027-02-10 → 2026-12-02 (-70d) |  | 3d → 51d | DH.1600.3033 → DH.1600.3082, DH.1600.3033 FF |
| DH.1600.3035 | DH1600/Electrical Room #5601 // Set CRAH-ER5601- 06 | 2027-02-11 → 2026-12-02 (-71d) | 2027-02-11 → 2026-12-02 (-71d) |  | 3d → 51d | DH.1600.3034 → DH.1600.3082, DH.1600.3034 FF |
| DH.1600.1260 | DH1600/Electrical Room #5601 // Mechanical Connections to CRAHU | 2027-02-12 → 2026-12-03 (-71d) | 2027-02-19 → 2026-12-09 (-72d) |  | 3d → 51d |  |
| ER.5101.3100 | DH1600/Electrical Room #5601 // Set PDU - PDU-R160-01 | 2027-02-12 → 2026-12-03 (-71d) | 2027-02-12 → 2026-12-03 (-71d) |  | 6d → 54d |  |
| ER.5101.3106 | DH1600/Electrical Room #5601 // Set UPS - UPS-R160 | 2027-02-16 → 2026-12-04 (-74d) | 2027-02-16 → 2026-12-04 (-74d) |  | 6d → 54d |  |
| F.1000A.1265 | DH1600/Electrical Room #5601 // Test Security Devices | 2026-12-18 → 2026-12-08 (-10d) | 2026-12-21 → 2026-12-09 (-12d) |  | 46d → 54d |  |
| DH.1600.1270 | DH1600/Electrical Room #5601 // Install Condensate lines from CRAHU's | 2027-02-22 → 2026-12-10 (-74d) | 2027-02-23 → 2026-12-11 (-74d) |  | 4d → 52d |  |
| DH.1600.1280 | DH1600/Electrical Room #5601 // Install Elec Feeders to CRAHU's | 2027-02-22 → 2026-12-10 (-74d) | 2027-02-24 → 2026-12-14 (-72d) |  | 3d → 51d |  |
| DH.1600.1330 | DH1600/Electrical Room #5601 // Mechanical Equipment Pre-Start up | 2027-02-25 → 2026-12-15 (-72d) | 2027-02-26 → 2026-12-16 (-72d) |  | 3d → 51d |  |
| ER.5101.3086 | DH1600/Electrical Room #5601 // Set Skid - SKID-B160 |  |  |  | -7d → 5d | ER.5101.3085 SS → DH.1600.3061, ER.5101.3085 SS |
| ER.5101.3087 | DH1600/Electrical Room #5601 // Set Skid - SKID-C160 | 2027-02-02 → 2027-02-01 (-1d) | 2027-02-02 → 2027-02-01 (-1d) |  | -7d → 5d | ER.5101.3086 → DH.1600.3061, ER.5101.3086 SS |
| ER.5101.3088 | DH1600/Electrical Room #5601 // Set Skid - SKID-D160 | 2027-02-02 → 2027-02-18 (+16d) | 2027-02-02 → 2027-02-18 (+16d) |  | -7d → -6d | ER.5101.3087 SS → DH.1600.3072, ER.5101.3087 |
| ER.5101.3089 | DH1600/Electrical Room #5601 // Set Skid - SKID-E160 | 2027-02-03 → 2027-02-18 (+15d) | 2027-02-03 → 2027-02-18 (+15d) |  | -7d → -6d | ER.5101.3088 → DH.1600.3072, ER.5101.3088 SS |
| DH.1600.1200 | DH1600/Electrical Room #5601 // Install Cable Buss From Exterior | 2027-02-04 → 2027-02-19 (+15d) | 2027-02-08 → 2027-02-23 (+15d) |  | 5d → -5d |  |
| DH.1600.1320 | DH1600/Electrical Room #5601 // Buss Duct Tie In to Elect Gear | 2027-02-04 → 2027-02-19 (+15d) | 2027-02-08 → 2027-02-23 (+15d) |  | 14d → 4d | ER.5101.3089, B120001.3071 → B120001.3071, ER.5101.3089, DH.1400.3040 |
| DH.1600.1210 | DH1600/Electrical Room #5601 // Pull Cable Buss Feeders | 2027-02-09 → 2027-02-24 (+15d) | 2027-02-17 → 2027-03-03 (+14d) |  | 5d → -5d |  |
| DH.1600.1230 | DH1600/Electrical Room #5601 // Terminate Cable Buss Feeders | 2027-02-18 → 2027-03-04 (+14d) | 2027-02-22 → 2027-03-08 (+14d) |  | 5d → -5d |  |
| DH.1600.1310 | DH1600/Electrical Room #5601 // Final FOD Check of all Panels | 2027-02-23 → 2027-03-09 (+14d) | 2027-02-24 → 2027-03-10 (+14d) |  | 5d → -5d |  |
| 2 | **Electrcal Room #5604** | 2026-09-04 → 2026-09-14 (+10d) | 2027-03-16 → 2027-03-11 (-5d) |  |  |  |
| B120001.3106 | DH1600/Electrical Room #5604 // Install Top Down Sheet Rock | 2026-10-22 → 2026-09-14 A (-38d) | 2026-10-28 → 2026-10-26 (-2d) |  | 47d → 54d | B120001.3101 SS+2d, B120001.3105 → B120001.3105 FF+2d, B120001.3101 SS+2d |
| B120001.3100 | DH1600/Electrical Room #5604 // MEPF Layout of Overhead Supports | 2026-09-04 A → 2026-09-23 A (+19d) |  |  |  |  |
| B120001.3101 | DH1600/Electrical Room #5604 // Frame Walls including Backing | 2026-10-13 → 2026-09-30 A (-13d) | 2026-10-16 → 2026-10-19 (+3d) |  | 47d → 52d | B120001.3100, DH.1400.3068 → B120001.3100 |
| B120001.3104 | DH1600/Electrical Room #5604 // MEPF Install Rough Wall | 2026-10-19 → 2026-10-01 A (-18d) | 2026-10-20 → 2026-10-21 (+1d) |  | 47d → 52d | B120001.3101 → B120001.3101 FF+2d |
| DH.1400.3068 | DH1600/Electrical Room #5604 // Install Cable Tray | 2026-10-07 → 2026-10-05 A (-2d) | 2026-10-09 → 2026-10-16 (+7d) |  | 47d → 60d | DH.1400.3067 SS+1d, B120001.3192 → B120001.3100 |
| B120001.3103 | DH1600/Electrical Room #5604 // MEPF Install High Overhead Systems | 2026-09-30 → 2026-10-14 (+14d) | 2026-10-07 → 2026-10-21 (+14d) |  | 61d → 57d |  |
| B120001.3191 | DH1600/Electrical Room #5604 // Install Overhead Cable Ladder / 36" Cable Tray - TFO | 2026-09-30 → 2026-10-14 (+14d) | 2026-10-06 → 2026-10-20 (+14d) |  | 47d → 83d |  |
| B120001.3192 | DH1600/Electrical Room #5604 // Install Overhead HAC - TFO | 2026-09-30 → 2026-10-14 (+14d) | 2026-10-06 → 2026-10-20 (+14d) |  | 47d → 83d |  |
| DH.1400.3067 | DH1600/Electrical Room #5604 // Install Overhead Buss duct | 2026-09-30 → 2026-10-21 (+21d) | 2026-10-01 → 2026-10-22 (+21d) |  | 51d → 83d | B120001.3100 → B120001.3100, B120001.3192 |
| B120001.3105 | DH1600/Electrical Room #5604 // Rough Wall Inspspection (Approval to Close up) | 2026-10-21 → 2026-10-22 (+1d) | 2026-10-21 → 2026-10-22 (+1d) |  | 47d → 52d |  |
| F.1000A.1266 | DH1600/Electrical Room #5604 // Rough-In Security | 2026-10-08 → 2026-10-22 (+14d) | 2026-10-09 → 2026-10-23 (+14d) |  | 82d → 73d |  |
| F.1000A.1595 | DH1600/Electrical Room #5604 // BMS & EPMS Rough-In | 2026-10-08 → 2026-10-22 (+14d) | 2026-10-09 → 2026-10-23 (+14d) |  | 94d → 85d |  |
| DH.1600.3036 | DH1600/Electrical Room #5604 // Install Overhead Buss duct | 2026-10-22 → 2026-10-23 (+1d) | 2026-10-23 → 2026-10-26 (+3d) |  | 53d → 52d |  |
| DH.1600.3037 | DH1600/Electrical Room #5604 // Install Cable Tray | 2026-10-23 → 2026-10-26 (+3d) | 2026-10-27 → 2026-10-28 (+1d) |  | 53d → 52d |  |
| F.1000A.1267 | DH1600/Electrical Room #5604 // Pull & Test Security Cable | 2026-10-13 → 2026-10-26 (+13d) | 2026-10-15 → 2026-10-28 (+13d) |  | 82d → 73d |  |
| DH.1600.3047 | DH1600/Electrical Room #5604 // Pull Misc Feeder and Branch Circuits | 2026-10-29 → 2026-10-27 (-2d) | 2026-11-12 → 2026-11-09 (-3d) |  | 47d → 60d |  |
| B120001.3102 | DH1600/Electrical Room #5604 // Install Door Frames | 2026-11-13 → 2026-11-10 (-3d) | 2026-11-13 → 2026-11-10 (-3d) |  | 47d → 60d |  |
| DH.1600.3060 | DH1600/Electrical Room #5604 // Room Ready to Receive Equipment | 2026-11-13 → 2026-11-10 (-3d) | 2026-11-13 → 2026-11-10 (-3d) |  | 47d → 60d |  |
| F.1000A.1268 | DH1600/Electrical Room #5604 // Install Security Devices | 2026-11-16 → 2026-11-12 (-4d) | 2026-11-17 → 2026-11-13 (-4d) |  | 62d → 64d |  |
| F.1000A.1269 | DH1600/Electrical Room #5604 // Mount & Terminate Security Devices | 2026-11-18 → 2026-11-16 (-2d) | 2026-11-24 → 2026-11-20 (-4d) |  | 62d → 64d |  |
| DH.1600.3038 | DH1600/Electrical Room #5604 // Set CRAH-ER5604- 01 | 2027-02-17 → 2026-12-03 (-76d) | 2027-02-17 → 2026-12-03 (-76d) |  | -9d → 46d | DH.1600.3044, B120001.3103, B120001.3106, DH.1400.3068, ER.5101.3094 → DH.1600.3082 FS+1d |
| DH.1600.3039 | DH1600/Electrical Room #5604 // Set CRAH-ER5604- 02 | 2027-02-18 → 2026-12-03 (-77d) | 2027-02-18 → 2026-12-03 (-77d) |  | -9d → 46d | DH.1600.3038 → DH.1600.3082 FS+1d, DH.1600.3038 FF |
| DH.1600.3041 | DH1600/Electrical Room #5604 // Set CRAH-ER5604- 03 | 2027-02-19 → 2026-12-03 (-78d) | 2027-02-19 → 2026-12-03 (-78d) |  | -9d → 46d | DH.1600.3039 → DH.1600.3082 FS+1d, DH.1600.3039 FF |
| DH.1600.3042 | DH1600/Electrical Room #5604 // Set CRAH-ER5604- 04 | 2027-02-22 → 2026-12-03 (-81d) | 2027-02-22 → 2026-12-03 (-81d) |  | -9d → 46d | DH.1600.3041 → DH.1600.3082 FS+1d, DH.1600.3041 FF |
| DH.1600.3043 | DH1600/Electrical Room #5604 // Set CRAH-ER5604- 05 | 2027-02-23 → 2026-12-03 (-82d) | 2027-02-23 → 2026-12-03 (-82d) |  | -9d → 46d | DH.1600.3042 → DH.1600.3082 FS+1d, DH.1600.3042 FF |
| DH.1600.3046 | DH1600/Electrical Room #5604 // Set CRAH-ER5604- 06 | 2027-02-24 → 2026-12-03 (-83d) | 2027-02-24 → 2026-12-03 (-83d) |  | -9d → 46d | DH.1600.3043 → DH.1600.3082 FS+1d, DH.1600.3043 FF |
| DH.1600.3048 | DH1600/Electrical Room #5604 // Mechanical Connections to CRAHU | 2027-02-25 → 2026-12-04 (-83d) | 2027-03-03 → 2026-12-10 (-83d) |  | -9d → 46d |  |
| DH.1600.3050 | DH1600/Electrical Room #5604 // Install Condensate lines from CRAHU's | 2027-03-04 → 2026-12-11 (-83d) | 2027-03-05 → 2026-12-14 (-81d) |  | -8d → 47d |  |
| DH.1600.3051 | DH1600/Electrical Room #5604 // Install Elec Feeders to CRAHU's | 2027-03-04 → 2026-12-11 (-83d) | 2027-03-08 → 2026-12-15 (-83d) |  | -9d → 46d |  |
| DH.1600.3057 | DH1600/Electrical Room #5604 // Mechanical Equipment Pre-Start up | 2027-03-09 → 2026-12-16 (-83d) | 2027-03-10 → 2026-12-17 (-83d) |  | -9d → 46d |  |
| F.1000A.1270 | DH1600/Electrical Room #5604 // Test Security Devices | 2027-03-11 → 2026-12-18 (-83d) | 2027-03-12 → 2026-12-21 (-81d) |  | -9d → 46d |  |
| ER.5101.3090 | DH1600/Electrical Room #5604 // Set Skid - SKID-F160 | 2027-02-08 → 2027-02-18 (+10d) | 2027-02-08 → 2027-02-18 (+10d) |  | -9d → -6d | ER.5101.3089, DH.1600.3062 → DH.1600.3072, ER.5101.3089 SS |
| ER.5101.3091 | DH1600/Electrical Room #5604 // Set Skid - SKID-G160 | 2027-02-08 → 2027-02-18 (+10d) | 2027-02-08 → 2027-02-18 (+10d) |  | -9d → -6d | ER.5101.3090 SS → DH.1600.3072, ER.5101.3090 SS |
| ER.5101.3092 | DH1600/Electrical Room #5604 // Set Skid - SKID-H160 | 2027-02-09 → 2027-02-19 (+10d) | 2027-02-09 → 2027-02-19 (+10d) |  | -9d → -6d | ER.5101.3091 → DH.1600.3062, ER.5101.3091 |
| ER.5101.3093 | DH1600/Electrical Room #5604 // Set Skid - SKID-J160 | 2027-02-09 → 2027-02-19 (+10d) | 2027-02-09 → 2027-02-19 (+10d) |  | -9d → -6d | ER.5101.3092 SS → DH.1600.3062, ER.5101.3092 SS |
| ER.5101.3094 | DH1600/Electrical Room #5604 // Set Skid - SKID-K160 | 2027-02-10 → 2027-02-19 (+9d) | 2027-02-10 → 2027-02-19 (+9d) |  | -9d → -6d | ER.5101.3093 → DH.1600.3062, ER.5101.3093 SS |
| DH.1600.3044 | DH1600/Electrical Room #5604 // Install Cable Buss From Exterior | 2027-02-11 → 2027-02-22 (+11d) | 2027-02-16 → 2027-02-24 (+8d) |  | -9d → -6d |  |
| DH.1600.3045 | DH1600/Electrical Room #5604 // Buss Duct Tie In to Elect Gear | 2027-02-17 → 2027-02-25 (+8d) | 2027-02-19 → 2027-03-01 (+10d) |  | 6d → 0d | DH.1600.3044, DH.1600.3036, DH.1600.3037 → DH.1600.3037, DH.1600.3036, DH.1600.3044, DH.1400.3067 |
| DH.1600.3049 | DH1600/Electrical Room #5604 // Pull Cable Buss Feeders | 2027-02-17 → 2027-02-25 (+8d) | 2027-02-24 → 2027-03-04 (+8d) |  | 0d → -6d |  |
| DH.1600.3052 | DH1600/Electrical Room #5604 // Terminate Cable Buss Feeders | 2027-02-25 → 2027-03-05 (+8d) | 2027-03-01 → 2027-03-09 (+8d) |  | 0d → -6d |  |
| DH.1600.3056 | DH1600/Electrical Room #5604 // Final FOD Check of all Panels | 2027-03-15 → 2027-03-10 (-5d) | 2027-03-16 → 2027-03-11 (-5d) |  | -9d → -6d |  |
| 3 | **Data Hall 1600** | 2026-07-24 → 2026-09-17 (+55d) | 2027-01-14 → 2027-01-13 (-1d) |  |  |  |
| DH.16006270 | DH 1600 // MEPF overhead layout | 2026-07-24 A → 2026-09-17 A (+55d) |  |  |  |  |
| DH.16006300 | DH 1600 // Frame walls |  | 2026-10-09 → 2026-10-23 (+14d) |  | 42d → 11.88d |  |
| DH.16006260 | DH 1600 // Polish concrete | 2026-12-10 → 2026-09-28 A (-73d) | 2026-12-16 → 2026-10-02 A (-75d) | 0% → 100% | 41d → none | DH.16006360 → DH.16000.1000 FF+3d |
| B120001.3193 | DH 1600 // Install Overhead Cable Ladder / 36" Cable Tray - TFO | 2026-09-30 → 2026-10-01 A (+1d) | 2026-10-06 → 2026-10-20 (+14d) |  | 25d → 26d |  |
| DH.16006290 | DH 1600 // MEPF high overhead install | 2026-10-15 → 2026-10-05 A (-10d) | 2026-10-28 → 2026-10-27 (-1d) |  | 25d → 26d | DH.16006270, B120001.3194 → B120001.3194 FF, DH.16006270 |
| B120001.3194 | DH 1600 // Install Overhead HAC - TFO | 2026-10-07 → 2026-10-21 (+14d) | 2026-10-14 → 2026-10-27 (+13d) |  | 25d → 26d |  |

| ID | Task | Start | Finish | Complete | Total float | Predecessors |
| --- | --- | --- | --- | --- | --- | --- |
| DH.16006310 | DH 1600 // Install wall door frames | 2026-12-17 → 2026-10-21 (-57d) | 2026-12-21 → 2026-10-23 (-59d) |  | 81d → 135d |  |
| DH.16006320 | DH 1600 // MEP rough in walls | 2026-10-13 → 2026-10-26 (+13d) | 2026-10-19 → 2026-10-30 (+11d) |  | 42d → 33d |  |
| DH.16007800 | DH 1600 // Install Ceiling supports (rods/wires) no grid | 2026-10-29 → 2026-10-28 (-1d) | 2026-11-04 → 2026-11-03 (-1d) |  | 25d → 26d |  |
| DH.16006220 | DH 1600 // Install ceiling grid system | 2026-11-05 → 2026-11-04 (-1d) | 2026-11-17 → 2026-11-16 (-1d) |  | 53d → 54d |  |
| F.1000A.1271 | DH 1600 // Rough-In Security | 2026-11-05 → 2026-11-04 (-1d) | 2026-11-06 → 2026-11-05 (-1d) |  | 25d → 26d |  |
| F.1000A.1605 | DH 1600 // BMS & EPMS Rough-In | 2026-11-05 → 2026-11-04 (-1d) | 2026-11-06 → 2026-11-05 (-1d) |  | 119d → 135d |  |
| F.1000A.1272 | DH 1600 // Pull & Test Security Cable | 2026-11-09 → 2026-11-06 (-3d) | 2026-11-12 → 2026-11-10 (-2d) |  | 25d → 26d |  |
| DH.160012067 | DH 1600 // Install 1-Side Sheet Rock (DH-Side) | 2026-11-13 → 2026-11-12 (-1d) | 2026-11-17 → 2026-11-16 (-1d) |  | 25d → 26d |  |
| DH.16006250 | DH 1600 // Install overhead MEP and lighting | 2026-11-18 → 2026-11-17 (-1d) | 2026-11-24 → 2026-11-23 (-1d) |  | 53d → 54d |  |
| DH.16006360 | DH 1600 // Tape and finish walls | 2026-11-18 → 2026-11-17 (-1d) | 2026-12-09 → 2026-12-08 (-1d) |  | 25d → 26d |  |
| DH.16006240 | DH 1600 // Install ceiling grid tiles | 2026-11-25 → 2026-11-24 (-1d) | 2026-11-30 → 2026-11-27 (-3d) |  | 53d → 54d |  |
| DH.16006410 | DH 1600 // Prime and 1st coat of Paint | 2026-12-10 → 2026-12-09 (-1d) | 2026-12-16 → 2026-12-15 (-1d) |  | 41d → 42d |  |
| DH.16007790 | DH 1600 // Final Paint & Touch up walls | 2026-12-17 → 2026-12-16 (-1d) | 2026-12-23 → 2026-12-22 (-1d) |  | 41d → 42d |  |
| DH.16007810 | DH 1600 // Install MEPF Trim and Finishes | 2026-12-24 → 2026-12-23 (-1d) | 2026-12-31 → 2026-12-30 (-1d) |  | 41d → 42d |  |
| F.1000A.1273 | DH 1600 // Install Security Devices | 2026-12-24 → 2026-12-23 (-1d) | 2026-12-28 → 2026-12-24 (-4d) |  | 79d → 95d |  |
| F.1000A.1274 | DH 1600 // Mount & Terminate Security Devices | 2026-12-29 → 2026-12-28 (-1d) | 2027-01-05 → 2027-01-04 (-1d) |  | 79d → 95d |  |
| DH.160012162 | DH 1600 // Room Ready to Receive Equipment | 2026-12-31 → 2026-12-30 (-1d) | 2026-12-31 → 2026-12-30 (-1d) |  | 41d → 42d |  |
| F.1000A.1275 | DH 1600 // Test Security Devices | 2027-01-06 → 2027-01-05 (-1d) | 2027-01-07 → 2027-01-06 (-1d) |  | 79d → 95d |  |
| DH.16007820 | DH 1600 // Suffolk Pre Punch | 2027-01-08 → 2027-01-07 (-1d) | 2027-01-14 → 2027-01-13 (-1d) |  | 94d → 95d |  |
| 15 | **PDU Gallery** | 2026-08-24 → 2026-09-24 (+31d) | 2026-11-23 → 2026-11-05 (-18d) |  |  |  |
| DH.16000.1000 | DH1600/PDU Gallery // Seal concrete | 2026-08-24 A → 2026-09-24 A (+31d) |  |  |  |  |
| DH.16000.1010 | DH1600/PDU Gallery // MEPF overhead layout |  | 2026-09-30 → 2026-10-14 (+14d) |  | 55d → 7d |  |
| B120001.3195 | DH1600/PDU Gallery // Install Overhead Cable Ladder / 36" Cable Tray - TFO | 2026-09-30 → 2026-10-01 A (+1d) | 2026-10-06 → 2026-10-20 (+14d) |  | 67d → 83d | DH.16000.1010 → DH.16000.1010 FF |
| DH.16000.1030 | DH1600/PDU Gallery // MEPF high overhead install | 2026-10-15 → 2026-10-05 A (-10d) | 2026-10-19 → 2026-10-27 (+8d) |  | 67d → 83d | DH.16000.1010 SS, DH.16000.1010, B120001.3196 → B120001.3196 FF, DH.16000.1010 FF |
| DH.16000.1040 | DH1600/PDU Gallery // Frame walls | 2026-10-22 → 2026-10-08 A (-14d) | 2026-10-28 → 2026-10-14 (-14d) | 0% → 100% | 67d → 78d | DH.16000.1010, DH.16000.1030, DH.16000.1110 → DH.16006300 SS |
| DH.16000.1711 | DH1600/PDU Gallery // MEP rough in walls | 2026-10-29 → 2026-10-14 (-15d) | 2026-11-02 → 2026-10-16 (-17d) |  | 67d → 78d |  |
| DH.16000.1070 | DH1600/PDU Gallery // In wall inspection | 2026-11-03 → 2026-10-19 (-15d) | 2026-11-03 → 2026-10-19 (-15d) |  | 67d → 78d |  |
| DH.16000.1060 | DH1600/PDU Gallery // Install Sheetrock Top Down | 2026-11-04 → 2026-10-20 (-15d) | 2026-11-06 → 2026-10-22 (-15d) |  | 67d → 78d |  |
| B120001.3196 | DH1600/PDU Gallery // Install Overhead HAC - TFO | 2026-10-07 → 2026-10-21 (+14d) | 2026-10-14 → 2026-10-27 (+13d) |  | 67d → 83d |  |
| DH.16000.1080 | DH1600/PDU Gallery // Install sheetrock on walls | 2026-11-09 → 2026-10-23 (-17d) | 2026-11-16 → 2026-10-29 (-18d) |  | 67d → 78d |  |
| DH.16000.1110 | DH1600/PDU Gallery // Install Cable Tray (From Elec Rm 5601 to CRAHU Gallery) | 2026-10-20 → 2026-10-28 (+8d) | 2026-10-21 → 2026-10-29 (+8d) |  | 67d → 83d |  |
| DH.16000.1050 | DH1600/PDU Gallery // Install wall door frames | 2026-11-17 → 2026-10-30 (-18d) | 2026-11-17 → 2026-10-30 (-18d) |  | 67d → 78d |  |
| DH.16000.1090 | DH1600/PDU Gallery // Tape and finish walls | 2026-11-17 → 2026-10-30 (-18d) | 2026-11-17 → 2026-10-30 (-18d) |  | 67d → 78d |  |
| DH.16000.1100 | DH1600/PDU Gallery // Paint walls | 2026-11-18 → 2026-11-02 (-16d) | 2026-11-19 → 2026-11-03 (-16d) |  | 67d → 78d |  |
| DH.16000.1712 | DH1600/PDU Gallery // ready to Receive Equipment | 2026-11-20 → 2026-11-04 (-16d) | 2026-11-23 → 2026-11-05 (-18d) |  | 67d → 78d |  |
| 14 | **CRAH/CDU Galleries** | 2026-09-30 → 2026-10-01 (+1d) |  |  |  |  |
| 2 | **Gallery 1602** | 2026-09-30 → 2026-10-01 (+1d) | 2027-02-18 → 2027-02-25 (+7d) |  |  |  |
| 4 | **Architectural** | 2026-09-30 → 2026-10-01 (+1d) | 2026-12-24 → 2026-12-23 (-1d) |  |  |  |
| DH.1600660 | DH 1600/Gallery 1602 // Seal concrete | 2026-09-30 → 2026-10-01 A (+1d) | 2026-10-01 → 2026-10-02 A (+1d) | 0% → 100% | 2d → none |  |
| B120001.3197 | DH 1600/Gallery 1602 // Install Overhead Cable Ladder / 36" Cable Tray - TFO | 2026-10-09 → 2026-10-05 A (-4d) | 2026-10-16 → 2026-10-20 (+4d) |  | 24d → 46d | DH.1600670 → DH.1600670 FF |
| DH.1600670 | DH 1600/Gallery 1602 // MEPF overhead layout | 2026-10-02 → 2026-10-05 A (+3d) | 2026-10-08 → 2026-10-20 (+12d) |  | 24d → 2d | DH.1600660 → DH.16000.1010 FF |
| DH.1600690 | DH 1600/Gallery 1602 // MEPF high overhead install | 2026-10-26 → 2026-10-07 A (-19d) | 2026-11-06 → 2026-10-27 (-10d) |  | 24d → 32d | DH.1600670 SS, B120001.3198 → DH.1600670 SS |
| DH.1600700 | DH 1600/Gallery 1602 // Frame walls | 2026-10-09 A | 2026-10-19 → 2026-10-21 (+2d) |  | 27d → 25d | DH.1600670 → DH.1600670 SS+4d |
| B120001.3198 | DH 1600/Gallery 1602 // Install Overhead HAC - TFO | 2026-10-19 → 2026-10-21 (+2d) | 2026-10-23 → 2026-10-27 (+4d) |  | 24d → 46d |  |
| DH.1600730 | DH 1600/Gallery 1602 // MEP rough in walls | 2026-10-20 → 2026-10-22 (+2d) | 2026-10-23 → 2026-10-27 (+4d) |  | 27d → 25d |  |
| DH.1600740 | DH 1600/Gallery 1602 // In wall inspection | 2026-10-26 → 2026-10-28 (+2d) | 2026-10-26 → 2026-10-28 (+2d) |  | 27d → 25d |  |
| F.1000A.1306 | DH 1600/Gallery 1602 // Rough-In Security | 2026-11-09 → 2026-10-28 (-12d) | 2026-11-10 → 2026-10-29 (-12d) |  | 105d → 128d |  |
| F.1000A.1615 | DH 1600/Gallery 1602 // BMS & EPMS Rough-In | 2026-11-09 → 2026-10-28 (-12d) | 2026-11-10 → 2026-10-29 (-12d) |  | 117d → 140d |  |
| DH.1600720 | DH 1600/Gallery 1602 // Install Sheetrock Top Down | 2026-10-27 → 2026-10-29 (+2d) | 2026-11-03 → 2026-11-05 (+2d) |  | 27d → 25d |  |
| F.1000A.1307 | DH 1600/Gallery 1602 // Pull & Test Security Cable | 2026-11-12 → 2026-10-30 (-13d) | 2026-11-16 → 2026-11-03 (-13d) |  | 105d → 128d |  |
| DH.1600750 | DH 1600/Gallery 1602 // Install Balance of Sheetrock on walls | 2026-11-09 → 2026-11-06 (-3d) | 2026-11-17 → 2026-11-16 (-1d) |  | 24d → 25d |  |
| DH.1600770 | DH 1600/Gallery 1602 // Tape and finish walls | 2026-11-18 → 2026-11-17 (-1d) | 2026-11-30 → 2026-11-27 (-3d) |  | 24d → 25d |  |
| DH.1600710 | DH 1600/Gallery 1602 // Install wall door frames | 2026-12-01 → 2026-11-30 (-1d) | 2026-12-01 → 2026-11-30 (-1d) |  | 27d → 28d |  |
| DH.1600790 | DH 1600/Gallery 1602 // Prime and Paint walls | 2026-12-01 → 2026-11-30 (-1d) | 2026-12-04 → 2026-12-03 (-1d) |  | 24d → 25d | DH.1600770 → B120001.3198, DH.1600770 |
| F.1000A.1308 | DH 1600/Gallery 1602 // Install Security Devices | 2026-12-02 → 2026-12-01 (-1d) | 2026-12-03 → 2026-12-02 (-1d) |  | 95d → 111d |  |
| DH.1600800 | DH 1600/Gallery 1602 // Touch up Walls and Fianl Paint | 2026-12-07 → 2026-12-04 (-3d) | 2026-12-11 → 2026-12-10 (-1d) |  | 24d → 25d |  |
| F.1000A.1309 | DH 1600/Gallery 1602 // Mount & Terminate Security Devices | 2026-12-07 → 2026-12-04 (-3d) | 2026-12-11 → 2026-12-10 (-1d) |  | 94d → 110d |  |
| DH.1600810 | DH 1600/Gallery 1602 // Install Trim and Devices | 2026-12-14 → 2026-12-11 (-3d) | 2026-12-15 → 2026-12-14 (-1d) |  | 24d → 25d |  |
| DH.160012163 | DH 1600/Gallery 1602 // Ready to receive Equipment | 2026-12-15 → 2026-12-14 (-1d) | 2026-12-15 → 2026-12-14 (-1d) |  | 24d → 25d | DH.1600810 FF → DH.1600810 FF, DH.1600660 |
| F.1000A.1310 | DH 1600/Gallery 1602 // Test Security Devices | 2026-12-16 → 2026-12-15 (-1d) | 2026-12-17 → 2026-12-16 (-1d) |  | 92d → 108d |  |
| DH.1600820 | DH 1600/Gallery 1602 // Suffolk Pre Punch | 2026-12-18 → 2026-12-17 (-1d) | 2026-12-24 → 2026-12-23 (-1d) |  | 107d → 108d |  |
| 3 | **Equipment Line-Ups** | 2026-12-16 → 2026-12-15 (-1d) | 2027-02-18 → 2027-02-25 (+7d) |  |  |  |
| 1 | **A160** | 2026-12-16 → 2026-12-15 (-1d) | 2027-01-15 → 2027-01-14 (-1d) |  |  |  |
| DH.1600A-EQP-1 | Gallery 1602 - A160/Line-Ups // Set CRAH-DH1600- 01 | 2026-12-16 → 2026-12-15 (-1d) | 2026-12-16 → 2026-12-15 (-1d) |  | 24d → 25d |  |
| DH.1600A-EQP-3 | Gallery 1602 - A160/Line-Ups // Set CRAH-DH1600- 02 | 2026-12-16 → 2026-12-15 (-1d) | 2026-12-16 → 2026-12-15 (-1d) |  | 24d → 25d |  |
| DH.1600A-EQP-5 | Gallery 1602 - A160/Line-Ups // Set MOD-A160-01 | 2026-12-16 → 2026-12-15 (-1d) | 2026-12-16 → 2026-12-15 (-1d) |  | 73d → 74d |  |
| DH.1600A-EQP-6 | Gallery 1602 - A160/Line-Ups // Set MOD-A160-02 | 2026-12-16 → 2026-12-15 (-1d) | 2026-12-16 → 2026-12-15 (-1d) |  | 73d → 74d |  |
| DH.1600A-EQP-10 | Gallery 1602 - A160/Line-Ups // Pull Cable Tray Feed from MOD to CRAHU's | 2026-12-17 → 2026-12-16 (-1d) | 2026-12-23 → 2026-12-22 (-1d) |  | 79d → 80d |  |
| DH.1600A-EQP-12 | Gallery 1602 - A160/Line-Ups // Mount Electrial Gear for Chiller Controls | 2026-12-17 → 2026-12-16 (-1d) | 2026-12-31 → 2026-12-30 (-1d) |  | 73d → 74d |  |
| DH.1600A-EQP-7 | Gallery 1602 - A160/Line-Ups // Set CDU-DH1600- 01 | 2026-12-17 → 2026-12-16 (-1d) | 2026-12-17 → 2026-12-16 (-1d) |  | 78d → 79d |  |

| ID | Task | Start | Finish | Total float |
| --- | --- | --- | --- | --- |
| DH.1600A-EQP-9 | Gallery 1602 - A160/Line-Ups // Pull Feeder from SWD to MOD | 2026-12-17 → 2026-12-16 (-1d) | 2026-12-17 → 2026-12-16 (-1d) | 89d → 90d |
| DH.1600A-EQP-8 | Gallery 1602 - A160/Line-Ups // Set CDU-DH1600- 02 | 2026-12-18 → 2026-12-17 (-1d) | 2026-12-18 → 2026-12-17 (-1d) | 78d → 79d |
| DH.1600A-EQP-4 | Gallery 1602 - A160/Line-Ups // Condensate connections to Floor Drains | 2026-12-21 → 2026-12-18 (-3d) | 2027-01-05 → 2027-01-04 (-1d) | 78d → 79d |
| DH.1600A-EQP-11 | Gallery 1602 - A160/Line-Ups // Mechanical Connections to CRAHU Units | 2026-12-23 → 2026-12-22 (-1d) | 2027-01-07 → 2027-01-06 (-1d) | 76d → 77d |
| DH.1600A-EQP-17 | Gallery 1602 - A160/Line-Ups // Pull Feeder and Branch circuits to MIsc equipment and Chiller controls | 2026-12-23 → 2026-12-22 (-1d) | 2027-01-07 → 2027-01-06 (-1d) | 73d → 74d |
| DH.1600A-EQP-13 | Gallery 1602 - A160/Line-Ups // Pull Cable Tray Feed from MOD to CRAHU's | 2026-12-24 → 2026-12-23 (-1d) | 2026-12-31 → 2026-12-30 (-1d) | 79d → 80d |
| DH.1600A-EQP-16 | Gallery 1602 - A160/Line-Ups // Terminate CRAHU Electrical Connections | 2026-12-29 → 2026-12-28 (-1d) | 2027-01-05 → 2027-01-04 (-1d) | 79d → 80d |
| DH.1600A-EQP-19 | Gallery 1602 - A160/Line-Ups // Teminate all Misc Equipment and Chiller Controls | 2026-12-30 → 2026-12-29 (-1d) | 2027-01-13 → 2027-01-12 (-1d) | 73d → 74d |
| DH.1600A-EQP-15 | Gallery 1602 - A160/Line-Ups // Terminate Mod Panels | 2027-01-04 → 2026-12-31 (-4d) | 2027-01-04 → 2026-12-31 (-4d) | 80d → 81d |
| DH.1600A-EQP-18 | Gallery 1602 - A160/Line-Ups // Mechanical Gear FOD Inspection Pre-Start Up | 2027-01-08 → 2027-01-07 (-1d) | 2027-01-12 → 2027-01-11 (-1d) | 76d → 77d |
| DH.1600A-EQP-20 | Gallery 1602 - A160/Line-Ups // Electrical Gear FOD Inspection Pre-Start Up | 2027-01-14 → 2027-01-13 (-1d) | 2027-01-15 → 2027-01-14 (-1d) | 73d → 74d |
| 2 | **B160** | 2026-12-16 → 2026-12-15 (-1d) | 2027-01-20 → 2027-01-19 (-1d) |  |
| DH.1600A-EQP-21 | Gallery 1602 - B160/Line-Ups // Set CRAH-DH1600- 03 | 2026-12-16 → 2026-12-15 (-1d) | 2026-12-16 → 2026-12-15 (-1d) | 24d → 25d |
| DH.1600A-EQP-23 | Gallery 1602 - B160/Line-Ups // Set CRAH-DH1600- 04 | 2026-12-16 → 2026-12-15 (-1d) | 2026-12-16 → 2026-12-15 (-1d) | 24d → 25d |
| DH.1600A-EQP-25 | Gallery 1602 - B160/Line-Ups // Set MOD-B160-01 | 2026-12-16 → 2026-12-15 (-1d) | 2026-12-16 → 2026-12-15 (-1d) | 73d → 74d |
| DH.1600A-EQP-26 | Gallery 1602 - B160/Line-Ups // Set MOD-B160-02 | 2026-12-16 → 2026-12-15 (-1d) | 2026-12-16 → 2026-12-15 (-1d) | 73d → 74d |
| DH.1600A-EQP-27 | Gallery 1602 - B160/Line-Ups // Set CDU-DH1600- 03 | 2026-12-17 → 2026-12-16 (-1d) | 2026-12-17 → 2026-12-16 (-1d) | 73d → 74d |
| DH.1600A-EQP-29 | Gallery 1602 - B160/Line-Ups // Pull Feeder from SWD to MOD | 2026-12-17 → 2026-12-16 (-1d) | 2026-12-17 → 2026-12-16 (-1d) | 89d → 90d |
| DH.1600A-EQP-30 | Gallery 1602 - B160/Line-Ups // Pull Cable Tray Feed from MOD to CRAHU's | 2026-12-17 → 2026-12-16 (-1d) | 2026-12-23 → 2026-12-22 (-1d) | 79d → 80d |
| DH.1600A-EQP-32 | Gallery 1602 - B160/Line-Ups // Mount Electrial Gear for Chiller Controls | 2026-12-17 → 2026-12-16 (-1d) | 2026-12-31 → 2026-12-30 (-1d) | 73d → 74d |
| DH.1600A-EQP-28 | Gallery 1602 - B160/Line-Ups // Set CDU-DH1600- 04 | 2026-12-18 → 2026-12-17 (-1d) | 2026-12-18 → 2026-12-17 (-1d) | 73d → 74d |
| DH.1600A-EQP-24 | Gallery 1602 - B160/Line-Ups // Condensate connections to Floor Drains | 2026-12-21 → 2026-12-18 (-3d) | 2027-01-05 → 2027-01-04 (-1d) | 73d → 74d |
| DH.1600A-EQP-31 | Gallery 1602 - B160/Line-Ups // Mechanical Connections to CRAHU Units | 2026-12-23 → 2026-12-22 (-1d) | 2027-01-07 → 2027-01-06 (-1d) | 71d → 72d |
| DH.1600A-EQP-37 | Gallery 1602 - B160/Line-Ups // Pull Feeder and Branch circuits to MIsc equipment and Chiller controls | 2026-12-23 → 2026-12-22 (-1d) | 2027-01-07 → 2027-01-06 (-1d) | 73d → 74d |
| DH.1600A-EQP-33 | Gallery 1602 - B160/Line-Ups // Pull Cable Tray Feed from MOD to CRAHU's | 2026-12-24 → 2026-12-23 (-1d) | 2026-12-31 → 2026-12-30 (-1d) | 79d → 80d |
| DH.1600A-EQP-36 | Gallery 1602 - B160/Line-Ups // Terminate CRAHU Electrical Connections | 2026-12-29 → 2026-12-28 (-1d) | 2027-01-05 → 2027-01-04 (-1d) | 79d → 80d |
| DH.1600A-EQP-39 | Gallery 1602 - B160/Line-Ups // Teminate all Misc Equipment and Chiller Controls | 2026-12-30 → 2026-12-29 (-1d) | 2027-01-13 → 2027-01-12 (-1d) | 73d → 74d |
| DH.1600A-EQP-34 | Gallery 1602 - B160/Line-Ups // Condensate connections to Floor Drains | 2026-12-31 → 2026-12-30 (-1d) | 2027-01-14 → 2027-01-13 (-1d) | 71d → 72d |
| DH.1600A-EQP-35 | Gallery 1602 - B160/Line-Ups // Terminate Mod Panels | 2027-01-04 → 2026-12-31 (-4d) | 2027-01-04 → 2026-12-31 (-4d) | 80d → 81d |
| DH.1600A-EQP-40 | Gallery 1602 - B160/Line-Ups // Electrical Gear FOD Inspection Pre-Start Up | 2027-01-14 → 2027-01-13 (-1d) | 2027-01-15 → 2027-01-14 (-1d) | 73d → 74d |
| DH.1600A-EQP-38 | Gallery 1602 - B160/Line-Ups // Mechanical Gear FOD Inspection Pre-Start Up | 2027-01-15 → 2027-01-14 (-1d) | 2027-01-20 → 2027-01-19 (-1d) | 71d → 72d |
| 3 | **C160** | 2026-12-16 → 2026-12-15 (-1d) | 2027-01-20 → 2027-01-19 (-1d) |  |
| DH.1600A-EQP-41 | Gallery 1602 - C160/Line-Ups // Set CRAH-DH1600- 05 | 2026-12-16 → 2026-12-15 (-1d) | 2026-12-16 → 2026-12-15 (-1d) | 24d → 25d |
| DH.1600A-EQP-43 | Gallery 1602 - C160/Line-Ups // Set CRAH-DH1600- 06 | 2026-12-16 → 2026-12-15 (-1d) | 2026-12-16 → 2026-12-15 (-1d) | 24d → 25d |
| DH.1600A-EQP-45 | Gallery 1602 - C160/Line-Ups // Set MOD-C160-01 | 2026-12-16 → 2026-12-15 (-1d) | 2026-12-16 → 2026-12-15 (-1d) | 73d → 74d |
| DH.1600A-EQP-46 | Gallery 1602 - C160/Line-Ups // Set MOD-C160-02 | 2026-12-16 → 2026-12-15 (-1d) | 2026-12-16 → 2026-12-15 (-1d) | 73d → 74d |
| DH.1600A-EQP-47 | Gallery 1602 - C160/Line-Ups // Set CDU-DH1600- 05 | 2026-12-17 → 2026-12-16 (-1d) | 2026-12-17 → 2026-12-16 (-1d) | 73d → 74d |
| DH.1600A-EQP-49 | Gallery 1602 - C160/Line-Ups // Pull Feeder from SWD to MOD | 2026-12-17 → 2026-12-16 (-1d) | 2026-12-17 → 2026-12-16 (-1d) | 89d → 90d |
| DH.1600A-EQP-50 | Gallery 1602 - C160/Line-Ups // Pull Cable Tray Feed from MOD to CRAHU's | 2026-12-17 → 2026-12-16 (-1d) | 2026-12-23 → 2026-12-22 (-1d) | 79d → 80d |
| DH.1600A-EQP-52 | Gallery 1602 - C160/Line-Ups // Mount Electrial Gear for Chiller Controls | 2026-12-17 → 2026-12-16 (-1d) | 2026-12-31 → 2026-12-30 (-1d) | 73d → 74d |
| DH.1600A-EQP-48 | Gallery 1602 - C160/Line-Ups // Set CDU-DH1600- 06 | 2026-12-18 → 2026-12-17 (-1d) | 2026-12-18 → 2026-12-17 (-1d) | 73d → 74d |
| DH.1600A-EQP-44 | Gallery 1602 - C160/Line-Ups // Condensate connections to Floor Drains | 2026-12-21 → 2026-12-18 (-3d) | 2027-01-05 → 2027-01-04 (-1d) | 73d → 74d |
| DH.1600A-EQP-51 | Gallery 1602 - C160/Line-Ups // Mechanical Connections to CRAHU Units | 2026-12-23 → 2026-12-22 (-1d) | 2027-01-07 → 2027-01-06 (-1d) | 71d → 72d |
| DH.1600A-EQP-57 | Gallery 1602 - C160/Line-Ups // Pull Feeder and Branch circuits to MIsc equipment and Chiller controls | 2026-12-23 → 2026-12-22 (-1d) | 2027-01-07 → 2027-01-06 (-1d) | 73d → 74d |
| DH.1600A-EQP-53 | Gallery 1602 - C160/Line-Ups // Pull Cable Tray Feed from MOD to CRAHU's | 2026-12-24 → 2026-12-23 (-1d) | 2026-12-31 → 2026-12-30 (-1d) | 79d → 80d |
| DH.1600A-EQP-56 | Gallery 1602 - C160/Line-Ups // Terminate CRAHU Electrical Connections | 2026-12-29 → 2026-12-28 (-1d) | 2027-01-05 → 2027-01-04 (-1d) | 79d → 80d |
| DH.1600A-EQP-59 | Gallery 1602 - C160/Line-Ups // Teminate all Misc Equipment and Chiller Controls | 2026-12-30 → 2026-12-29 (-1d) | 2027-01-13 → 2027-01-12 (-1d) | 73d → 74d |
| DH.1600A-EQP-54 | Gallery 1602 - C160/Line-Ups // Condensate connections to Floor Drains | 2026-12-31 → 2026-12-30 (-1d) | 2027-01-14 → 2027-01-13 (-1d) | 71d → 72d |
| DH.1600A-EQP-55 | Gallery 1602 - C160/Line-Ups // Terminate Mod Panels | 2027-01-04 → 2026-12-31 (-4d) | 2027-01-04 → 2026-12-31 (-4d) | 80d → 81d |
| DH.1600A-EQP-60 | Gallery 1602 - C160/Line-Ups // Electrical Gear FOD Inspection Pre-Start Up | 2027-01-14 → 2027-01-13 (-1d) | 2027-01-15 → 2027-01-14 (-1d) | 73d → 74d |
| DH.1600A-EQP-58 | Gallery 1602 - C160/Line-Ups // Mechanical Gear FOD Inspection Pre-Start Up | 2027-01-15 → 2027-01-14 (-1d) | 2027-01-20 → 2027-01-19 (-1d) | 71d → 72d |
| 4 | **D160** | 2026-12-17 → 2026-12-16 (-1d) | 2027-01-21 → 2027-01-20 (-1d) |  |
| DH.1600A-EQP-61 | Gallery 1602 - D160/Line-Ups // Set CRAH-DH1600- 07 | 2026-12-17 → 2026-12-16 (-1d) | 2026-12-17 → 2026-12-16 (-1d) | 24d → 25d |
| DH.1600A-EQP-63 | Gallery 1602 - D160/Line-Ups // Set CRAH-DH1600- 08 | 2026-12-17 → 2026-12-16 (-1d) | 2026-12-17 → 2026-12-16 (-1d) | 24d → 25d |
| DH.1600A-EQP-65 | Gallery 1602 - D160/Line-Ups // Set MOD-D160-01 | 2026-12-17 → 2026-12-16 (-1d) | 2026-12-17 → 2026-12-16 (-1d) | 72d → 73d |
| DH.1600A-EQP-66 | Gallery 1602 - D160/Line-Ups // Set MOD-D160-02 | 2026-12-17 → 2026-12-16 (-1d) | 2026-12-17 → 2026-12-16 (-1d) | 72d → 73d |
| DH.1600A-EQP-67 | Gallery 1602 - D160/Line-Ups // Set CDU-DH1600- 07 | 2026-12-18 → 2026-12-17 (-1d) | 2026-12-18 → 2026-12-17 (-1d) | 72d → 73d |
| DH.1600A-EQP-69 | Gallery 1602 - D160/Line-Ups // Pull Feeder from SWD to MOD | 2026-12-18 → 2026-12-17 (-1d) | 2026-12-18 → 2026-12-17 (-1d) | 88d → 89d |
| DH.1600A-EQP-70 | Gallery 1602 - D160/Line-Ups // Pull Cable Tray Feed from MOD to CRAHU's | 2026-12-18 → 2026-12-17 (-1d) | 2026-12-24 → 2026-12-23 (-1d) | 78d → 79d |
| DH.1600A-EQP-72 | Gallery 1602 - D160/Line-Ups // Mount Electrial Gear for Chiller Controls | 2026-12-18 → 2026-12-17 (-1d) | 2027-01-04 → 2026-12-31 (-4d) | 72d → 73d |
| DH.1600A-EQP-68 | Gallery 1602 - D160/Line-Ups // Set CDU-DH1600- 08 | 2026-12-21 → 2026-12-18 (-3d) | 2026-12-21 → 2026-12-18 (-3d) | 72d → 73d |
| DH.1600A-EQP-64 | Gallery 1602 - D160/Line-Ups // Condensate connections to Floor Drains | 2026-12-22 → 2026-12-21 (-1d) | 2027-01-06 → 2027-01-05 (-1d) | 72d → 73d |
| DH.1600A-EQP-71 | Gallery 1602 - D160/Line-Ups // Mechanical Connections to CRAHU Units | 2026-12-24 → 2026-12-23 (-1d) | 2027-01-08 → 2027-01-07 (-1d) | 70d → 71d |
| DH.1600A-EQP-77 | Gallery 1602 - D160/Line-Ups // Pull Feeder and Branch circuits to MIsc equipment and Chiller controls | 2026-12-24 → 2026-12-23 (-1d) | 2027-01-08 → 2027-01-07 (-1d) | 72d → 73d |
| DH.1600A-EQP-73 | Gallery 1602 - D160/Line-Ups // Pull Cable Tray Feed from MOD to CRAHU's | 2026-12-28 → 2026-12-24 (-4d) | 2027-01-04 → 2026-12-31 (-4d) | 78d → 79d |
| DH.1600A-EQP-76 | Gallery 1602 - D160/Line-Ups // Terminate CRAHU Electrical Connections | 2026-12-30 → 2026-12-29 (-1d) | 2027-01-06 → 2027-01-05 (-1d) | 78d → 79d |
| DH.1600A-EQP-79 | Gallery 1602 - D160/Line-Ups // Teminate all Misc Equipment and Chiller Controls | 2026-12-31 → 2026-12-30 (-1d) | 2027-01-14 → 2027-01-13 (-1d) | 72d → 73d |
| DH.1600A-EQP-74 | Gallery 1602 - D160/Line-Ups // Condensate connections to Floor Drains | 2027-01-04 → 2026-12-31 (-4d) | 2027-01-15 → 2027-01-14 (-1d) | 70d → 71d |
| DH.1600A-EQP-75 | Gallery 1602 - D160/Line-Ups // Terminate Mod Panels | 2027-01-05 → 2027-01-04 (-1d) | 2027-01-05 → 2027-01-04 (-1d) | 79d → 80d |
| DH.1600A-EQP-80 | Gallery 1602 - D160/Line-Ups // Electrical Gear FOD Inspection Pre-Start Up | 2027-01-15 → 2027-01-14 (-1d) | 2027-01-19 → 2027-01-15 (-4d) | 72d → 73d |

| ID | Task | Start | Finish | Total float |
| --- | --- | --- | --- | --- |
| DH.1600A-EQP-78 | Gallery 1602 - D160/Line-Ups // Mechanical Gear FOD Inspection Pre-Start Up | 2027-01-19 → 2027-01-15 (-4d) | 2027-01-21 → 2027-01-20 (-1d) | 70d → 71d |
| 5 | **E160** | 2026-12-17 → 2026-12-16 (-1d) | 2027-01-21 → 2027-01-20 (-1d) |  |
| DH.1600A-EQP-81 | Gallery 1602 - E160/Line-Ups // Set CRAH-DH1600- 09 | 2026-12-17 → 2026-12-16 (-1d) | 2026-12-17 → 2026-12-16 (-1d) | 24d → 25d |
| DH.1600A-EQP-83 | Gallery 1602 - E160/Line-Ups // Set CRAH-DH1600- 10 | 2026-12-17 → 2026-12-16 (-1d) | 2026-12-17 → 2026-12-16 (-1d) | 24d → 25d |
| DH.1600A-EQP-85 | Gallery 1602 - E160/Line-Ups // Set MOD-E160-01 | 2026-12-17 → 2026-12-16 (-1d) | 2026-12-17 → 2026-12-16 (-1d) | 72d → 73d |
| DH.1600A-EQP-86 | Gallery 1602 - E160/Line-Ups // Set MOD-E160-02 | 2026-12-17 → 2026-12-16 (-1d) | 2026-12-17 → 2026-12-16 (-1d) | 72d → 73d |
| DH.1600A-EQP-87 | Gallery 1602 - E160/Line-Ups // Set CDU-DH1600- 09 | 2026-12-18 → 2026-12-17 (-1d) | 2026-12-18 → 2026-12-17 (-1d) | 72d → 73d |
| DH.1600A-EQP-89 | Gallery 1602 - E160/Line-Ups // Pull Feeder from SWD to MOD | 2026-12-18 → 2026-12-17 (-1d) | 2026-12-18 → 2026-12-17 (-1d) | 88d → 89d |
| DH.1600A-EQP-90 | Gallery 1602 - E160/Line-Ups // Pull Cable Tray Feed from MOD to CRAHU's | 2026-12-18 → 2026-12-17 (-1d) | 2026-12-24 → 2026-12-23 (-1d) | 78d → 79d |
| DH.1600A-EQP-92 | Gallery 1602 - E160/Line-Ups // Mount Electrial Gear for Chiller Controls | 2026-12-18 → 2026-12-17 (-1d) | 2027-01-04 → 2026-12-31 (-4d) | 72d → 73d |
| DH.1600A-EQP-88 | Gallery 1602 - E160/Line-Ups // Set CDU-DH1600- 10 | 2026-12-21 → 2026-12-18 (-3d) | 2026-12-21 → 2026-12-18 (-3d) | 72d → 73d |
| DH.1600A-EQP-84 | Gallery 1602 - E160/Line-Ups // Condensate connections to Floor Drains | 2026-12-22 → 2026-12-21 (-1d) | 2027-01-06 → 2027-01-05 (-1d) | 72d → 73d |
| DH.1600A-EQP-91 | Gallery 1602 - E160/Line-Ups // Mechanical Connections to CRAHU Units | 2026-12-24 → 2026-12-23 (-1d) | 2027-01-08 → 2027-01-07 (-1d) | 70d → 71d |
| DH.1600A-EQP-97 | Gallery 1602 - E160/Line-Ups // Pull Feeder and Branch circuits to MIsc equipment and Chiller controls | 2026-12-24 → 2026-12-23 (-1d) | 2027-01-08 → 2027-01-07 (-1d) | 72d → 73d |
| DH.1600A-EQP-93 | Gallery 1602 - E160/Line-Ups // Pull Cable Tray Feed from MOD to CRAHU's | 2026-12-28 → 2026-12-24 (-4d) | 2027-01-04 → 2026-12-31 (-4d) | 78d → 79d |
| DH.1600A-EQP-96 | Gallery 1602 - E160/Line-Ups // Terminate CRAHU Electrical Connections | 2026-12-30 → 2026-12-29 (-1d) | 2027-01-06 → 2027-01-05 (-1d) | 78d → 79d |
| DH.1600A-EQP-99 | Gallery 1602 - E160/Line-Ups // Teminate all Misc Equipment and Chiller Controls | 2026-12-31 → 2026-12-30 (-1d) | 2027-01-14 → 2027-01-13 (-1d) | 72d → 73d |
| DH.1600A-EQP-94 | Gallery 1602 - E160/Line-Ups // Condensate connections to Floor Drains | 2027-01-04 → 2026-12-31 (-4d) | 2027-01-15 → 2027-01-14 (-1d) | 70d → 71d |
| DH.1600A-EQP-95 | Gallery 1602 - E160/Line-Ups // Terminate Mod Panels | 2027-01-05 → 2027-01-04 (-1d) | 2027-01-05 → 2027-01-04 (-1d) | 79d → 80d |
| DH.1600A-EQP-100 | Gallery 1602 - E160/Line-Ups // Electrical Gear FOD Inspection Pre-Start Up | 2027-01-15 → 2027-01-14 (-1d) | 2027-01-19 → 2027-01-15 (-4d) | 72d → 73d |
| DH.1600A-EQP-98 | Gallery 1602 - E160/Line-Ups // Mechanical Gear FOD Inspection Pre-Start Up | 2027-01-19 → 2027-01-15 (-4d) | 2027-01-21 → 2027-01-20 (-1d) | 70d → 71d |
| 6 | **F160** | 2026-12-17 → 2026-12-16 (-1d) | 2027-01-21 → 2027-01-20 (-1d) |  |
| DH.1600A-EQP-101 | Gallery 1602 - F160/Line-Ups // Set CRAH-DH1600- 11 | 2026-12-17 → 2026-12-16 (-1d) | 2026-12-17 → 2026-12-16 (-1d) | 24d → 25d |
| DH.1600A-EQP-103 | Gallery 1602 - F160/Line-Ups // Set CRAH-DH1600- 12 | 2026-12-17 → 2026-12-16 (-1d) | 2026-12-17 → 2026-12-16 (-1d) | 24d → 25d |
| DH.1600A-EQP-105 | Gallery 1602 - F160/Line-Ups // Set MOD-F160-01 | 2026-12-17 → 2026-12-16 (-1d) | 2026-12-17 → 2026-12-16 (-1d) | 72d → 73d |
| DH.1600A-EQP-106 | Gallery 1602 - F160/Line-Ups // Set MOD-F160-02 | 2026-12-17 → 2026-12-16 (-1d) | 2026-12-17 → 2026-12-16 (-1d) | 72d → 73d |
| DH.1600A-EQP-107 | Gallery 1602 - F160/Line-Ups // Set CDU-DH1600- 11 | 2026-12-18 → 2026-12-17 (-1d) | 2026-12-18 → 2026-12-17 (-1d) | 72d → 73d |
| DH.1600A-EQP-109 | Gallery 1602 - F160/Line-Ups // Pull Feeder from SWD to MOD | 2026-12-18 → 2026-12-17 (-1d) | 2026-12-18 → 2026-12-17 (-1d) | 88d → 89d |
| DH.1600A-EQP-110 | Gallery 1602 - F160/Line-Ups // Pull Cable Tray Feed from MOD to CRAHU's | 2026-12-18 → 2026-12-17 (-1d) | 2026-12-24 → 2026-12-23 (-1d) | 78d → 79d |
| DH.1600A-EQP-112 | Gallery 1602 - F160/Line-Ups // Mount Electrial Gear for Chiller Controls | 2026-12-18 → 2026-12-17 (-1d) | 2027-01-04 → 2026-12-31 (-4d) | 72d → 73d |
| DH.1600A-EQP-108 | Gallery 1602 - F160/Line-Ups // Set CDU-DH1600- 12 | 2026-12-21 → 2026-12-18 (-3d) | 2026-12-21 → 2026-12-18 (-3d) | 72d → 73d |
| DH.1600A-EQP-104 | Gallery 1602 - F160/Line-Ups // Condensate connections to Floor Drains | 2026-12-22 → 2026-12-21 (-1d) | 2027-01-06 → 2027-01-05 (-1d) | 72d → 73d |
| DH.1600A-EQP-111 | Gallery 1602 - F160/Line-Ups // Mechanical Connections to CRAHU Units | 2026-12-24 → 2026-12-23 (-1d) | 2027-01-08 → 2027-01-07 (-1d) | 70d → 71d |
| DH.1600A-EQP-117 | Gallery 1602 - F160/Line-Ups // Pull Feeder and Branch circuits to MIsc equipment and Chiller controls | 2026-12-24 → 2026-12-23 (-1d) | 2027-01-08 → 2027-01-07 (-1d) | 72d → 73d |
| DH.1600A-EQP-113 | Gallery 1602 - F160/Line-Ups // Pull Cable Tray Feed from MOD to CRAHU's | 2026-12-28 → 2026-12-24 (-4d) | 2027-01-04 → 2026-12-31 (-4d) | 78d → 79d |
| DH.1600A-EQP-116 | Gallery 1602 - F160/Line-Ups // Terminate CRAHU Electrical Connections | 2026-12-30 → 2026-12-29 (-1d) | 2027-01-06 → 2027-01-05 (-1d) | 78d → 79d |
| DH.1600A-EQP-119 | Gallery 1602 - F160/Line-Ups // Teminate all Misc Equipment and Chiller Controls | 2026-12-31 → 2026-12-30 (-1d) | 2027-01-14 → 2027-01-13 (-1d) | 72d → 73d |
| DH.1600A-EQP-114 | Gallery 1602 - F160/Line-Ups // Condensate connections to Floor Drains | 2027-01-04 → 2026-12-31 (-4d) | 2027-01-15 → 2027-01-14 (-1d) | 70d → 71d |
| DH.1600A-EQP-115 | Gallery 1602 - F160/Line-Ups // Terminate Mod Panels | 2027-01-05 → 2027-01-04 (-1d) | 2027-01-05 → 2027-01-04 (-1d) | 79d → 80d |
| DH.1600A-EQP-120 | Gallery 1602 - F160/Line-Ups // Electrical Gear FOD Inspection Pre-Start Up | 2027-01-15 → 2027-01-14 (-1d) | 2027-01-19 → 2027-01-15 (-4d) | 72d → 73d |
| DH.1600A-EQP-118 | Gallery 1602 - F160/Line-Ups // Mechanical Gear FOD Inspection Pre-Start Up | 2027-01-19 → 2027-01-15 (-4d) | 2027-01-21 → 2027-01-20 (-1d) | 70d → 71d |
| 7 | **G160** | 2026-12-18 → 2026-12-17 (-1d) | 2027-01-22 → 2027-01-21 (-1d) |  |
| DH.1600A-EQP-121 | Gallery 1602 - G160/Line-Ups // Set CRAH-DH1600- 13 | 2026-12-18 → 2026-12-17 (-1d) | 2026-12-18 → 2026-12-17 (-1d) | 24d → 25d |
| DH.1600A-EQP-123 | Gallery 1602 - G160/Line-Ups // Set CRAH-DH1600- 14 | 2026-12-18 → 2026-12-17 (-1d) | 2026-12-18 → 2026-12-17 (-1d) | 24d → 25d |
| DH.1600A-EQP-125 | Gallery 1602 - G160/Line-Ups // Set MOD-G160-01 | 2026-12-18 → 2026-12-17 (-1d) | 2026-12-18 → 2026-12-17 (-1d) | 71d → 72d |
| DH.1600A-EQP-126 | Gallery 1602 - G160/Line-Ups // Set MOD-G160-02 | 2026-12-18 → 2026-12-17 (-1d) | 2026-12-18 → 2026-12-17 (-1d) | 71d → 72d |
| DH.1600A-EQP-127 | Gallery 1602 - G160/Line-Ups // Set CDU-DH1600- 13 | 2026-12-21 → 2026-12-18 (-3d) | 2026-12-21 → 2026-12-18 (-3d) | 71d → 72d |
| DH.1600A-EQP-129 | Gallery 1602 - G160/Line-Ups // Pull Feeder from SWD to MOD | 2026-12-21 → 2026-12-18 (-3d) | 2026-12-21 → 2026-12-18 (-3d) | 87d → 88d |
| DH.1600A-EQP-130 | Gallery 1602 - G160/Line-Ups // Pull Cable Tray Feed from MOD to CRAHU's | 2026-12-21 → 2026-12-18 (-3d) | 2026-12-28 → 2026-12-24 (-4d) | 77d → 78d |
| DH.1600A-EQP-132 | Gallery 1602 - G160/Line-Ups // Mount Electrial Gear for Chiller Controls | 2026-12-21 → 2026-12-18 (-3d) | 2027-01-05 → 2027-01-04 (-1d) | 71d → 72d |
| DH.1600A-EQP-128 | Gallery 1602 - G160/Line-Ups // Set CDU-DH1600- 14 | 2026-12-22 → 2026-12-21 (-1d) | 2026-12-22 → 2026-12-21 (-1d) | 71d → 72d |
| DH.1600A-EQP-124 | Gallery 1602 - G160/Line-Ups // Condensate connections to Floor Drains | 2026-12-23 → 2026-12-22 (-1d) | 2027-01-07 → 2027-01-06 (-1d) | 71d → 72d |
| DH.1600A-EQP-131 | Gallery 1602 - G160/Line-Ups // Mechanical Connections to CRAHU Units | 2026-12-28 → 2026-12-24 (-4d) | 2027-01-11 → 2027-01-08 (-3d) | 69d → 70d |
| DH.1600A-EQP-137 | Gallery 1602 - G160/Line-Ups // Pull Feeder and Branch circuits to MIsc equipment and Chiller controls | 2026-12-28 → 2026-12-24 (-4d) | 2027-01-11 → 2027-01-08 (-3d) | 71d → 72d |
| DH.1600A-EQP-133 | Gallery 1602 - G160/Line-Ups // Pull Cable Tray Feed from MOD to CRAHU's | 2026-12-29 → 2026-12-28 (-1d) | 2027-01-05 → 2027-01-04 (-1d) | 77d → 78d |
| DH.1600A-EQP-136 | Gallery 1602 - G160/Line-Ups // Terminate CRAHU Electrical Connections | 2026-12-31 → 2026-12-30 (-1d) | 2027-01-07 → 2027-01-06 (-1d) | 77d → 78d |
| DH.1600A-EQP-139 | Gallery 1602 - G160/Line-Ups // Teminate all Misc Equipment and Chiller Controls | 2027-01-04 → 2026-12-31 (-4d) | 2027-01-15 → 2027-01-14 (-1d) | 71d → 72d |
| DH.1600A-EQP-134 | Gallery 1602 - G160/Line-Ups // Condensate connections to Floor Drains | 2027-01-05 → 2027-01-04 (-1d) | 2027-01-19 → 2027-01-15 (-4d) | 69d → 70d |
| DH.1600A-EQP-135 | Gallery 1602 - G160/Line-Ups // Terminate Mod Panels | 2027-01-06 → 2027-01-05 (-1d) | 2027-01-06 → 2027-01-05 (-1d) | 78d → 79d |
| DH.1600A-EQP-140 | Gallery 1602 - G160/Line-Ups // Electrical Gear FOD Inspection Pre-Start Up | 2027-01-19 → 2027-01-15 (-4d) | 2027-01-20 → 2027-01-19 (-1d) | 71d → 72d |
| DH.1600A-EQP-138 | Gallery 1602 - G160/Line-Ups // Mechanical Gear FOD Inspection Pre-Start Up | 2027-01-20 → 2027-01-19 (-1d) | 2027-01-22 → 2027-01-21 (-1d) | 69d → 70d |
| 8 | **H160** | 2026-12-18 → 2026-12-17 (-1d) | 2027-01-22 → 2027-01-21 (-1d) |  |
| DH.1600A-EQP-141 | Gallery 1602 - H160/Line-Ups // Set CRAH-DH1600- 15 | 2026-12-18 → 2026-12-17 (-1d) | 2026-12-18 → 2026-12-17 (-1d) | 24d → 25d |
| DH.1600A-EQP-143 | Gallery 1602 - H160/Line-Ups // Set CRAH-DH1600- 16 | 2026-12-18 → 2026-12-17 (-1d) | 2026-12-18 → 2026-12-17 (-1d) | 24d → 25d |
| DH.1600A-EQP-145 | Gallery 1602 - H160/Line-Ups // Set MOD-H160-01 | 2026-12-18 → 2026-12-17 (-1d) | 2026-12-18 → 2026-12-17 (-1d) | 71d → 72d |
| DH.1600A-EQP-146 | Gallery 1602 - H160/Line-Ups // Set MOD-H160-02 | 2026-12-18 → 2026-12-17 (-1d) | 2026-12-18 → 2026-12-17 (-1d) | 71d → 72d |
| DH.1600A-EQP-147 | Gallery 1602 - H160/Line-Ups // Set CDU-DH1600- 15 | 2026-12-21 → 2026-12-18 (-3d) | 2026-12-21 → 2026-12-18 (-3d) | 71d → 72d |
| DH.1600A-EQP-149 | Gallery 1602 - H160/Line-Ups // Pull Feeder from SWD to MOD | 2026-12-21 → 2026-12-18 (-3d) | 2026-12-21 → 2026-12-18 (-3d) | 87d → 88d |
| DH.1600A-EQP-150 | Gallery 1602 - H160/Line-Ups // Pull Cable Tray Feed from MOD to CRAHU's | 2026-12-21 → 2026-12-18 (-3d) | 2026-12-28 → 2026-12-24 (-4d) | 77d → 78d |
| DH.1600A-EQP-152 | Gallery 1602 - H160/Line-Ups // Mount Electrial Gear for Chiller Controls | 2026-12-21 → 2026-12-18 (-3d) | 2027-01-05 → 2027-01-04 (-1d) | 71d → 72d |

| ID | Task | Start | Finish | Total float |
| --- | --- | --- | --- | --- |
| DH.1600A-EQP-148 | Gallery 1602 - H160/Line-Ups // Set CDU-DH1600- 16 | 2026-12-22 → 2026-12-21 (-1d) | 2026-12-22 → 2026-12-21 (-1d) | 71d → 72d |
| DH.1600A-EQP-144 | Gallery 1602 - H160/Line-Ups // Condensate connections to Floor Drains | 2026-12-23 → 2026-12-22 (-1d) | 2027-01-07 → 2027-01-06 (-1d) | 71d → 72d |
| DH.1600A-EQP-151 | Gallery 1602 - H160/Line-Ups // Mechanical Connections to CRAHU Units | 2026-12-28 → 2026-12-24 (-4d) | 2027-01-11 → 2027-01-08 (-3d) | 69d → 70d |
| DH.1600A-EQP-157 | Gallery 1602 - H160/Line-Ups // Pull Feeder and Branch circuits to MIsc equipment and Chiller controls | 2026-12-28 → 2026-12-24 (-4d) | 2027-01-11 → 2027-01-08 (-3d) | 71d → 72d |
| DH.1600A-EQP-153 | Gallery 1602 - H160/Line-Ups // Pull Cable Tray Feed from MOD to CRAHU's | 2026-12-29 → 2026-12-28 (-1d) | 2027-01-05 → 2027-01-04 (-1d) | 77d → 78d |
| DH.1600A-EQP-156 | Gallery 1602 - H160/Line-Ups // Terminate CRAHU Electrical Connections | 2026-12-31 → 2026-12-30 (-1d) | 2027-01-07 → 2027-01-06 (-1d) | 77d → 78d |
| DH.1600A-EQP-159 | Gallery 1602 - H160/Line-Ups // Teminate all Misc Equipment and Chiller Controls | 2027-01-04 → 2026-12-31 (-4d) | 2027-01-15 → 2027-01-14 (-1d) | 71d → 72d |
| DH.1600A-EQP-154 | Gallery 1602 - H160/Line-Ups // Condensate connections to Floor Drains | 2027-01-05 → 2027-01-04 (-1d) | 2027-01-19 → 2027-01-15 (-4d) | 69d → 70d |
| DH.1600A-EQP-155 | Gallery 1602 - H160/Line-Ups // Terminate Mod Panels | 2027-01-06 → 2027-01-05 (-1d) | 2027-01-06 → 2027-01-05 (-1d) | 78d → 79d |
| DH.1600A-EQP-160 | Gallery 1602 - H160/Line-Ups // Electrical Gear FOD Inspection Pre-Start Up | 2027-01-19 → 2027-01-15 (-4d) | 2027-01-20 → 2027-01-19 (-1d) | 71d → 72d |
| DH.1600A-EQP-158 | Gallery 1602 - H160/Line-Ups // Mechanical Gear FOD Inspection Pre-Start Up | 2027-01-20 → 2027-01-19 (-1d) | 2027-01-22 → 2027-01-21 (-1d) | 69d → 70d |
| 9 | **J160** | 2026-12-18 → 2026-12-17 (-1d) | 2027-01-22 → 2027-01-21 (-1d) |  |
| DH.1600A-EQP-161 | Gallery 1602 - J160/Line-Ups // Set CRAH-DH1600- 17 | 2026-12-18 → 2026-12-17 (-1d) | 2026-12-18 → 2026-12-17 (-1d) | 24d → 25d |
| DH.1600A-EQP-163 | Gallery 1602 - J160/Line-Ups // Set CRAH-DH1600- 18 | 2026-12-18 → 2026-12-17 (-1d) | 2026-12-18 → 2026-12-17 (-1d) | 24d → 25d |
| DH.1600A-EQP-165 | Gallery 1602 - J160/Line-Ups // Set MOD-J160-01 | 2026-12-18 → 2026-12-17 (-1d) | 2026-12-18 → 2026-12-17 (-1d) | 71d → 72d |
| DH.1600A-EQP-166 | Gallery 1602 - J160/Line-Ups // Set MOD-J160-02 | 2026-12-18 → 2026-12-17 (-1d) | 2026-12-18 → 2026-12-17 (-1d) | 71d → 72d |
| DH.1600A-EQP-167 | Gallery 1602 - J160/Line-Ups // Set CDU-DH1600- 17 | 2026-12-21 → 2026-12-18 (-3d) | 2026-12-21 → 2026-12-18 (-3d) | 71d → 72d |
| DH.1600A-EQP-169 | Gallery 1602 - J160/Line-Ups // Pull Feeder from SWD to MOD | 2026-12-21 → 2026-12-18 (-3d) | 2026-12-21 → 2026-12-18 (-3d) | 87d → 88d |
| DH.1600A-EQP-170 | Gallery 1602 - J160/Line-Ups // Pull Cable Tray Feed from MOD to CRAHU's | 2026-12-21 → 2026-12-18 (-3d) | 2026-12-28 → 2026-12-24 (-4d) | 77d → 78d |
| DH.1600A-EQP-172 | Gallery 1602 - J160/Line-Ups // Mount Electrial Gear for Chiller Controls | 2026-12-21 → 2026-12-18 (-3d) | 2027-01-05 → 2027-01-04 (-1d) | 71d → 72d |
| DH.1600A-EQP-168 | Gallery 1602 - J160/Line-Ups // Set CDU-DH1600- 18 | 2026-12-22 → 2026-12-21 (-1d) | 2026-12-22 → 2026-12-21 (-1d) | 71d → 72d |
| DH.1600A-EQP-164 | Gallery 1602 - J160/Line-Ups // Condensate connections to Floor Drains | 2026-12-23 → 2026-12-22 (-1d) | 2027-01-07 → 2027-01-06 (-1d) | 71d → 72d |
| DH.1600A-EQP-171 | Gallery 1602 - J160/Line-Ups // Mechanical Connections to CRAHU Units | 2026-12-28 → 2026-12-24 (-4d) | 2027-01-11 → 2027-01-08 (-3d) | 69d → 70d |
| DH.1600A-EQP-177 | Gallery 1602 - J160/Line-Ups // Pull Feeder and Branch circuits to MIsc equipment and Chiller controls | 2026-12-28 → 2026-12-24 (-4d) | 2027-01-11 → 2027-01-08 (-3d) | 71d → 72d |
| DH.1600A-EQP-173 | Gallery 1602 - J160/Line-Ups // Pull Cable Tray Feed from MOD to CRAHU's | 2026-12-29 → 2026-12-28 (-1d) | 2027-01-05 → 2027-01-04 (-1d) | 77d → 78d |
| DH.1600A-EQP-176 | Gallery 1602 - J160/Line-Ups // Terminate CRAHU Electrical Connections | 2026-12-31 → 2026-12-30 (-1d) | 2027-01-07 → 2027-01-06 (-1d) | 77d → 78d |
| DH.1600A-EQP-179 | Gallery 1602 - J160/Line-Ups // Teminate all Misc Equipment and Chiller Controls | 2027-01-04 → 2026-12-31 (-4d) | 2027-01-15 → 2027-01-14 (-1d) | 71d → 72d |
| DH.1600A-EQP-174 | Gallery 1602 - J160/Line-Ups // Condensate connections to Floor Drains | 2027-01-05 → 2027-01-04 (-1d) | 2027-01-19 → 2027-01-15 (-4d) | 69d → 70d |
| DH.1600A-EQP-175 | Gallery 1602 - J160/Line-Ups // Terminate Mod Panels | 2027-01-06 → 2027-01-05 (-1d) | 2027-01-06 → 2027-01-05 (-1d) | 78d → 79d |
| DH.1600A-EQP-180 | Gallery 1602 - J160/Line-Ups // Electrical Gear FOD Inspection Pre-Start Up | 2027-01-19 → 2027-01-15 (-4d) | 2027-01-20 → 2027-01-19 (-1d) | 71d → 72d |
| DH.1600A-EQP-178 | Gallery 1602 - J160/Line-Ups // Mechanical Gear FOD Inspection Pre-Start Up | 2027-01-20 → 2027-01-19 (-1d) | 2027-01-22 → 2027-01-21 (-1d) | 69d → 70d |
| 10 | **K160** | 2026-12-21 → 2026-12-18 (-3d) | 2027-01-25 → 2027-01-22 (-3d) |  |
| DH.1600A-EQP-181 | Gallery 1602 - K160/Line-Ups // Set CRAH-DH1600- 19 | 2026-12-21 → 2026-12-18 (-3d) | 2026-12-21 → 2026-12-18 (-3d) | 24d → 25d |
| DH.1600A-EQP-183 | Gallery 1602 - K160/Line-Ups // Set CRAH-DH1600- 20 | 2026-12-21 → 2026-12-18 (-3d) | 2026-12-21 → 2026-12-18 (-3d) | 24d → 25d |
| DH.1600A-EQP-185 | Gallery 1602 - K160/Line-Ups // Set MOD-K160-01 | 2026-12-21 → 2026-12-18 (-3d) | 2026-12-21 → 2026-12-18 (-3d) | 70d → 71d |
| DH.1600A-EQP-186 | Gallery 1602 - K160/Line-Ups // Set MOD-K160-02 | 2026-12-21 → 2026-12-18 (-3d) | 2026-12-21 → 2026-12-18 (-3d) | 70d → 71d |
| DH.1600A-EQP-187 | Gallery 1602 - K160/Line-Ups // Set CDU-DH1600- 19 | 2026-12-22 → 2026-12-21 (-1d) | 2026-12-22 → 2026-12-21 (-1d) | 70d → 71d |
| DH.1600A-EQP-189 | Gallery 1602 - K160/Line-Ups // Pull Feeder from SWD to MOD | 2026-12-22 → 2026-12-21 (-1d) | 2026-12-22 → 2026-12-21 (-1d) | 86d → 87d |
| DH.1600A-EQP-190 | Gallery 1602 - K160/Line-Ups // Pull Cable Tray Feed from MOD to CRAHU's | 2026-12-22 → 2026-12-21 (-1d) | 2026-12-29 → 2026-12-28 (-1d) | 76d → 77d |
| DH.1600A-EQP-192 | Gallery 1602 - K160/Line-Ups // Mount Electrial Gear for Chiller Controls | 2026-12-22 → 2026-12-21 (-1d) | 2027-01-06 → 2027-01-05 (-1d) | 70d → 71d |
| DH.1600A-EQP-188 | Gallery 1602 - K160/Line-Ups // Set CDU-DH1600- 20 | 2026-12-23 → 2026-12-22 (-1d) | 2026-12-23 → 2026-12-22 (-1d) | 70d → 71d |
| DH.1600A-EQP-184 | Gallery 1602 - K160/Line-Ups // Condensate connections to Floor Drains | 2026-12-24 → 2026-12-23 (-1d) | 2027-01-08 → 2027-01-07 (-1d) | 70d → 71d |
| DH.1600A-EQP-191 | Gallery 1602 - K160/Line-Ups // Mechanical Connections to CRAHU Units | 2026-12-29 → 2026-12-28 (-1d) | 2027-01-12 → 2027-01-11 (-1d) | 68d → 69d |
| DH.1600A-EQP-197 | Gallery 1602 - K160/Line-Ups // Pull Feeder and Branch circuits to MIsc equipment and Chiller controls | 2026-12-29 → 2026-12-28 (-1d) | 2027-01-12 → 2027-01-11 (-1d) | 70d → 71d |
| DH.1600A-EQP-193 | Gallery 1602 - K160/Line-Ups // Pull Cable Tray Feed from MOD to CRAHU's | 2026-12-30 → 2026-12-29 (-1d) | 2027-01-06 → 2027-01-05 (-1d) | 76d → 77d |
| DH.1600A-EQP-196 | Gallery 1602 - K160/Line-Ups // Terminate CRAHU Electrical Connections | 2027-01-04 → 2026-12-31 (-4d) | 2027-01-08 → 2027-01-07 (-1d) | 76d → 77d |
| DH.1600A-EQP-199 | Gallery 1602 - K160/Line-Ups // Teminate all Misc Equipment and Chiller Controls | 2027-01-05 → 2027-01-04 (-1d) | 2027-01-19 → 2027-01-15 (-4d) | 70d → 71d |
| DH.1600A-EQP-194 | Gallery 1602 - K160/Line-Ups // Condensate connections to Floor Drains | 2027-01-06 → 2027-01-05 (-1d) | 2027-01-20 → 2027-01-19 (-1d) | 68d → 69d |
| DH.1600A-EQP-195 | Gallery 1602 - K160/Line-Ups // Terminate Mod Panels | 2027-01-07 → 2027-01-06 (-1d) | 2027-01-07 → 2027-01-06 (-1d) | 77d → 78d |
| DH.1600A-EQP-200 | Gallery 1602 - K160/Line-Ups // Electrical Gear FOD Inspection Pre-Start Up | 2027-01-20 → 2027-01-19 (-1d) | 2027-01-21 → 2027-01-20 (-1d) | 70d → 71d |
| DH.1600A-EQP-198 | Gallery 1602 - K160/Line-Ups // Mechanical Gear FOD Inspection Pre-Start Up | 2027-01-21 → 2027-01-20 (-1d) | 2027-01-25 → 2027-01-22 (-3d) | 68d → 69d |
| 11 | **R160** | 2026-12-21 → 2026-12-18 (-3d) | 2027-02-18 → 2027-02-25 (+7d) |  |
| DH.1600A-EQP-201 | Gallery 1602 - R160/Line-Ups // Set CRAH-DH1600- 21 | 2026-12-21 → 2026-12-18 (-3d) | 2026-12-21 → 2026-12-18 (-3d) | 24d → 25d |
| DH.1600A-EQP-203 | Gallery 1602 - R160/Line-Ups // Set CRAH-DH1600- 22 | 2026-12-21 → 2026-12-18 (-3d) | 2026-12-21 → 2026-12-18 (-3d) | 24d → 25d |
| DH.1600A-EQP-205 | Gallery 1602 - R160/Line-Ups // Set MOD-R160-01 | 2026-12-21 → 2026-12-18 (-3d) | 2026-12-21 → 2026-12-18 (-3d) | 24d → 25d |
| DH.1600A-EQP-206 | Gallery 1602 - R160/Line-Ups // Set MOD-R160-02 | 2026-12-21 → 2026-12-18 (-3d) | 2026-12-21 → 2026-12-18 (-3d) | 24d → 25d |
| DH.1600A-EQP-207 | Gallery 1602 - R160/Line-Ups // Set CDU-DH1600- 21 | 2026-12-22 → 2026-12-21 (-1d) | 2026-12-22 → 2026-12-21 (-1d) | 28d → 29d |
| DH.1600A-EQP-210 | Gallery 1602 - R160/Line-Ups // Pull Cable Tray Feed from MOD to CRAHU's | 2026-12-22 → 2026-12-21 (-1d) | 2026-12-29 → 2026-12-28 (-1d) | 30d → 31d |
| DH.1600A-EQP-212 | Gallery 1602 - R160/Line-Ups // Mount Electrial Gear for Chiller Controls | 2026-12-22 → 2026-12-21 (-1d) | 2027-01-06 → 2027-01-05 (-1d) | 24d → 25d |
| DH.1600A-EQP-208 | Gallery 1602 - R160/Line-Ups // Set CDU-DH1600- 22 | 2026-12-23 → 2026-12-22 (-1d) | 2026-12-23 → 2026-12-22 (-1d) | 28d → 29d |
| DH.1600A-EQP-204 | Gallery 1602 - R160/Line-Ups // Condensate connections to Floor Drains | 2026-12-24 → 2026-12-23 (-1d) | 2027-01-08 → 2027-01-07 (-1d) | 28d → 29d |
| DH.1600A-EQP-221 | Gallery 1602 - R160/Line-Ups // Set SWD-R160 | 2026-12-24 → 2026-12-23 (-1d) | 2026-12-24 → 2026-12-23 (-1d) | 39d → 40d |
| DH.1600A-EQP-222 | Gallery 1602 - R160/Line-Ups // Set SWD-TIE-R160 | 2026-12-28 → 2026-12-24 (-4d) | 2026-12-28 → 2026-12-24 (-4d) | 39d → 40d |
| DH.1600A-EQP-209 | Gallery 1602 - R160/Line-Ups // Pull Feeder from SWD to MOD | 2026-12-29 → 2026-12-28 (-1d) | 2026-12-29 → 2026-12-28 (-1d) | 39d → 40d |
| DH.1600A-EQP-211 | Gallery 1602 - R160/Line-Ups // Mechanical Connections to CRAHU Units | 2026-12-29 → 2026-12-28 (-1d) | 2027-01-12 → 2027-01-11 (-1d) | 26d → 27d |
| DH.1600A-EQP-217 | Gallery 1602 - R160/Line-Ups // Pull Feeder and Branch circuits to MIsc equipment and Chiller controls | 2026-12-29 → 2026-12-28 (-1d) | 2027-01-12 → 2027-01-11 (-1d) | 24d → 25d |
| DH.1600A-EQP-213 | Gallery 1602 - R160/Line-Ups // Pull Cable Tray Feed from MOD to CRAHU's | 2026-12-30 → 2026-12-29 (-1d) | 2027-01-06 → 2027-01-05 (-1d) | 30d → 31d |
| DH.1600A-EQP-216 | Gallery 1602 - R160/Line-Ups // Terminate CRAHU Electrical Connections | 2027-01-04 → 2026-12-31 (-4d) | 2027-01-08 → 2027-01-07 (-1d) | 34d → 35d |
| DH.1600A-EQP-219 | Gallery 1602 - R160/Line-Ups // Teminate all Misc Equipment and Chiller Controls | 2027-01-05 → 2027-01-04 (-1d) | 2027-01-19 → 2027-01-15 (-4d) | 24d → 25d |
| DH.1600A-EQP-214 | Gallery 1602 - R160/Line-Ups // Condensate connections to Floor Drains | 2027-01-06 → 2027-01-05 (-1d) | 2027-01-20 → 2027-01-19 (-1d) | 26d → 27d |

| ID | Task | Start | Finish | Complete | Total float | Predecessors |
| --- | --- | --- | --- | --- | --- | --- |
| DH.1600A-EQP-215 | Gallery 1602 - R160/Line-Ups // Terminate Mod Panels | 2027-01-07 → 2027-01-06 (-1d) | 2027-01-07 → 2027-01-06 (-1d) |  | 35d → 36d |  |
| DH.1600A-EQP-218 | Gallery 1602 - R160/Line-Ups // Mechanical Gear FOD Inspection Pre-Start Up | 2027-01-21 → 2027-01-20 (-1d) | 2027-01-25 → 2027-01-22 (-3d) |  | 26d → 27d |  |
| DH.1600A-EQP-220 | Gallery 1602 - R160/Line-Ups // Electrical Gear FOD Inspection Pre-Start Up | 2027-02-17 → 2027-02-24 (+7d) | 2027-02-18 → 2027-02-25 (+7d) |  | 9d → 4d |  |
| 12 | **Equipment Connections** | 2026-12-30 → 2026-12-29 (-1d) | 2027-01-27 → 2027-01-26 (-1d) |  |  |  |
| 1 | **CRAH** | 2027-01-07 → 2027-01-06 (-1d) | 2027-01-19 → 2027-01-15 (-4d) |  |  |  |
| DH1600.MG.A110.8687 | Gallery 1602 // DH 1600 / Elec Room // CRAH Duct Work Termination | 2027-01-07 → 2027-01-06 (-1d) | 2027-01-08 → 2027-01-07 (-1d) |  | 30d → 31d |  |
| DH1600.MG.A110.8686 | Gallery 1602 // DH 1600 / Elec Room // CRAH Chilled Water | 2027-01-11 → 2027-01-08 (-3d) | 2027-01-12 → 2027-01-11 (-1d) |  | 30d → 31d |  |
| DH1600.MG.A110.8684 | Gallery 1602 // DH 1600 / Elec Room // CRAH Power Connections | 2027-01-13 → 2027-01-12 (-1d) | 2027-01-14 → 2027-01-13 (-1d) |  | 30d → 31d |  |
| DH1600.MG.A110.8685 | Gallery 1602 // DH 1600 / Elec Room // CRAH LV Connections | 2027-01-15 → 2027-01-14 (-1d) | 2027-01-19 → 2027-01-15 (-4d) |  | 30d → 31d |  |
| 2 | **CDU** | 2027-01-20 → 2027-01-19 (-1d) | 2027-01-27 → 2027-01-26 (-1d) |  |  |  |
| DH1600.MG.A110.8690 | Gallery 1602 // DH 1600 / Elec Room // CDU Chilled Water Connections | 2027-01-20 → 2027-01-19 (-1d) | 2027-01-21 → 2027-01-20 (-1d) |  | 24d → 25d |  |
| DH1600.MG.A110.8688 | Gallery 1602 // DH 1600 /Elec Room // CDU Power Connections | 2027-01-22 → 2027-01-21 (-1d) | 2027-01-25 → 2027-01-22 (-3d) |  | 24d → 25d |  |
| DH1600.MG.A110.8689 | Gallery 1602 // DH 1600 / Elec Room // CDU Controls Connections | 2027-01-26 → 2027-01-25 (-1d) | 2027-01-27 → 2027-01-26 (-1d) |  | 24d → 25d |  |
| 3 | **MOD** | 2026-12-30 → 2026-12-29 (-1d) | 2027-01-05 → 2027-01-04 (-1d) |  |  |  |
| DH1600.MG.A110.8691 | Gallery 1602 // DH 1600 / Elec Room // MOD Power Connections | 2026-12-30 → 2026-12-29 (-1d) | 2026-12-31 → 2026-12-30 (-1d) |  | 39d → 40d |  |
| DH1600.MG.A110.8692 | Gallery 1602 // DH 1600 / Elec Room // MOD LV Connections | 2027-01-04 → 2026-12-31 (-4d) | 2027-01-05 → 2027-01-04 (-1d) |  | 39d → 40d |  |
| 4 | **Gallery 1603** | 2026-10-02 → 2026-10-05 (+3d) |  |  |  |  |
| 1 | **Architectural** | 2026-10-02 → 2026-10-05 (+3d) |  |  |  |  |
| B120001.3199 | DH 1600/Gallery 1603 // Install Overhead Cable Ladder / 36" Cable Tray - TFO | 2026-10-14 → 2026-10-05 A (-9d) |  |  |  | DH.16001010 → DH.16001010 FF |
| DH.16001000 | DH 1600/Gallery 1603 // Seal concrete | 2026-10-02 → 2026-10-05 A (+3d) | 2026-10-05 → 2026-10-06 A (+1d) | 0% → 100% | 2d → none | DH.1600660 → DH.1600660 FF |
| DH.16001010 | DH 1600/Gallery 1603 // MEPF overhead layout | 2026-10-06 → 2026-10-05 A (-1d) | 2026-10-13 → 2026-10-20 (+7d) |  |  | DH.16001000 → DH.1600670 SS, DH.16000.1010 FF |
| DH.160012164 | DH 1600/Gallery 1603 // Ready to Receive Equipment |  |  |  |  | DH.16001130 FF → DH.16001130 FF, DH.16001000 |
| DH.1600B-EQP-10 | Gallery 1603 - A160/Line-Ups // Mount Electrial Gear for Chiller Controls |  |  |  |  | Gallery 1603 - A160/Line-Ups // Set MOD A140-02 (Does No apply) → DH.1600B-EQP-4 |
| DH.1600B-EQP-14 | Gallery 1603 - A160/Line-Ups // Terminate Electrical Connections - CRAHU | 2027-01-21 → 2027-01-15 (-6d) | 2027-01-25 → 2027-01-20 (-5d) |  | 66d → 69d | Gallery 1603 - A160/Line-Ups // Pull Cable Tray Feed from MOD to CRAHU's → DH.1600B-EQP-1 |
| DH.1600B-EQP-199 | Gallery 1603 - A160/Line-Ups // Set CDU-DH1600-23 |  |  |  | 68d → 57d | Gallery 1603 - A160/Line-Ups // Set MOD A140-02 (Does No apply) → DH.1600B-EQP-4 |
| DH.1600B-EQP-200 | Gallery 1603 - A160/Line-Ups // Set CDU-DH1600-24 | 2027-01-19 → 2027-01-15 (-4d) | 2027-01-19 → 2027-01-15 (-4d) |  | 68d → 57d | DH.1600B-EQP-199 → DH.1600B-EQP-4 |
| DH.1600B-EQP-15 | Gallery 1603 - A160/Line-Ups // Pull Feeder and Branch circuits to MIsc equipment and Chiller controls |  |  |  |  | DH.1600B-EQP-10 SS+4d → DH.1600B-EQP-199, DH.1600B-EQP-200, DH.1600B-EQP-10 SS+4d |
| DH.1600B-EQP-18 | Gallery 1603 - A160/Line-Ups // Electrical Gear FOD Inspection Pre-Start Up |  |  |  |  | Gallery 1603 - A160/Line-Ups // Terminate MOD Panels, DH.1600B-EQP-17, DH.1600B-EQP-14 → DH.1600B-EQP-14, DH.1600B-EQP-17 |
| DH.1600B-EQP-201 | Gallery 1603 - B160/Line-Ups // Set CDU-DH1600-25 |  |  |  | 68d → 57d | Gallery 1603 - B160/Line-Ups // Set MOD B140-02 (Does No apply) → DH.1600B-EQP-22 |
| DH.1600B-EQP-202 | Gallery 1603 - B160/Line-Ups // Set CDU-DH1600-26 | 2027-01-19 → 2027-01-15 (-4d) | 2027-01-19 → 2027-01-15 (-4d) |  | 68d → 57d | DH.1600B-EQP-201, DH.1600B-EQP-201 FF → DH.1600B-EQP-22 |
| DH.1600B-EQP-28 | Gallery 1603 - B160/Line-Ups // Mount Electrial Gear for Chiller Controls |  |  |  |  | Gallery 1603 - B160/Line-Ups // Set MOD B140-02 (Does No apply) → DH.1600B-EQP-22 |
| DH.1600B-EQP-32 | Gallery 1603 - B160/Line-Ups // Terminate CRAHU Electrical Connections | 2027-01-27 → 2027-01-15 (-12d) | 2027-02-02 → 2027-01-22 (-11d) |  | 60d → 67d | Gallery 1603 - B160/Line-Ups // Pull Cable Tray Feed from MOD to CRAHU's, Gallery 1603 - B160/Line-Ups // Pull Cable Tray Feed from MOD to CRAHU's SS+2d → DH.1600B-EQP-19 |
| DH.1600B-EQP-33 | Gallery 1603 - B160/Line-Ups // Pull Feeder and Branch circuits to MIsc equipment and Chiller controls |  |  |  |  | DH.1600B-EQP-28 SS+4d → DH.1600B-EQP-202, DH.1600B-EQP-201, DH.1600B-EQP-28 SS+4d |
| DH.1600B-EQP-36 | Gallery 1603 - B160/Line-Ups // Electrical Gear FOD Inspection Pre-Start Up |  |  |  |  | Gallery 1603 - B160/Line-Ups // Terminat Mod Panels, DH.1600B-EQP-35, DH.1600B-EQP-32 → DH.1600B-EQP-32, DH.1600B-EQP-35 |
| DH.1600B-EQP-203 | Gallery 1603 - C160/Line-Ups // Set CDU-DH1600-27 |  |  |  | 68d → 57d | Gallery 1603 - C160/Line-Ups // Set MOD C140-02 (Does No apply) → DH.1600B-EQP-40 |
| DH.1600B-EQP-204 | Gallery 1603 - C160/Line-Ups // Set CDU-DH1600-28 | 2027-01-19 → 2027-01-15 (-4d) | 2027-01-19 → 2027-01-15 (-4d) |  | 68d → 57d | DH.1600B-EQP-203, DH.1600B-EQP-203 FF → DH.1600B-EQP-40 |
| DH.1600B-EQP-46 | Gallery 1603 - C160/Line-Ups // Mount Electrial Gear for Chiller Controls |  |  |  |  | Gallery 1603 - C160/Line-Ups // Set MOD C140-02 (Does No apply) → DH.1600B-EQP-40 |
| DH.1600B-EQP-50 | Gallery 1603 - C160/Line-Ups // Terminate CRAHU Electrical Connections | 2027-01-27 → 2027-01-15 (-12d) | 2027-02-02 → 2027-01-22 (-11d) |  | 60d → 67d | Gallery 1603 - C160/Line-Ups // Pull Cable Tray Feed from MOD to CRAHU's, Gallery 1603 - C160/Line-Ups // Pull Cable Tray Feed from MOD to CRAHU's SS+2d → DH.1600B-EQP-37 |
| DH.1600B-EQP-51 | Gallery 1603 - C160/Line-Ups // Pull Feeder and Branch circuits to MIsc equipment and Chiller controls |  |  |  |  | DH.1600B-EQP-46 SS+4d → DH.1600B-EQP-204, DH.1600B-EQP-203, DH.1600B-EQP-46 SS+4d |
| DH.1600B-EQP-54 | Gallery 1603 - C160/Line-Ups // Electrical Gear FOD Inspection Pre-Start Up |  |  |  |  | Gallery 1603 - C160/Line-Ups // Terminat Mod Panels, DH.1600B-EQP-53, DH.1600B-EQP-50 → DH.1600B-EQP-50, DH.1600B-EQP-53 |
| DH.1600B-EQP-205 | Gallery 1603 - D160/Line-Ups // Set CDU-DH1600-29 |  |  |  | 67d → 56d | Gallery 1603 - D160/Line-Ups // Set MOD D140-02 (Does No apply) → DH.1600B-EQP-58 |
| DH.1600B-EQP-206 | Gallery 1603 - D160/Line-Ups // Set CDU-DH1600-30 | 2027-01-20 → 2027-01-19 (-1d) | 2027-01-20 → 2027-01-19 (-1d) |  | 67d → 56d | DH.1600B-EQP-205 → DH.1600B-EQP-58 |
| DH.1600B-EQP-64 | Gallery 1603 - D160/Line-Ups // Mount Electrial Gear for Chiller Controls |  |  |  |  | Gallery 1603 - D160/Line-Ups // Set MOD D140-02 (Does No apply) → DH.1600B-EQP-58 |
| DH.1600B-EQP-68 | Gallery 1603 - D160/Line-Ups // Terminate CRAHU Electrical Connections | 2027-01-28 → 2027-01-19 (-9d) | 2027-02-03 → 2027-01-25 (-9d) |  | 59d → 66d | Gallery 1603 - D160/Line-Ups // Pull Cable Tray Feed from MOD to CRAHU's, Gallery 1603 - D160/Line-Ups // Pull Cable Tray Feed from MOD to CRAHU's SS+2d → DH.1600B-EQP-55 |
| DH.1600B-EQP-69 | Gallery 1603 - D160/Line-Ups // Pull Feeder and Branch circuits to MIsc equipment and Chiller controls |  |  |  |  | DH.1600B-EQP-64 SS+4d → DH.1600B-EQP-206, DH.1600B-EQP-205, DH.1600B-EQP-64 SS+4d |
| DH.1600B-EQP-72 | Gallery 1603 - D160/Line-Ups // Electrical Gear FOD Inspection Pre-Start Up |  |  |  |  | Gallery 1603 - D160/Line-Ups // Terminat Mod Panels, DH.1600B-EQP-71, DH.1600B-EQP-68 → DH.1600B-EQP-68, DH.1600B-EQP-71 |
| DH.1600B-EQP-207 | Gallery 1603 - E160/Line-Ups // Set CDU-DH1600-31 |  |  |  | 67d → 56d | Gallery 1603 - E160/Line-Ups // Set MOD E140-02 (Does No apply) → DH.1600B-EQP-76 |
| DH.1600B-EQP-208 | Gallery 1603 - E160/Line-Ups // Set CDU-DH1600-32 | 2027-01-20 → 2027-01-19 (-1d) | 2027-01-20 → 2027-01-19 (-1d) |  | 67d → 56d | DH.1600B-EQP-207 → DH.1600B-EQP-76 |
| DH.1600B-EQP-82 | Gallery 1603 - E160/Line-Ups // Mount Electrial Gear for Chiller Controls |  |  |  |  | Gallery 1603 - E160/Line-Ups // Set MOD E140-02 (Does No apply) → DH.1600B-EQP-76 |
| DH.1600B-EQP-86 | Gallery 1603 - E160/Line-Ups // Terminate CRAHU Electrical Connections | 2027-01-28 → 2027-01-19 (-9d) | 2027-02-03 → 2027-01-25 (-9d) |  | 59d → 66d | Gallery 1603 - E160/Line-Ups // Pull Cable Tray Feed from MOD to CRAHU's, Gallery 1603 - E160/Line-Ups // Pull Cable Tray Feed from MOD to CRAHU's SS+2d → DH.1600B-EQP-73 |
| DH.1600B-EQP-87 | Gallery 1603 - E160/Line-Ups // Pull Feeder and Branch circuits to MIsc equipment and Chiller controls |  |  |  |  | DH.1600B-EQP-82 SS+4d → DH.1600B-EQP-208, DH.1600B-EQP-207, DH.1600B-EQP-82 SS+4d |
| DH.1600B-EQP-90 | Gallery 1603 - E160/Line-Ups // Electrical Gear FOD Inspection Pre-Start Up |  |  |  |  | Gallery 1603 - E160/Line-Ups // Terminat Mod Panels, DH.1600B-EQP-89, DH.1600B-EQP-86 → DH.1600B-EQP-86, DH.1600B-EQP-89 |
| DH.1600B-EQP-100 | Gallery 1603 - F160/Line-Ups // Mount Electrial Gear for Chiller Controls |  |  |  |  | Gallery 1603 - F160/Line-Ups // Set MOD F140-02 (Does No apply) → DH.1600B-EQP-94 |
| DH.1600B-EQP-104 | Gallery 1603 - F160/Line-Ups // Terminate CRAHU Electrical Connections | 2027-01-28 → 2027-01-19 (-9d) | 2027-02-03 → 2027-01-25 (-9d) |  | 59d → 66d | Gallery 1603 - F160/Line-Ups // Pull Cable Tray Feed from MOD to CRAHU's, Gallery 1603 - F160/Line-Ups // Pull Cable Tray Feed from MOD to CRAHU's SS+2d → DH.1600B-EQP-91 |
| DH.1600B-EQP-209 | Gallery 1603 - F160/Line-Ups // Set CDU-DH1600-33 |  |  |  | 67d → 56d | Gallery 1603 - F160/Line-Ups // Set MOD F140-02 (Does No apply) → DH.1600B-EQP-94 |
| DH.1600B-EQP-210 | Gallery 1603 - F160/Line-Ups // Set CDU-DH1600-34 | 2027-01-20 → 2027-01-19 (-1d) | 2027-01-20 → 2027-01-19 (-1d) |  | 67d → 56d | DH.1600B-EQP-209 → DH.1600B-EQP-94 |
| DH.1600B-EQP-105 | Gallery 1603 - F160/Line-Ups // Pull Feeder and Branch circuits to MIsc equipment and Chiller controls |  |  |  |  | DH.1600B-EQP-100 SS+4d → DH.1600B-EQP-209, DH.1600B-EQP-210, DH.1600B-EQP-100 SS+4d |
| DH.1600B-EQP-108 | Gallery 1603 - F160/Line-Ups // Electrical Gear FOD Inspection Pre-Start Up |  |  |  |  | Gallery 1603 - F160/Line-Ups // Terminat Mod Panels, DH.1600B-EQP-107, DH.1600B-EQP-104 → DH.1600B-EQP-104, DH.1600B-EQP-107 |
| DH.1600B-EQP-118 | Gallery 1603 - G160/Line-Ups // Mount Electrial Gear for Chiller Controls |  |  |  |  | Gallery 1603 - G160/Line-Ups // Set MOD G140-02 (Does No apply) → DH.1600B-EQP-112 |
| DH.1600B-EQP-122 | Gallery 1603 - G160/Line-Ups // Terminate CRAHU Electrical Connections | 2027-01-29 → 2027-01-20 (-9d) | 2027-02-04 → 2027-01-26 (-9d) |  | 58d → 65d | Gallery 1603 - G160/Line-Ups // Pull Cable Tray Feed from MOD to CRAHU's, Gallery 1603 - G160/Line-Ups // Pull Cable Tray Feed from MOD to CRAHU's SS+2d → DH.1600B-EQP-109 |
| DH.1600B-EQP-211 | Gallery 1603 - G160/Line-Ups // Set CDU-DH1600-35 |  |  |  | 66d → 55d | Gallery 1603 - G160/Line-Ups // Set MOD G140-02 (Does No apply) → DH.1600B-EQP-112 |
| DH.1600B-EQP-212 | Gallery 1603 - G160/Line-Ups // Set CDU-DH1600-36 | 2027-01-21 → 2027-01-20 (-1d) | 2027-01-21 → 2027-01-20 (-1d) |  | 66d → 55d | DH.1600B-EQP-211 → DH.1600B-EQP-112 |
| DH.1600B-EQP-123 | Gallery 1603 - G160/Line-Ups // Pull Feeder and Branch circuits to MIsc equipment and Chiller controls |  |  |  |  | DH.1600B-EQP-118 SS+4d → DH.1600B-EQP-212, DH.1600B-EQP-211, DH.1600B-EQP-118 SS+4d |
| DH.1600B-EQP-126 | Gallery 1603 - G160/Line-Ups // Electrical Gear FOD Inspection Pre-Start Up |  |  |  |  | Gallery 1603 - G160/Line-Ups // Terminat Mod Panels, DH.1600B-EQP-125, DH.1600B-EQP-122 → DH.1600B-EQP-122, DH.1600B-EQP-125 |
| DH.1600B-EQP-136 | Gallery 1603 - H160/Line-Ups // Mount Electrial Gear for Chiller Controls |  |  |  |  | Gallery 1603 - H160/Line-Ups // Set MOD H140-02 → DH.1600B-EQP-130 |
| DH.1600B-EQP-140 | Gallery 1603 - H160/Line-Ups // Terminate CRAHU Electrical Connections | 2027-01-29 → 2027-01-20 (-9d) | 2027-02-04 → 2027-01-26 (-9d) |  | 58d → 65d | Gallery 1603 - H160/Line-Ups // Pull Cable Tray Feed from MOD to CRAHU's, Gallery 1603 - H160/Line-Ups // Pull Cable Tray Feed from MOD to CRAHU's SS+2d → DH.1600B-EQP-127 |
| DH.1600B-EQP-213 | Gallery 1603 - H160/Line-Ups // Set CDU-DH1600-37 |  |  |  | 66d → 55d | Gallery 1603 - H160/Line-Ups // Set MOD H140-02 → DH.1600B-EQP-130 |
| DH.1600B-EQP-214 | Gallery 1603 - H160/Line-Ups // Set CDU-DH1600-38 | 2027-01-21 → 2027-01-20 (-1d) | 2027-01-21 → 2027-01-20 (-1d) |  | 66d → 55d | DH.1600B-EQP-213 → DH.1600B-EQP-130 |
| DH.1600B-EQP-141 | Gallery 1603 - H160/Line-Ups // Pull Feeder and Branch circuits to MIsc equipment and Chiller controls |  |  |  |  | DH.1600B-EQP-136 SS+4d → DH.1600B-EQP-214, DH.1600B-EQP-213, DH.1600B-EQP-136 SS+4d |
| DH.1600B-EQP-144 | Gallery 1603 - H160/Line-Ups // Electrical Gear FOD Inspection Pre-Start Up |  |  |  |  | Gallery 1603 - H160/Line-Ups // Terminat Mod Panels, DH.1600B-EQP-143, DH.1600B-EQP-140 → DH.1600B-EQP-140, DH.1600B-EQP-143 |

| ID | Task | Start | Finish | Complete | Total float | Predecessors |
| --- | --- | --- | --- | --- | --- | --- |
| DH.1600B-EQP-154 | Gallery 1603 - J160/Line-Ups // Mount Electrial Gear for Chiller Controls |  |  |  |  | Gallery 1603 - J160/Line-Ups // Set MOD J140-02 → DH.1600B-EQP-148 |
| DH.1600B-EQP-158 | Gallery 1603 - J160/Line-Ups // Terminate CRAHU Electrical Connections | 2027-01-29 → 2027-01-20 (-9d) | 2027-02-04 → 2027-01-26 (-9d) |  | 58d → 65d | Gallery 1603 - J160/Line-Ups // Pull Cable Tray Feed from MOD to CRAHU's, Gallery 1603 - J160/Line-Ups // Pull Cable Tray Feed from MOD to CRAHU's SS+2d → DH.1600B-EQP-145 |
| DH.1600B-EQP-215 | Gallery 1603 - J160/Line-Ups // Set CDU-DH1600-39 |  |  |  | 66d → 55d | Gallery 1603 - J160/Line-Ups // Set MOD J140-02 → DH.1600B-EQP-148 |
| DH.1600B-EQP-216 | Gallery 1603 - J160/Line-Ups // Set CDU-DH1600-40 | 2027-01-21 → 2027-01-20 (-1d) | 2027-01-21 → 2027-01-20 (-1d) |  | 66d → 55d | DH.1600B-EQP-215 → DH.1600B-EQP-148 |
| DH.1600B-EQP-159 | Gallery 1603 - J160/Line-Ups // Pull Feeder and Branch circuits to MIsc equipment and Chiller controls |  |  |  |  | DH.1600B-EQP-154 SS+4d → DH.1600B-EQP-216, DH.1600B-EQP-215, DH.1600B-EQP-154 SS+4d |
| DH.1600B-EQP-162 | Gallery 1603 - J160/Line-Ups // Electrical Gear FOD Inspection Pre-Start Up |  |  |  |  | Gallery 1603 - J160/Line-Ups // Terminat Mod Panels, DH.1600B-EQP-161, DH.1600B-EQP-158 → DH.1600B-EQP-158, DH.1600B-EQP-161 |
| DH.1600B-EQP-172 | Gallery 1603 - K160/Line-Ups // Mount Electrial Gear for Chiller Controls |  |  |  |  | Gallery 1603 - K160/Line-Ups // Set MOD K140-02 (Does No apply) → DH.1600B-EQP-166 |
| DH.1600B-EQP-176 | Gallery 1603 - K160/Line-Ups // Terminate CRAHU Electrical Connections | 2027-02-01 → 2027-01-21 (-11d) | 2027-02-05 → 2027-01-27 (-9d) |  | 57d → 64d | Gallery 1603 - K160/Line-Ups // Pull Cable Tray Feed from MOD to CRAHU's, Gallery 1603 - K160/Line-Ups // Pull Cable Tray Feed from MOD to CRAHU's SS+2d → DH.1600B-EQP-163 |
| DH.1600B-EQP-180 | Gallery 1603 - K160/Line-Ups // Electrical Gear FOD Inspection Pre-Start Up |  |  |  |  | Gallery 1603 - K160/Line-Ups // Terminat Mod Panels, DH.1600B-EQP-179, DH.1600B-EQP-176 → DH.1600B-EQP-176, DH.1600B-EQP-179 |
| DH.1600B-EQP-190 | Gallery 1603 - R160/Line-Ups // Mount Electrial Gear for Chiller Controls |  |  |  |  | Gallery 1603 - R160/Line-Ups // Set MOD R140-02 (Does No apply) → DH.1600B-EQP-184 |
| DH.1600B-EQP-194 | Gallery 1603 - R160/Line-Ups // Terminate CRAHU Electrical Connections | 2027-02-01 → 2027-01-21 (-11d) | 2027-02-05 → 2027-01-27 (-9d) |  | 15d → 22d | Gallery 1603 - R160/Line-Ups // Pull Cable Tray Feed from MOD to CRAHU's, Gallery 1603 - R160/Line-Ups // Pull Cable Tray Feed from MOD to CRAHU's SS+2d → DH.1600B-EQP-181 |
| DH.1600B-EQP-198 | Gallery 1603 - R160/Line-Ups // Electrical Gear FOD Inspection Pre-Start Up | 2027-02-08 → 2027-02-04 (-4d) | 2027-02-09 → 2027-02-05 (-4d) |  | 15d → 17d | Gallery 1603 - R160/Line-Ups // Terminat Mod Panels, DH.1600B-EQP-197, DH.1600B-EQP-194 → DH.1600B-EQP-194, DH.1600B-EQP-197 |
| 12 | **Equipment Connections** | 2027-01-22 → 2027-01-21 (-1d) | 2027-02-16 → 2027-02-11 (-5d) |  |  |  |
| 1 | **CRAH** | 2027-02-04 → 2027-01-21 (-14d) | 2027-02-16 → 2027-02-01 (-15d) |  |  |  |
| DH1600-004 | Gallery 1603 // DH 1600 / Elec Room // CRAH Duct Work Termination | 2027-02-04 → 2027-01-21 (-14d) | 2027-02-05 → 2027-01-22 (-14d) |  | 11d → 21d | Gallery 1603 - R160/Line-Ups // Pull Cable Tray Feed from MOD to CRAHU's → DH.1600B-EQP-184 |
| DH1600-003 | Gallery 1603 // DH 1600 / Elec Room // CRAH Chilled Water | 2027-02-08 → 2027-01-25 (-14d) | 2027-02-09 → 2027-01-26 (-14d) |  | 11d → 21d |  |
| DH1600-001 | Gallery 1603 // DH 1600 / Elec Room // CRAH Power Connections | 2027-02-10 → 2027-01-27 (-14d) | 2027-02-11 → 2027-01-28 (-14d) |  | 11d → 21d |  |
| DH1600-002 | Gallery 1603 // DH 1600 / Elec Room // CRAH LV Connections | 2027-02-12 → 2027-01-29 (-14d) | 2027-02-16 → 2027-02-01 (-15d) |  | 11d → 21d |  |
| 3 | **MOD** | 2027-01-22 → 2027-02-04 (+13d) | 2027-01-27 → 2027-02-09 (+13d) |  |  |  |
| DH1600-008 | Gallery 1603 // DH 1600 / Elec Room // MOD Power Connections | 2027-01-22 → 2027-02-04 (+13d) | 2027-01-25 → 2027-02-05 (+11d) |  | 24d → 15d | Gallery 1603 - R160/Line-Ups // Pull Feeder from SWD to MOD → DH.1600B-EQP-195 |
| DH1600-009 | Gallery 1603 // DH 1600 / Elec Room // MOD LV Connections | 2027-01-26 → 2027-02-08 (+13d) | 2027-01-27 → 2027-02-09 (+13d) |  | 24d → 15d |  |
| 6 | **Corridors** | 2026-10-06 → 2026-09-30 (-6d) |  |  |  |  |
| 3 | **Corridor 1000** | 2026-10-06 → 2026-09-30 (-6d) |  |  |  |  |
| DH.160012078 | DH 1600/Corridor 1000 // Seal concrete | 2026-10-06 → 2026-09-30 A (-6d) | 2026-10-06 → 2026-09-30 A (-6d) | 0% → 100% | 47d → none | DH.16001000 → DH.16001000 FF |
| DH.160012068 | DH 1600/Corridor 1000 // MEPF Overhead Hangers | 2026-10-07 → 2026-10-05 A (-2d) | 2026-10-14 → 2026-10-09 A (-5d) | 0% → 100% | 47d → none | DH.160012078 → DH.16006270 |
| B120001.3203 | DH 1600/Corridor 1000 // Install Overhead Cable Ladder / 36" Cable Tray - TFO | 2026-10-15 → 2026-10-14 (-1d) | 2026-10-21 → 2026-10-20 (-1d) |  | 49d → 50d |  |
| B120001.3204 | DH 1600/Corridor 1000 // Install Overhead HAC - TFO | 2026-10-22 → 2026-10-21 (-1d) | 2026-10-28 → 2026-10-27 (-1d) |  | 49d → 50d |  |
| DH.160012071 | DH 1600/Corridor 1000 // MEPF high overhead install | 2026-10-29 → 2026-10-28 (-1d) | 2026-11-02 → 2026-10-30 (-3d) |  | 49d → 50d |  |
| DH.160012166 | DH 1600/Corridor 1000 // Ready to Receive Equipment |  |  |  |  | DH.160012081 FF → DH.160012081 FF, DH.160012078 |
| 2 | **Corridor 1000G** | 2026-10-07 → 2026-09-30 (-7d) | 2026-12-17 → 2026-12-22 (+5d) |  |  |  |
| DH.160012092 | DH 1600/Corridor 1000G // Seal concrete | 2026-10-07 → 2026-09-30 A (-7d) | 2026-10-07 → 2026-09-30 A (-7d) | 0% → 100% | 50d → none | DH.160012078 → DH.160012078 FF |
| DH.160012082 | DH 1600/Corridor 1000G // MEPF Overhead Hangers | 2026-10-15 → 2026-10-05 A (-10d) | 2026-10-21 → 2026-10-09 A (-12d) | 0% → 100% | 47d → none | DH.160012068 → DH.16006270 |
| B120001.3205 | DH 1600/Corridor 1000G // Install Overhead Cable Ladder / 36" Cable Tray - TFO | 2026-10-08 → 2026-10-14 (+6d) | 2026-10-15 → 2026-10-20 (+5d) |  | 50d → 47d |  |
| B120001.3206 | DH 1600/Corridor 1000G // Install Overhead HAC - TFO | 2026-10-16 → 2026-10-21 (+5d) | 2026-10-22 → 2026-10-27 (+5d) |  | 50d → 47d |  |
| DH.160012085 | DH 1600/Corridor 1000G // MEPF high overhead install | 2026-10-23 → 2026-10-28 (+5d) | 2026-10-27 → 2026-10-30 (+3d) |  | 50d → 47d | DH.160012092, B120001.3206 → B120001.3206 |
| DH.160012083 | DH 1600/Corridor 1000G // Frame walls | 2026-10-28 → 2026-11-02 (+5d) | 2026-10-30 → 2026-11-04 (+5d) |  | 50d → 47d |  |
| DH.160012086 | DH 1600/Corridor 1000G // MEP rough in walls | 2026-11-02 → 2026-11-05 (+3d) | 2026-11-04 → 2026-11-09 (+5d) |  | 50d → 47d |  |
| DH.160012087 | DH 1600/Corridor 1000G // In wall inspection | 2026-11-05 → 2026-11-10 (+5d) | 2026-11-05 → 2026-11-10 (+5d) |  | 50d → 47d |  |
| DH.160012084 | DH 1600/Corridor 1000G// Install Top Down Sheetrock | 2026-11-06 → 2026-11-12 (+6d) | 2026-11-10 → 2026-11-16 (+6d) |  | 50d → 47d |  |
| DH.160012088 | DH 1600/Corridor 1000G// Install Balance of Sheetrock on Walls | 2026-11-12 → 2026-11-17 (+5d) | 2026-11-18 → 2026-11-23 (+5d) |  | 50d → 47d |  |
| DH.160012089 | DH 1600/Corridor 1000G // Tape and finish walls | 2026-11-19 → 2026-11-24 (+5d) | 2026-12-01 → 2026-12-04 (+3d) |  | 50d → 47d |  |
| DH.160012090 | DH 1600/Corridor 1000G) // Install wall door frames | 2026-12-02 → 2026-12-07 (+5d) | 2026-12-04 → 2026-12-09 (+5d) |  | 50d → 47d |  |
| DH.160012091 | DH 1600/Corridor 1000G // Prime and Paint first coat walls | 2026-12-02 → 2026-12-07 (+5d) | 2026-12-04 → 2026-12-09 (+5d) |  | 50d → 47d |  |
| DH.160012093 | DH 1600/Corridor 1000G // Install lights and exit signs | 2026-12-07 → 2026-12-10 (+3d) | 2026-12-09 → 2026-12-14 (+5d) |  | 50d → 47d |  |
| DH.160012094 | DH 1600/Corridor 1000G // Final Coat Paint & Touchup Walls | 2026-12-10 → 2026-12-15 (+5d) | 2026-12-15 → 2026-12-18 (+3d) |  | 50d → 47d |  |
| DH.160012095 | DH 1600/Corridor 1000G // Install MEP Devices and Trim | 2026-12-16 → 2026-12-21 (+5d) | 2026-12-17 → 2026-12-22 (+5d) |  | 50d → 47d |  |
| DH.160012167 | DH 1600/Corridor 1000G // Ready to Receive Equipment | 2026-12-17 → 2026-12-22 (+5d) | 2026-12-17 → 2026-12-22 (+5d) |  | 50d → 47d | DH.160012095 FF → DH.160012095 FF, DH.160012092 |
| 10 | **Flex 1000G1** | 2026-10-08 → 2026-10-01 (-7d) | 2026-12-30 → 2026-12-21 (-9d) |  |  |  |
| DH.1600..1000 | DH 1600/Flex 1000G1 // Seal Concrete | 2026-10-08 → 2026-10-01 A (-7d) | 2026-10-09 → 2026-10-02 A (-7d) | 0% → 100% | 54d → none |  |
| DH.1600..1010 | DH 1600/Flex 1000G1 // MEPF Layout of Overhead Supports | 2026-10-22 → 2026-10-14 (-8d) | 2026-10-23 → 2026-10-15 (-8d) |  | 47d → 53d |  |
| DH.1600..1020 | DH 1600/Flex 1000G1 // MEPF Install High Overhead Systems | 2026-10-26 → 2026-10-16 (-10d) | 2026-11-02 → 2026-10-23 (-10d) |  | 47d → 53d |  |
| DH.1600..1040 | DH 1600/Flex 1000G1 // Frame Walls including Backing | 2026-11-03 → 2026-10-26 (-8d) | 2026-11-06 → 2026-10-29 (-8d) |  | 47d → 53d |  |
| DH.1600..1060 | DH 1600/Flex 1000G1 // MEPF Install Rough Wall | 2026-11-09 → 2026-10-30 (-10d) | 2026-11-10 → 2026-11-02 (-8d) |  | 47d → 53d |  |
| DH.1600..1080 | DH 1600/Flex 1000G1 // Rough Wall Inspection (Approval to Close up) | 2026-11-12 → 2026-11-03 (-9d) | 2026-11-12 → 2026-11-03 (-9d) |  | 47d → 53d |  |
| DH.1600..1070 | DH 1600/Flex 1000G1 // Install Top Down Sheet Rock | 2026-11-13 → 2026-11-04 (-9d) | 2026-11-19 → 2026-11-10 (-9d) |  | 47d → 53d |  |
| DH.1600..1090 | DH 1600/Flex 1000G1 // Install Balance of Sheetrock | 2026-11-20 → 2026-11-12 (-8d) | 2026-11-24 → 2026-11-16 (-8d) |  | 47d → 53d |  |
| DH.1600..1100 | DH 1600/Flex 1000G1 // Tape and Finish Walls | 2026-11-25 → 2026-11-17 (-8d) | 2026-12-03 → 2026-11-24 (-9d) |  | 47d → 53d |  |
| DH.1600..1110 | DH 1600/Flex 1000G1 // Prime and First Coat of Paint | 2026-12-04 → 2026-11-25 (-9d) | 2026-12-07 → 2026-11-27 (-10d) |  | 47d → 53d |  |
| DH.1600..1120 | DH 1600/Flex 1000G1 // Install MEPF Overhead Ceiling Rough | 2026-12-08 → 2026-11-30 (-8d) | 2026-12-10 → 2026-12-02 (-8d) |  | 47d → 53d |  |
| DH.1600..1130 | DH 1600/Flex 1000G1 // Install Lighting, Fire Alarm & Fire Protection | 2026-12-11 → 2026-12-03 (-8d) | 2026-12-14 → 2026-12-04 (-10d) |  | 47d → 53d |  |
| DH.1600..1140 | DH 1600/Flex 1000G1 // Wall Touch up Final Coat of Paint | 2026-12-15 → 2026-12-07 (-8d) | 2026-12-17 → 2026-12-09 (-8d) |  | 47d → 53d |  |
| DH.1600..1050 | DH 1600/Flex 1000G1 // Install Door Frames | 2026-12-18 → 2026-12-10 (-8d) | 2026-12-18 → 2026-12-10 (-8d) |  | 86d → 92d |  |
| DH.1600..1150 | DH 1600/Flex 1000G1 // Install Wall Base, Trim, and Devices | 2026-12-18 → 2026-12-10 (-8d) | 2026-12-22 → 2026-12-14 (-8d) |  | 47d → 53d |  |
| DH.1600..1161 | DH 1600/Flex 1000G1 // Ready to Receive Equipment | 2026-12-22 → 2026-12-14 (-8d) | 2026-12-22 → 2026-12-14 (-8d) |  | 47d → 53d |  |
| DH.1600..1160 | DH 1600/Flex 1000G1 // Suffolk Pre Punch | 2026-12-23 → 2026-12-15 (-8d) | 2026-12-30 → 2026-12-21 (-9d) |  | 84d → 90d |  |
| 13 | **Restroom-Dock & Janitor** | 2026-09-30 → 2026-09-17 (-13d) | 2026-12-10 → 2026-11-19 (-21d) |  |  |  |
| DH.1600020 | DH 1600/Restroom-Dock & Janitor // Layout walls | 2026-10-07 → 2026-09-17 A (-20d) | 2026-10-14 → 2026-09-23 A (-21d) | 0% → 100% | 55d → none | DH.1600010 → ADMIN.5562 |
| DH.1600030 | DH 1600/Restroom-Dock & Janitor // Frame walls | 2026-10-15 → 2026-09-24 A (-21d) | 2026-10-21 → 2026-09-30 A (-21d) | 0% → 100% | 55d → none | DH.1600020 → DH.1600020, ADMIN.5562 |
| DH.1600000 | DH 1600/Restroom-Dock & Janitor // Seal concrete | 2026-11-20 → 2026-09-30 A (-51d) | 2026-11-27 → 2026-10-06 A (-52d) | 0% → 100% | 55d → none | DH.1600100 → DH.1600..1000 |
| DH.1600050 | DH 1600/Restroom-Dock & Janitor // Install Top Down Sheetrock | 2026-10-20 → 2026-10-01 A (-19d) | 2026-10-26 → 2026-10-14 (-12d) | 0% → 80% | 55d → 70d |  |

| ID | Task | Start | Finish | Total float | Predecessors |
| --- | --- | --- | --- | --- | --- |
| DH.1600040 | DH 1600/Restroom-Dock & Janitor // Install wall door frames | 2026-11-25 → 2026-10-02 A (-54d) | 2026-11-30 → 2026-10-16 (-45d) | 57d → 86d | DH.1600030 SS+1d, DH.1600110 → DH.1600030 SS+1d |
| DH.1600010 | DH 1600/Restroom-Dock & Janitor // MEPF overhead layout | 2026-09-30 → 2026-10-08 A (+8d) | 2026-10-06 → 2026-10-20 (+14d) | 55d → 81d | DH.16000.1010 → DH.16000.1010 FF |
| DH.1600090 | DH 1600/Restroom-Dock & Janitor // Install Balance of Sheetrock on Walls | 2026-11-02 → 2026-10-12 A (-21d) | 2026-11-06 → 2026-10-21 (-16d) | 55d → 69d | DH.1600070, DH.1600050 SS, DH.1600080 → DH.1600050 SS, DH.1600070 FF+2d |
| DH.1600060 | DH 1600/Restroom-Dock & Janitor // MEP rough in walls | 2026-10-27 → 2026-10-13 A (-14d) | 2026-10-29 → 2026-10-16 (-13d) | 55d → 69d | DH.1600050 → DH.1600030 |
| DH.1600070 | DH 1600/Restroom-Dock & Janitor // In wall inspection | 2026-10-30 → 2026-10-19 (-11d) | 2026-10-30 → 2026-10-19 (-11d) | 55d → 69d |  |
| DH.1600080 | DH 1600/Restroom-Dock & Janitor // MEPF high overhead install | 2026-10-27 → 2026-10-21 (-6d) | 2026-10-29 → 2026-10-23 (-6d) | 56d → 81d | DH.1600050 → DH.1600050, DH.1600010 |
| DH.1600100 | DH 1600/Restroom-Dock & Janitor // Tape and finish walls | 2026-11-09 → 2026-10-22 (-18d) | 2026-11-19 → 2026-11-02 (-17d) | 55d → 69d |  |
| DH.1600110 | DH 1600/Restroom-Dock & Janitor // Prime and Paint first coat walls | 2026-11-20 → 2026-11-03 (-17d) | 2026-11-24 → 2026-11-05 (-19d) | 57d → 69d |  |
| DH.1600120 | DH 1600/Restroom-Dock & Janitor // Install lights and exit signs | 2026-11-30 → 2026-11-06 (-24d) | 2026-12-02 → 2026-11-10 (-22d) | 55d → 69d |  |
| DH.1600130 | DH 1600/Restroom-Dock & Janitor // Final Coat Paint & Touchup Walls | 2026-12-03 → 2026-11-12 (-21d) | 2026-12-08 → 2026-11-17 (-21d) | 55d → 69d | DH.1600120, DH.1600040 → DH.1600080, DH.1600040, DH.1600120 |
| DH.1600140 | DH 1600/Restroom-Dock & Janitor // Install MEP Devices and Trim | 2026-12-09 → 2026-11-18 (-21d) | 2026-12-10 → 2026-11-19 (-21d) | 55d → 69d |  |
| 1 | **1600 Energization, Start-up & Commissioning** | 2027-03-17 → 2027-03-12 (-5d) | 2027-06-22 → 2027-06-17 (-5d) |  |  |
| 1 | **Energization & L3 Prefunctional Testing** | 2027-03-17 → 2027-03-12 (-5d) | 2027-05-14 → 2027-05-11 (-3d) |  |  |
| DH1600.L3CX.19 | DH1600 L3 Start | 2027-03-17 → 2027-03-12 (-5d) | 2027-03-17 → 2027-03-12 (-5d) | -9d → -6d |  |
| DH1600.L3CX.BMS.1 | DH1600 L3 PTPs & SOOs – BMS | 2027-03-17 → 2027-03-12 (-5d) | 2027-05-11 → 2027-05-06 (-5d) | -9d → -6d |  |
| DH1600.L3CX.ELEC.43 | DH1600 L3 FTEs | 2027-03-17 → 2027-03-12 (-5d) | 2027-03-23 → 2027-03-18 (-5d) | -9d → -6d |  |
| DH1600.L3CX.MECH.3 | DH1600 L3 Startup / Pre-Functional – MECHANICAL | 2027-03-22 → 2027-03-17 (-5d) | 2027-04-16 → 2027-04-13 (-3d) | -2d → 1d |  |
| DH1600.L3CX.ELEC.33 | DH1600 L3 Startup / Pre-Functional – ELECTRICAL | 2027-03-24 → 2027-03-19 (-5d) | 2027-04-13 → 2027-04-08 (-5d) | 3d → 6d |  |
| DH1600.L3CX.MECH.13 | DH1600 L3 TAB (Air, Water and Reports) – MECHANICAL | 2027-04-28 → 2027-04-23 (-5d) | 2027-05-11 → 2027-05-06 (-5d) | -9d → -6d |  |
| DH1600.L3CX.MECH.23 | DH1600 L3 FLS – MECHANICAL | 2027-04-30 → 2027-04-27 (-3d) | 2027-05-13 → 2027-05-10 (-3d) | -9d → -6d |  |
| DH1600.L3CX.9 | DH1600 L3 Cx Complete | 2027-05-14 → 2027-05-11 (-3d) | 2027-05-14 → 2027-05-11 (-3d) | -9d → -6d |  |
| 2 | **L4 Function Testing** | 2027-04-19 → 2027-04-14 (-5d) | 2027-05-21 → 2027-05-18 (-3d) |  |  |
| DH1600.L4CX.COMM.130 | DH1600 L4 Cx | 2027-04-19 → 2027-04-14 (-5d) | 2027-05-21 → 2027-05-18 (-3d) | -1d → 2d |  |
| 3 | **L5 Integrated System Testing (IST)** | 2027-05-04 → 2027-04-29 (-5d) | 2027-06-22 → 2027-06-17 (-5d) |  |  |
| DH1600.L5CX.COMM.200 | DH1600 L5 Integrated Systems Testing - IST | 2027-05-04 → 2027-04-29 (-5d) | 2027-06-01 → 2027-05-26 (-6d) | -1d → 2d |  |
| DH1600.A2110.CO | DH1600– Phase Closeout Period O&M / TRAINING/ CLOSEOUT DOCS | 2027-06-02 → 2027-05-27 (-6d) | 2027-06-22 → 2027-06-17 (-5d) | 0d → 9d |  |
| DH1600.L5CX.COMM.210 | DH1600 – IST / L5 Cx Complete | 2027-06-02 → 2027-05-27 (-6d) | 2027-06-02 → 2027-05-27 (-6d) | -1d → 2d |  |
| 6 | **Archived (Deleted) Activities** | 2026-06-03 → none | 2026-10-23 → none |  |  |
| 7 | **Owner Furnished Contractor Installed (OFCI)** | 2026-06-03 → none | 2026-07-22 → none |  |  |
| 1 | **DH1200 OFCI Procurement** | 2026-06-03 → none | 2026-07-15 → none |  |  |
| 1 | **Skidded** | 2026-06-03 → none | 2026-07-15 → none |  |  |
| 2 | **Non-Skidded** | 2026-06-03 → none | 2026-07-15 → none |  |  |
| 2 | **DH1100 OFCI Procurement** | 2026-06-03 → none | 2026-07-15 → none |  |  |
| 1 | **Skidded** | 2026-06-03 → none | 2026-07-15 → none |  |  |
| 2 | **Non-Skidded** | 2026-06-03 → none | 2026-07-15 → none |  |  |
| 3 | **DH1300 OFCI Procurement** | 2026-06-03 → none | 2026-07-15 → none |  |  |
| 1 | **Skidded** | 2026-06-03 → none | 2026-07-15 → none |  |  |
| 2 | **Non-Skidded** | 2026-06-03 → none | 2026-07-15 → none |  |  |
| 6 | **DH1400 OFCI Procurement** | 2026-06-03 → none | 2026-07-22 → none |  |  |
| 1 | **Skidded** | 2026-06-03 → none | 2026-07-15 → none |  |  |
| 2 | **Non-Skidded** | 2026-06-03 → none | 2026-07-22 → none |  |  |
| 5 | **DH1500 OFCI Procurement** | 2026-06-03 → none | 2026-06-03 → none |  |  |
| 1 | **Skidded** | 2026-06-03 → none | 2026-06-03 → none |  |  |
| 2 | **Non-Skidded** | 2026-06-03 → none | 2026-06-03 → none |  |  |
| 4 | **DH1600 OFCI Procurement** | 2026-06-03 → none | 2026-06-03 → none |  |  |
| 1 | **Skidded** | 2026-06-03 → none | 2026-06-03 → none |  |  |
| 2 | **Non-Skidded** | 2026-06-03 → none | 2026-06-03 → none |  |  |
| 8 | **Commissioning & Start Up** | 2026-08-26 → none | 2026-10-22 → none |  |  |
| 5 | **Data Hall IST Readiness** | 2026-08-26 → none | 2026-09-23 → none |  |  |
| 5 | **Level 6 — Enclosure Gate** | 2026-08-26 → none | 2026-08-26 → none |  |  |
| 2 | **Level 5 — Construction Complete (White Space)** | 2026-08-26 → none | 2026-08-26 → none |  |  |
| 3 | **Level 4 — Equipment Installed & Available** | 2026-08-26 → none | 2026-08-26 → none |  |  |
| 6 | **Level 3 — Startup / Pre-Functional Testing** | 2026-08-26 → none | 2026-09-23 → none |  |  |
| 1 | **Level 2 — Readiness Gate** | 2026-08-26 → none | 2026-08-26 → none |  |  |
| 1 | **Energization & L3 Prefunctional Testing** | 2026-08-26 → none | 2026-08-26 → none |  |  |
| 2 | **L4 Function Testing** | 2026-08-26 → none | 2026-09-09 → none |  |  |
| 3 | **L5 Integrated System Testing (IST)** | 2026-08-26 → none | 2026-09-08 → none |  |  |
| ` | **Commissioning & Start Up-1** | 2026-08-26 → none | 2026-09-23 → none |  |  |
| 5 | **Data Hall IST Readiness** | 2026-08-26 → none | 2026-09-09 → none |  |  |
| 5 | **Level 6 — Enclosure Gate** | 2026-08-26 → none | 2026-08-26 → none |  |  |
| 2 | **Level 5 — Construction Complete (White Space)** | 2026-08-26 → none | 2026-08-26 → none |  |  |
| 3 | **Level 4 — Equipment Installed & Available** | 2026-08-26 → none | 2026-08-26 → none |  |  |
| 6 | **Level 3 — Startup / Pre-Functional Testing** | 2026-08-26 → none | 2026-09-09 → none |  |  |
| 1 | **Level 2 — Readiness Gate** | 2026-08-26 → none | 2026-08-26 → none |  |  |
| 1 | **Energization & L3 Prefunctional Testing** | 2026-08-26 → none | 2026-09-23 → none |  |  |
| 2 | **L4 Function Testing** | 2026-08-26 → none | 2026-09-09 → none |  |  |
| 3 | **L5 Integrated System Testing (IST)** | 2026-08-26 → none | 2026-09-09 → none |  |  |
| 1 | **Commissioning & Start Up-2** | 2026-08-26 → none | 2026-09-23 → none |  |  |
| 5 | **Data Hall IST Readiness** | 2026-08-26 → none | 2026-09-09 → none |  |  |
| 5 | **Level 6 — Enclosure Gate** | 2026-08-26 → none | 2026-08-26 → none |  |  |

| ID | Task | Start | Finish |
| --- | --- | --- | --- |
| 2 | **Level 5 — Construction Complete (White Space)** | 2026-08-26 → none | 2026-08-26 → none |
| 3 | **Level 4 — Equipment Installed & Available** | 2026-08-26 → none | 2026-08-26 → none |
| 6 | **Level 3 — Startup / Pre-Functional Testing** | 2026-08-26 → none | 2026-09-09 → none |
| 1 | **Level 2 — Readiness Gate** | 2026-08-26 → none | 2026-08-26 → none |
| 1 | **Energization & L3 Prefunctional Testing** | 2026-08-26 → none | 2026-09-23 → none |
| 2 | **L4 Function Testing** | 2026-08-26 → none | 2026-09-09 → none |
| 3 | **L5 Integrated System Testing (IST)** | 2026-08-26 → none | 2026-09-09 → none |
| 2 | **Commissioning & Start Up-3** | 2026-08-26 → none | 2026-09-23 → none |
| 5 | **Data Hall IST Readiness** | 2026-08-26 → none | 2026-09-09 → none |
| 5 | **Level 6 — Enclosure Gate** | 2026-08-26 → none | 2026-08-26 → none |
| 2 | **Level 5 — Construction Complete (White Space)** | 2026-08-26 → none | 2026-08-26 → none |
| 3 | **Level 4 — Equipment Installed & Available** | 2026-08-26 → none | 2026-08-26 → none |
| 6 | **Level 3 — Startup / Pre-Functional Testing** | 2026-08-26 → none | 2026-09-09 → none |
| 1 | **Level 2 — Readiness Gate** | 2026-08-26 → none | 2026-08-26 → none |
| 1 | **Energization & L3 Prefunctional Testing** | 2026-08-26 → none | 2026-09-23 → none |
| 2 | **L4 Function Testing** | 2026-08-26 → none | 2026-09-04 → none |
| 3 | **L5 Integrated System Testing (IST)** | 2026-08-26 → none | 2026-09-16 → none |
| 3 | **Commissioning & Start Up-4** | 2026-08-26 → none | 2026-09-23 → none |
| 5 | **Data Hall IST Readiness** | 2026-08-26 → none | 2026-09-09 → none |
| 5 | **Level 6 — Enclosure Gate** | 2026-08-26 → none | 2026-08-26 → none |
| 2 | **Level 5 — Construction Complete (White Space)** | 2026-08-26 → none | 2026-08-26 → none |
| 3 | **Level 4 — Equipment Installed & Available** | 2026-08-26 → none | 2026-08-26 → none |
| 6 | **Level 3 — Startup / Pre-Functional Testing** | 2026-08-26 → none | 2026-09-09 → none |
| 1 | **Level 2 — Readiness Gate** | 2026-08-26 → none | 2026-08-26 → none |
| 1 | **Energization & L3 Prefunctional Testing** | 2026-08-26 → none | 2026-09-23 → none |
| 2 | **L4 Function Testing** | 2026-08-26 → none | 2026-09-09 → none |
| 3 | **L5 Integrated System Testing (IST)** | 2026-08-26 → none | 2026-09-10 → none |
| 4 | **Commissioning & Start Up-5** | 2026-08-26 → none | 2026-09-23 → none |
| 5 | **Data Hall IST Readiness** | 2026-08-26 → none | 2026-09-09 → none |
| 5 | **Level 6 — Enclosure Gate** | 2026-08-26 → none | 2026-08-26 → none |
| 2 | **Level 5 — Construction Complete (White Space)** | 2026-08-26 → none | 2026-08-26 → none |
| 3 | **Level 4 — Equipment Installed & Available** | 2026-08-26 → none | 2026-08-26 → none |
| 6 | **Level 3 — Startup / Pre-Functional Testing** | 2026-08-26 → none | 2026-09-09 → none |
| 1 | **Level 2 — Readiness Gate** | 2026-08-26 → none | 2026-08-26 → none |
| 1 | **Energization & L3 Prefunctional Testing** | 2026-08-26 → none | 2026-09-23 → none |
| 2 | **L4 Function Testing** | 2026-08-26 → none | 2026-09-09 → none |
| 3 | **L5 Integrated System Testing (IST)** | 2026-08-26 → none | 2026-09-23 → none |
